# NIH / Surgery, Radiology and Laboratory Medicine (SRLM) Building - Update 40 - DD - 01_DEC_25

How a schedule from Primavera P6 changed from version to version. A marks actual dates.

## Version 1 (data date 2025-12-01, saved 2025-12-02, file U40.xer)

| ID | WBS | Task | Duration | Start | Finish | Predecessors | Complete | Total float | Constraint |
| --- | --- | --- | --- | --- | --- | --- | --- | --- | --- |
|  | 1 | **EXECUTIVE SUMMARY** |  | 2022-03-22 | 2029-01-25 |  |  |  |  |
| EXS.160 |  | NIH Issue Notice of Award | 5d | 2022-03-22 A | 2022-03-29 A |  | 100% |  |  |
| EXS.100 |  | NIH Issue Notice to Proceed | 0d | 2022-04-26 A | 2022-04-26 A | EXS.160 | 100% |  |  |
| EXS.105 |  | Phase 0,1 & 2 | 1717d | 2022-04-26 A | 2027-04-21 | EXS.100 | 70% | 645d |  |
| EXS.110 |  | 18,000 NSF May be available in T Wing Building 10 (2nd QTR 2024) | 1d | 2024-09-02 A | 2024-09-02 A | EXS.160 | 100% |  | start on or after 2024-07-15 |
| EXS.130 |  | Substantial Completion - Phase 0,1,2 | 0d | 2027-04-21 | 2027-04-21 | P2.SUM.235 FF, P1A.GARV.520 FF, P2.5-10.9030 FF, P2.6-9.9030 FF, P2.5-8.9030 FF, P2.3-9.9030 FF, P2.3-10.9030 FF, P2.DMSR.160 FF, P2.2-8.9030 FF, P2.2-10.9030 FF, P2.5-9.9030 FF, P2.2-9.9030 FF, PCO.185.146 FF, P2.GP4.14.1710 FF, P2.GP3.14.1710 FF, P2.GP2.14.1710 FF, P2.GP1.14.1710 FF, P2.PIA.130, P2.PIA.150, P2.PIA.130 FF, P2.PIA.150 FF |  | 0d |  |
| EXS.120 |  | Phase 3 & 4 - NCI Lab Move & DcX | 180d | 2027-04-22 | 2027-10-18 | EXS.130 |  | 465d |  |
| EXS.170 |  | Phase 2.1 - Construction | 180d | 2027-04-22 | 2027-10-18 | PCO.0818.1100, PCO.0819.1300, PCO.0820.1300, PCO.0821.1120, EXS.130, PCO.0816.1120, PCO.0815.1100, PCO.0817.1210, PCO.0822.1120 |  | 0d |  |
| EXS.150 |  | Phase 3 & 4 - NIH Complete | 0d | 2027-10-18 | 2027-10-18 | P4.NIH.100, P3.NIH.100 |  | 0d |  |
| EXS.125 |  | Phase 5 - Demo, Renovation, Commissioning - West Wing Labs | 465d | 2027-10-19 | 2029-01-25 | P5.CRC.110 SS, EXS.170 |  | 0d |  |
| EXS.140 |  | Phase 5 Complete | 0d | 2029-01-25 | 2029-01-25 | EXS.125 FF, EXS.110 FF, ENB.160 FF, P5.CRC.150, P5.CRC.150 FF, EXS.131, EXS.151 |  | 0d | finish on or before 2029-01-25 |
|  | 2 | **Contract Modifications** |  | 2022-09-30 | 2027-01-26 |  |  |  |  |
|  | 1 | **P00002 - ESSEG** |  | 2022-09-30 | 2027-01-26 |  |  |  |  |
| ENB.150 |  | ESSEG - P00002 - ESSEG Period of Performance (Including feeder changeover) (ESUM.420 - ESSEG CPM) | 1168d | 2022-09-30 A | 2027-01-26 | ENB.155 SS, ENB.170 FF | 64% | 730d |  |
| ENB.155 |  | ESSEG - Deliver Normal Power from ESSEG Ready to Support SRLM (ESUM.220 - ESSEG CPM) | 826d | 2022-09-30 A | 2025-09-01 A | EXS.100 SS | 100% |  |  |
| ENB.160 |  | ESSEG - Substantial Completion - Phase 2-5 Feeder Transistions (ESUM.120 - ESSEG CPM) | 438d | 2025-09-03 A | 2027-01-26 | ENB.155, ENB.150 FF | 4% | 730d |  |
| ENB.170 |  | ESSEG - Emergency Power Energized/Fully Commissioned (ESUM.550 - ESSEG CPM) | 126d | 2025-09-03 A | 2026-01-06 | ENB.155 | 71% | 296d |  |
|  | 2 | **Phase 5 - Demo & Build Option** |  | 2025-05-21 | 2026-08-31 |  |  |  |  |
| MOD.P5.XXX.100 |  | Phase 5 Scope Defined by Approval of Phase 5 Design | 0d | 2025-05-21 A | 2025-05-21 A | P5.DES.430 | 100% |  |  |
| MOD.P5.XXX.110 |  | HP / Trade Partners - Develop Proposal - Phase 5 (Finish date 1465 Cal Days from NTP per contract) | 80d | 2026-01-09 | 2026-04-30 | MOD.P5.XXX.100, EXS.100 SS+1354d |  | 202d |  |
| MOD.P5.XXX.120 |  | NIH - Review Proposal - Phase 5 | 20d | 2026-05-01 | 2026-05-29 | MOD.P5.XXX.110 |  | 202d |  |
| MOD.P5.XXX.130 |  | HP / NIH - Negotiate Proposal - Phase 5 | 20d | 2026-06-01 | 2026-06-26 | MOD.P5.XXX.120 |  | 202d |  |
| MOD.P5.XXX.140 |  | HP / Trade Partners - Submit Final Proposal - Phase 5 | 20d | 2026-06-29 | 2026-07-27 | MOD.P5.XXX.130 |  | 202d |  |
| MOD.P5.XXX.150 |  | NIH - Approve Final Proposal - Phase 5 | 20d | 2026-07-28 | 2026-08-24 | MOD.P5.XXX.140 |  | 202d |  |
| MOD.P5.XXX.160 |  | NIH - Issue Contract Mod - Phase 5 | 5d | 2026-08-25 | 2026-08-31 | MOD.P5.XXX.150 |  | 202d |  |
|  | 6 | **RFP 014 - Added Clinical Isolation Rooms** |  | 2025-01-27 | 2025-10-01 |  |  |  |  |
| RFP.014.1000 |  | Initial Design Review with NIH - RFP 014 | 15d | 2025-01-27 A | 2025-03-14 A | P2C.DES.205 | 100% |  |  |
| RFP.014.1130 |  | All trades Coordinate - RFP 014 | 10d | 2025-03-17 A | 2025-03-28 A | RFP.014.1000 | 100% |  |  |
| RFP.014.1010 |  | Additional Coordination With NIH - RFP 014 | 5d | 2025-03-31 A | 2025-04-04 A | RFP.014.1130 | 100% |  |  |
| RFP.014.1020 |  | Finallization of Design - RFP 014 | 10d | 2025-04-07 A | 2025-04-18 A | RFP.014.1010 | 100% |  |  |
| RFP.014.1140 |  | Submit to NIH for Review - Issue Bulletin - RFP 014 | 10d | 2025-04-21 A | 2025-06-27 A | RFP.014.1020 | 100% |  |  |
| RFP.014.1030 |  | Construction Cost RFP Review/ Approve - RFP 014 | 30d | 2025-06-30 A | 2025-09-30 A | RFP.014.1140 | 100% |  |  |
| RFP.014.1040 |  | NTP Issued - RFP 014 Construction | 1d | 2025-10-01 A | 2025-10-01 A | RFP.014.1030 | 100% |  |  |
|  | 3 | **RFP 015 - B2 Sterile Proccessing** |  | 2024-11-15 | 2026-01-27 |  |  |  |  |
| RFP.015.1090 |  | Initial Design Review with NIH - RFP 015 | 30d | 2024-11-15 A | 2024-12-13 A | P2C.DES.235 SS | 100% |  |  |
| RFP.015.1080 |  | All Trades Coordination of Changes- RFP 015 | 10d | 2024-12-16 A | 2024-12-30 A | RFP.015.1090 | 100% |  |  |
| RFP.015.1030 |  | Additional Coordination with NIH and Internal - RFP 015 | 13d | 2024-12-31 A | 2025-01-14 A | RFP.015.1080 | 100% |  |  |
| RFP.015.1140 |  | Finalizing Design - RFP 015 | 5d | 2025-01-14 A | 2025-01-31 A | RFP.015.1030 | 100% |  |  |
| RFP.015.1150 |  | Submit for NIH Review - RFP 015 | 10d | 2025-02-11 A | 2025-02-28 A | RFP.015.1140 | 100% |  |  |
| RFP.015.1130 |  | Partial NTE Award - Demo & Underground Review/ Approve - RFP 015 | 29d | 2025-06-04 A | 2025-08-06 A | RFP.015.1150 | 100% |  |  |
| RFP.015.1160 |  | HP Buyout - Demo Trades - RFP 015 Construction | 5d | 2025-08-06 A | 2025-08-06 A | RFP.015.1130 | 100% |  |  |
| RFP.015.1300 |  | Remaining Balance - Construction Cost RFP Review/ Approve - RFP 015 | 15d | 2025-08-06 A | 2025-08-22 A | RFP.015.1150 | 100% |  |  |
| RFP.015.1000 |  | Remaining Balance - NTP Issued - RFP 015 Construction | 1d | 2025-08-22 A | 2025-08-22 A | RFP.015.1030, RFP.015.1300 | 100% |  |  |
| RFP.015.1170 |  | Demo - Concrete Slab - RFP 015 Construction | 12d | 2025-08-26 A | 2025-09-11 A | RFP.015.1160, RFP.015.1130 | 100% |  |  |
| RFP.015.1190 |  | Excavate Underground Plumbing - RFP 015 Construction | 5d | 2025-08-27 A | 2025-09-12 A | RFP.015.1170 | 100% |  |  |
| RFP.015.1200 |  | Demo Underground Plumbing - RFP 015 Construction | 2d | 2025-08-27 A | 2025-09-12 A | RFP.015.1190, RFP.015.1180 SS | 100% |  |  |
| RFP.015.1210 |  | Reinstate - Underground Plumbing - RFP 015 Construction | 5d | 2025-08-27 A | 2025-09-16 A | RFP.015.1200 | 100% |  |  |
| RFP.015.1180 |  | Issue RFI and BIM Re-Coordination for Underground - RFP 015 Construction | 20d | 2025-08-28 A | 2025-09-25 A | RFP.015.1130 | 100% |  |  |
| RFP.015.1310 |  | Incorporate Architectural Backgrounds - RFP 015 Construction | 15d | 2025-09-02 A | 2025-09-22 A | RFP.015.1000 | 100% |  |  |
| RFP.015.1220 |  | Test - Underground Plumbing - RFP 015 Construction | 3d | 2025-09-16 A | 2025-09-16 A | RFP.015.1210 | 100% |  |  |
| RFP.015.1230 |  | Backfill Underground - RFP 015 Construction | 3d | 2025-09-22 A | 2025-09-25 A | RFP.015.1220 | 100% |  |  |
| RFP.015.1320 |  | BIM Re-Coordination for Overhead RFP 015 Construction | 15d | 2025-09-23 A | 2025-10-31 A | RFP.015.1310 | 100% |  |  |
| RFP.015.1240 |  | FRP - Concrete Slab - RFP 015 Construction | 8d | 2025-09-29 A | 2025-10-02 A | RFP.015.1230 | 100% |  |  |
| RFP.015.1250 |  | CMU Wall Construction - RFP 015 Construction | 8d | 2025-10-31 A | 2025-12-03 | RFP.015.1240 | 62% | 59d |  |
| RFP.015.1330 |  | Issue Revised Shop Drawings - RFP 015 Construction | 10d | 2025-12-01 | 2025-12-12 | RFP.015.1320 |  | 34d |  |
| RFP.015.1260 |  | Complete Framing on Top of CMU Wall - RFP 015 Construction | 2d | 2025-12-04 | 2025-12-05 | RFP.015.1250 |  | 59d |  |
| RFP.015.1280 |  | AHJ Wall inspection - RFP 015 Construction | 5d | 2025-12-08 | 2025-12-12 | RFP.015.1260 |  | 59d |  |
| RFP.015.1340 |  | Demo Existing Overhead - RFP 015 Construction | 5d | 2025-12-15 | 2025-12-19 | RFP.015.1330 |  | 34d |  |
| RFP.015.1350 |  | Install Revised MEP Overhead - RFP 015 Construction | 15d | 2025-12-22 | 2026-01-13 | RFP.015.1340 |  | 34d |  |
| RFP.015.1270 |  | Insulate OH Plumbing - RFP 015 Construction | 5d | 2026-01-14 | 2026-01-20 | RFP.015.1260, RFP.015.1350 |  | 34d |  |
| RFP.015.1290 |  | Hang Tape Finish - RFP 015 Construction | 5d | 2026-01-21 | 2026-01-27 | RFP.015.1270, RFP.015.1280 |  | 34d |  |
|  | 4 | **PCO 225 - RF & Magnetic Shielding** |  | 2024-09-19 | 2026-02-19 |  |  |  |  |
| PCO.225.1000 |  | NTP Issued - RF & Magnetic Shielding | 1d | 2024-09-19 A | 2024-09-19 A | BP5.134.1.100 | 100% |  |  |
| PCO.225.1120 |  | Contract MOD - RF & Magnetic Shielding | 60d | 2024-09-20 A | 2025-04-18 A | PCO.225.1000, PCO.225.1290 FF+10d | 100% |  |  |
| PCO.225.1010 |  | Buyout - Magnetic Shielding | 8d | 2024-09-25 A | 2024-11-29 A | PCO.225.1000 | 100% |  |  |
| PCO.225.1040 |  | BIM Coordination - Magnetic Shielding | 30d | 2024-12-23 A | 2025-02-19 A | PCO.225.1010 | 100% |  |  |
| PCO.225.1100 |  | Final Design - Magnetic Shielding | 5d | 2024-12-23 A | 2024-12-30 A | PCO.225.1010, PCO.225.1040 | 100% |  |  |
| PCO.225.1020 |  | Prep/Submit - Magnetic Shielding | 20d | 2024-12-31 A | 2025-02-21 A | PCO.225.1100 | 100% |  |  |
| PCO.225.1290 |  | NIH - HHS Acquisition Alert 2025-02 | 90d | 2025-01-24 A | 2025-04-08 A | PCO.225.1000 | 100% |  |  |
| PCO.225.1030 |  | Review/ Approve - Magnetic Shielding | 35d | 2025-02-24 A | 2025-05-23 A | PCO.225.1020, PCO.225.1120 FF+15d | 100% |  |  |

| ID | WBS | Task | Duration | Start | Finish | Predecessors | Complete | Total float |
| --- | --- | --- | --- | --- | --- | --- | --- | --- |
| PCO.225.1300 |  | NIH - MOD for Balance of PCO 225 | 5d | 2025-04-08 A | 2025-10-01 A | PCO.225.1290 | 100% |  |
| PCO.225.1110 |  | Buyout - RF (Copper shielding) | 30d | 2025-04-09 A | 2025-04-21 A | PCO.225.1120 | 100% |  |
| PCO.225.1150 |  | Procurement - Magnetic Shielding | 10d | 2025-05-23 A | 2025-06-16 A | PCO.225.1000, PCO.225.1030, PCO.225.1120 | 100% |  |
| PCO.225.1070 |  | B2 OH Magnetic Shielding Assembly Install | 20d | 2025-06-16 A | 2025-08-05 A | PCO.225.1150, PCO.225.1030 | 100% |  |
| PCO.225.1130 |  | Prep/Submit - RF (Copper Shielding) | 20d | 2025-06-16 A | 2025-08-26 A | PCO.225.1110 | 100% |  |
| PCO.225.1080 |  | Inspection of Magnetic Shielding - B2 | 1d | 2025-08-04 A | 2025-08-04 A | PCO.225.1070 | 100% |  |
| PCO.225.1090 |  | Release B2 MEPF OH Installation - Below Magnetic Shielding | 1d | 2025-08-05 A | 2025-08-05 A | PCO.225.1080 | 100% |  |
| PCO.225.1330 |  | B2 OH MEP Supports - Magnetic Shielding | 15d | 2025-08-06 A | 2025-08-29 A | PCO.225.1090 | 100% |  |
| PCO.225.1160.1 |  | BIM Coordination - RF (Copper Shielding) - Pre submital | 20d | 2025-08-18 A | 2025-09-08 A | PCO.225.1130 SS | 100% |  |
| PCO.225.1340 |  | B2 OH Mechanical - Magnetic Shielding | 15d | 2025-08-27 A | 2025-09-17 A | PCO.225.1330 | 100% |  |
| PCO.225.1050 |  | Procurement - RF (Copper Shielding) | 30d | 2025-09-02 A | 2025-09-23 A | PCO.225.1120 | 100% |  |
| PCO.225.1350 |  | B2 OH Electrical - Magnetic Shielding | 10d | 2025-09-08 A | 2025-09-19 A | PCO.225.1340 SS, PCO.225.1340 FF+2d | 100% |  |
| PCO.225.1360 |  | B2 OH Mechaniacl Insulation - Magnetic Shielding | 10d | 2025-09-22 A | 2025-10-31 A | PCO.225.1350 | 100% |  |
| PCO.225.1140 |  | Review/ Approve - RF (Copper Shielding) | 35d | 2025-09-23 A | 2025-12-01 | PCO.225.1130 | 97% | 17d |
| PCO.225.1370 |  | B2 OH Fire Suppresion - Magnetic Shielding | 10d | 2025-10-06 A | 2025-10-17 A | PCO.225.1360 | 100% |  |
| PCO.225.1160 |  | BIM Coordination - RF (Copper Shielding) - Post submital | 10d | 2025-11-04 A | 2025-11-17 A | PCO.225.1110, PCO.225.1300, PCO.225.1140, PCO.225.1160.1 | 100% |  |
| PCO.225.1310 |  | B2 Parent Wall Framing - Magnetic Shielding | 5d | 2025-12-01 | 2025-12-05 | PCO.225.1370 |  | 13d |
| PCO.225.1180 |  | L1 Magnetic & RF Shielding Assembly Install (Floor, Walls & Ceiling) | 50d | 2025-12-02 | 2026-02-11 | PCO.225.1050, P2.L1.LC.1090 FF, PCO.225.1160, PCO.225.1140 |  | 17d |
| PCO.225.1380 |  | B2 In -Wall MEP Instal - Magnetic Shielding | 10d | 2025-12-08 | 2025-12-19 | PCO.225.1310 |  | 13d |
| PCO.225.1320 |  | B2 Cieling Joist Framing - Magnetic Shielding | 5d | 2025-12-22 | 2025-12-29 | PCO.225.1380 |  | 13d |
| PCO.225.1230 |  | B2 RF Shielding Assembly Install (Floor, Walls & Ceiling) | 15d | 2025-12-30 | 2026-01-20 | P2.B2.LC.1100 FF, PCO.225.1050, PCO.225.1160, PCO.225.1320 |  | 13d |
| PCO.225.1240 |  | L3 RF Shielding Assembly Install (Floor, Walls & Ceiling) | 15d | 2026-01-21 | 2026-02-10 | P2.L3.LC.1100 FF, PCO.225.1050, PCO.225.1230 |  | 13d |
| PCO.225.1250 |  | Inspection of RF Shielding - B2 | 1d | 2026-01-21 | 2026-01-21 | PCO.225.1230 |  | 63d |
| PCO.225.1270 |  | B2 RF Shielding Slab Infill | 5d | 2026-01-22 | 2026-01-28 | PCO.225.1250 |  | 63d |
| PCO.225.1260 |  | Inspection of RF Shielding - L3 | 1d | 2026-02-11 | 2026-02-11 | PCO.225.1240 |  | 13d |
| PCO.225.1190 |  | Inspection of Magnetic & RF Shielding - L1 | 1d | 2026-02-12 | 2026-02-12 | PCO.225.1180 |  | 17d |
| PCO.225.1280 |  | L3 RF Shielding Slab Infill | 5d | 2026-02-12 | 2026-02-18 | PCO.225.1260 |  | 13d |
| PCO.225.1220 |  | L1 RF Shielding Slab Infill | 5d | 2026-02-13 | 2026-02-19 | PCO.225.1190 |  | 17d |
|  | 8 | **PCO 0815 - Phase 2 - (DLM_01) Levels 5 & 6 Modifications - RFP 72 Package** |  | 2025-04-16 | 2025-11-14 |  |  |  |
| PCO.0815.1000 |  | RFP Received from NIH (4/16 - 4/21) - PCO 0815 (DLM_01) | 15d | 2025-04-16 A | 2025-04-21 A | P2C.DES.210 | 100% |  |
| PCO.0815.1010 |  | Trade Review & Price RFP -PCO 0815 (DLM_01) | 11d | 2025-08-15 A | 2025-08-29 A | PCO.0815.1000 | 100% |  |
| PCO.0815.1020 |  | HP - Review & Submits to NIH - PCO 0815 (DLM_01) | 3d | 2025-09-02 A | 2025-09-03 A | PCO.0815.1010 | 100% |  |
| PCO.0815.1030 |  | NIH - Review RFP - PCO 0815 (DLM_01) | 15d | 2025-09-04 A | 2025-09-24 A | PCO.0815.1020 | 100% |  |
| PCO.0815.1040 |  | NIH - MOD Approval - PCO 0815 (DLM_01) | 5d | 2025-09-25 A | 2025-10-02 A | PCO.0815.1030 | 100% |  |
| PCO.0815.1050 |  | HP Issues MOD to TP - PCO 0815 (DLM_01) | 5d | 2025-10-02 A | 2025-10-09 A | PCO.0815.1040 | 100% |  |
| PCO.0815.1060 |  | Architectural Model Update - PCO 0815 (DLM_01) | 10d | 2025-10-06 A | 2025-10-17 A | PCO.0815.1050 | 100% |  |
| PCO.0815.1070 |  | Engineering Coordination - PCO 0815 (DLM_01) | 10d | 2025-10-20 A | 2025-10-31 A | PCO.0815.1060 | 100% |  |
| PCO.0815.1080 |  | Internal Review - PCO 0815 (DLM_01) | 5d | 2025-11-04 A | 2025-11-04 A | PCO.0815.1070 | 100% |  |
| PCO.0815.1110 |  | Design Review Meeting - PCO 0815 (DLM_01) | 1d | 2025-11-07 A | 2025-11-07 A | PCO.0815.1080 | 100% |  |
| PCO.0815.1090 |  | Compile Design Submittal - PCO 0815 (DLM_01) | 5d | 2025-11-10 A | 2025-11-13 A | PCO.0815.1080, PCO.0815.1110 | 100% |  |
| PCO.0815.1100 |  | Submit To NIH - PCO 0815 (DLM_01) | 1d | 2025-11-14 A | 2025-11-14 A | PCO.0815.1090 | 100% |  |
|  | 15 | **PCO 0816 - Phase 2 - (DLM_02) Level 5 Lab Modifications - RFP 073 Package** |  | 2025-04-16 | 2025-12-24 |  |  |  |
| PCO.0816.1000 |  | RFP Received from NIH (4/16 - 4/21) - PCO 0816 (DLM_02) | 15d | 2025-04-16 A | 2025-04-21 A | P2C.DES.210 | 100% |  |
| PCO.0816.1010 |  | Trade - Review & Price RFP - PCO 0816 (DLM_02) | 10d | 2025-08-15 A | 2025-08-29 A | PCO.0816.1000 | 100% |  |
| PCO.0816.1020 |  | HP - Review & Submits to NIH - PCO 0816 (DLM_02) | 3d | 2025-09-02 A | 2025-09-03 A | PCO.0816.1010 | 100% |  |
| PCO.0816.1030 |  | NIH - Review RFP - PCO 0816 (DLM_02) | 15d | 2025-09-04 A | 2025-09-24 A | PCO.0816.1020 | 100% |  |
| PCO.0816.1040 |  | NIH - MOD Approval - PCO 0816 (DLM_02) | 5d | 2025-09-25 A | 2025-10-02 A | PCO.0816.1030 | 100% |  |
| PCO.0816.1050 |  | HP Issues MOD to TP - PCO 0816 (DLM_02) | 5d | 2025-10-02 A | 2025-10-09 A | PCO.0816.1040 | 100% |  |
| PCO.0816.1060 |  | ZGF develop sketches for NIH review - PCO 0816 (DLM_02) | 15d | 2025-10-06 A | 2025-10-24 A | PCO.0816.1050 | 100% |  |
| PCO.0816.1070 |  | NIH Review + ZGF Refinements - PCO 0816 (DLM_02) | 10d | 2025-10-27 A | 2025-11-07 A | PCO.0816.1060 | 100% |  |
| PCO.0816.1080 |  | Architectural Model Update - PCO 0816 (DLM_02) | 5d | 2025-11-10 A | 2025-11-14 A | PCO.0816.1070 | 100% |  |
| PCO.0816.1090 |  | Enginering Coordination - PCO 0816 (DLM_02) | 15d | 2025-11-17 A | 2025-12-09 | PCO.0816.1080 | 53% | 336d |
| PCO.0816.1100 |  | Internal Review- PCO 0816 (DLM_02) | 5d | 2025-12-10 | 2025-12-16 | PCO.0816.1090 |  | 336d |
| PCO.0816.1110 |  | Compile Design Submittal - PCO 0816 (DLM_02) | 5d | 2025-12-17 | 2025-12-23 | PCO.0816.1100 |  | 336d |
| PCO.0816.1120 |  | Submit To NIH - PCO 0816 (DLM_02) | 1d | 2025-12-24 | 2025-12-24 | PCO.0816.1110 |  | 336d |
|  | 14 | **PCO 0817 - Phase 2C - DLM_3 Level 6 Design - RFP 074 Package** |  | 2025-04-16 | 2026-04-21 |  |  |  |
| PCO.0817.1000 |  | RFP Received from NIH (4/16 - 4/21) - PCO 0817 (DLM_03) | 15d | 2025-04-16 A | 2025-04-21 A | P2C.DES.210 | 100% |  |
| PCO.0817.1010 |  | Trade - Review & Price RFP - PCO 0817 (DLM_03) | 10d | 2025-08-15 A | 2025-08-29 A | PCO.0817.1000 | 100% |  |
| PCO.0817.1020 |  | HP - Review & Submits to NIH - PCO 0817 (DLM_03) | 3d | 2025-09-02 A | 2025-09-03 A | PCO.0817.1010 | 100% |  |
| PCO.0817.1030 |  | NIH - Review RFP - PCO 0817 (DLM_03) | 15d | 2025-09-04 A | 2025-09-24 A | PCO.0817.1020 | 100% |  |
| PCO.0817.1040 |  | NIH - MOD Approval - PCO 0817 (DLM_03) | 5d | 2025-09-25 A | 2025-10-02 A | PCO.0817.1030 | 100% |  |
| PCO.0817.1220 |  | Goverment Shut-Down - PCO 0817 (DLM_03) | 20d | 2025-10-01 A | 2025-12-01 | PCO.0817.1040 | 95% | 254d |
| PCO.0817.1050 |  | HP Issues MOD to TP - PCO 0817 (DLM_03) | 5d | 2025-10-02 A | 2025-10-09 A | PCO.0817.1040 | 100% |  |
| PCO.0817.1060 |  | Meeting #1 - ZGF + NIH - Information Gathering - PCO 0817 (DLM_03) | 1d | 2025-12-02 | 2025-12-02 | PCO.0817.1050, PCO.0817.1220 |  | 254d |
| PCO.0817.1070 |  | ZGF Draft Design Development - PCO 0817 (DLM_03) | 15d | 2025-12-03 | 2025-12-23 | PCO.0817.1060 |  | 254d |
| PCO.0817.1080 |  | Meeting #2 - ZGF + NIH - Preliminary Design - PCO 0817 (DLM_03) | 1d | 2025-12-24 | 2025-12-24 | PCO.0817.1070 |  | 254d |
| PCO.0817.1090 |  | NIH Draft Review + Aproval - PCO 0817 (DLM_03) | 5d | 2025-12-26 | 2026-01-02 | PCO.0817.1080 |  | 254d |
| PCO.0817.1100 |  | ZGF Interim Design Development - PCO 0817 (DLM_03) | 15d | 2026-01-05 | 2026-01-23 | PCO.0817.1090 |  | 254d |
| PCO.0817.1110 |  | Meeting #3 - ZGF + NIH - Preliminary Design - PCO 0817 (DLM_03) | 1d | 2026-01-26 | 2026-01-26 | PCO.0817.1100 |  | 254d |
| PCO.0817.1120 |  | NIH Interim Review + Aproval - PCO 0817 (DLM_03) | 5d | 2026-01-27 | 2026-02-02 | PCO.0817.1110 |  | 254d |

| ID | WBS | Task | Duration | Start | Finish | Predecessors | Complete | Total float |
| --- | --- | --- | --- | --- | --- | --- | --- | --- |
| PCO.0817.1130 |  | ZGF Final Design Development - PCO 0817 (DLM_03) | 15d | 2026-02-03 | 2026-02-23 | PCO.0817.1120 |  | 254d |
| PCO.0817.1140 |  | Meeting #4 - ZGF + NIH - Final Design Review - PCO 0817 (DLM_03) | 1d | 2026-02-24 | 2026-02-24 | PCO.0817.1130 |  | 254d |
| PCO.0817.1150 |  | Meeting #5 - ZGF + NIH - NIH Leadership - PCO 0817 (DLM_03) | 5d | 2026-02-25 | 2026-03-03 | PCO.0817.1140 |  | 254d |
| PCO.0817.1160 |  | Meeting #6 - ZGF + NIH - NIH Leadership - PCO 0817 (DLM_03) | 5d | 2026-03-04 | 2026-03-10 | PCO.0817.1150 |  | 254d |
| PCO.0817.1170 |  | Meeting #7 - ZGF + NIH - NIH Leadership - PCO 0817 (DLM_03) | 5d | 2026-03-11 | 2026-03-17 | PCO.0817.1160 |  | 254d |
| PCO.0817.1180 |  | Concept Design Development + Enginering Coordination - PCO 0817 (DLM_03) | 10d | 2026-03-18 | 2026-03-31 | PCO.0817.1170 |  | 254d |
| PCO.0817.1190 |  | Internal Review - PCO 0817 (DLM_03) | 5d | 2026-04-01 | 2026-04-07 | PCO.0817.1180 |  | 254d |
| PCO.0817.1200 |  | Compile Design Submittal - PCO 0817 (DLM_03) | 5d | 2026-04-08 | 2026-04-14 | PCO.0817.1190 |  | 254d |
| PCO.0817.1210 |  | Submit To NIH - PCO 0817 (DLM_03) | 5d | 2026-04-15 | 2026-04-21 | PCO.0817.1200 |  | 254d |
|  | 13 | **PCO 0818 - Phase 2 - (DPM_01) Levels 2 & 3 Modifications - RFP 075** |  | 2025-04-16 | 2025-11-14 |  |  |  |
| PCO.0818.1000 |  | RFP Received from NIH (4/16 - 4/21) - PCO 0818 (DPM_01) | 15d | 2025-04-16 A | 2025-04-21 A | P2C.DES.210 | 100% |  |
| PCO.0818.1010 |  | Trade Review & Price RFP - PCO 0818 (DPM_01) | 11d | 2025-08-15 A | 2025-08-29 A | PCO.0818.1000 | 100% |  |
| PCO.0818.1020 |  | HP - Review & Submits to NIH - PCO 0818 (DPM_01) | 3d | 2025-09-02 A | 2025-09-03 A | PCO.0818.1010 | 100% |  |
| PCO.0818.1030 |  | NIH - Review RFP - PCO 0818 (DPM_01) | 15d | 2025-09-04 A | 2025-09-24 A | PCO.0818.1020 | 100% |  |
| PCO.0818.1040 |  | NIH - MOD Approval - PCO 0818 (DPM_01) | 5d | 2025-09-25 A | 2025-10-02 A | PCO.0818.1030 | 100% |  |
| PCO.0818.1050 |  | HP Issues MOD to TP - PCO 0818 (DPM_01) | 5d | 2025-10-02 A | 2025-10-09 A | PCO.0818.1040 | 100% |  |
| PCO.0818.1060 |  | Architectural Model Update - PCO 0818 (DPM_01) | 10d | 2025-10-06 A | 2025-10-17 A | PCO.0818.1050 | 100% |  |
| PCO.0818.1070 |  | Engineering Coordination - PCO 0818 (DPM_01) | 10d | 2025-10-20 A | 2025-10-31 A | PCO.0818.1060 | 100% |  |
| PCO.0818.1080 |  | Internal Review - PCO 0818 (DPM_01) | 5d | 2025-11-04 A | 2025-11-06 A | PCO.0818.1070 | 100% |  |
| PCO.0818.1090 |  | Compile Design Submittal - PCO 0818 (DPM_01) | 5d | 2025-11-07 A | 2025-11-13 A | PCO.0818.1080, PCO.0818.1110 | 100% |  |
| PCO.0818.1110 |  | Design Review Meeting - PCO 0818 (DPM_01) | 1d | 2025-11-12 A | 2025-11-12 A | PCO.0818.1080 | 100% |  |
| PCO.0818.1100 |  | Sumit To NIH - PCO 0818 (DPM_01) | 1d | 2025-11-14 A | 2025-11-14 A | PCO.0818.1090 | 100% |  |
|  | 12 | **PCO 0819 - Phase 2C & 5 - DPM_2_3_4 IR_1 Levels 2 & 3 Design - RFP 76** |  | 2025-04-16 | 2026-07-21 |  |  |  |
| PCO.0819.1000 |  | RFP Received from NIH (4/16 - 4/21) - PCO 0819 (DPM_2_3_4 IR_1) | 15d | 2025-04-16 A | 2025-04-21 A |  | 100% |  |
| PCO.0819.1010 |  | Trade - Review & Price RFP - PCO 0819 (DPM_2_3_4 IR_1) | 10d | 2025-08-15 A | 2025-08-29 A | PCO.0819.1000 | 100% |  |
| PCO.0819.1020 |  | HP - Review & Submits to NIH - PCO 0819 (DPM_2_3_4 IR_1) | 3d | 2025-09-02 A | 2025-09-03 A | PCO.0819.1010 | 100% |  |
| PCO.0819.1030 |  | NIH - Review RFP - PCO 0819 (DPM_2_3_4 IR_1) | 15d | 2025-09-04 A | 2025-09-24 A | PCO.0819.1020 | 100% |  |
| PCO.0819.1040 |  | NIH - MOD Approval - PCO 0819 (DPM_2_3_4 IR_1) | 5d | 2025-09-25 A | 2025-10-02 A | PCO.0819.1030 | 100% |  |
| PCO.0819.1050 |  | Goverment Shut-Down - PCO 0819 (DPM_2_3_4 IR_1) | 20d | 2025-10-01 A | 2025-12-01 | PCO.0819.1040 | 95% | 191d |
| PCO.0819.1060 |  | HP Issues MOD to TP - PCO 0819 (DPM_2_3_4 IR_1) | 5d | 2025-10-02 A | 2025-10-09 A | PCO.0819.1040 | 100% |  |
| PCO.0819.1070 |  | Meeting #1 - ZGF + NIH - Information Gathering - PCO 0819 (DPM_2_3_4 IR_1) | 1d | 2025-12-02 | 2025-12-02 | PCO.0819.1060, PCO.0819.1050 |  | 191d |
| PCO.0819.1080 |  | ZGF Meeting Prep + Coordination with NIH - PCO 0819 (DPM_2_3_4 IR_1) | 15d | 2025-12-03 | 2025-12-23 | PCO.0819.1070 |  | 191d |
| PCO.0819.1090 |  | Meeting #2 - ZGF + NIH - Information Gathering - PCO 0819 (DPM_2_3_4 IR_1) | 1d | 2025-12-24 | 2025-12-24 | PCO.0819.1080 |  | 191d |
| PCO.0819.1100 |  | ZGF Draft Design Development - PCO 0819 (DPM_2_3_4 IR_1) | 10d | 2025-12-26 | 2026-01-09 | PCO.0819.1090 |  | 191d |
| PCO.0819.1110 |  | Meeting #3 - ZGF + NIH - Preliminary Design - PCO 0819 (DPM_2_3_4 IR_1) | 1d | 2026-01-12 | 2026-01-12 | PCO.0819.1100 |  | 191d |
| PCO.0819.1120 |  | NIH Draft Review + Approval - PCO 0819 (DPM_2_3_4 IR_1) | 5d | 2026-01-13 | 2026-01-19 | PCO.0819.1110 |  | 191d |
| PCO.0819.1130 |  | ZGF Interim Design Development - PCO 0819 (DPM_2_3_4 IR_1) | 10d | 2026-01-20 | 2026-02-02 | PCO.0819.1120 |  | 191d |
| PCO.0819.1140 |  | Meeting #4 - Preliminary Design Review - PCO 0819 (DPM_2_3_4 IR_1) | 1d | 2026-02-03 | 2026-02-03 | PCO.0819.1130 |  | 191d |
| PCO.0819.1150 |  | NIH Interim Review + Comment - PCO 0819 (DPM_2_3_4 IR_1) | 5d | 2026-02-04 | 2026-02-10 | PCO.0819.1140 |  | 191d |
| PCO.0819.1160 |  | ZGF Interim Design Development - PCO 0819 (DPM_2_3_4 IR_1) | 10d | 2026-02-11 | 2026-02-24 | PCO.0819.1150 |  | 191d |
| PCO.0819.1170 |  | Meeting #5 - Preliminary Design Review - PCO 0819 (DPM_2_3_4 IR_1) | 1d | 2026-02-25 | 2026-02-25 | PCO.0819.1160 |  | 191d |
| PCO.0819.1180 |  | NIH Interim Review + Aproval - PCO 0819 (DPM_2_3_4 IR_1) | 5d | 2026-02-26 | 2026-03-04 | PCO.0819.1170 |  | 191d |
| PCO.0819.1190 |  | ZGF Final Design Development - PCO 0819 (DPM_2_3_4 IR_1) | 10d | 2026-03-05 | 2026-03-18 | PCO.0819.1180 |  | 191d |
| PCO.0819.1200 |  | Meeting #6 - Concept Design Progress - PCO 0819 (DPM_2_3_4 IR_1) | 1d | 2026-03-19 | 2026-03-19 | PCO.0819.1190 |  | 191d |
| PCO.0819.1210 |  | NIH Final Review + Comment - PCO 0819 (DPM_2_3_4 IR_1) | 5d | 2026-03-20 | 2026-03-26 | PCO.0819.1200 |  | 191d |
| PCO.0819.1220 |  | ZGF Final Design Development - PCO 0819 (DPM_2_3_4 IR_1) | 15d | 2026-03-27 | 2026-04-16 | PCO.0819.1210 |  | 191d |
| PCO.0819.1230 |  | Meeting #7 - Concept Design - PCO 0819 (DPM_2_3_4 IR_1) | 5d | 2026-04-17 | 2026-04-23 | PCO.0819.1220 |  | 191d |
| PCO.0819.1240 |  | Meeting #8 - NIH Leadership - PCO 0819 (DPM_2_3_4 IR_1) | 5d | 2026-04-24 | 2026-04-30 | PCO.0819.1230 |  | 191d |
| PCO.0819.1250 |  | Meeting #9 - NIH Leadership - PCO 0819 (DPM_2_3_4 IR_1) | 5d | 2026-05-01 | 2026-05-07 | PCO.0819.1240 |  | 191d |
| PCO.0819.1260 |  | Meeting #10 - NIH Leadership - PCO 0819 (DPM_2_3_4 IR_1) | 5d | 2026-05-08 | 2026-05-14 | PCO.0819.1250 |  | 191d |
| PCO.0819.1270 |  | Engineering Coordination - PCO 0819 (DPM_2_3_4 IR_1) | 20d | 2026-05-15 | 2026-06-12 | PCO.0819.1260 |  | 191d |
| PCO.0819.1280 |  | Internal Review - PCO 0819 (DPM_2_3_4 IR_1) | 10d | 2026-06-15 | 2026-06-26 | PCO.0819.1270 |  | 191d |
| PCO.0819.1290 |  | Compile Design Submittal - PCO 0819 (DPM_2_3_4 IR_1) | 15d | 2026-06-29 | 2026-07-20 | PCO.0819.1280 |  | 191d |
| PCO.0819.1300 |  | Submit To NIH - PCO 0819 (DPM_2_3_4 IR_1) | 1d | 2026-07-21 | 2026-07-21 | PCO.0819.1290 |  | 191d |
|  | 11 | **PCO 0820 - Phase 2C & 5 - RAD_1_3_5 RADIS Level 01 Design - RFP 077** |  | 2025-04-16 | 2026-07-28 |  |  |  |
| PCO.0820.1000 |  | RFP Received from NIH (4/16 - 4/21) - PCO 0820 (RAD_1_3_5) | 15d | 2025-04-16 A | 2025-04-21 A |  | 100% |  |
| PCO.0820.1010 |  | Trade - Review & Price RFP - PCO 0820 (RAD_1_3_5) | 10d | 2025-08-15 A | 2025-08-29 A | PCO.0820.1000 | 100% |  |
| PCO.0820.1020 |  | HP - Review & Submits to NIH - PCO 0820 (RAD_1_3_5) | 3d | 2025-09-02 A | 2025-09-03 A | PCO.0820.1010 | 100% |  |
| PCO.0820.1030 |  | NIH - Review RFP - PCO 0819 PCO 0820 (RAD_1_3_5) | 15d | 2025-09-04 A | 2025-09-24 A | PCO.0820.1020 | 100% |  |
| PCO.0820.1040 |  | NIH - MOD Approval - PCO 0820 (RAD_1_3_5) | 5d | 2025-09-25 A | 2025-10-02 A | PCO.0820.1030 | 100% |  |
| PCO.0820.1050 |  | Goverment Shut-Down - PCO 0820 (RAD_1_3_5) | 20d | 2025-10-01 A | 2025-12-01 | PCO.0820.1040 | 95% | 186d |
| PCO.0820.1060 |  | HP Issues MOD to TP - PCO 0820 (RAD_1_3_5) | 5d | 2025-10-02 A | 2025-10-09 A | PCO.0820.1040 | 100% |  |
| PCO.0820.1070 |  | Meeting #1 - ZGF + NIH - Information Gathering - PCO 0820 (RAD_1_3_5) | 1d | 2025-12-02 | 2025-12-02 | PCO.0820.1060, PCO.0820.1050 |  | 186d |
| PCO.0820.1080 |  | ZGF Meeting Prep + Coordination with NIH - PCO 0820 (RAD_1_3_5) | 15d | 2025-12-03 | 2025-12-23 | PCO.0820.1070 |  | 186d |
| PCO.0820.1090 |  | Meeting #2 - ZGF + NIH - Information Gathering - PCO 0820 (RAD_1_3_5) | 1d | 2025-12-24 | 2025-12-24 | PCO.0820.1080 |  | 186d |
| PCO.0820.1100 |  | ZGF Draft Design Development - PCO 0820 (RAD_1_3_5) | 10d | 2025-12-26 | 2026-01-09 | PCO.0820.1090 |  | 186d |
| PCO.0820.1110 |  | Meeting #3 - ZGF + NIH - Preliminary Design - PCO 0820 (RAD_1_3_5) | 1d | 2026-01-12 | 2026-01-12 | PCO.0820.1100 |  | 186d |
| PCO.0820.1120 |  | NIH Draft Review + Approval - PCO 0820 (RAD_1_3_5) | 5d | 2026-01-13 | 2026-01-19 | PCO.0820.1110 |  | 186d |
| PCO.0820.1130 |  | ZGF Interim Design Development - PCO 0820 (RAD_1_3_5) | 10d | 2026-01-20 | 2026-02-02 | PCO.0820.1120 |  | 186d |
| PCO.0820.1140 |  | Meeting #4 - Preliminary Design Review - PCO 0820 (RAD_1_3_5) | 1d | 2026-02-03 | 2026-02-03 | PCO.0820.1130 |  | 186d |

| ID | WBS | Task | Duration | Start | Finish | Predecessors | Complete | Total float |
| --- | --- | --- | --- | --- | --- | --- | --- | --- |
| PCO.0820.1150 |  | NIH Interim Review + Comment - PCO 0820 (RAD_1_3_5) | 5d | 2026-02-04 | 2026-02-10 | PCO.0820.1140 |  | 186d |
| PCO.0820.1160 |  | ZGF Interim Design Development - PCO 0820 (RAD_1_3_5) | 10d | 2026-02-11 | 2026-02-24 | PCO.0820.1150 |  | 186d |
| PCO.0820.1170 |  | Meeting #5 - Preliminary Design Review - PCO 0820 (RAD_1_3_5) | 1d | 2026-02-25 | 2026-02-25 | PCO.0820.1160 |  | 186d |
| PCO.0820.1180 |  | NIH Interim Review + Aproval - PCO 0820 (RAD_1_3_5) | 5d | 2026-02-26 | 2026-03-04 | PCO.0820.1170 |  | 186d |
| PCO.0820.1190 |  | ZGF Final Design Development - PCO 0820 (RAD_1_3_5) | 10d | 2026-03-05 | 2026-03-18 | PCO.0820.1180 |  | 186d |
| PCO.0820.1200 |  | Meeting #6 - Concept Design Progress - PCO 0820 (RAD_1_3_5) | 1d | 2026-03-19 | 2026-03-19 | PCO.0820.1190 |  | 186d |
| PCO.0820.1210 |  | NIH Final Review + Comment - PCO 0820 (RAD_1_3_5) | 5d | 2026-03-20 | 2026-03-26 | PCO.0820.1200 |  | 186d |
| PCO.0820.1220 |  | ZGF Final Design Development - PCO 0820 (RAD_1_3_5) | 15d | 2026-03-27 | 2026-04-16 | PCO.0820.1210 |  | 186d |
| PCO.0820.1230 |  | Meeting #7 - Concept Design - PCO 0820 (RAD_1_3_5) | 5d | 2026-04-17 | 2026-04-23 | PCO.0820.1220 |  | 186d |
| PCO.0820.1240 |  | Meeting #8 - NIH Leadership - PCO 0820 (RAD_1_3_5) | 5d | 2026-04-24 | 2026-04-30 | PCO.0820.1230 |  | 186d |
| PCO.0820.1250 |  | Meeting #9 - NIH Leadership - PCO 0820 (RAD_1_3_5) | 5d | 2026-05-01 | 2026-05-07 | PCO.0820.1240 |  | 186d |
| PCO.0820.1260 |  | Meeting #10 - NIH Leadership - PCO 0820 (RAD_1_3_5) | 5d | 2026-05-08 | 2026-05-14 | PCO.0820.1250 |  | 186d |
| PCO.0820.1270 |  | Engineering Coordination - PCO 0820 (RAD_1_3_5) | 20d | 2026-05-15 | 2026-06-12 | PCO.0820.1260 |  | 186d |
| PCO.0820.1280 |  | Internal Review - PCO 0820 (RAD_1_3_5) | 15d | 2026-06-15 | 2026-07-06 | PCO.0820.1270 |  | 186d |
| PCO.0820.1290 |  | Compile Design Submittal - PCO 0820 (RAD_1_3_5) | 15d | 2026-07-07 | 2026-07-27 | PCO.0820.1280 |  | 186d |
| PCO.0820.1300 |  | Submit To NIH - PCO 0820 (RAD_1_3_5) | 1d | 2026-07-28 | 2026-07-28 | PCO.0820.1290 |  | 186d |
|  | 9 | **PCO 0821 - Phase 2 - (RAD_02) Level 01 Central Prep Modifications - RFP 078** |  | 2025-04-16 | 2025-12-08 |  |  |  |
| PCO.0821.1000 |  | RFP Received from NIH (4/16 - 4/21) - PCO 0821 (RAD_02) | 15d | 2025-04-16 A | 2025-04-21 A | P2C.DES.210 | 100% |  |
| PCO.0821.1010 |  | Trade Review & Price RFP - PCO 0821 (RAD_02) | 11d | 2025-08-15 A | 2025-08-29 A | PCO.0821.1000 | 100% |  |
| PCO.0821.1020 |  | HP - Review & Submits to NIH - PCO 0821 (RAD_02) | 3d | 2025-09-02 A | 2025-09-03 A | PCO.0821.1010 | 100% |  |
| PCO.0821.1030 |  | NIH - Review RFP - PCO 0821 (RAD_02) | 15d | 2025-09-04 A | 2025-09-24 A | PCO.0821.1020 | 100% |  |
| PCO.0821.1040 |  | NIH - MOD Approval - PCO 0821 (RAD_02) | 5d | 2025-09-25 A | 2025-10-02 A | PCO.0821.1030 | 100% |  |
| PCO.0821.1050 |  | HP Issues MOD to TP - PCO 0821 (RAD_02) | 5d | 2025-10-02 A | 2025-10-09 A | PCO.0821.1040 | 100% |  |
| PCO.0821.1060 |  | Develop Sketch - PCO 0821 (RAD_02) | 5d | 2025-10-13 A | 2025-10-17 A | PCO.0821.1050 | 100% |  |
| PCO.0821.1070 |  | NIH Review + ZGF Refinements - PCO 0821 (RAD_02) | 10d | 2025-10-20 A | 2025-10-31 A | PCO.0821.1060 | 100% |  |
| PCO.0821.1080 |  | Architectural Model Update - PCO 0821 (RAD_02) | 5d | 2025-11-03 A | 2025-11-07 A | PCO.0821.1070 | 100% |  |
| PCO.0821.1090 |  | Engineering Coordination - PCO 0821 (RAD_02) | 10d | 2025-11-10 A | 2025-11-21 A | PCO.0821.1080 | 100% |  |
| PCO.0821.1100 |  | Internal Review - PCO 0821 (RAD_02) | 5d | 2025-11-24 A | 2025-12-01 A | PCO.0821.1090 | 100% |  |
| PCO.0821.1110 |  | Compile Design Submittal - PCO 0821 (RAD_02) | 5d | 2025-12-01 | 2025-12-05 | PCO.0821.1100 |  | 348d |
| PCO.0821.1120 |  | Submit To NIH - PCO 0821 (RAD_02) | 1d | 2025-12-08 | 2025-12-08 | PCO.0821.1110 |  | 348d |
|  | 10 | **PCO 0822 - Phase 2 - (RAD_04) Conference Room 1-2810 Modifications - RFP 079** |  | 2025-04-16 | 2025-11-14 |  |  |  |
| PCO.0822.1000 |  | RFP Received from NIH (4/16 - 4/21) - PCO 0822 (RAD_04) | 15d | 2025-04-16 A | 2025-04-21 A | P2C.DES.210 | 100% |  |
| PCO.0822.1010 |  | Trade Review & Price RFP - PCO 0822 (RAD_04) | 11d | 2025-08-15 A | 2025-08-29 A | PCO.0822.1000 | 100% |  |
| PCO.0822.1020 |  | HP - Review & Submits to NIH - PCO 0822 (RAD_04) | 3d | 2025-09-02 A | 2025-09-03 A | PCO.0822.1010 | 100% |  |
| PCO.0822.1030 |  | NIH - Review RFP - PCO 0822 (RAD_04) | 15d | 2025-09-04 A | 2025-09-24 A | PCO.0822.1020 | 100% |  |
| PCO.0822.1040 |  | NIH - MOD Approval - PCO 0822 (RAD_04) | 5d | 2025-09-25 A | 2025-10-02 A | PCO.0822.1030 | 100% |  |
| PCO.0822.1050 |  | HP Issues MOD to TP - PCO 0822 (RAD_04) | 5d | 2025-10-02 A | 2025-10-09 A | PCO.0822.1040 | 100% |  |
| PCO.0822.1060 |  | Develop Sketch - PCO 0822 (RAD_04) | 5d | 2025-10-06 A | 2025-10-10 A | PCO.0822.1050 | 100% |  |
| PCO.0822.1070 |  | NIH Review + ZGF Refinements - PCO 0822 (RAD_04) | 5d | 2025-10-13 A | 2025-10-17 A | PCO.0822.1060 | 100% |  |
| PCO.0822.1080 |  | Architectural Model Update - PCO 0822 (RAD_04) | 5d | 2025-10-20 A | 2025-10-24 A | PCO.0822.1070 | 100% |  |
| PCO.0822.1090 |  | Engineering Coordination - PCO 0822 (RAD_04) | 5d | 2025-10-27 A | 2025-10-31 A | PCO.0822.1080 | 100% |  |
| PCO.0822.1100 |  | Internal Review - PCO 0822 (RAD_04) | 5d | 2025-11-03 A | 2025-11-04 A | PCO.0822.1090 | 100% |  |
| PCO.0822.1130 |  | Design Review Meeting - PCO 0822 (RAD_04) | 1d | 2025-11-07 A | 2025-11-07 A | PCO.0822.1100 | 100% |  |
| PCO.0822.1110 |  | Compile Design Submittal - PCO 0822 (RAD_04) | 5d | 2025-11-10 A | 2025-11-14 A | PCO.0822.1100, PCO.0822.1130 | 100% |  |
| PCO.0822.1120 |  | Submit To NIH - PCO 0822 (RAD_04) | 1d | 2025-11-14 A | 2025-11-14 A | PCO.0822.1110 | 100% |  |
|  | 5 | **PCO 0823 - Phase 2 - (RAD_06) Flooring in MRI Zone II and Zone III Spaces - RFP 080** |  | 2025-04-16 | 2026-01-14 |  |  |  |
| PCO.823.1000 |  | RFP Received from NIH (4/16 - 4/21) - PC0 0823 (RAD_06) | 15d | 2025-04-16 A | 2025-04-21 A | P2C.DES.210 | 100% |  |
| PCO.823.1010 |  | Trade Review & Price RFP - PC0 0823 (RAD_06) | 11d | 2025-08-15 A | 2025-08-29 A | PCO.823.1000 | 100% |  |
| PCO.823.1020 |  | HP - Review & Submits to NIH - PC0 0823 (RAD_06) | 3d | 2025-09-02 A | 2025-09-03 A | PCO.823.1010 | 100% |  |
| PCO.823.1030 |  | NIH - Review RFP - PC0 0823 (RAD_06) | 15d | 2025-09-04 A | 2025-09-24 A | PCO.823.1020 | 100% |  |
| PCO.823.1040 |  | NIH - MOD Approval - PC0 0823 (RAD_06) | 5d | 2025-09-25 A | 2025-10-02 A | PCO.823.1030 | 100% |  |
| PCO.823.1050 |  | HP Issues MOD to TP - PC0 0823 (RAD_06) | 5d | 2025-10-02 A | 2025-10-09 A | PCO.823.1040 | 100% |  |
| PCO.823.1060 |  | Architectural Model Update - PC0 0823 (RAD_06) | 5d | 2025-10-09 A | 2025-10-16 A | PCO.823.1050 | 100% |  |
| PCO.823.1070 |  | Engineering Coordination - PC0 0823 (RAD_06) | 5d | 2025-10-16 A | 2025-10-23 A | PCO.823.1060 | 100% |  |
| PCO.823.1080 |  | Incorporate via RFI Response and Bulletin - PC0 0823 (RAD_06) | 10d | 2025-10-23 A | 2025-11-06 A | PCO.823.1070, PCO.823.1040 | 100% |  |
| PCO.823.1160 |  | Design Review Meeting - PC0 0823 (RAD_06) | 1d | 2025-11-05 A | 2025-11-05 A | PCO.823.1080 | 100% |  |
| PCO.823.1090 |  | Issue - Bulletin - PC0 0823 (RAD_06) | 1d | 2025-11-07 A | 2025-11-07 A | PCO.823.1080, PCO.823.1160 | 100% |  |
| PCO.823.1100 |  | BIM Coordination - PC0 0823 (RAD_06) | 5d | 2025-12-01 | 2025-12-05 | PCO.823.1090 |  | 199d |
| PCO.823.1110 |  | Review Impact to Installed Work - PC0 0823 (RAD_06) | 5d | 2025-12-08 | 2025-12-12 | PCO.823.1100 |  | 199d |
| PCO.823.1120 |  | Shop Drawing Revision and Submit per BIM Coordination - PC0 0823 (RAD_06) | 5d | 2025-12-15 | 2025-12-19 | PCO.823.1110 |  | 199d |
| PCO.823.1130 |  | NIH Review and Approve - PC0 0823 (RAD_06) | 10d | 2025-12-22 | 2026-01-06 | PCO.823.1120 |  | 199d |
| PCO.823.1140 |  | Incorporate Changes in the Field (Demo/Rework) - PC0 0823 (RAD_06) | 5d | 2026-01-07 | 2026-01-13 | PCO.823.1130 |  | 199d |
| PCO.823.1150 |  | Trades - Construction Starts - PC0 0823 (RAD_06) | 1d | 2026-01-14 | 2026-01-14 | PCO.823.1090, PCO.823.1140, PCO.823.1040 |  | 199d |
|  | 7 | **PCO 0824 - Phase 2 - (SINKS_01) Clinical Scrub Sink Equipment Modifications - RFP 081** |  | 2025-04-16 | 2026-03-03 |  |  |  |
| PCO.824.1000 |  | RFP Received from NIH (4/16 - 4/21) - PC0 0824 (SINK_01) | 15d | 2025-04-16 A | 2025-04-21 A | P2C.DES.210 | 100% |  |
| PCO.824.1010 |  | Trade Review & Price RFP - PC0 0824 (SINK_01) | 11d | 2025-08-15 A | 2025-08-29 A | PCO.824.1000 | 100% |  |
| PCO.824.1020 |  | HP - Review & Submits to NIH - PC0 0824 (SINK_01) | 3d | 2025-09-02 A | 2025-09-03 A | PCO.824.1010 | 100% |  |
| PCO.824.1030 |  | NIH - Review RFP - PC0 0824 (SINK_01) | 15d | 2025-09-04 A | 2025-09-24 A | PCO.824.1020 | 100% |  |
| PCO.824.1040 |  | NIH - MOD Approval - PC0 0824 (SINK_01) | 5d | 2025-09-25 A | 2025-10-02 A | PCO.824.1030 | 100% |  |
| PCO.824.1050 |  | HP Issues MOD to TP - PC0 0824 (SINK_01) | 5d | 2025-10-02 A | 2025-10-09 A | PCO.824.1040 | 100% |  |

| ID | WBS | Task | Duration | Start | Finish | Predecessors | Complete | Total float | Constraint |
| --- | --- | --- | --- | --- | --- | --- | --- | --- | --- |
| PCO.824.1060 |  | Architectural Model Update - PC0 0824 (SINK_01) | 5d | 2025-10-09 A | 2025-10-16 A | PCO.824.1050 | 100% |  |  |
| PCO.824.1070 |  | Engineering Coordination - PC0 0824 (SINK_01) | 5d | 2025-10-16 A | 2025-10-23 A | PCO.824.1060 | 100% |  |  |
| PCO.824.1080 |  | Incorporate via RFI Response and Bulletin - PC0 0824 (SINK_01) | 10d | 2025-10-23 A | 2025-11-06 A | PCO.824.1070 | 100% |  |  |
| PCO.824.1180 |  | Design Review Meeting - PC0 0824 (SINK_01) | 1d | 2025-11-05 A | 2025-11-05 A | PCO.824.1080 | 100% |  |  |
| PCO.824.1090 |  | Issue - Bulletin - PC0 0824 (SINK_01) | 1d | 2025-11-07 A | 2025-11-07 A | PCO.824.1080, PCO.824.1180 | 100% |  |  |
| PCO.824.1100 |  | BIM Coordination - PC0 0824 (SINK_01) | 5d | 2025-12-01 | 2025-12-05 | PCO.824.1090 |  | 18d |  |
| PCO.824.1110 |  | Review Impact to Installed Work - PC0 0824 (SINK_01) | 5d | 2025-12-08 | 2025-12-12 | PCO.824.1100 |  | 18d |  |
| PCO.824.1120 |  | Shop Drawing Revision and Submit per BIM Coordination - PC0 0824 (SINK_01) | 5d | 2025-12-15 | 2025-12-19 | PCO.824.1110 |  | 18d |  |
| PCO.824.1130 |  | NIH Review and Approve - PC0 0824 (SINK_01) | 10d | 2025-12-22 | 2026-01-06 | PCO.824.1120 |  | 18d |  |
| PCO.824.1140 |  | Incorporate Changes in the Field (Demo/Rework) - PC0 0824 (SINK_01) | 5d | 2025-12-22 | 2025-12-29 | PCO.824.1120 |  | 38d |  |
| PCO.824.1150 |  | Long Lead Equip./ Material - Lead/Fab/Deliver - PC0 0824(SINK_01) | 40d | 2026-01-07 | 2026-03-03 | PCO.824.1130 |  | 186d |  |
| PCO.824.1160 |  | Spool/Fab/Deliver MEP - PC0 0824 (SINK_01) | 15d | 2026-01-07 | 2026-01-27 | PCO.824.1130 |  | 18d |  |
| PCO.824.1170 |  | Trades - Construction Starts - PC0 0824 (SINK_01) | 1d | 2026-01-28 | 2026-01-28 | PCO.824.1040, PCO.824.1090, PCO.824.1140, PCO.824.1160 |  | 18d |  |
|  | 17 | **PCO 0830 - Phase 2C - (SINKS_05) Lab Fixtures Modifications - RFP 085** |  | 2025-04-16 | 2026-04-14 |  |  |  |  |
| PCO.830.1000 |  | RFP Received from NIH (4/16 - 4/21) - PC0 0830 (SINK_05) | 15d | 2025-04-16 A | 2025-04-21 A | P2C.DES.210 | 100% |  |  |
| PCO.830.1010 |  | Trade Review & Price RFP - PC0 0830 (SINK_05) | 11d | 2025-08-15 A | 2025-08-29 A | PCO.830.1000 | 100% |  |  |
| PCO.830.1020 |  | HP - Review & Submits to NIH - PC0 0830 (SINK_05) | 3d | 2025-09-02 A | 2025-09-03 A | PCO.830.1010 | 100% |  |  |
| PCO.830.1030 |  | NIH - Review RFP - PC0 0830 (SINK_05) | 15d | 2025-09-04 A | 2025-09-24 A | PCO.830.1020 | 100% |  |  |
| PCO.830.1040 |  | NIH - MOD Approval - PC0 0830 (SINK_05) | 5d | 2025-09-25 A | 2025-10-02 A | PCO.830.1030 | 100% |  |  |
| PCO.830.1050 |  | HP Issues MOD to TP - PC0 0830 (SINK_05) | 5d | 2025-10-02 A | 2025-10-09 A | PCO.830.1040 | 100% |  |  |
| PCO.830.1060 |  | Engineering Coordination - PC0 0830 (SINK_05) | 10d | 2025-10-06 A | 2025-10-28 A | PCO.830.1050, PCO.823.1070, PCO.824.1070 | 100% |  |  |
| PCO.830.1070 |  | Incorporate via RFI Response and Bulletin - PC0 0830 (SINK_05) | 9d | 2025-11-06 A | 2025-11-20 A | PCO.830.1040, PCO.830.1050, PCO.830.1060, PCO.830.1170 | 100% |  | as late as possible |
| PCO.830.1170 |  | Design Review Meeting - PC0 0830 (SINK_05) | 1d | 2025-11-12 A | 2025-11-12 A | PCO.830.1060 | 100% |  | as late as possible |
| PCO.830.1080 |  | Issue - Bulletin - PC0 0830 (SINK_05) | 1d | 2025-11-21 A | 2025-11-21 A | PCO.830.1070 | 100% |  |  |
| PCO.830.1090 |  | BIM Coordination - PC0 0830 (SINK_05) | 5d | 2025-12-01 | 2025-12-05 | PCO.830.1080 |  | 33d |  |
| PCO.830.1100 |  | Review Impact to Installed Work - PC0 0830 (SINK_05) | 5d | 2025-12-08 | 2025-12-12 | PCO.830.1090 |  | 33d |  |
| PCO.830.1110 |  | Shop Drawing Revision and Submit per BIM Coordination - PC0 0830 (SINK_05) | 10d | 2025-12-15 | 2025-12-29 | PCO.830.1100 |  | 33d |  |
| PCO.830.1120 |  | NIH Review and Approve - PC0 0830 (SINK_05) | 10d | 2025-12-30 | 2026-01-13 | PCO.830.1110 |  | 33d |  |
| PCO.830.1130 |  | Incorporate Changes in the Field (Demo/Rework) - PC0 0830 (SINK_05) | 5d | 2025-12-30 | 2026-01-06 | PCO.830.1110 |  | 53d |  |
| PCO.830.1140 |  | Long Lead Equip./ Material - Lead/Fab/Deliver - PC0 0830 (SINK_05) | 65d | 2026-01-14 | 2026-04-14 | PCO.830.1120 |  | 121d |  |
| PCO.830.1150 |  | Spool/Fab/Deliver MEP - PC0 0830 (SINK_05) | 15d | 2026-01-14 | 2026-02-03 | PCO.830.1120 |  | 33d |  |
| PCO.830.1160 |  | Trades - Construction Starts - PC0 0830 (SINK_05) | 1d | 2026-02-04 | 2026-02-04 | PCO.830.1130, PCO.830.1150, PCO.830.1080 |  | 33d |  |
|  | 18 | **PCO 0831 - Phase 2C - (NCI_01_02) NCI Lab Modifications - RFP 086** |  | 2025-04-16 | 2026-06-01 |  |  |  |  |
| PCO.831.1000 |  | RFP Received from NIH (4/16 - 4/21) - PC0 0831 (NCI_01_02) | 15d | 2025-04-16 A | 2025-04-21 A | P2C.DES.210 | 100% |  |  |
| PCO.831.1010 |  | Trade Review & Price RFP - PC0 0831 (NCI_01_02) | 11d | 2025-08-15 A | 2025-08-29 A | PCO.831.1000 | 100% |  |  |
| PCO.831.1020 |  | HP - Review & Submits to NIH - PC0 0831 (NCI_01_02) | 2d | 2025-09-02 A | 2025-09-03 A | PCO.831.1010 | 100% |  |  |
| PCO.831.1030 |  | NIH - Review RFP - PC0 0831 (NCI_01_02) | 15d | 2025-09-04 A | 2025-09-24 A | PCO.831.1020 | 100% |  |  |
| PCO.831.1040 |  | NIH - MOD Approval - PC0 0831 (NCI_01_02) | 5d | 2025-09-25 A | 2025-10-01 A | PCO.831.1030 | 100% |  |  |
| PCO.831.1050 |  | HP Issues MOD to TP - PC0 0831 (NCI_01_02) | 5d | 2025-10-02 A | 2025-10-08 A | PCO.831.1040 | 100% |  |  |
| PCO.831.1060 |  | Develop Sketch - PC0 0831 (NCI_01_02) | 9d | 2025-10-06 A | 2025-10-21 A | PCO.831.1040, PCO.831.1050 | 100% |  |  |
| PCO.831.1070 |  | Review with NIH - PC0 0831(NCI_01_02) | 3d | 2025-10-22 A | 2025-10-24 A | PCO.831.1060 | 100% |  |  |
| PCO.831.1080 |  | Architectural Model Update - PC0 0831 (NCI_01_02) | 5d | 2025-10-27 A | 2025-10-31 A | PCO.831.1070 | 100% |  |  |
| PCO.831.1090 |  | Engineering Coordination - PC0 0831 (NCI_01_02) | 10d | 2025-10-29 A | 2025-11-11 A | PCO.831.1080 | 100% |  |  |
| PCO.831.1100 |  | Compile Draft Bulletin- PC0 0831 (NCI_01_02) | 5d | 2025-11-12 A | 2025-11-14 A | PCO.831.1090 | 100% |  |  |
| PCO.831.1110 |  | NIH Review - PC0 0831 (NCI_01_02) | 1d | 2025-11-17 A | 2025-11-19 A | PCO.831.1100 | 100% |  |  |
| PCO.831.1120 |  | Engineering Coordination - PC0 0831 (NCI_01_02) | 5d | 2025-11-24 A | 2025-12-04 | PCO.831.1110 | 20% | 0d |  |
| PCO.831.1130 |  | Compile Final Bulletin Submission - PC0 0831 (NCI_01_02) | 4d | 2025-12-05 | 2025-12-10 | PCO.831.1120 |  | 0d |  |
| PCO.831.1140 |  | NIH Review - PC0 0831 (NCI_01_02) | 2d | 2025-12-11 | 2025-12-12 | PCO.831.1130 |  | 0d |  |
| PCO.831.1150 |  | Finalize Coordination & Print - Bulletin - PC0 0831 (NCI_01_02) | 5d | 2025-12-15 | 2025-12-19 | PCO.831.1140 |  | 0d |  |
| PCO.831.1160 |  | Issue - Bulletin - PC0 0831 (NCI_01_02) | 1d | 2025-12-22 | 2025-12-22 | PCO.831.1150 |  | 0d |  |
| PCO.831.1170 |  | BIM Coordination - PC0 0831 (NCI_01_02) | 20d | 2025-12-23 | 2026-01-21 | PCO.831.1160 |  | 0d |  |
| PCO.831.1180 |  | Review Impact to Installed Work - PC0 0831 (NCI_01_02) | 5d | 2026-01-22 | 2026-01-28 | PCO.831.1170 |  | 0d |  |
| PCO.831.1190 |  | Shop Drawing Revision and Submit per BIM Coordination - PC0 0831 (NCI_01_02) | 10d | 2026-01-29 | 2026-02-11 | PCO.831.1180 |  | 0d |  |
| PCO.831.1200 |  | D-B Review and Approve - PC0 0831 (NCI_01_02) | 10d | 2026-02-12 | 2026-02-25 | PCO.831.1190 |  | 0d |  |
| PCO.831.1210 |  | Incorporate Changes in the Field (Demo/Rework) - PC0 0831 (NCI_01_02) | 5d | 2026-02-12 | 2026-02-18 | PCO.831.1190 |  | 22d |  |
| PCO.831.1220 |  | NIH Review and Approve - PC0 0831 (NCI_01_02) | 2d | 2026-02-26 | 2026-02-27 | PCO.831.1200 |  | 0d |  |
| PCO.831.1230 |  | Long Lead Equip./ Material - Lead/Fab/Deliver - PC0 0831 (NCI_01_02) | 65d | 2026-03-02 | 2026-06-01 | PCO.831.1220 |  | 148d |  |
| PCO.831.1240 |  | Spool/Fab/Deliver MEP - PC0 0831 (NCI_01_02) | 15d | 2026-03-02 | 2026-03-20 | PCO.831.1220 |  | 0d |  |
| PCO.831.1250 |  | Trades - Construction Starts - PC0 0831 (NCI_01_02) | 1d | 2026-03-23 | 2026-03-23 | PCO.831.1210, PCO.831.1240, PCO.831.1040, PCO.831.1160 |  | 0d |  |
|  | 1 | **Design Summary** |  | 2022-04-26 | 2025-05-21 |  |  |  |  |
|  | 1 | **Phase 0 - Pre-work Mobilization** |  | 2022-05-26 | 2022-10-28 |  |  |  |  |
| P0.DSUM.100 |  | Phase 0 - Design Work Plan Summary | 0d | 2022-05-26 A | 2022-10-28 A | P0.DES.100 SS | 100% |  |  |
|  | 5 | **Phase 0A - Temporary Emergency Egress** |  | 2022-09-09 | 2023-05-01 |  |  |  |  |
| P0A.DSUM.100 |  | Phase 0A - Design Work Plan Summary | 69d | 2022-09-09 A | 2023-05-01 A | P0A.DES.100 SS | 100% |  |  |
|  | 8 | **Phase 0B - Interior Window Infills & Temporary Air Intake** |  | 2023-02-23 | 2023-04-27 |  |  |  |  |
| P0A.DSUM.110 |  | Phase 0B - Design Work Plan Summary | 69d | 2023-02-23 A | 2023-04-27 A | P0B.DES.100 SS | 100% |  |  |
|  | 9 | **Phase 0C - Facade Removal** |  | 2023-02-23 | 2023-07-13 |  |  |  |  |
| P0A.DSUM.120 |  | Phase 0C - Design Work Plan Summary | 69d | 2023-02-23 A | 2023-07-13 A | P0C.DES.100 SS | 100% |  |  |
|  | 6 | **Phase 1A - P1 Garage Ventilation and Egress** |  | 2022-10-07 | 2023-04-07 |  |  |  |  |
| P1A.DSUM.100 |  | Phase 1A - Design Work Plan Summary | 69d | 2022-10-07 A | 2023-04-07 A | P1A.DES.570 SS | 100% |  |  |

| ID | WBS | Task | Duration | Start | Finish | Predecessors | Complete | Total float |
| --- | --- | --- | --- | --- | --- | --- | --- | --- |
|  | 2 | **Phase 1 - Site Prep, SOE, Utilities, Below Grade Structure** |  | 2022-05-25 | 2023-08-08 |  |  |  |
| P1.DSUM.140 |  | Phase 1 - 65% Design Summary | 45d | 2022-05-25 A | 2022-11-02 A | P1.DES.115 SS | 100% |  |
| P1.DSUM.150 |  | Phase 1 - 95% Design Summary | 111d | 2022-11-01 A | 2023-03-02 A | P1.DES.270 SS | 100% |  |
| P1.DSUM.160 |  | Phase 1 - 100% IFC Design Summary | 74d | 2023-03-02 A | 2023-08-08 A | P1.DES.350 SS | 100% |  |
|  | 7 | **Phase 2A - Above Grade Structure, Core & Shell** |  | 2023-04-06 | 2024-03-28 |  |  |  |
| P2.DSUM.230 |  | Phase 2 - 95% Design - Summary | 119d | 2023-04-06 A | 2023-11-30 A | P2A.DES.375 SS | 100% |  |
| P2.DSUM.240 |  | Phase 2 - 100% IFC Design - Summary | 113d | 2023-09-25 A | 2024-03-28 A | P2A.DES.495 SS | 100% |  |
|  | 10 | **Phase 2B - Electrical One-Line** |  | 2023-04-06 | 2025-02-07 |  |  |  |
| P2.DSUM.270 |  | Phase 2 - 95% Design - Summary | 119d | 2023-04-06 A | 2023-11-30 A | P2B.DES.605 SS | 100% |  |
| P2.DSUM.280 |  | Phase 2 - 100% IFC Design - Summary | 146d | 2023-10-02 A | 2025-02-07 A | P2B.DES.725 SS | 100% |  |
|  | 3 | **Phase 2C - SRLM Interiors** |  | 2022-04-26 | 2025-03-03 |  |  |  |
| P2.DSUM.210 |  | Phase 2 - 65% TORFP Bridge Documents Validation & Report - Summary | 141d | 2022-04-26 A | 2023-01-13 A | P2.DES.100 SS | 100% |  |
| P2.DSUM.180 |  | Phase 2 - 65% Design - Summary | 102d | 2022-10-24 A | 2023-07-14 A | P2.DES.110 SS | 100% |  |
| P2.DSUM.190 |  | Phase 2 - 95% Design - Summary | 119d | 2023-04-06 A | 2024-07-17 A | P2C.DES.145 SS | 100% |  |
| P2.DSUM.200 |  | Phase 2 - 100% IFC Design - Summary | 170d | 2023-11-01 A | 2025-03-03 A | P2C.DES.180 SS | 100% |  |
|  | 4 | **Phase 5 - West Wing Renovations** |  | 2022-06-09 | 2025-05-21 |  |  |  |
| P5.DSUM.230 |  | Phase 5 - 65% Design - Summary | 214d | 2022-06-09 A | 2024-01-03 A | P5.DES.140 SS | 100% |  |
| P5.DSUM.240 |  | Phase 5 - 95% Design - Summary | 145d | 2023-11-01 A | 2024-10-30 A | P5.DES.210 SS | 100% |  |
| P5.DSUM.250 |  | Phase 5 - 100% IFC Design - Summary | 157d | 2024-06-24 A | 2025-05-21 A | P5.DES.280 SS | 100% |  |
|  | 5 | **Construction Phase Summary** |  | 2022-10-24 | 2029-01-25 |  |  |  |
|  | 1 | **Phase 0 - Enabling Work Plans** |  | 2022-10-24 | 2024-04-12 |  |  |  |
| P0.SUM.110 |  | Phase 0 - Site Prep Logistics & Mobilization - Summary | 110d | 2022-10-24 A | 2023-07-24 A | P0.SPM.100 SS | 100% |  |
| P0.SUM.100 |  | Phase 0 - TVIF - Summary | 75d | 2023-01-30 A | 2023-07-25 A | P1.TVIF.100 SS | 100% |  |
| P0.SUM.130 |  | Phase 0B - Interior Window Infills (Interior Work) - Summary | 35d | 2023-04-17 A | 2023-06-30 A | P0.B.CRC.120 SS | 100% |  |
| P0.SUM.120 |  | Phase 0A - Temporary Emergency Egress - Summary | 110.25d | 2023-05-22 A | 2023-09-28 A | P0.CRC.110 SS, P0.A.CRC.210 SS | 100% |  |
| P0.SUM.150 |  | Phase 0B - Temporary Air Intake (Exterior Work) - Summary | 6d | 2023-07-03 A | 2023-07-11 A | P0.B.CRC.100 SS | 100% |  |
| P0.SUM.140 |  | Phase 0C - Facade Removal - Summary | 41d | 2023-07-17 A | 2024-04-12 A | P0.C.CRC.100 SS | 100% |  |
|  | 2 | **Phase 1 Below Grade Structure** |  | 2023-01-09 | 2025-06-18 |  |  |  |
| P1.SUM.100 |  | Phase 1 - Garage Ventilation & Plumbing Reconfiguation Summary | 191d | 2023-01-09 A | 2023-10-31 A | P1A.GARV.110 SS | 100% |  |
| P1.SUM.120 |  | Phase 1 - Site Prep, Support of Excavation & Excavation Summary | 150d | 2023-06-19 A | 2024-03-06 A | P1.CIV.290 SS | 100% |  |
| P1.SUM.140 |  | Phase 1 - Main Storm Drain Relocation Summary | 111d | 2023-07-12 A | 2024-02-14 A | P1.UTL.100 SS | 100% |  |
| P1.SUM.105 |  | Phase 1 - Deep Foundations Summary | 65d | 2024-01-05 A | 2024-06-11 A | P1.B3.03.430 SS | 100% |  |
| P1.SUM.135 |  | Phase 1 - Level B3/B2 Structure Summary (includes Slab on Grade) | 55d | 2024-01-05 A | 2024-07-09 A | P1.B3.03.430 SS | 100% |  |
| P1.SUM.145 |  | Phase 1 - Level B1/L1 Structure Summary | 61d | 2024-04-22 A | 2024-06-20 A | P1.1.03.110 SS | 100% |  |
| P1.SUM.175 |  | Phase 1 - Utility Tunnel Summary (includes MEP Install Pre-Fab Piping) | 151d | 2024-06-20 A | 2024-10-22 A | P1.B2.03.340 SS, P1.B2.03.440 SS | 100% |  |
| P1.SUM.185 |  | Phase 1 - Utility Tunnel Summary - MEP Install/Fit/Weld Pre-Fab Piping | 41d | 2024-09-04 A | 2025-06-18 A | P1.UT.Z1.100 SS | 100% |  |
| P1.SUM.115 |  | Phase 1 - Sequence A - Pedestrian Tunnel Structure Summary | 62d | 2024-09-09 A | 2025-05-30 A | P1.PED.160 SS, P1.SUM.155 SS | 100% |  |
| P1.SUM.155 |  | Phase 1 - Pedestrian Tunnel Structure - East Summary | 0d | 2024-09-09 A | 2025-05-30 A | P1.PED.310 SS | 100% |  |
| P1SUM.198 |  | Phase 1- Structure Complete to Grade (Level 1 Slab Complete) | 0d | 2024-09-12 A | 2024-09-12 A | P1.1.03.690 FF | 100% |  |
|  | 3 | **Phase 2 Above Grade Structure** |  | 2024-07-24 | 2028-11-03 |  |  |  |
| P2.SUM.155 |  | Phase 2 - Above Grade Structure Summary (L2 - Penthouse) | 159d | 2024-07-24 A | 2025-04-01 A | P2.2.03.110 SS, P1SUM.198 FF | 100% |  |
| P2SUM.208 |  | Phase 2- MEP Rough in & Partitions Summary (B3,B2,B1 Levels) | 292d | 2024-09-02 A | 2026-04-21 | P2.B3.1000 SS | 66% | 34d |
| P2SUM.218 |  | Phase 2- MEP Utility Tunnel Build Out Summary (Below L1) | 170d | 2024-09-04 A | 2026-01-13 | P1.UT.Z2.120 SS, P1.UT.Z1.120 SS, P1.UT.Z3.120 SS | 82% | 94d |
| P2.SUM.195 |  | Phase 2 - MEP Rough in & Partitions Summary (L1 - Penthouse) | 240d | 2024-11-11 A | 2026-02-13 | P2.L1.S.1000 SS | 78% | 54d |
| P2.SUM.165 |  | Phase 2 - Exterior Enclosure & Roofing Summary (L2 - Penthouse) | 345d | 2025-03-03 A | 2026-08-13 | P2.FAC.1.F.120 SS | 48% | 109d |
| P2.SUM.185 |  | Phase 2- Structure Topping Out | 0d | 2025-04-04 A | 2025-04-04 A | P2.PR.03.520 FF | 100% |  |
| P2.SUM.255 |  | Phase 2 - Vertical Transportation Summary | 123d | 2025-07-28 A | 2026-07-13 | P2.6-9.1000 SS, P2.2-10.1000 SS, P2.5-8.1000 SS, P2.3-10.1000 SS, P2.5-10.1000 SS, P2.G3.14.0010 SS, P2.2-9.1000 SS, P2.G4.14.0070 SS, P2.5-9.1000 SS, P2.2-8.1000 SS, P2.GP1.14.130 SS, P2.G2.14.0010 SS |  | 197d |
| P2.SUM.175 |  | Phase 2 - SRLM Weather Tight | 0d | 2025-12-01 A | 2025-12-01 A | P2.FAC.1.Z3.120 FF, P2.FAC.1.Z1.190 FF, P2.FAC.1.F.160 FF, P2.SUM.185 FF, P2.PR.N.1080 FF, P2.MR.5-8.140 FF, P2.MR.EMT.1080 FF, P2.LR.L7.170 FF, P2.FAC.1.Z2.120 FF | 100% |  |
| P2.SUM.235 |  | Phase 2 - Permanent Power Active | 0d | 2026-01-30 | 2026-01-30 | CX.B2.SWGR.1010 FF, CX.B2.MVEE.1010 FF |  | 311d |
| P2.SUM.205 |  | Phase 2 - Interior Finishes-Fit Out Summary (Below L1) | 191d | 2026-03-04 | 2026-12-02 | P2.B3.2000 SS |  | 55d |
| P2.SUM.215 |  | Phase 2 - Interior Finishes-Fit Out Summary (L1 - Penthouse) | 118d | 2026-03-04 | 2026-08-18 | P2.L1.F.CS.1000 SS |  | 125d |
| P2.SUM.245 |  | Phase 2 - Start up HVAC Systems to Support Commissioning | 0d | 2026-04-28 | 2026-04-28 | CX.B2.AHU.1000 FF, CX.B2.AHU.2000 FF, CX.L1.AHU.1000 FF |  | 219d |
| P2.SUM.225 |  | Phase 2 - Pre-functional & Functional Commissioning Summary | 174d | 2026-04-30 | 2027-01-07 | CX.B2.SWGR.1030, CX.B2.SWGR.1040, CX.B2.MVEE.1020, CX.B2.GSE.1030, CX.B2.SPLT.1030, CX.B2.AHU.2030, CX.B2.AHU.1030, CX.B2.PCW.1030, CX.B2.MGE.1030, CX.B2.MPE.1040, CX.B2.WHS.1030, CX.B2.CSH.1030, CX.B2.SS.1020, CX.B2.RWS.1030, CX.L1.AHU.1030, CX.L1.SWGR.1010, CX.B2.GMPRH.1030, CX.B2.GMPGW.1030, CX.B2.CWS.1030, CX.L3.SWGR.1010, CX.L2.GSE.1030, CX.L2.AHU.1030, CX.L1.GSE.1030, CX.L1.CTS.1030, CX.L1.MRIS.1030, CX.L3.GSE.1030, CX.L3.AHU.1030, CX.L3.UPS.1010 |  | 39d |
| P2.SUM.275 |  | Phase 2 - Removal & Restoration of Center Drive (Post Phase 2 Completion) | 575d | 2026-08-03 | 2028-11-03 | P2.DMSR.120 SS |  | 2d |
| P2.SUM.265 |  | Phase 2 - Level 5 Commissioning, Life Safety Testing & Acceptance Inspections | 132d | 2026-10-14 | 2027-04-21 | CX.FHVAC.1000, CX.FS.1060, CX.FA.1040 |  | 0d |
|  | 4 | **Phase 5 - CRC F Wing Renovation (Draft)** |  | 2027-10-19 | 2029-01-25 |  |  |  |
| P5.SUM.255 |  | Phase 5 - Mobilization/DcX MEP Systems/Interior Demo Summary | 123d | 2027-10-19 | 2028-04-12 | P5.CRC.110 SS |  | 0d |
| P5.SUM.265 |  | Phase 5 - MEP Systems Rough in & Interior Fit Out Summary | 176d | 2028-02-29 | 2028-11-03 | P5.CRC.160 SS |  | 0d |
| P5.SUM.275 |  | Phase 5 - Commissioning/Punchlist/Acceptance Summary | 55d | 2028-11-06 | 2029-01-25 | P5.CRC.140 SS |  | 0d |
|  | 5 | **Weather Impact** |  |  |  |  |  |  |
|  | 6 | **Weather Impact** |  | 2024-03-13 | 2025-02-28 |  |  |  |
| WEATHER.TIA1000 |  | Weather Impact 1 - 02.14.2024 | 1d | 2024-03-13 A | 2024-03-13 A | P1.B3.03.110 | 100% |  |
| WEATHER.TIA1010 |  | Weather Impact 2 - 02.15.2024 | 1d | 2024-03-14 A | 2024-03-14 A | WEATHER.TIA1000 | 100% |  |
| WEATHER.TIA1020 |  | Weather Impact 3 - 05.14.2024 | 1d | 2024-05-15 A | 2024-05-15 A | P1.B2.03.310 | 100% |  |
| WEATHER.TIA1030 |  | Weather Impact 4 - 05.15.2024 | 1d | 2024-05-16 A | 2024-05-16 A | WEATHER.TIA1020 | 100% |  |
| WEATHER.TIA1040 |  | Weather Impact 5 - 05.21.2024 | 1d | 2024-07-05 A | 2024-07-05 A | P1.B2.03.220, P1.B2.20.120 | 100% |  |
| WEATHER.TIA1050 |  | Weather Impact 6 - 05.22.2024 | 1d | 2024-07-08 A | 2024-07-08 A | WEATHER.TIA1040 | 100% |  |
| WEATHER.TIA1060 |  | Weather Impact 7 - 08.07.2024 | 1d | 2024-08-13 A | 2024-08-13 A | P2.2.03.210 | 100% |  |
| WEATHER.TIA1070 |  | Weather Impact 8 - 08.08.2024 | 1d | 2024-08-14 A | 2024-08-14 A | WEATHER.TIA1060 | 100% |  |
| WEATHER.TIA1080 |  | Weather Impact 9 - 09.18.2024 | 1d | 2024-09-18 A | 2024-09-18 A | P2.3.03.220 | 100% |  |

| ID | WBS | Task | Duration | Start | Finish | Predecessors | Complete |
| --- | --- | --- | --- | --- | --- | --- | --- |
| WEATHER.TIA1090 |  | Weather Impact 10 - 10.01.2024 | 1d | 2024-10-01 A | 2024-10-01 A | P2.4.03.120 | 100% |
| WEATHER.TIA1100 |  | Weather Impact 11 - 12.05.2024 | 1d | 2024-12-09 A | 2024-12-09 A | P2.7.03.210, P2.7.20.210 | 100% |
| WEATHER.TIA1110 |  | Weather Impact 12 - 12.09.2024 | 1d | 2024-12-10 A | 2024-12-10 A | WEATHER.TIA1100 | 100% |
| WEATHER.TIA1120 |  | Weather Impact 13 - 12.11.2024 | 1d | 2024-12-12 A | 2024-12-12 A | P2.7.03.310 | 100% |
| WEATHER.TIA1130 |  | Weather Impact 14 - 01.03.2025 | 1d | 2025-01-13 A | 2025-01-13 A | P2.8.03.120 | 100% |
| WEATHER.TIA1140 |  | Weather Impact 15 - 01.06.2025 | 1d | 2025-01-14 A | 2025-01-14 A | WEATHER.TIA1130 | 100% |
| WEATHER.TIA1150 |  | Weather Impact 16 - 01.07.2025 | 1d | 2025-01-15 A | 2025-01-15 A | WEATHER.TIA1140 | 100% |
| WEATHER.TIA1160 |  | Weather Impact 17- 01.08.2025 | 1d | 2025-01-16 A | 2025-01-16 A | WEATHER.TIA1150 | 100% |
| WEATHER.TIA1170 |  | Weather Impact 18- 01.20.2025 | 1d | 2025-01-28 A | 2025-01-28 A | P2.8.03.230 | 100% |
| WEATHER.TIA1180 |  | Weather Impact 19 - 01.21.2025 | 1d | 2025-01-29 A | 2025-01-29 A | WEATHER.TIA1170 | 100% |
| WEATHER.TIA1190 |  | Weather Impact 20 - 01.22.2025 | 1d | 2025-01-30 A | 2025-01-30 A | WEATHER.TIA1180 | 100% |
| WEATHER.TIA1200 |  | Weather Impact 21 - 02.11.2025 | 1d | 2025-02-28 A | 2025-02-28 A | P2.MR/PS.03.130 | 100% |
|  | 2 | **DESIGN** |  | 2022-04-20 | 2027-04-05 |  |  |
|  | 6 | **Pre-Design Submittals** |  | 2022-04-26 | 2023-04-14 |  |  |
| PDS.110 |  | Prepare & Submit - Design Schedule | 15d | 2022-04-26 A | 2022-05-13 A | EXS.100 | 100% |
| PDS.140 |  | Prepare & Submit - Initial T&D Submittal Schedule | 15d | 2022-04-26 A | 2022-05-13 A | EXS.100 | 100% |
| PDS.220 |  | Prepare & Submit - Geotechnical Investigation Work Plan | 10d | 2022-04-26 A | 2022-05-03 A | EXS.100 | 100% |
| PDS.230 |  | NIH Review & Approve - Geotechnical Investigation Work Plan | 10d | 2022-05-04 A | 2022-05-19 A | PDS.220 | 100% |
| PDS.240 |  | Prepare & Submit - BIM Execution Plan | 20d | 2022-05-06 A | 2023-04-14 A | PDS.110, PD2.DES.099 SS, P2.DES.100 | 100% |
| PDS.150 |  | NIH Review & Approve - Initial T&D Submittal Schedule | 10d | 2022-05-14 A | 2022-05-26 A | PDS.140 | 100% |
| PDS.260 |  | NIH Review & Approve - Design Schedule | 10d | 2022-05-14 A | 2022-05-26 A | PDS.110 | 100% |
| PDS.270 |  | Prepare & Submit - Test Pit Work Plan | 5d | 2022-06-23 A | 2022-06-28 A | PDS.220, PDS.220 SS | 100% |
| PDS.280 |  | NIH Review & Approve - Test Pit Work Plan | 10d | 2022-06-28 A | 2022-07-27 A | PDS.270 | 100% |
| PDS.250 |  | Review & Approve - BIM Execution Plan | 10d | 2022-08-10 A | 2022-11-04 A | PDS.240 | 100% |
|  | 1 | **Phase 0 - Design Work Package (Enabling)** |  | 2022-05-26 | 2023-07-17 |  |  |
|  | 1 | **Phase 0 - Work Plan Development (Enabling)** |  | 2022-05-26 | 2022-11-04 |  |  |
| P0.DES.116 |  | Site Survey, Site Utility Investigation/Verification | 15d | 2022-05-26 A | 2022-06-15 A | PWS.210 | 100% |
| P0.DES.252 |  | Geotechnical Investigation | 20d | 2022-06-09 A | 2022-06-17 A | P0.DES.116 SS+10d | 100% |
| P0.DES.264 |  | Laboratory Analysis & Geotechnical Memo for 65% Phase 1 | 30d | 2022-06-20 A | 2022-08-03 A | P0.DES.252 SS+10d | 100% |
| P0.DES.100 |  | Develop - Preliminary Phase 0 Design | 30d | 2022-07-05 A | 2022-08-19 A | P2.DES.100 SS, P0.DES.116 SS+15d | 100% |
| P0.DES.262 |  | Perform Test Pits at Center Drive | 5d | 2022-07-27 A | 2022-07-29 A | PDS.280, P0.DES.116 SS+10d | 100% |
| P0.DES.112 |  | Prepare & Submit - Phase 0 Work Plan | 2d | 2022-08-22 A | 2022-08-26 A | P0.DES.100 | 100% |
| P0.DES.105 |  | NIH Review - Phase 0 Work Plan (calender days) | 21d | 2022-08-29 A | 2022-09-18 A | P0.DES.112, PDS.260, PDS.150, PWS.130 FF, PWS.150 FF | 100% |
| P0.DES.240 |  | Prepare MDE Permit for Phase 0 Limits of Disturbance | 2d | 2022-09-16 A | 2022-09-21 A | P0.DES.105 SS | 100% |
| P0.DES.110 |  | Reconcile Comments - Phase 0 Work Plan | 10d | 2022-09-19 A | 2022-09-30 A | P0.DES.105 | 100% |
| P0.DES.150 |  | NIH/HP Conference Review - Phase 0 Work Plan | 2d | 2022-09-26 A | 2022-09-26 A | P0.DES.110 | 100% |
| P0.DES.155 |  | Clean-up/Back-Check Initial Submission - "For Record" Phase 0 Work Plan | 5d | 2022-09-30 A | 2022-10-13 A | P0.DES.150 | 100% |
| P0.DES.160 |  | NIH Review & Approve - "For Record" Phase 0 Work Plan | 5d | 2022-10-14 A | 2022-11-04 A | P0.DES.155 | 100% |
| P0.DES.165 |  | Approved - "For Record" IFC Phase 0 Work Plan | 0d | 2022-11-04 A | 2022-11-04 A | PDS.250 FF, P0.DES.160, P0.DSUM.100 FF | 100% |
|  | 2 | **Phase 0A - Temporary Emergency Egress** |  | 2022-09-09 | 2023-07-17 |  |  |
| P0A.DES.100 |  | HP / Design Team - Design & Develop - Work Plan - Phase 0A | 30d | 2022-09-09 A | 2023-01-26 A | P2.DES.100 SS | 100% |
| P0A.DES.110 |  | HP / Design Team - Prepare & Submit - Work Plan - Phase 0A | 2d | 2023-01-27 A | 2023-01-30 A | P0A.DES.100 | 100% |
| P0A.DES.120 |  | NIH - Review - Work Plan - Phase 0A | 15d | 2023-01-31 A | 2023-02-24 A | P0A.DES.110 | 100% |
| P0A.DES.130 |  | HP / Design Team - Review and Reconcile NIH Comments - Work Plan - Phase 0A | 10d | 2023-02-27 A | 2023-03-06 A | P0A.DES.120 | 100% |
| P0A.DES.170 |  | HP / Design Team - Review and Reconcile NIH Final Submission Comments - Work Plan - Phase 0A | 5d | 2023-03-03 A | 2023-04-06 A | P0A.DES.160 | 100% |
| P0A.DES.140 |  | NIH / HP / Design Team - Conference Review - Work Plan - Phase 0A | 2d | 2023-03-09 A | 2023-03-09 A | P0A.DES.130 | 100% |
| P0A.DES.150 |  | HP / Design Team - Incorporate Conf Review Comments & Submit Final Submission - Work Plan - Phase 0A | 10d | 2023-03-10 A | 2023-03-21 A | P0A.DES.140 FF, P0A.DES.130 | 100% |
| P0A.DES.160 |  | NIH - Review - Final Submission - Work Plan - Phase 0A | 15d | 2023-03-22 A | 2023-04-06 A | P0A.DES.150 | 100% |
| P0A.DES.190 |  | NIH AHJ - CRA (Construction Risk Assessment) Analysis and Approval - Work Plan - Phase 0A | 5d | 2023-04-04 A | 2023-05-23 A | BP3.024.1.110, P0A.DES.200 SS | 100% |
| P0A.DES.200 |  | NIH - Backcheck Final Submission - Work Plan - Phase 0A | 5d | 2023-04-17 A | 2023-05-01 A | P0A.DES.170 | 100% |
| P0A.DES.210 |  | NIH - Review & Approve - Final Submission - Work Plan - Phase 0A | 5d | 2023-04-17 A | 2023-05-02 A | P0A.DES.180 FF, P0A.DES.190 FF | 100% |
| P0A.DES.220 |  | NIH - Work Plan Approval Memo Issued - Phase 0A | 0d | 2023-05-02 A | 2023-05-02 A | P0A.DES.210 FF, P0A.DSUM.100 FF | 100% |
| P0A.DES.180 |  | NIH AHJ - ILSM (Interim Life Safety Measures) Analysis and Approval - Work Plan - Phase 0A | 5d | 2023-07-14 A | 2023-07-17 A | BP3.024.1.110, P0A.DES.200 SS | 100% |
|  | 5 | **Phase 0B - Interior Window Infills & Temporary Air Intake** |  | 2023-02-23 | 2023-04-27 |  |  |
| P0B.DES.100 |  | HP / Design Team - Design & Develop - Work Plan - Phase 0B | 30d | 2023-02-23 A | 2023-03-07 A | P0A.DES.120 | 100% |
| P0B.DES.110 |  | HP / Design Team - Prepare & Submit - Work Plan - Phase 0B | 2d | 2023-03-08 A | 2023-03-09 A | P0B.DES.100 | 100% |
| P0B.DES.120 |  | NIH - Review - Work Plan - Phase 0B | 15d | 2023-03-10 A | 2023-03-30 A | P0B.DES.110 | 100% |
| P0B.DES.130 |  | NIH AHJ - ILSM (Interim Life Safety Measures) Analysis and Approval - Work Plan - Phase 0B | 10d | 2023-03-17 A | 2023-03-30 A | P0B.DES.120 FF | 100% |
| P0B.DES.140 |  | NIH AHJ - CRA (Construction Risk Assessment) Analysis and Approval - Work Plan - Phase 0B | 10d | 2023-03-17 A | 2023-03-30 A | P0B.DES.120 FF | 100% |
| P0B.DES.150 |  | HP / Design Team - Incorporate Review Comments & Submit Final Submission - Work Plan - Phase 0B | 5d | 2023-03-31 A | 2023-04-06 A | P0B.DES.120 | 100% |
| P0B.DES.160 |  | NIH - Review & Approve - Final Submission - Work Plan - Phase 0B | 5d | 2023-04-07 A | 2023-04-27 A | P0B.DES.140 FF, P0B.DES.130 FF, P0B.DES.150 | 100% |
| P0B.DES.170 |  | NIH - Work Plan Approval Memo Issued - Phase 0B | 0d | 2023-04-27 A | 2023-04-27 A | P0B.DES.160 FF, P0A.DSUM.110 FF | 100% |
|  | 4 | **Phase 0C - Facade Removal** |  | 2023-02-23 | 2023-07-03 |  |  |
| P0C.DES.100 |  | HP / Design Team - Design & Develop - Work Plan - Phase 0C | 30d | 2023-02-23 A | 2023-03-15 A | P0A.DES.120 | 100% |
| P0C.DES.110 |  | HP / Design Team - Prepare & Submit - Work Plan - Phase 0C | 2d | 2023-03-16 A | 2023-03-17 A | P0C.DES.100 | 100% |
| P0C.DES.120 |  | NIH - Review - Work Plan - Phase 0C | 15d | 2023-03-20 A | 2023-04-06 A | P0C.DES.110 | 100% |
| P0C.DES.130 |  | HP / Design Team - Review and Reconcile NIH Comments - Work Plan - Phase 0C | 5d | 2023-04-07 A | 2023-04-19 A | P0C.DES.120 | 100% |
| P0C.DES.150 |  | HP / Design Team - Incorporate Conf Review Comments & Submit Final Submission - Work Plan - Phase 0C | 5d | 2023-04-07 A | 2023-04-19 A | P0C.DES.130 | 100% |
| P0C.DES.160 |  | NIH - Backcheck Final Submission - Phase 0C | 10d | 2023-04-20 A | 2023-05-12 A | P0C.DES.150 | 100% |
| P0C.DES.190 |  | NIH - Review & Approve - Final Submission - Work Plan - Phase 0C | 5d | 2023-06-05 A | 2023-06-07 A | P0C.DES.170 FF, P0C.DES.180 FF, P0C.DES.160 | 100% |

| ID | WBS | Task | Duration | Start | Finish | Predecessors | Complete |
| --- | --- | --- | --- | --- | --- | --- | --- |
| P0C.DES.170 |  | NIH AHJ - ILSM (Interim Life Safety Measures) Analysis and Approval - Work Plan - Phase 0C | 8d | 2023-07-03 A | 2023-07-03 A | BP3.024.1.120, P0C.DES.160 SS | 100% |
| P0C.DES.180 |  | NIH AHJ - CRA (Construction Risk Assessment) Analysis and Approval - Work Plan - Phase 0C | 8d | 2023-07-03 A | 2023-07-03 A | BP3.024.1.120, P0C.DES.160 SS | 100% |
| P0C.DES.200 |  | NIH - Work Plan Approval Memo Issued - Phase 0C | 0d | 2023-07-03 A | 2023-07-03 A | P0C.DES.190 FF, P0A.DSUM.120 FF | 100% |
|  | 4 | **Phase 1A - P1 Garage Ventilation** |  | 2022-10-07 | 2023-04-07 |  |  |
|  | 2 | **100% IFC Design Package** |  | 2022-10-07 | 2023-04-07 |  |  |
| P1A.DES.570 |  | Develop - Phase 1A Design Package - 100% - P1 Garage Ventilation and Egress | 20d | 2022-10-07 A | 2022-10-28 A | P1.DES.322, P1.DES.130 | 100% |
| P1A.DES.580 |  | Internal Design QC- Phase 1A 100% Design Package - P1 Garage Ventilation and Egress | 10d | 2022-10-29 A | 2022-11-16 A | P1A.DES.570 | 100% |
| P1A.DES.590 |  | Prepare & Submit - Phase 1A 100% Design Package - P1 Garage Ventilation and Egress | 5d | 2022-11-17 A | 2022-11-18 A | P1A.DES.580 | 100% |
| P1A.DES.600 |  | NIH Review - Phase 1A Design Package 100% - P1 Garage Ventilation and Egress | 30d | 2022-11-21 A | 2022-12-13 A | P1A.DES.590 | 100% |
| P1A.DES.610 |  | Reconcile Comments - Phase 1A Design Package 100% - P1 Garage Ventilation and Egress | 10d | 2022-12-22 A | 2023-01-20 A | P1A.DES.600 | 100% |
| P1A.DES.620 |  | Conference Review - Phase 1A Design Package 100% - P1 Garage Ventilation and Egress | 1d | 2023-01-06 A | 2023-01-06 A | P1A.DES.610 | 100% |
| P1A.DES.630 |  | Clean-up/Back-Check Final Submission - Phase 1A Design Package 100% - P1 Garage Ventilation and Egress | 5d | 2023-01-25 A | 2023-02-03 A | P1A.DES.620 | 100% |
| P1A.DES.640 |  | Final Submission Review & Approve Phase 1A Design Package 100% - P1 Garage Ventilation and Egress | 10d | 2023-02-06 A | 2023-04-07 A | P1A.DES.630 | 100% |
| P1A.DES.650 |  | Design Approved - Phase 1A Design Package 100% - P1 Garage Ventilation and Egress | 0d | 2023-04-07 A | 2023-04-07 A | P1A.DES.640, P1A.DSUM.100 FF | 100% |
|  | 2 | **Phase 1 Design Package (Site Prep, SOE, Utilities, Below Grade Struct)** |  | 2022-05-12 | 2023-07-14 |  |  |
|  | 1 | **65% Design Package** |  | 2022-05-12 | 2022-11-01 |  |  |
| P1.DES.101 |  | Program Validation of TORFP Bridging Documents - Phase 1 Design Scope | 35d | 2022-05-12 A | 2022-08-17 A | P2.DES.100 | 100% |
| P1.DES.115 |  | Develop - Phase 1 Design Package - 65% Site Prep, Excavation, Utility Relocation,SOE | 50d | 2022-05-25 A | 2022-08-02 A | P0.DES.116 FF+15d, P0.DES.262 FF+10d, P1.DES.101 SS+9d | 100% |
| P1.DES.291 |  | Internal Design QC- 65% Design Package Phase 1 | 10d | 2022-08-03 A | 2022-08-17 A | P1.DES.115 | 100% |
| P1.DES.301 |  | Prepare & Submit - 65% Design Package Phase 1 | 5d | 2022-08-18 A | 2022-08-23 A | P1.DES.291 | 100% |
| P1.DES.105 |  | NIH Review - 65% Site Prep, Excavation, Utility Relocation,SOE (calender days) | 30d | 2022-08-24 A | 2022-09-29 A | P0.DES.264, P1.DES.301, PWS.170 | 100% |
| P1.DES.111 |  | Reconcile Comments - 65% Site Prep, Excavation, Utility Relocation,SOE | 10d | 2022-09-30 A | 2022-10-18 A | P1.DES.105 SS+25d | 100% |
| P1.DES.112 |  | Conference Review - 65% Site Prep, Excavation, Utility Relocation,SOE | 2d | 2022-10-19 A | 2022-10-19 A | P1.DES.111 | 100% |
| P1.DES.120 |  | Clean-up/Back-Check Pre-Final Submission - 65% Site Prep, Excavation, Utility Relocation,SOE | 10d | 2022-10-19 A | 2022-10-19 A | P1.DES.112 | 100% |
| P1.DES.125 |  | Pre-Final Submission Review & Approve -65% Site Prep, Excavation, Utility Relocation,SOE | 10d | 2022-10-21 A | 2022-11-01 A | P1.DES.120 | 100% |
| P1.DES.130 |  | Design Approved - 65% Site Prep, Excavation, Utility Relocation,SOE | 0d | 2022-11-01 A | 2022-11-01 A | P1.DES.125, P1.DSUM.140 FF | 100% |
|  | 2 | **95% Design Package** |  | 2022-09-06 | 2023-03-02 |  |  |
| P1.DES.322 |  | Prepare Final Geotechinal Report for Phase 1 - 95% Design | 30d | 2022-09-06 A | 2022-10-03 A | P1.DES.105 | 100% |
| P1.DES.270 |  | Develop - Phase 1 Design Package - 95% Site Prep, Excavation, Utility Relocation,SOE | 20d | 2022-11-01 A | 2022-11-18 A | P1.DES.322, P1.DES.130 | 100% |
| P1.DES.340 |  | Prepare MDE Permit Docs for Phase 1 Land Disturbance | 5d | 2022-11-01 A | 2022-12-22 A | P1.DES.440 SS | 100% |
| P1.DES.430 |  | Internal Design QC- 95% Design Package Phase 1 | 10d | 2022-11-21 A | 2022-12-14 A | P1.DES.270 | 100% |
| P1.DES.440 |  | Prepare & Submit - 95% Design Package Phase 1 | 5d | 2022-12-15 A | 2022-12-21 A | P1.DES.430 | 100% |
| P1.DES.280 |  | NIH Review - 95% Site Prep, Excavation, Utility Relocation,SOE (calender days) | 30d | 2022-12-22 A | 2023-01-23 A | P1.DES.440 | 100% |
| P1.DES.290 |  | Reconcile Comments -95% Site Prep, Excavation, Utility Relocation,SOE | 15d | 2023-01-24 A | 2023-02-17 A | P1.DES.280 | 100% |
| P1.DES.300 |  | Conference Review - 95% Site Prep, Excavation, Utility Relocation,SOE | 2d | 2023-02-20 A | 2023-02-21 A | P1.DES.290 | 100% |
| P1.DES.310 |  | Clean-up/Back-Check Pre-Final Submission - 95% Site Prep, Excavation, Utility Relocation,SOE | 10d | 2023-02-22 A | 2023-02-28 A | P1.DES.300 | 100% |
| P1.DES.320 |  | Pre-Final Submission Review & Approve 95% Site Prep, Excavation, Utility Relocation,SOE | 10d | 2023-03-02 A | 2023-03-02 A | P1.DES.310 | 100% |
| P1.DES.330 |  | Design Approved - 95% Site Prep, Excavation, Utility Relocation,SOE | 0d | 2023-03-02 A | 2023-03-02 A | P1.DES.320, P1.DSUM.150 FF | 100% |
|  | 3 | **100% IFC- Design Package** |  | 2023-03-02 | 2023-07-14 |  |  |
| P1.DES.350 |  | Develop - Phase 1 Design Package - 100% IFC Site Prep, Excavation, Utility Relocation,SOE | 10d | 2023-03-02 A | 2023-03-20 A | P1.DES.330 | 100% |
| P1.DES.450 |  | Internal Design QC- 100% IFC Site Prep, Excavation, Utility Relocation,SOE | 5d | 2023-03-21 A | 2023-03-29 A | P1.DES.350 | 100% |
| P1.DES.460 |  | Prepare & Submit - 100% IFC Site Prep, Excavation, Utility Relocation,SOE | 4d | 2023-04-04 A | 2023-04-07 A | P1.DES.450 | 100% |
| P1.DES.360 |  | NIH Review -100% IFC Site Prep, Excavation, Utility Relocation,SOE (calender days) | 30d | 2023-04-10 A | 2023-05-09 A | P1.DES.460 | 100% |
| P1.DES.370 |  | Reconcile Comments - 100% IFC Site Prep, Excavation, Utility Relocation,SOE | 15d | 2023-05-10 A | 2023-05-31 A | P1.DES.360 | 100% |
| P1.DES.375 |  | Reconcile Comments - Additional Comment Resolution Time - 100% IFC Site Prep, Excavation, Utility Relocation,SOE | 1d | 2023-05-19 A | 2023-06-08 A | P1.DES.370 | 100% |
| P1.DES.380 |  | Conference Review - 100% IFC Site Prep, Excavation, Utility Relocation,SOE | 1d | 2023-06-02 A | 2023-06-02 A | P1.DES.400 SS+2d | 100% |
| P1.DES.400 |  | Clean-up/Back-Check Pre-Final Submission - 100% IFC Site Prep, Excavation, Utility Relocation,SOE | 10d | 2023-06-09 A | 2023-06-15 A | P1.DES.375 | 100% |
| P1.DES.410 |  | Pre-Final Submission Review & Approve - 100% IFC Site Prep, Excavation, Utility Relocation,SOE | 10d | 2023-06-16 A | 2023-06-30 A | P1.DES.380, P1.DES.400 | 100% |
| P1.DES.415 |  | NIH Green Permit Prepare & Issue - 100% IFC Site Prep, Excavation, Utility Relocation,SOE | 5d | 2023-07-03 A | 2023-07-14 A | P1.DES.410 | 100% |
| P1.DES.420 |  | Design Approved - 100% IFC Site Prep, Excavation, Utility Relocation,SOE | 0d | 2023-07-14 A | 2023-07-14 A | P1.DES.415 FF, P1.DSUM.160 FF | 100% |
|  | 10 | **Phase 2 Design Package (Combined)** |  | 2022-04-20 | 2023-07-29 |  |  |
|  | 1 | **65% Design Package** |  | 2022-04-20 | 2023-07-29 |  |  |
| PD2.DES.099 |  | Post Award Kick off Meeeting Prep & Agenda | 10d | 2022-04-20 A | 2022-04-26 A | EXS.100 | 100% |
| P2.DES.100 |  | Post Award Design Kick Off Meeting | 2d | 2022-04-26 A | 2022-04-26 A | PD2.DES.099 | 100% |
| P2.DES.305 |  | Program Validation of TORFP Bridging Documents - Phase 2 + Phase 5 Scope | 140d | 2022-05-12 A | 2022-10-24 A | P2.DES.100 | 100% |
| P2.DES.315 |  | Develop - Bid Package Progress Set - Structure, Core & Shell, Interiors | 110d | 2022-05-12 A | 2022-10-21 A | P2.DES.305 FF, P1.DES.101 SS+25d | 100% |
| P2.DES.110 |  | Develop - 65% Design Package - Structure, Core & Shell, Interiors | 30d | 2022-10-22 A | 2023-01-19 A | P2.DES.315 | 100% |
| P2.DES.255 |  | Prepare Validation Report | 20d | 2022-10-24 A | 2023-01-19 A | P2.DSUM.210 FF, P1.DES.101, P2.DES.110 FF, P2.DES.305 | 100% |
| P2.DES.265 |  | Internal Design QC- 65% Design Package - Structure, Core & Shell, Interiors | 10d | 2023-01-20 A | 2023-03-17 A | P2.DES.255 | 100% |
| P2.DES.275 |  | Prepare & Submit - 65% Design Package - Structure, Core & Shell, Interiors | 5d | 2023-03-18 A | 2023-04-04 A | P2.DES.255, P2.DES.265 | 100% |
| P2.DES.115 |  | NIH Review - 65% Design Package - Structure, Core & Shell, Interiors (calender days) | 30d | 2023-04-05 A | 2023-05-07 A | P2.DES.275 | 100% |
| P2.DES.120 |  | Reconcile Comments - 65% Design Package - Structure, Core & Shell, Interiors | 15d | 2023-05-10 A | 2023-05-19 A | P2.DES.115 | 100% |
| P2.DES.122 |  | Reconcile Comments - Additional Comment Resolution Time - 65% Design Package - Structure, Core & Shell, Interiors | 7d | 2023-05-22 A | 2023-07-21 A | P2.DES.130 FF, P2.DES.120 | 100% |
| P2.DES.130 |  | Clean-up/Back-Check Pre-Final Submission - 65% Design Package - Structure, Core & Shell (Interim Sub-Not Needed per NIH) | 0d | 2023-07-21 A | 2023-07-21 A | P2.DES.125 | 100% |
| P2.DES.135 |  | Pre-Final Submission Review & Approve - 65% Design Package - Structure, Core & Shell (Interim Sub-Not Needed per NIH) | 0d | 2023-07-21 A | 2023-07-21 A | P2.DES.125 | 100% |
| P2.DES.140 |  | 65% Design Package - Structure, Core & Shell, Interiors Approved | 0d | 2023-07-21 A | 2023-07-21 A | P2.DES.122 FF, P2.DES.135, P2.DSUM.180 FF | 100% |
| P2.DES.125 |  | Conference Review(s) - 65% Design Package - Structure, Core & Shell, Interiors (As needed) | 2d | 2023-07-28 A | 2023-07-29 A | P2.DES.120 FF | 100% |
|  | 8 | **Phase 2A Design Package (Core & Shell)** |  | 2023-04-06 | 2024-03-28 |  |  |
|  | 2 | **95% Design Package** |  | 2023-04-06 | 2023-11-30 |  |  |
| P2A.DES.375 |  | Develop - 95% Design Package - Structure, Core & Shell | 34d | 2023-04-06 A | 2023-06-09 A | P2.DES.275 | 100% |

| ID | WBS | Task | Duration | Start | Finish | Predecessors | Complete |
| --- | --- | --- | --- | --- | --- | --- | --- |
| P2A.DES.445 |  | Internal Design QC- 95% Design Package - Structure, Core & Shell | 24d | 2023-06-10 A | 2023-07-19 A | P2A.DES.375 | 100% |
| PCO.DES.124 |  | (PCO 114) - Incorporate Reconciled from Phase 2 - 65% Design Submission into 95% Package | 15d | 2023-07-21 A | 2023-08-22 A | P2A.DES.445 | 100% |
| P2A.DES.485 |  | 2nd Internal Design QC - 95% Design Package - Structure, Core & Shell (Required due to P2.DES.122 - PCO114) | 10d | 2023-08-23 A | 2023-09-06 A | PCO.DES.124 | 100% |
| P2A.DES.475 |  | Incorporate 2nd Internal QC Comments - 95% Design Package - Structure, Core & Shell | 7d | 2023-09-07 A | 2023-09-15 A | P2A.DES.485 | 100% |
| P2A.DES.455 |  | Prepare & Submit - 95% Design Package - Structure, Core & Shell | 10d | 2023-09-18 A | 2023-09-22 A | P2A.DES.475 | 100% |
| P2A.DES.385 |  | NIH Review - 95% Design Package - Structure, Core & Shell (calender days) | 30d | 2023-09-25 A | 2023-10-26 A | P2A.DES.455 | 100% |
| P2A.DES.395 |  | Reconcile Comments - 95% Design Package - Structure, Core & Shell | 15d | 2023-10-27 A | 2023-11-16 A | P2A.DES.385 | 100% |
| P2A.DES.465 |  | Reconcile Comments - Additional Comment Resolution Time - 95% Design Package - Structure, Core & Shell | 7d | 2023-11-17 A | 2023-11-30 A | P2A.DES.395 | 100% |
| P2A.DES.405 |  | Conference Review - 95% Design Package - Structure, Core & Shell (As needed) | 2d | 2023-11-28 A | 2023-11-30 A | P2A.DES.395 FF, P2A.DES.385 | 100% |
| P2A.DES.415 |  | Clean-up/Back-Check Pre-Final Submission - 95% Design Package - Structure, Core & Shell (P2A Interim - Not needed) | 0d | 2023-11-30 A | 2023-11-30 A | P2A.DES.465, P2A.DES.405 | 100% |
| P2A.DES.425 |  | Pre-Final Submission Review & Approve - 95% Design Package - Structure, Core & Shell (P2A Interim - Not needed) | 0d | 2023-11-30 A | 2023-11-30 A | P2A.DES.415 | 100% |
| P2A.DES.435 |  | 95% Design Package - Structure, Core & Shell Approved | 0d | 2023-11-30 A | 2023-11-30 A | P2A.DES.425 FF, P2.DSUM.230 FF | 100% |
|  | 3 | **100% IFC - Design Package** |  | 2023-09-25 | 2024-03-28 |  |  |
| P2A.DES.495 |  | Develop - 100% IFC Design Package - Structure, Core & Shell | 40d | 2023-09-25 A | 2023-11-13 A | P2A.DES.455 | 100% |
| P2A.DES.565 |  | Internal Design QC- 100% IFC Design Package - Structure, Core & Shell | 10d | 2023-11-13 A | 2023-11-28 A | P2A.DES.495 | 100% |
| P2A.DES.575 |  | Prepare & Submit - 100% IFC Design Package - Structure, Core & Shell | 15d | 2023-12-01 A | 2023-12-21 A | P2A.DES.565, P2A.DES.435 | 100% |
| P2A.DES.505 |  | NIH Review - 100% IFC Design Package - Structure, Core & Shell (calendar days) | 21d | 2023-12-22 A | 2024-01-16 A | P2A.DES.575 | 100% |
| P2A.DES.515 |  | Reconcile Comments - 100% IFC Design Package - Structure, Core & Shell | 15d | 2024-01-17 A | 2024-02-06 A | P2A.DES.505 | 100% |
| P2A.DES.845 |  | Reconcile Comments - Additional Comment Resolution Time - 100% Design Package - Structure, Core & Shell | 7d | 2024-02-07 A | 2024-02-14 A | P2A.DES.515 | 100% |
| P2A.DES.525 |  | Conference Review - 100% IFC Design Package - Structure, Core & Shell | 2d | 2024-02-08 A | 2024-02-08 A | P2A.DES.515 FF | 100% |
| P2A.DES.535 |  | Clean-up/Back-Check Pre-Final Submission - 100% IFC Design Package - Structure, Core & Shell | 6d | 2024-02-15 A | 2024-02-23 A | P2A.DES.525, P2A.DES.845 | 100% |
| P2A.DES.545 |  | Pre-Final Submission Review & Approve - 100% IFC Design Package - Structure, Core & Shell | 10d | 2024-02-26 A | 2024-03-05 A | P2A.DES.535 | 100% |
| P2A.DES.595 |  | NIH Green Permit Prepare & Issue - 100% IFC Design Package - Structure, Core & Shell | 5d | 2024-03-06 A | 2024-03-28 A | P2A.DES.545 | 100% |
| P2A.DES.555 |  | 100% IFC Design Package - Structure, Core & Shell Approved | 0d | 2024-03-28 A | 2024-03-28 A | P2A.DES.595 FF, P2.DES.ST.250 FF, P2.DES.RF.270 FF, P2.DES.FM.270 FF, P2.DES.MP.280 FF, P2.DES.PC.350 FF, P2.DES.GG.340 FF, P2.DES.BEC.250 FF, P2.DSUM.240 FF | 100% |
|  | 9 | **Phase 2B Design Package (Electrical One-Line)** |  | 2023-04-06 | 2025-02-07 |  |  |
|  | 2 | **95% Design Package** |  | 2023-04-06 | 2024-06-03 |  |  |
| P2B.DES.605 |  | Develop - 95% Design Package - Electrical One-Line | 34d | 2023-04-06 A | 2023-06-09 A | P2.DES.275 | 100% |
| P2B.DES.675 |  | Internal Design QC- 95% Design Package - Electrical One-Line | 24d | 2023-06-10 A | 2023-07-19 A | P2B.DES.605 | 100% |
| PCO.DES.134 |  | (PCO 114) - Incorporate Reconciled from Phase 2 - 65% Design Submission into 95% Package | 15d | 2023-07-21 A | 2023-08-22 A | P2B.DES.675 | 100% |
| P2B.DES.715 |  | 2nd Internal Design QC - 95% Design Package - Electrical One-Line (Required due to P2.DES.122 - PCO114) | 10d | 2023-08-23 A | 2023-09-06 A | PCO.DES.134 | 100% |
| P2B.DES.705 |  | Incorporate 2nd Internal QC Comments - 95% Design Package - Electrical One-Line | 7d | 2023-09-07 A | 2023-09-15 A | P2B.DES.715 | 100% |
| P2B.DES.685 |  | Prepare & Submit - 95% Design Package - Electrical One-Line | 10d | 2023-09-18 A | 2023-09-22 A | P2B.DES.705 | 100% |
| P2B.DES.615 |  | NIH Review - 95% Design Package - Electrical One-Line (calender days) | 30d | 2023-09-25 A | 2023-10-26 A | P2B.DES.685 | 100% |
| P2B.DES.625 |  | Reconcile Comments - 95% Design Package - Electrical One-Line | 15d | 2023-10-27 A | 2023-11-16 A | P2B.DES.615 | 100% |
| P2B.DES.695 |  | Reconcile Comments - Additional Comment Resolution Time - 95% Design Package - Electrical One-Line | 7d | 2023-11-17 A | 2023-11-29 A | P2B.DES.625 | 100% |
| P2B.DES.845 |  | NIH Notice of requested resubmission of 2B Package - 95% Design Package - Electrical One-Line | 1d | 2023-11-30 A | 2023-11-30 A | P2B.DES.695 | 100% |
| P2B.DES.855 |  | Additional Design Coordination with NIH on Submission Comments - 95% Design Package - Electrical One-Line | 10d | 2023-12-01 A | 2023-12-13 A | P2B.DES.845 | 100% |
| P2B.DES.635 |  | Conference Review - 95% Design Package - Electrical One-Line (As needed) | 2d | 2023-12-14 A | 2023-12-18 A | P2B.DES.625 FF, P2B.DES.855, P2B.DES.615 | 100% |
| P2C.DES.405 |  | Incorporate and Submit 95% Resubmission - 95% Design Package - Electrical One-Line | 30d | 2023-12-19 A | 2024-03-08 A | P2B.DES.635 | 100% |
| P2C.DES.415 |  | NIH Review - 95% Design Package Resubmission - Electrical One-Line (calender days) | 30d | 2024-03-11 A | 2024-04-05 A | P2C.DES.405 | 100% |
| P2C.DES.425 |  | D-B Team Respond to Comments - 95% Design Package - Electrical One-Line | 10d | 2024-04-08 A | 2024-04-22 A | P2C.DES.415 FF, P2C.DES.415 | 100% |
| P2B.DES.645 |  | Comment Reconciliation Meetings - 95% Design Package - Electrical One-Line | 5d | 2024-05-07 A | 2024-05-21 A | P2C.DES.425, P2B.DES.695 | 100% |
| P2B.DES.655 |  | Submission Comment Review & Approve - 95% Design Package - Electrical One-Line | 5d | 2024-05-22 A | 2024-06-03 A | P2B.DES.645 FF, P2B.DES.645 | 100% |
| P2B.DES.665 |  | 95% Design Package - Electrical One-Line Approved | 0d | 2024-06-03 A | 2024-06-03 A | P2B.DES.635 FF, P2B.DES.645 FF, P2B.DES.655 FF, P2.DSUM.270 FF | 100% |
|  | 3 | **100% IFC - Design Package** |  | 2023-10-02 | 2025-02-07 |  |  |
| P2B.DES.725 |  | Develop - 100% Design Package - Electrical One-Line | 50d | 2023-10-02 A | 2024-03-08 A | P2B.DES.685 | 100% |
| P2B.DES.795 |  | Internal Design QC- 100% Design Package - Electrical One-Line | 10d | 2024-03-11 A | 2024-03-22 A | P2B.DES.725 | 100% |
| P2B.DES.805 |  | Prepare & Submit - 100% Design Package - Electrical One-Line | 30d | 2024-03-25 A | 2024-07-17 A | P2B.DES.665 FF, P2B.DES.795 | 100% |
| P2B.DES.735 |  | NIH Review - 100% Design Package - Electrical One-Line (calendar days) | 30d | 2024-07-18 A | 2024-08-16 A | P2B.DES.805 | 100% |
| P2B.DES.745 |  | Reconcile Comments - 100% Design Package - Electrical One-Line | 15d | 2024-08-19 A | 2024-09-11 A | P2B.DES.735 | 100% |
| P2B.DES.835 |  | Reconcile Comments - Additional Comment Resolution Time - 100% Design Package - Electrical One-Line | 7d | 2024-09-12 A | 2024-09-27 A | P2B.DES.745 | 100% |
| P2B.DES.765 |  | Clean-up/Back-Check Pre-Final Submission - IFC Design Package - Electrical One-Line | 11d | 2024-09-13 A | 2024-10-03 A | P2B.DES.835, P2B.DES.755 | 100% |
| P2B.DES.755 |  | Conference Review - 100% Design Package - Electrical One-Line | 2d | 2024-09-17 A | 2024-09-17 A | P2B.DES.745 FF | 100% |
| P2B.DES.775 |  | Pre-Final Submission Review & Approve - IFC Design Package - Electrical One-Line | 10d | 2024-10-04 A | 2024-10-18 A | P2B.DES.765 | 100% |
| P2B.DES.825 |  | NIH Green Permit Prepare & Issue - IFC Design Package - Electrical One-Line | 5d | 2024-10-21 A | 2025-02-07 A | P2B.DES.775 | 100% |
| P2B.DES.785 |  | IFC Design Package - Electrical One-Line Approved | 0d | 2025-02-07 A | 2025-02-07 A | P2B.DES.825 FF, P2.DSUM.280 FF | 100% |
|  | 3 | **Phase 2C Design Package (SRLM Interiors)** |  | 2023-04-06 | 2025-03-03 |  |  |
|  | 2 | **95% Design Package** |  | 2023-04-06 | 2024-07-17 |  |  |
| P2C.DES.145 |  | Develop - 95% Design Package - Interiors | 34d | 2023-04-06 A | 2023-06-09 A | P5.DES.140 FF, P2.DES.110 | 100% |
| P2C.DES.215 |  | Internal Design QC- 95% Design Package - Interiors | 24d | 2023-06-10 A | 2023-07-19 A | P2.DES.140 FF, P2C.DES.145 | 100% |
| PCO.DES.114 |  | (PCO 114) - Incorporate Reconciled from Phase 2 - 65% Design Submission into 95% Package | 15d | 2023-07-21 A | 2023-08-22 A | P2C.DES.215 | 100% |
| P2C.DES.335 |  | 2nd Internal Design QC - 95% Design Package - Interiors (Required due to P2.DES.122 - PCO114) | 10d | 2023-08-23 A | 2023-09-06 A | PCO.DES.114 | 100% |
| P2C.DES.345 |  | Incorporate 2nd Internal QC Comments - 95% Design Package - Interiors | 7d | 2023-09-07 A | 2023-09-22 A | P2C.DES.335 | 100% |
| P2C.DES.225 |  | Prepare & Submit - 95% Design Package - Interiors | 10d | 2023-09-25 A | 2023-10-06 A | P2C.DES.345, P2.ADRB.110 | 100% |
| P2C.DES.150 |  | NIH Review - 95% Design Package - Interiors (calender days) | 30d | 2023-10-07 A | 2023-11-09 A | P2C.DES.225 | 100% |
| P2C.DES.155 |  | Reconcile Comments - 95% Design Package - Interiors | 15d | 2023-11-10 A | 2023-12-04 A | P2C.DES.150 | 100% |
| P2C.DES.157 |  | Reconcile Comments - Additional Comment Resolution Time - 95% Design Package - Interiors | 7d | 2023-12-05 A | 2023-12-21 A | P2C.DES.155 | 100% |
| P2C.DES.355 |  | NIH Notice of requested resubmission of 2C Package | 1d | 2023-12-22 A | 2023-12-22 A | P2C.DES.157 | 100% |
| P2C.DES.165 |  | Additional Design Coordination with NIH on Submission Comments - 95% Design Package - Interiors | 20d | 2023-12-26 A | 2024-01-16 A | P2C.DES.355, P2C.DES.157, P2C.DES.160 | 100% |
| P2C.DES.160 |  | Conference Review - 95% Design Package - Interiors (As needed) | 2d | 2024-01-17 A | 2024-01-25 A | P2C.DES.155 FF, P2C.DES.150 | 100% |

| ID | WBS | Task | Duration | Start | Finish | Predecessors | Complete |
| --- | --- | --- | --- | --- | --- | --- | --- |
| P2C.DES.395 |  | Incorporate and Submit 95% Resubmission - 95% Design Package - Interiors | 30d | 2024-01-26 A | 2024-03-08 A | P2C.DES.165, P2C.DES.160 | 100% |
| P2C.DES.365 |  | NIH Review - 95% Design Package Resubmission - Interiors (calender days) | 30d | 2024-03-11 A | 2024-04-05 A | P2C.DES.395, P2C.DES.165 | 100% |
| P2C.DES.375 |  | D-B Team Respond to Comments - 95% Design Package - Interiors | 10d | 2024-04-08 A | 2024-04-22 A | P2C.DES.365 | 100% |
| P2C.DES.385 |  | Comment Reconciliation Meetings - 95% Design Package - Interiors | 5d | 2024-05-10 A | 2024-06-24 A | P2C.DES.375 | 100% |
| P2C.DES.170 |  | Submission Comment Review & Approve - 95% Design Package - Interiors | 5d | 2024-06-25 A | 2024-07-17 A | P2C.DES.385, P2C.DES.165 | 100% |
| P2C.DES.175 |  | 95% Design Package - Interiors Approved | 0d | 2024-07-17 A | 2024-07-17 A | P2C.DES.157 FF, P2C.DES.170, P2.DSUM.190 FF | 100% |
|  | 3 | **100% IFC - Design Package** |  | 2023-11-01 | 2025-03-03 |  |  |
| P2C.DES.180 |  | Develop - 100% Design Package - Interiors | 61d | 2023-11-01 A | 2024-03-08 A | P2C.DES.165 FF, P2C.DES.225 | 100% |
| P2C.DES.285 |  | Internal Design QC- 100% Design Package - Interiors | 10d | 2024-03-11 A | 2024-03-22 A | P2C.DES.180 | 100% |
| P2C.DES.295 |  | Prepare & Submit - 100% Design Package - Interiors | 30d | 2024-03-25 A | 2024-07-17 A | P2C.DES.285 | 100% |
| P2C.DES.185 |  | NIH Review - 100% Design Package - Interiors (calendar days) | 30d | 2024-07-18 A | 2024-08-19 A | P2C.DES.175 FF, P2C.DES.295, P2.ADRB.110 | 100% |
| P2C.DES.190 |  | Reconcile Comments - 100% Design Package - Interiors | 15d | 2024-08-20 A | 2024-09-09 A | P2C.DES.185 | 100% |
| P2C.DES.195 |  | Conference Review - 100% Design Package - Interiors | 2d | 2024-09-17 A | 2024-09-19 A | P2C.DES.190 FF | 100% |
| P2C.DES.325 |  | Reconcile Comments - Additional Comment Resolution Time - 100% Design Package - Interiors | 7d | 2024-09-17 A | 2024-09-27 A | P2C.DES.190 | 100% |
| P2C.DES.200 |  | Clean-up/Back-Check Pre-Final Submission - IFC Design Package - Interiors | 11d | 2024-09-18 A | 2024-10-03 A | P2C.DES.325, P2C.DES.195 | 100% |
| P2C.DES.205 |  | Pre-Final Submission Review & Approve - IFC Design Package - Interiors | 10d | 2024-10-04 A | 2024-10-18 A | P2C.DES.200 | 100% |
| P2C.DES.235 |  | NIH Green Permit Prepare & Issue - IFC Design Package - Interiors | 5d | 2024-10-21 A | 2025-03-03 A | P2C.DES.205 | 100% |
| P2C.DES.435 |  | NIH/Plumb. Design Resolution Comments (Design Progress for Release of Submittals) - IFC Design Package - Interiors | 5d | 2024-10-21 A | 2025-02-10 A | P2C.DES.205 | 100% |
| P2C.DES.210 |  | IFC Design Package - Interiors Approved | 0d | 2025-03-03 A | 2025-03-03 A | P2C.DES.235 FF, BP1.149.0.110 FF, BP1.095.2.100 FF, P2.DSUM.200 FF | 100% |
|  | 11 | **Phase 2 - Exterior Facade** |  | 2023-04-14 | 2024-03-28 |  |  |
|  | Facade Design | **Facade Design** |  | 2023-04-14 | 2024-03-28 |  |  |
|  | Glass & Glazing | **Glass & Glazing Design** |  | 2023-04-14 | 2024-03-28 |  |  |
| P2.DES.GG.100 |  | Aluminum Profile & Product Data Approval | 5d | 2023-04-14 A | 2023-07-27 A | P2.MTG.MOB.100 | 100% |
| P2.DES.GG.110 |  | Submit Embed/Anchor Design/Face of Slab | 30d | 2023-04-14 A | 2023-05-29 A | P2.MTG.MOB.100 | 100% |
| P2.DES.GG.120 |  | Submit Shadow Box and Backpan Design | 36d | 2023-04-14 A | 2023-09-18 A | P2.MTG.MOB.100, P2.DES.GG.140 FF | 100% |
| P2.DES.GG.130 |  | Submit Glass Samples | 20d | 2023-04-21 A | 2023-05-18 A | P2.DES.GG.100 | 100% |
| P2.DES.GG.140 |  | Approve Glass Samples | 10d | 2023-05-19 A | 2023-07-26 A | P2.DES.GG.130 | 100% |
| P2.DES.GG.150 |  | Thermal and Acoustic Modeling | 45d | 2023-06-06 A | 2023-07-20 A | P2.DES.GG.140 FF, P2.DES.GG.120 SS | 100% |
| P2.DES.GG.160 |  | Submit 35% Shop Drawings (95% QC Design Submission) | 1d | 2023-06-06 A | 2023-06-06 A | P2.DES.GG.120 SS, P2.DES.GG.110 | 100% |
| P2.DES.GG.220 |  | Preliminary Blast Calculations | 20d | 2023-06-06 A | 2023-07-20 A | P2.DES.GG.170 SS | 100% |
| P2.DES.GG.170 |  | Review 35% Shop Drawings (95% QC Design Submission) | 26d | 2023-06-07 A | 2023-09-06 A | P2.DES.GG.160 | 100% |
| P2.DES.GG.270 |  | Blast Calculations Incorporated Into Design BOD | 17d | 2023-07-21 A | 2023-09-16 A | P2.DES.GG.220 | 100% |
| P2.DES.GG.180 |  | Prepare & Submit 50% Shop Drawings (95% Design Submission) | 5d | 2023-09-07 A | 2023-09-15 A | P2.DES.GG.170 | 100% |
| P2.DES.GG.190 |  | Incorporate & Submit to NIH 50% Shop Drawings into 95% Design Submission | 4d | 2023-09-18 A | 2023-09-22 A | P2.DES.GG.180 | 100% |
| P2.DES.GG.230 |  | Transistion Detail Coordination | 37d | 2023-09-18 A | 2023-11-09 A | P2.DES.GG.220 FF, P2.DES.GG.180 | 100% |
| P2.DES.GG.200 |  | Review 50% Shop Drawings (95% Design Submission) | 22d | 2023-09-25 A | 2023-10-26 A | P2.DES.GG.190 | 100% |
| P2.DES.GG.210 |  | Reconcile 50% Shop Drawings (95% Design Submission) Comments | 8d | 2023-10-27 A | 2023-11-07 A | P2.DES.GG.150 FF, P2.DES.GG.200 | 100% |
| P2.DES.GG.250 |  | Prepare & Submit 75% Shop Drawings (100% QC Design Submission) | 3d | 2023-11-08 A | 2023-11-10 A | P2.DES.GG.210 | 100% |
| P2.DES.GG.240 |  | Coordinate & Enhance Interface Details between other Trades | 17d | 2023-11-10 A | 2023-12-07 A | P2.DES.GG.210 FF, P2.DES.GG.230 | 100% |
| P2.DES.GG.260 |  | Review 75% Shop Drawings (100% QC Design Submission) | 10d | 2023-11-13 A | 2023-11-28 A | P2.DES.GG.250 | 100% |
| P2.DES.GG.280 |  | Prepare & Submit 95% Shop Drawings (100% Design Submission) | 5d | 2023-12-08 A | 2023-12-14 A | P2.DES.GG.240, P2.DES.GG.260, P2.DES.GG.270 | 100% |
| P2.DES.GG.290 |  | Incorporate & Submit to NIH 95% Shop Drawings (100% Design Submission) | 5d | 2023-12-15 A | 2023-12-21 A | P2.DES.GG.280 | 100% |
| P2.DES.GG.300 |  | Review 95% Shop Drawings (100% Design Submission) | 13d | 2023-12-22 A | 2024-01-16 A | P2.DES.GG.290 | 100% |
| P2.DES.GG.310 |  | Reconcile 95% Shop Drawings (100% Design Submission) | 12d | 2024-01-17 A | 2024-02-03 A | P2.DES.GG.300 | 100% |
| P2.DES.GG.320 |  | Prepare & Submit 100% IFC Set | 10d | 2024-02-05 A | 2024-02-16 A | P2.DES.GG.310 | 100% |
| P2.DES.GG.330 |  | Incorporate & Submit to NIH IFC Set | 5d | 2024-02-19 A | 2024-02-23 A | P2.DES.GG.320 | 100% |
| P2.DES.GG.340 |  | Review, Approve & Permit IFC Design Submission | 15d | 2024-02-26 A | 2024-03-28 A | P2.DES.GG.330 | 100% |
|  | Precast | **Precast Design** |  | 2023-04-24 | 2024-03-28 |  |  |
| P2.DES.PC.100 |  | Prepare Preliminary Panelization Drawing | 10d | 2023-04-24 A | 2023-05-25 A | P2.MTG.MOB.300 | 100% |
| P2.DES.PC.110 |  | Submit & Approve Panelization Drawing | 10d | 2023-05-25 A | 2023-06-15 A | P2.DES.PC.100 | 100% |
| P2.DES.PC.120 |  | Prepare Anchoring Layout & Initial Connection Drawing | 10d | 2023-05-25 A | 2023-07-27 A | P2.DES.PC.110 | 100% |
| P2.DES.PC.140 |  | Prepare Initial Blast Load Calculations | 20d | 2023-06-02 A | 2023-09-15 A | P2.DES.GG.110, P2.DES.PC.120 | 100% |
| P2.DES.PC.160 |  | Order & Procure Terracotta & Brick Samples | 20d | 2023-06-16 A | 2023-07-25 A | P2.DES.PC.110 | 100% |
| P2.DES.PC.130 |  | Submit 35% Shop Drawings (95% QC Design Submission) | 1d | 2023-07-03 A | 2023-07-04 A | P2.DES.PC.120 | 100% |
| P2.DES.PC.150 |  | Review 35% Shop Drawings (95% QC Design Submission) | 15d | 2023-07-05 A | 2023-09-06 A | P2.DES.PC.130 | 100% |
| P2.DES.PC.210 |  | Review & Approve Brick & Terracotta Samples | 27d | 2023-07-26 A | 2023-08-25 A | P2.DES.PC.160 | 100% |
| P2.DES.PC.230 |  | Review & Approve Brick & Terracotta Samples | 20d | 2023-08-28 A | 2023-10-16 A | P2.DES.PC.210 | 100% |
| P2.DES.PC.190 |  | Prepare & Submit 50% Shop Drawings (95% Design Submission) | 5d | 2023-09-07 A | 2023-09-15 A | P2.DES.PC.150 | 100% |
| P2.DES.PC.170 |  | Finalize Connection Details off of Blast Loads | 20d | 2023-09-18 A | 2023-10-13 A | P2.DES.PC.140, P2.DES.PC.200 | 100% |
| P2.DES.PC.200 |  | Incorporate & Submit to NIH 50% Shop Drawings into 95% Design Submission | 4d | 2023-09-18 A | 2023-09-22 A | P2.DES.PC.190 | 100% |
| P2.DES.PC.220 |  | Review 50% Shop Drawings (95% Design Submission) | 22d | 2023-09-25 A | 2023-10-26 A | P2.DES.PC.200 | 100% |
| P2.DES.PC.180 |  | Refine Panel Sizes & Thickness off of blast loads | 20d | 2023-10-16 A | 2023-11-10 A | P2.DES.PC.170 | 100% |
| P2.DES.PC.240 |  | Reconcile 50% Shop Drawings (95% Design Submission) Comments | 8d | 2023-10-27 A | 2023-11-07 A | P2.DES.PC.220 | 100% |
| P2.DES.PC.250 |  | Coordinate & Enhance Interface Details between other Trades | 20d | 2023-11-08 A | 2023-12-07 A | P2.DES.PC.240 | 100% |
| P2.DES.PC.260 |  | Prepare & Submit 75% Shop Drawings (100% QC Design Submission) | 3d | 2023-11-08 A | 2023-11-10 A | P2.DES.PC.240 | 100% |
| P2.DES.PC.270 |  | Review 75% Shop Drawings (100% QC Design Submission) | 10d | 2023-11-13 A | 2023-11-28 A | P2.DES.PC.260 | 100% |
| P2.DES.PC.280 |  | Blast Calculations Incorporated Into Design BOD | 13d | 2023-11-13 A | 2023-12-01 A | P2.DES.PC.270 FF, P2.DES.PC.180 | 100% |
| P2.DES.PC.290 |  | Prepare & Submit 95% Shop Drawings (100% Design Submission) | 5d | 2023-12-08 A | 2023-12-14 A | P2.DES.PC.250, P2.DES.PC.280 | 100% |
| P2.DES.PC.300 |  | Incorporate & Submit to NIH 95% Shop Drawings (100% Design Submission) | 5d | 2023-12-15 A | 2023-12-21 A | P2.DES.PC.290 | 100% |
| P2.DES.PC.310 |  | Review 95% Shop Drawings (100% Design Submission) | 13d | 2023-12-22 A | 2024-01-16 A | P2.DES.PC.300 | 100% |

| ID | WBS | Task | Duration | Start | Finish | Predecessors | Complete |
| --- | --- | --- | --- | --- | --- | --- | --- |
| P2.DES.PC.320 |  | Reconcile 95% Shop Drawings (100% Design Submission) | 12d | 2024-01-17 A | 2024-02-03 A | P2.DES.PC.310 | 100% |
| P2.DES.PC.330 |  | Prepare & Submit 100% IFC Set | 10d | 2024-02-05 A | 2024-02-16 A | P2.DES.PC.320 | 100% |
| P2.DES.PC.340 |  | Incorporate & Submit to NIH IFC Set | 5d | 2024-02-19 A | 2024-02-23 A | P2.DES.PC.330 | 100% |
| P2.DES.PC.350 |  | Review, Approve & Permit IFC Design Submission | 15d | 2024-02-26 A | 2024-03-28 A | P2.DES.PC.340 | 100% |
|  | Metal Panel | **Metal Panel Design** |  | 2023-05-04 | 2024-03-28 |  |  |
| P2.DES.MP.100 |  | Prepare Preliminary Details for Morin System into Submission Set | 8d | 2023-05-04 A | 2023-05-23 A | P2.MTG.MOB.400 | 100% |
| P2.DES.MP.110 |  | Prepare Prelminary Joint Alignment Drawings for Review | 4d | 2023-05-24 A | 2023-06-12 A | P2.DES.MP.100 | 100% |
| P2.DES.MP.120 |  | Arch Review of Joint Alignment | 10d | 2023-06-12 A | 2023-07-28 A | P2.DES.MP.110 | 100% |
| P2.DES.MP.130 |  | Submit 35% Shop Drawings (95% QC Design Submission) | 1d | 2023-06-13 A | 2023-06-13 A | P2.DES.MP.120 FF, P2.DES.MP.100 | 100% |
| P2.DES.MP.140 |  | Review 35% Shop Drawings (95% QC Design Submission) | 26d | 2023-06-13 A | 2023-09-06 A | P2.DES.MP.130 | 100% |
| P2.DES.MP.150 |  | Prepare & Submit 50% Shop Drawings (95% Design Submission) | 5d | 2023-09-07 A | 2023-09-15 A | P2.DES.MP.140 | 100% |
| P2.DES.MP.160 |  | Incorporate & Submit to NIH 50% Shop Drawings into 95% Design Submission | 4d | 2023-09-18 A | 2023-09-22 A | P2.DES.MP.150 | 100% |
| P2.DES.MP.170 |  | Review 50% Shop Drawings (95% Design Submission) | 22d | 2023-09-25 A | 2023-10-26 A | P2.DES.MP.160 | 100% |
| P2.DES.MP.180 |  | Reconcile 50% Shop Drawings (95% Design Submission) Comments | 5d | 2023-10-27 A | 2023-11-07 A | P2.DES.MP.170 | 100% |
| P2.DES.MP.190 |  | Coordinate & Enhance Interface Details between other Trades | 20d | 2023-11-08 A | 2023-12-07 A | P2.DES.MP.180 | 100% |
| P2.DES.MP.200 |  | Prepare & Submit 75% Shop Drawings (100% QC Design Submission) | 3d | 2023-11-08 A | 2023-11-10 A | P2.DES.MP.180 | 100% |
| P2.DES.MP.210 |  | Review 75% Shop Drawings (100% QC Design Submission) | 10d | 2023-11-13 A | 2023-11-28 A | P2.DES.MP.200 | 100% |
| P2.DES.MP.220 |  | Prepare & Submit 95% Shop Drawings (100% Design Submission) | 5d | 2023-12-08 A | 2023-12-14 A | P2.DES.MP.190, P2.DES.MP.210 | 100% |
| P2.DES.MP.230 |  | Incorporate & Submit to NIH 95% Shop Drawings (100% Design Submission) | 5d | 2023-12-15 A | 2023-12-21 A | P2.DES.MP.220 | 100% |
| P2.DES.MP.240 |  | Review 95% Shop Drawings (100% Design Submission) | 13d | 2023-12-22 A | 2024-01-16 A | P2.DES.MP.230 | 100% |
| P2.DES.MP.250 |  | Reconcile 95% Shop Drawings (100% Design Submission) | 12d | 2024-01-17 A | 2024-02-02 A | P2.DES.MP.240 | 100% |
| P2.DES.MP.260 |  | Prepare & Submit 100% IFC Set | 10d | 2024-02-05 A | 2024-02-16 A | P2.DES.MP.250 | 100% |
| P2.DES.MP.270 |  | Incorporate & Submit to NIH IFC Set | 5d | 2024-02-19 A | 2024-02-23 A | P2.DES.MP.260 | 100% |
| P2.DES.MP.280 |  | Review, Approve & Permit IFC Design Submission | 15d | 2024-02-26 A | 2024-03-28 A | P2.DES.MP.270 | 100% |
|  | Roofing | **Roofing Design** |  | 2023-05-04 | 2024-03-28 |  |  |
| P2.DES.RF.100 |  | Prepare Preliminary Details for Roofing System into Submission Set | 22d | 2023-05-04 A | 2023-06-26 A | P2.MTG.MOB.500, P2.MTG.MOB.500 FF | 100% |
| P2.DES.RF.120 |  | Coordinate Parapet Walls & Coping with D-B Team & Trade Partners | 22d | 2023-05-10 A | 2023-06-26 A | P2.DES.RF.100 FF, P2.DES.RF.100 | 100% |
| P2.DES.RF.110 |  | Submit 35% Shop Drawings (95% QC Design Submission) | 1d | 2023-06-27 A | 2023-06-27 A | P2.DES.RF.120 SS | 100% |
| P2.DES.RF.130 |  | Review 35% Shop Drawings (95% QC Design Submission) | 9d | 2023-06-28 A | 2023-09-06 A | P2.DES.RF.110 | 100% |
| P2.DES.RF.140 |  | Prepare & Submit 50% Shop Drawings (95% Design Submission) | 1d | 2023-09-07 A | 2023-09-15 A | P2.DES.RF.130 | 100% |
| P2.DES.RF.150 |  | Incorporate & Submit to NIH 50% Shop Drawings into 95% Design Submission | 4d | 2023-09-18 A | 2023-09-22 A | P2.DES.RF.140 | 100% |
| P2.DES.RF.280 |  | Calculate Roof Uplift and Coordinate with Structural | 50d | 2023-09-18 A | 2023-10-31 A | P2.DES.RF.140 | 100% |
| P2.DES.RF.160 |  | Review 50% Shop Drawings (95% Design Submission) | 22d | 2023-09-25 A | 2023-10-26 A | P2.DES.RF.150 | 100% |
| P2.DES.RF.170 |  | Reconcile 50% Shop Drawings (95% Design Submission) Comments | 8d | 2023-10-27 A | 2023-11-07 A | P2.DES.RF.160 | 100% |
| P2.DES.RF.180 |  | Coordinate & Enhance Interface Details between other Trades | 20d | 2023-11-08 A | 2023-12-07 A | P2.DES.RF.170 | 100% |
| P2.DES.RF.190 |  | Prepare & Submit 75% Shop Drawings (100% QC Design Submission) | 3d | 2023-11-08 A | 2023-11-10 A | P2.DES.RF.280, P2.DES.RF.120, P2.DES.RF.170 | 100% |
| P2.DES.RF.200 |  | Review 75% Shop Drawings (100% QC Design Submission) | 10d | 2023-11-13 A | 2023-11-28 A | P2.DES.RF.190 | 100% |
| P2.DES.RF.210 |  | Prepare & Submit 95% Shop Drawings (100% Design Submission) | 5d | 2023-12-08 A | 2023-12-14 A | P2.DES.RF.180, P2.DES.RF.200 | 100% |
| P2.DES.RF.220 |  | Incorporate & Submit to NIH 95% Shop Drawings (100% Design Submission) | 5d | 2023-12-15 A | 2023-12-21 A | P2.DES.RF.210 | 100% |
| P2.DES.RF.230 |  | Review 95% Shop Drawings (100% Design Submission) | 13d | 2023-12-22 A | 2024-01-16 A | P2.DES.RF.220 | 100% |
| P2.DES.RF.240 |  | Reconcile 95% Shop Drawings (100% Design Submission) | 12d | 2024-01-17 A | 2024-02-02 A | P2.DES.RF.210 FF, P2.DES.RF.230 | 100% |
| P2.DES.RF.250 |  | Prepare & Submit 100% IFC Set | 10d | 2024-02-05 A | 2024-02-16 A | P2.DES.RF.240 | 100% |
| P2.DES.RF.260 |  | Incorporate & Submit to NIH IFC Set | 5d | 2024-02-19 A | 2024-02-23 A | P2.DES.RF.250 | 100% |
| P2.DES.RF.270 |  | Review, Approve & Permit IFC Design Submission | 15d | 2024-02-26 A | 2024-03-28 A | P2.DES.RF.260 | 100% |
|  | Facade Maintenance | **Facade Maintenance Design** |  | 2023-04-19 | 2024-03-28 |  |  |
| P2.DES.FM.100 |  | Prepare Preliminary Facade Maintenance Dessign | 23d | 2023-04-19 A | 2023-06-09 A | P2.MTG.MOB.200 | 100% |
| P2.DES.FM.110 |  | D-B Team Coordination of Facade Maintenance Design Drawings | 10d | 2023-06-12 A | 2023-06-23 A | P2.DES.FM.100 | 100% |
| P2.DES.FM.120 |  | Prepare & Submit 35% Shop Drawings (95% QC Design Submission) | 5d | 2023-06-26 A | 2023-07-04 A | P2.DES.FM.110 | 100% |
| P2.DES.FM.130 |  | Review 35% Shop Drawings (95% QC Design Submission) | 12d | 2023-07-05 A | 2023-09-06 A | P2.DES.FM.120 | 100% |
| P2.DES.FM.140 |  | Prepare & Submit 50% Shop Drawings (95% Design Submission) | 5d | 2023-09-07 A | 2023-09-15 A | P2.DES.FM.130 | 100% |
| P2.DES.FM.150 |  | Incorporate & Submit to NIH 50% Shop Drawings into 95% Design Submission | 4d | 2023-09-18 A | 2023-09-22 A | P2.DES.FM.140 | 100% |
| P2.DES.FM.160 |  | Review 50% Shop Drawings (95% Design Submission) | 22d | 2023-09-25 A | 2023-10-26 A | P2.DES.FM.150 | 100% |
| P2.DES.FM.170 |  | Reconcile 50% Shop Drawings (95% Design Submission) Comments | 8d | 2023-10-27 A | 2023-11-07 A | P2.DES.FM.160 | 100% |
| P2.DES.FM.180 |  | Coordinate & Enhance Interface Details between other Trades | 20d | 2023-11-08 A | 2023-12-07 A | P2.DES.FM.170 | 100% |
| P2.DES.FM.190 |  | Prepare & Submit 75% Shop Drawings (100% QC Design Submission) | 3d | 2023-11-08 A | 2023-11-10 A | P2.DES.FM.170 | 100% |
| P2.DES.FM.200 |  | Review 75% Shop Drawings (100% QC Design Submission) | 10d | 2023-11-13 A | 2023-11-28 A | P2.DES.FM.190 | 100% |
| P2.DES.FM.210 |  | Prepare & Submit 95% Shop Drawings (100% Design Submission) | 5d | 2023-12-08 A | 2023-12-14 A | P2.DES.FM.200, P2.DES.FM.180 | 100% |
| P2.DES.FM.220 |  | Incorporate & Submit to NIH 95% Shop Drawings (100% Design Submission) | 5d | 2023-12-15 A | 2023-12-21 A | P2.DES.FM.210 | 100% |
| P2.DES.FM.230 |  | Review 95% Shop Drawings (100% Design Submission) | 13d | 2023-12-22 A | 2024-01-16 A | P2.DES.FM.220 | 100% |
| P2.DES.FM.240 |  | Reconcile 95% Shop Drawings (100% Design Submission) | 12d | 2024-01-17 A | 2024-02-02 A | P2.DES.FM.230 | 100% |
| P2.DES.FM.250 |  | Prepare & Submit 100% IFC Set | 10d | 2024-02-05 A | 2024-02-16 A | P2.DES.FM.240 | 100% |
| P2.DES.FM.260 |  | Incorporate & Submit to NIH IFC Set | 5d | 2024-02-19 A | 2024-02-23 A | P2.DES.FM.250 | 100% |
| P2.DES.FM.270 |  | Review, Approve & Permit IFC Design Submission | 15d | 2024-02-26 A | 2024-03-28 A | P2.DES.FM.260 | 100% |
|  | Exterior Stone | **Exterior Stone Cladding Design** |  | 2023-06-12 | 2024-03-28 |  |  |
| P2.DES.ST.100 |  | Evaluate Stone Types & Details for Exterior Cladding System into Submission Set | 40d | 2023-06-12 A | 2023-07-28 A | P2.MTG.MOB.600 | 100% |
| P2.DES.ST.110 |  | Prepare Stone for Testing & Evaluation | 40d | 2023-07-29 A | 2023-10-06 A | P2.DES.ST.100 | 100% |
| P2.DES.ST.120 |  | Stone Testing & Reporting | 20d | 2023-10-09 A | 2023-11-14 A | P2.DES.ST.110 | 100% |
| P2.DES.ST.150 |  | Reconcile 50% Shop Drawings (95% Design Submission) Comments | 8d | 2023-10-27 A | 2023-11-07 A | P2.DES.FM.160, P2.DES.ST.100 | 100% |
| P2.DES.ST.160 |  | Coordinate & Enhance Interface Details between other Trades | 20d | 2023-11-08 A | 2023-12-07 A | P2.DES.ST.150 FF, P2.DES.ST.150 | 100% |
| P2.DES.ST.170 |  | Prepare & Submit 75% Shop Drawings (100% QC Design Submission) | 3d | 2023-11-08 A | 2023-12-01 A | P2.DES.ST.120, P2.DES.ST.150 | 100% |

| ID | WBS | Task | Duration | Start | Finish | Predecessors | Complete |
| --- | --- | --- | --- | --- | --- | --- | --- |
| P2.DES.ST.180 |  | Review 75% Shop Drawings (100% QC Design Submission) | 4d | 2023-12-04 A | 2023-12-07 A | P2.DES.ST.170 | 100% |
| P2.DES.ST.200 |  | Incorporate & Submit to NIH 95% Shop Drawings (100% Design Submission) | 5d | 2023-12-08 A | 2023-12-21 A | P2.DES.ST.180, P2.DES.ST.160 | 100% |
| P2.DES.ST.210 |  | Review 95% Shop Drawings (100% Design Submission) | 13d | 2023-12-22 A | 2024-01-16 A | P2.DES.ST.200 | 100% |
| P2.DES.ST.220 |  | Reconcile 95% Shop Drawings (100% Design Submission) | 12d | 2024-01-17 A | 2024-02-02 A | P2.DES.ST.160 FF, P2.DES.ST.180 FF, P2.DES.ST.210 | 100% |
| P2.DES.ST.240 |  | Incorporate & Submit to NIH IFC Set | 15d | 2024-02-05 A | 2024-02-23 A | P2.DES.ST.220 | 100% |
| P2.DES.ST.250 |  | Review, Approve & Permit IFC Design Submission | 15d | 2024-02-26 A | 2024-03-28 A | P2.DES.ST.240 | 100% |
|  | Enclosure Cx | **Building Enclosure Comissioning Plan** |  | 2023-06-30 | 2024-03-28 |  |  |
| P2.DES.BEC.100 |  | Prepare Preliminary Building Enclosure Comissioning Plan | 20d | 2023-06-30 A | 2023-10-13 A | P2.DES.275 | 100% |
| P2.DES.BEC.110 |  | Internal Review of Building Enclosure Comissioning Plan | 20d | 2023-07-03 A | 2023-07-31 A | P2.DES.BEC.100 | 100% |
| P2.DES.BEC.120 |  | Revise & Resubmit Building Enclosure Comissioning Plan | 20d | 2023-08-01 A | 2023-09-01 A | P2.DES.BEC.110 | 100% |
| P2.DES.BEC.130 |  | Incorporate & Submit to NIH BECx Plan into 95% Design Submission | 5d | 2023-09-04 A | 2023-09-22 A | P2.DES.BEC.120 | 100% |
| P2.DES.BEC.140 |  | Review BECx Plan (95% Design Submission) | 22d | 2023-09-25 A | 2023-10-26 A | P2.DES.BEC.130 SS, P2.DES.BEC.130 FF, P2.DES.BEC.130 | 100% |
| P2.DES.BEC.150 |  | Reconcile BECx Plan (95% Design Submission) Comments | 8d | 2023-10-27 A | 2023-11-07 A | P2.DES.BEC.140 | 100% |
| P2.DES.BEC.170 |  | Prepare & Submit BECx 100% QC Design Submission | 3d | 2023-11-08 A | 2023-11-21 A | P2.DES.BEC.150 | 100% |
| P2.DES.BEC.160 |  | Coordinate Comissioning Plan between all disciplines and requirements | 20d | 2023-11-21 A | 2023-12-07 A | P2.DES.BEC.150 | 100% |
| P2.DES.BEC.180 |  | Review BECx 100% QC Design Submission | 10d | 2023-11-21 A | 2023-12-01 A | P2.DES.BEC.170 | 100% |
| P2.DES.BEC.190 |  | Prepare & Submit BECx 100% Design Submission | 2d | 2023-12-14 A | 2023-12-15 A | P2.DES.BEC.180, P2.DES.BEC.160 | 100% |
| P2.DES.BEC.200 |  | Incorporate & Submit to NIH BECx 100% Design Submission | 4d | 2023-12-18 A | 2023-12-21 A | P2.DES.BEC.190 | 100% |
| P2.DES.BEC.210 |  | Review BECx 100% Design Submission | 13d | 2023-12-22 A | 2024-01-16 A | P2.DES.BEC.200 | 100% |
| P2.DES.BEC.220 |  | Reconcile BECx 100% Design Submission Comments | 12d | 2024-01-17 A | 2024-02-02 A | P2.DES.BEC.190 FF, P2.DES.BEC.210 | 100% |
| P2.DES.BEC.230 |  | Prepare & Submit BECx 100% Final Plan (IFC) | 10d | 2024-02-05 A | 2024-02-16 A | P2.DES.BEC.220 | 100% |
| P2.DES.BEC.240 |  | Incorporate & Submit to NIH BECx 100% Final Plan (IFC) | 5d | 2024-02-19 A | 2024-02-23 A | P2.DES.BEC.230 | 100% |
| P2.DES.BEC.250 |  | Review, Approve & Permit BECx 100% Final Plan (IFC) | 15d | 2024-02-26 A | 2024-03-28 A | P2.DES.BEC.240 | 100% |
|  | 5 | **Phase 5 Design Package (West Wing Renovations)** |  | 2022-06-08 | 2025-05-21 |  |  |
|  | 2 | **65% Design Package** |  | 2022-06-08 | 2024-01-03 |  |  |
| P5.DES.410 |  | Existing Conditions Validation & Verification Inspections | 30d | 2022-06-08 A | 2022-10-21 A | PD2.DES.099, PWS.230 | 100% |
| P5.DES.140 |  | Develop - 65% Design Package - West Wing Renovations | 140d | 2022-06-09 A | 2023-06-09 A | P5.DES.410 SS+22d, P1.DES.101 SS+30d | 100% |
| P5.DES.350 |  | Internal Design QC- 65% Design Package Phase 5 - West Wing Renovations | 24d | 2023-06-13 A | 2023-07-19 A | P5.DES.140 | 100% |
| P5.DES.375 |  | Incorporate Internal QC Comments - 95% Design Package - Structure, Core & Shell, Interiors | 7d | 2023-07-20 A | 2023-08-22 A | P5.DES.350 | 100% |
| P2.DES.355 |  | 2nd Internal Design QC - 95% Design Package - Structure, Core & Shell, Interiors (Required due to P2.DES.122 - PCO114) | 10d | 2023-08-23 A | 2023-09-06 A | P5.DES.375 | 100% |
| P2.DES.365 |  | Incorporate 2nd Internal QC Comments - 95% Design Package - Structure, Core & Shell, Interiors | 7d | 2023-09-07 A | 2023-09-22 A | P2.DES.355 | 100% |
| P5.DES.360 |  | Prepare & Submit - 65% Design Package - West Wing Renovations | 10d | 2023-09-25 A | 2023-10-06 A | P2.DES.365 | 100% |
| P5.DES.150 |  | NIH Review - 65% Design Package - West Wing Renovations (calender days) | 31d | 2023-10-07 A | 2023-11-09 A | P5.DES.360 | 100% |
| P5.DES.160 |  | Reconcile Comments - 65% Design Package - West Wing Renovations | 15d | 2023-11-10 A | 2023-12-04 A | P5.DES.150 | 100% |
| P5.DES.165 |  | Reconcile Comments - Additional Comment Resolution Time - 65% Design Package - West Wing Renovations | 7d | 2023-12-05 A | 2024-01-03 A | P5.DES.160 | 100% |
| P5.DES.180 |  | Clean-up/Back-Check Pre-Final Submission - 65% Design Package - West Wing Renovation (Interim Submission - Not Needed) | 0d | 2024-01-03 A | 2024-01-03 A | P5.DES.165 | 100% |
| P5.DES.190 |  | Pre-Final Submission Review & Approve - 65% Design Package - West Wing Renovations (Interim Submission - Not Needed) | 0d | 2024-01-03 A | 2024-01-03 A | P5.DES.180, P5.DES.165 SS | 100% |
| P5.DES.200 |  | 65% Design Package - West Wing RenovationsApproved | 0d | 2024-01-03 A | 2024-01-03 A | P5.DES.165 FF, P5.DES.190, P5.DSUM.230 FF | 100% |
|  | 3 | **95% Design Package** |  | 2023-11-01 | 2024-10-30 |  |  |
| P5.DES.210 |  | Develop - 95% Design Package - West Wing Renovations | 64d | 2023-11-01 A | 2024-03-22 A | P5.DES.360 | 100% |
| P5.DES.370 |  | Internal Design QC- 95% Design Package Phase 5 - West Wing Renovations | 20d | 2024-03-25 A | 2024-04-19 A | P5.DES.210 | 100% |
| P5.DES.380 |  | Prepare & Submit - 95% Design Package - West Wing Renovations | 10d | 2024-04-22 A | 2024-06-21 A | P5.DES.370, P5.DES.200 | 100% |
| P5.DES.220 |  | NIH Review - 95% Design Package - West Wing Renovations (calender days) | 30d | 2024-06-22 A | 2024-07-19 A | P5.DES.380 | 100% |
| P5.DES.230 |  | Reconcile Comments - 95% Design Package - West Wing Renovations | 15d | 2024-07-22 A | 2024-08-23 A | P5.DES.220 | 100% |
| P5.DES.235 |  | Reconcile Comments - Additional Comment Resolution Time - 95% Design Package - West Wing Renovations | 33d | 2024-08-26 A | 2024-10-30 A | P5.DES.230 | 100% |
| P5.DES.260 |  | Pre-Final Submission Review & Approve - 95% Design Package - West Wing Renovations (Interim Submission - Not Needed) | 0d | 2024-10-21 A | 2024-10-30 A | P5.DES.250 | 100% |
| P5.DES.240 |  | Conference Review - 95% Design Package - West Wing Renovations (As Needed) | 2d | 2024-10-23 A | 2024-10-23 A | P5.DES.230 | 100% |
| P5.DES.250 |  | Clean-up/Back-Check Pre-Final Submission - 95% Design Package - West Wing Renovations (Interim Submission - Not Needed) | 0d | 2024-10-30 A | 2024-10-30 A | P5.DES.235, P5.DES.240 | 100% |
| P5.DES.270 |  | 95% Design Package - West Wing RenovationsApproved | 0d | 2024-10-30 A | 2024-10-30 A | P5.DES.250 FF, P5.DES.260, P5.DSUM.240 FF | 100% |
|  | 4 | **100% IFC Design Package** |  | 2024-06-24 | 2025-05-21 |  |  |
| P5.DES.280 |  | Develop - 100% IFC Design Package - West Wing Renovations | 70d | 2024-06-24 A | 2024-10-31 A | P5.DES.380 | 100% |
| P5.DES.390 |  | Internal Design QC- 100% IFC Design Package Phase 5 - West Wing Renovations | 20d | 2024-11-01 A | 2024-11-22 A | P5.DES.280 | 100% |
| P5.DES.400 |  | Prepare & Submit - 100% IFC Design Package - West Wing Renovations | 10d | 2024-11-25 A | 2024-12-16 A | P5.DES.390 | 100% |
| P5.DES.290 |  | NIH Review - 100% IFC Design Package - West Wing Renovations (calender days) | 30d | 2024-12-17 A | 2025-01-21 A | P5.DES.400, P5.DES.270 | 100% |
| P5.DES.300 |  | Reconcile Comments - 100% IFC Design Package - West Wing Renovations | 15d | 2025-01-22 A | 2025-02-12 A | P5.DES.290 | 100% |
| P5.DES.310 |  | Conference Review - 100% IFC Design Package - West Wing Renovations | 2d | 2025-02-19 A | 2025-02-19 A | P5.DES.300 | 100% |
| P5.DES.420 |  | Reconcile Comments - Additional Comment Resolution Time - 100% IFC Design Package - West Wing Renovations | 7d | 2025-02-20 A | 2025-02-24 A | P5.DES.300 FF, P5.DES.310 | 100% |
| P5.DES.320 |  | Clean-up/Back-Check Pre-Final Submission - 100% IFC Design Package - West Wing Renovations | 11d | 2025-02-25 A | 2025-03-12 A | P5.DES.420 | 100% |
| P5.DES.330 |  | Pre-Final Submission Review & Approve - 100% IFC Design Package - West Wing Renovations | 10d | 2025-03-13 A | 2025-04-18 A | P5.DES.320 | 100% |
| P5.DES.430 |  | NIH Green Permit Prepare & Issue - 100% IFC Design Package - West Wing Renovations | 5d | 2025-04-21 A | 2025-05-21 A | P5.DES.330 | 100% |
| P5.DES.340 |  | 100% IFC Design Package - West Wing Renovations Approved | 0d | 2025-05-21 A | 2025-05-21 A | P5.DES.430 FF, P5.DSUM.250 FF, P5.DES.330 | 100% |
|  | 7 | **BIM Modeling & Coordination** |  | 2023-03-08 | 2027-04-05 |  |  |
| P1.BIM.SUM.100 |  | BIM Modeling - Phase 1 (Summary) | 180d | 2023-04-04 A | 2024-01-17 A | P1.BIM.WTR.20.100 SS | 100% |
| P2.BIM.SUM.100 |  | BIM Modeling - Phase 2 (Summary) | 305d | 2023-07-26 A | 2025-05-01 A | P2.BIM.100 SS | 100% |
|  | 1 | **Phase 1 - BIM Modeling & Coordination** |  | 2023-03-08 | 2024-01-17 |  |  |
| P1.BIM.100 |  | BIM Execution Kick Off - From P1 Milestone 95% Design | 0d | 2023-03-15 A | 2023-03-15 A | PDS.240, P1.DES.330 | 100% |
|  | 4 | **BIM - Early Work Water Main** |  | 2023-03-22 | 2023-05-04 |  |  |
| P1.BIM.WTR.30.100 |  | BIM / Early Work Water Main - Trade Coordination and Clash Detection | 3d | 2023-03-22 A | 2023-05-03 A | P1.BIM.WTR.20.100 | 100% |
| P1.BIM.WTR.20.100 |  | BIM / Early Work Water Main - Model Development | 5d | 2023-04-04 A | 2023-04-10 A | P1.BIM.100 SS | 100% |
| P1.BIM.WTR.40.100 |  | BIM / Early Work Water Main - Coordination Sign Off | 2d | 2023-05-04 A | 2023-05-04 A | P1.BIM.WTR.30.100 | 100% |

| ID | WBS | Task | Duration | Start | Finish | Predecessors | Complete |
| --- | --- | --- | --- | --- | --- | --- | --- |
| P1.BIM.WTR.50.100 |  | BIM / Early Work Water Main - BIM Model Updated and Ready for Field Use | 2d | 2023-05-04 A | 2023-05-04 A | P1.BIM.WTR.40.100, P1.BIM.SUM.100 SS | 100% |
|  | 1 | **BIM - Site Utilities** |  | 2023-04-03 | 2023-07-14 |  |  |
| P1.BIM.SU.10.100 |  | BIM / Site Utilities - Product Data Approved | 0d | 2023-04-03 A | 2023-04-03 A | P1.DES.320 | 100% |
| P1.BIM.SU.20.100 |  | BIM / Site Utilities - Model Development | 20d | 2023-04-04 A | 2023-07-03 A | P1.BIM.SU.10.100, P1.BIM.100 SS | 100% |
| P1.BIM.SU.30.100 |  | BIM / Site Utilities - Trade Coordination and Clash Detection | 25d | 2023-05-05 A | 2023-07-10 A | P1.BIM.SU.20.100 | 100% |
| P1.BIM.SU.40.100 |  | BIM / Site Utilities - Coordination Sign Off | 5d | 2023-05-12 A | 2023-07-12 A | P1.BIM.SU.30.100 | 100% |
| P1.BIM.SU.50.100 |  | BIM / Site Utilities - BIM Model Updated and Ready for Field Use | 1d | 2023-07-13 A | 2023-07-14 A | P1.BIM.SU.40.100, P1.BIM.SUM.100 SS | 100% |
|  | 2 | **BIM - Building UG** |  | 2023-03-08 | 2023-12-06 |  |  |
| P1.BIM.UG.20.100 |  | BIM / Building UG - Model Development | 20d | 2023-03-08 A | 2023-07-24 A | P1.BIM.100 SS | 100% |
| P1.BIM.UG.30.100 |  | BIM / Building UG - Trade Coordination and Clash Detection | 20d | 2023-04-05 A | 2023-11-03 A | P1.BIM.UG.20.100 | 100% |
| P1.BIM.UG.40.100 |  | BIM / Building UG - Coordination Sign Off | 5d | 2023-11-06 A | 2023-11-10 A | P1.BIM.UG.30.100 | 100% |
| P1.BIM.UG.50.100 |  | BIM / Building UG - BIM Model Updated and Ready for Field Use | 5d | 2023-12-06 A | 2023-12-06 A | P1.BIM.UG.40.100 | 100% |
|  | 3 | **BIM - Utility Tunnel OH** |  | 2023-05-03 | 2024-01-17 |  |  |
| P1.BIM.UT.20.100 |  | BIM / Utility Tunnel OH - Model Development | 20d | 2023-05-03 A | 2023-08-09 A | P1.BIM.UG.30.100 SS | 100% |
| P1.BIM.UT.30.100 |  | BIM / Utility Tunnel OH - Trade Coordination and Clash Detection | 20d | 2023-05-24 A | 2023-11-03 A | P1.BIM.UT.20.100 | 100% |
| P1.BIM.UT.40.100 |  | BIM / Utility Tunnel OH - Coordination Sign Off | 5d | 2023-11-06 A | 2023-11-10 A | P1.BIM.UT.30.100 | 100% |
| P1.BIM.UT.50.100 |  | BIM / Utility Tunnel OH - BIM Model Updated and Ready for Field Use | 5d | 2024-01-03 A | 2024-01-17 A | P1.BIM.SUM.100 FF, P1.BIM.UT.40.100 | 100% |
|  | 2 | **Phase 2 - BIM Modeling & Coordination** |  | 2023-07-12 | 2025-08-12 |  |  |
| P2.BIM.100 |  | P2 Milestone From 95% Design to Kick Off BIM Execution | 0d | 2023-07-26 A | 2023-07-26 A | PDS.240, P2C.DES.225 | 100% |
|  | 4 | **BIM Structural Penetrations Coordination** |  | 2023-07-12 | 2025-02-17 |  |  |
|  | 3 | **BIM - MEP Risers Slab Penetrations** |  | 2023-07-12 | 2023-11-17 |  |  |
| P2.BIM.MEPR.20.100 |  | BIM / MEP Risers - Model Development | 15d | 2023-07-12 A | 2023-08-11 A | P2.BIM.100 SS | 100% |
| P2.BIM.MEPR.30.100 |  | BIM / MEP Risers - Trade Coordination and Clash Detection | 15d | 2023-08-14 A | 2023-11-10 A | P2.BIM.MEPR.20.100 | 100% |
| P2.BIM.MEPR.40.100 |  | BIM / MEP Risers - Coordination Sign Off | 5d | 2023-11-13 A | 2023-11-17 A | P2.BIM.MEPR.30.100 | 100% |
|  | 1 | **BIM - B3 Slab Penetrations** |  | 2023-08-02 | 2024-03-22 |  |  |
| P2.BIM.B3.20.100 |  | BIM / B3 - Model Development | 15d | 2023-08-02 A | 2023-08-11 A | P2.BIM.MEPR.20.100 SS+15d | 100% |
| P2.BIM.B3.30.100 |  | BIM / B3 - Trade Coordination and Clash Detection | 15d | 2023-08-14 A | 2023-11-10 A | P2.BIM.B3.20.100 | 100% |
| P2.BIM.B3.40.100 |  | BIM / B3 - Coordination Sign Off | 5d | 2023-11-13 A | 2024-01-24 A | P2.BIM.B3.30.100 | 100% |
| P2.BIM.B3.40.120 |  | BIM / B3 - Prep, Submit, Review, and Approve Shop Drawings | 35d | 2024-01-29 A | 2024-03-22 A | P2.BIM.B3.40.100, P2.BIM.B3.30.100 | 100% |
|  | 2 | **BIM - B2 Slab Penetrations** |  | 2023-09-20 | 2024-02-09 |  |  |
| P2.BIM.B2.20.100 |  | BIM / B2 - Model Development | 15d | 2023-09-20 A | 2023-11-13 A | P2.BIM.B3.20.100 | 100% |
| P2.BIM.B2.30.100 |  | BIM / B2 - Trade Coordination and Clash Detection | 15d | 2023-11-14 A | 2023-12-05 A | P2.BIM.B2.20.100 | 100% |
| P2.BIM.B2.40.100 |  | BIM / B2 - Coordination Sign Off | 5d | 2023-12-06 A | 2024-01-24 A | P2.BIM.B2.30.100 | 100% |
| P2.BIM.B2.40.120 |  | BIM / B2 - Prep, Submit, Review, and Approve Shop Drawings | 35d | 2024-01-29 A | 2024-02-09 A | P2.BIM.B2.40.100, P2.BIM.B2.30.100 | 100% |
|  | 5 | **BIM - L1 Slab Penetrations** |  | 2023-10-25 | 2024-05-14 |  |  |
| P2.BIM.L1.20.100 |  | BIM / L1 - Model Development | 15d | 2023-10-25 A | 2023-11-15 A | P2.BIM.B2.20.100 | 100% |
| P2.BIM.L1.30.100 |  | BIM / L1 - Trade Coordination and Clash Detection | 15d | 2023-11-27 A | 2024-04-05 A | P2.BIM.L1.20.100 | 100% |
| P2.BIM.L1.40.100 |  | BIM / L1 - Coordination Sign Off | 5d | 2024-04-08 A | 2024-05-14 A | P2.BIM.L1.30.100 | 100% |
| P2.BIM.L1.40.120 |  | BIM / L1 - Prep, Submit, Review, and Approve Shop Drawings | 35d | 2024-04-15 A | 2024-04-29 A | P2.BIM.L1.40.100 SS | 100% |
|  | 7 | **BIM - L2 Slab Penetrations** |  | 2024-01-08 | 2024-07-24 |  |  |
| P2.BIM.L2.20.100 |  | BIM / L2 - Model Development | 15d | 2024-01-08 A | 2024-01-19 A | P2.BIM.L1.20.100 | 100% |
| P2.BIM.L2.30.100 |  | BIM / L2 - Trade Coordination and Clash Detection | 15d | 2024-01-22 A | 2024-05-03 A | P2.BIM.L2.20.100 | 100% |
| P2.BIM.L2.40.100 |  | BIM / L2 - Coordination Sign Off | 5d | 2024-05-06 A | 2024-05-29 A | P2.BIM.L2.30.100 | 100% |
| P2.BIM.L2.40.120 |  | BIM / L2 - Prep, Submit, Review, and Approve Shop Drawings | 35d | 2024-05-13 A | 2024-07-24 A | P2.BIM.L2.40.100, P2.BIM.L2.30.100 | 100% |
|  | 11 | **BIM - L3 Slab Penetrations** |  | 2024-02-05 | 2024-08-16 |  |  |
| P2.BIM.L3.20.100 |  | BIM / L3 - Model Development | 15d | 2024-02-05 A | 2024-05-03 A | P2.BIM.L2.20.100 | 100% |
| P2.BIM.L3.30.100 |  | BIM / L3 - Trade Coordination and Clash Detection | 15d | 2024-05-06 A | 2024-05-26 A | P2.BIM.L3.20.100 | 100% |
| P2.BIM.L3.40.100 |  | BIM / L3 - Coordination Sign Off | 5d | 2024-05-31 A | 2024-06-05 A | P2.BIM.L3.30.100 | 100% |
| P2.BIM.L3.40.120 |  | BIM / L3 - Prep, Submit, Review, and Approve Shop Drawings | 35d | 2024-06-11 A | 2024-08-16 A | P2.BIM.L3.40.100, P2.BIM.L3.30.100 | 100% |
|  | 12 | **BIM - L4 Slab Penetrations** |  | 2024-05-06 | 2024-09-16 |  |  |
| P2.BIM.L4.20.100 |  | BIM / L4 - Model Development | 15d | 2024-05-06 A | 2024-05-24 A | P2.BIM.L3.20.100 | 100% |
| P2.BIM.L4.30.100 |  | BIM / L4 - Trade Coordination and Clash Detection | 15d | 2024-05-28 A | 2024-05-28 A | P2.BIM.L4.20.100 | 100% |
| P2.BIM.L4.40.100 |  | BIM / L4 - Coordination Sign Off | 5d | 2024-06-19 A | 2024-06-21 A | P2.BIM.L4.30.100 | 100% |
| P2.BIM.L4.40.120 |  | BIM / L4 - Prep, Submit, Review, and Approve Shop Drawings | 35d | 2024-06-21 A | 2024-09-16 A | P2.BIM.L4.40.100, P2.BIM.L4.30.100 | 100% |
|  | 13 | **BIM - L5 Slab Penetrations** |  | 2024-05-28 | 2024-11-01 |  |  |
| P2.BIM.L5.20.100 |  | BIM / L5 - Model Development | 15d | 2024-05-28 A | 2024-06-14 A | P2.BIM.L4.20.100 | 100% |
| P2.BIM.L5.30.100 |  | BIM / L5 - Trade Coordination and Clash Detection | 15d | 2024-06-17 A | 2024-07-05 A | P2.BIM.L5.20.100 | 100% |
| P2.BIM.L5.40.100 |  | BIM / L5 - Coordination Sign Off | 5d | 2024-07-08 A | 2024-07-12 A | P2.BIM.L5.30.100 | 100% |
| P2.BIM.L5.40.120 |  | BIM / L5 - Prep, Submit, Review, and Approve Shop Drawings | 35d | 2024-07-15 A | 2024-11-01 A | P2.BIM.L5.40.100, P2.BIM.L5.30.100 | 100% |
|  | 14 | **BIM - L6 Slab Penetrations** |  | 2024-06-17 | 2024-11-26 |  |  |
| P2.BIM.L6.20.100 |  | BIM / L6 - Model Development | 15d | 2024-06-17 A | 2024-07-26 A | P2.BIM.L5.20.100 | 100% |
| P2.BIM.L6.30.100 |  | BIM / L6 - Trade Coordination and Clash Detection | 10d | 2024-07-08 A | 2024-08-16 A | P2.BIM.L6.20.100 | 100% |
| P2.BIM.L6.40.100 |  | BIM / L6 - Coordination Sign Off | 5d | 2024-08-23 A | 2024-08-23 A | P2.BIM.L6.30.100 | 100% |
| P2.BIM.L6.40.120 |  | BIM / L6 - Prep, Submit, Review, and Approve Shop Drawings | 35d | 2024-09-25 A | 2024-11-26 A | P2.BIM.L6.40.100, P2.BIM.L6.30.100 | 100% |
|  | 15 | **BIM - L7 Slab Penetrations** |  | 2024-07-12 | 2024-12-06 |  |  |
| P2.BIM.L7.20.100 |  | BIM / L7 - Model Development | 15d | 2024-07-12 A | 2024-07-26 A | P2.BIM.L6.20.100 SS | 100% |
| P2.BIM.L7.30.100 |  | BIM / L7 - Trade Coordination and Clash Detection | 15d | 2024-07-29 A | 2024-08-16 A | P2.BIM.L7.20.100 | 100% |
| P2.BIM.L7.40.100 |  | BIM / L7 - Coordination Sign Off | 5d | 2024-08-23 A | 2024-08-23 A | P2.BIM.L7.30.100 | 100% |
| P2.BIM.L7.40.120 |  | BIM / L7 - Prep, Submit, Review, and Approve Shop Drawings | 20d | 2024-10-01 A | 2024-12-06 A | P2.BIM.L7.40.100, P2.BIM.L7.30.100 | 100% |
|  | 16 | **BIM - L8 Slab Penetrations** |  | 2024-07-29 | 2025-01-30 |  |  |

| ID | WBS | Task | Duration | Start | Finish | Predecessors | Complete |
| --- | --- | --- | --- | --- | --- | --- | --- |
| P2.BIM.L8.20.100 |  | BIM / L8 - Model Development | 15d | 2024-07-29 A | 2024-08-16 A | P2.BIM.L7.20.100 | 100% |
| P2.BIM.L8.30.100 |  | BIM / L8 - Trade Coordination and Clash Detection | 5d | 2024-10-23 A | 2024-10-29 A | P2.BIM.L8.20.100 | 100% |
| P2.BIM.L8.40.100 |  | BIM / L8 - Coordination Sign Off | 5d | 2024-10-30 A | 2024-10-31 A | P2.BIM.L8.30.100 | 100% |
| P2.BIM.L8.40.120 |  | BIM / L8 - Prep, Submit, Review, and Approve Shop Drawings | 20d | 2024-11-15 A | 2025-01-30 A | P2.BIM.L8.40.100, P2.BIM.L8.30.100 | 100% |
|  | 17 | **BIM - Main Roof / Penthouse Slab Penetrations** |  | 2024-10-16 | 2025-02-06 |  |  |
| P2.BIM.MRPH.20.100 |  | BIM / Main Roof / Penthouse - Model Development | 5d | 2024-10-16 A | 2024-11-29 A | P2.BIM.L8.20.100 | 100% |
| P2.BIM.MRPH.30.100 |  | BIM / Main Roof / Penthouse - Trade Coordination and Clash Detection | 5d | 2024-12-02 A | 2024-12-18 A | P2.BIM.MRPH.20.100 | 100% |
| P2.BIM.MRPH.40.100 |  | BIM / Main Roof / Penthouse - Coordination Sign Off | 5d | 2024-12-18 A | 2024-12-21 A | P2.BIM.MRPH.30.100 | 100% |
| P2.BIM.MRPH.40.120 |  | BIM / Main Roof / Prep, Submit, Review, and Approve Shop Drawings | 20d | 2024-12-30 A | 2025-02-06 A | P2.BIM.MRPH.30.100, P2.BIM.MRPH.40.100 | 100% |
|  | 18 | **BIM - Penthouse Roof Slab Penetrations** |  | 2024-11-27 | 2025-02-17 |  |  |
| P2.BIM.PHR.20.100 |  | BIM / Penthouse Roof - Model Development | 5d | 2024-11-27 A | 2025-01-22 A | P2.BIM.MRPH.20.100 SS+10d | 100% |
| P2.BIM.PHR.30.100 |  | BIM / Penthouse Roof - Trade Coordination and Clash Detection | 5d | 2025-01-22 A | 2025-02-03 A | P2.BIM.PHR.20.100 | 100% |
| P2.BIM.PHR.40.100 |  | BIM / Penthouse Roof - Coordination Sign Off | 5d | 2025-02-04 A | 2025-02-07 A | P2.BIM.PHR.30.100 | 100% |
| P2.BIM.PHR.40.110 |  | BIM / Penthouse Roof - Prep, Submit, Review, and Approve Shop Drawings | 20d | 2025-02-10 A | 2025-02-17 A | P2.BIM.PHR.30.100 SS, P2.BIM.PHR.40.100 SS | 100% |
|  | 1 | **BIM OH & In-Wall Coordination** |  | 2023-07-12 | 2025-08-12 |  |  |
|  | 1 | **BIM - B3** |  | 2023-08-02 | 2024-06-24 |  |  |
| P2.BIM.B3.20.110 |  | BIM / B3 - Model Development | 25d | 2023-08-02 A | 2023-08-11 A | PCO.DES.114 FF | 100% |
| P2.BIM.B3.30.110 |  | BIM / B3 - Trade Coordination and Clash Detection | 25d | 2023-08-14 A | 2023-11-10 A | P2.BIM.B3.20.110 | 100% |
| P2.BIM.B3.40.110 |  | BIM / B3 - Coordination Sign Off | 5d | 2023-11-13 A | 2023-11-17 A | P2.BIM.B3.30.110 | 100% |
| P2.BIM.B3.40.130 |  | BIM / B3 - Prep, Submit, Review, and Approve Shop Drawings | 35d | 2024-01-29 A | 2024-03-22 A | P2.BIM.B3.40.110 | 100% |
| P2.BIM.B3.40.140 |  | BIM / B3 - Fab & Deliver MEP | 30d | 2024-03-25 A | 2024-06-24 A | P2.BIM.B3.40.130 | 100% |
|  | 3 | **BIM - MEP Risers** |  | 2023-07-12 | 2023-11-17 |  |  |
| P2.BIM.MEPR.20.110 |  | BIM / MEP Risers - Model Development | 20d | 2023-07-12 A | 2023-08-11 A | P2C.DES.215 FF | 100% |
| P2.BIM.MEPR.30.110 |  | BIM / MEP Risers - Trade Coordination and Clash Detection | 20d | 2023-08-14 A | 2023-11-10 A | P2.BIM.MEPR.20.110 | 100% |
| P2.BIM.MEPR.40.110 |  | BIM / MEP Risers - Coordination Sign Off | 5d | 2023-11-13 A | 2023-11-17 A | P2.BIM.MEPR.30.110 | 100% |
|  | 2 | **BIM - B2** |  | 2023-10-25 | 2024-10-01 |  |  |
| P2.BIM.B2.20.110 |  | BIM / B2 - Model Development | 25d | 2023-10-25 A | 2023-11-15 A | P2.BIM.B3.20.110 | 100% |
| P2.BIM.B2.30.110 |  | BIM / B2 - Trade Coordination and Clash Detection | 25d | 2023-11-16 A | 2024-05-24 A | P2.BIM.B2.20.110 | 100% |
| P2.BIM.B2.40.130 |  | BIM / B2 - Prep, Submit, Review, and Approve Shop Drawings | 35d | 2024-05-06 A | 2024-10-01 A | P2.BIM.B2.40.110 | 100% |
| P2.BIM.B2.40.110 |  | BIM / B2 - Coordination Sign Off | 5d | 2024-05-24 A | 2024-05-29 A | P2.BIM.B2.30.110 | 100% |
| P2.BIM.B2.40.140 |  | BIM / B2 - Fab & Deliver MEP | 30d | 2024-08-01 A | 2024-10-01 A | P2.BIM.B2.40.130 FF | 100% |
|  | 5 | **BIM - L1** |  | 2024-01-22 | 2024-12-16 |  |  |
| P2.BIM.L1.20.110 |  | BIM / L1 - Model Development | 20d | 2024-01-22 A | 2024-05-31 A | P2.BIM.B2.20.110 | 100% |
| P2.BIM.L1.30.110 |  | BIM / L1 - Trade Coordination and Clash Detection | 5d | 2024-05-06 A | 2024-05-31 A | P2.BIM.L1.20.110 | 100% |
| P2.BIM.L1.40.110 |  | BIM / L1 - Coordination Sign Off | 5d | 2024-06-03 A | 2024-06-07 A | P2.BIM.L1.30.110 | 100% |
| P2.BIM.L1.40.130 |  | BIM / L1 - Prep, Submit, Review, and Approve Shop Drawings | 35d | 2024-06-10 A | 2024-11-15 A | P2.BIM.L1.40.110 | 100% |
| P2.BIM.L1.40.140 |  | BIM / L1 - Fab & Deliver MEP | 30d | 2024-12-02 A | 2024-12-16 A | P2.BIM.L1.40.130 FF | 100% |
|  | 7 | **BIM - L2** |  | 2024-04-29 | 2024-12-31 |  |  |
| P2.BIM.L2.20.110 |  | BIM / L2 - Model Development | 20d | 2024-04-29 A | 2024-05-24 A | P2.BIM.L1.20.110 FF | 100% |
| P2.BIM.L2.30.110 |  | BIM / L2 - Trade Coordination and Clash Detection | 20d | 2024-05-27 A | 2024-06-21 A | P2.BIM.L2.20.110 | 100% |
| P2.BIM.L2.40.110 |  | BIM / L2 - Coordination Sign Off | 5d | 2024-06-24 A | 2024-06-28 A | P2.BIM.L2.30.110 | 100% |
| P2.BIM.L2.40.130 |  | BIM / L2 - Prep, Submit, Review, and Approve Shop Drawings | 35d | 2024-07-01 A | 2024-11-22 A | P2.BIM.L2.40.110 | 100% |
| P2.BIM.L2.40.140 |  | BIM / L2 - Fab & Deliver MEP | 30d | 2024-12-02 A | 2024-12-31 A | P2.BIM.L2.40.130 FF | 100% |
|  | 11 | **BIM - L3** |  | 2024-05-03 | 2025-01-31 |  |  |
| P2.BIM.L3.20.110 |  | BIM / L3 - Model Development | 20d | 2024-05-03 A | 2024-06-07 A | P2.BIM.L2.20.110 SS+10d | 100% |
| P2.BIM.L3.30.110 |  | BIM / L3 - Trade Coordination and Clash Detection | 20d | 2024-06-12 A | 2024-07-03 A | P2.BIM.L3.20.110 | 100% |
| P2.BIM.L3.40.110 |  | BIM / L3 - Coordination Sign Off | 5d | 2024-07-15 A | 2024-07-22 A | P2.BIM.L3.30.110 | 100% |
| P2.BIM.L3.40.130 |  | BIM / L3 - Prep, Submit, Review, and Approve Shop Drawings | 35d | 2024-07-23 A | 2024-11-29 A | P2.BIM.L3.40.110 | 100% |
| P2.BIM.L3.40.140 |  | BIM / L3 - Fab & Deliver MEP | 30d | 2025-01-02 A | 2025-01-31 A | P2.BIM.L3.40.130 FF | 100% |
|  | 12 | **BIM - L4** |  | 2024-06-12 | 2025-02-20 |  |  |
| P2.BIM.L4.20.110 |  | BIM / L4 - Model Development | 20d | 2024-06-12 A | 2024-07-03 A | P2.BIM.L3.20.110 | 100% |
| P2.BIM.L4.30.110 |  | BIM / L4 - Trade Coordination and Clash Detection | 20d | 2024-07-10 A | 2024-08-16 A | P2.BIM.L4.20.110 | 100% |
| P2.BIM.L4.40.110 |  | BIM / L4 - Coordination Sign Off | 5d | 2024-08-23 A | 2024-08-23 A | P2.BIM.L4.30.110 | 100% |
| P2.BIM.L4.40.130 |  | BIM / L4 - Prep, Submit, Review, and Approve Shop Drawings | 35d | 2024-08-26 A | 2024-12-02 A | P2.BIM.L4.40.110 | 100% |
| P2.BIM.L4.40.140 |  | BIM / L4 - Fab & Deliver MEP | 30d | 2025-01-02 A | 2025-02-20 A | P2.BIM.L4.40.130 FF | 100% |
|  | 13 | **BIM - L5** |  | 2024-07-01 | 2025-04-11 |  |  |
| P2.BIM.L5.20.110 |  | BIM / L5 - Model Development | 20d | 2024-07-01 A | 2024-08-05 A | P2.BIM.L4.20.110 SS+15d | 100% |
| P2.BIM.L5.30.110 |  | BIM / L5 - Trade Coordination and Clash Detection | 15d | 2024-08-06 A | 2024-10-23 A | P2.BIM.L5.20.110 | 100% |
| P2.BIM.L5.40.130 |  | BIM / L5 - Prep, Submit, Review, and Approve Shop Drawings | 35d | 2024-10-24 A | 2024-12-16 A | P2.BIM.L5.40.110 SS | 100% |
| P2.BIM.L5.40.110 |  | BIM / L5 - Coordination Sign Off | 5d | 2024-10-30 A | 2024-11-25 A | P2.BIM.L5.30.110 | 100% |
| P2.BIM.L5.40.140 |  | BIM / L5 - Fab & Deliver MEP | 30d | 2025-03-03 A | 2025-04-11 A | P2.BIM.L5.40.130 FF | 100% |
|  | 14 | **BIM - L6** |  | 2024-07-22 | 2025-04-11 |  |  |
| P2.BIM.L6.20.110 |  | BIM / L6 - Model Development | 20d | 2024-07-22 A | 2024-08-16 A | P2.BIM.L5.20.110 SS+15d | 100% |
| P2.BIM.L6.30.110 |  | BIM / L6 - Trade Coordination and Clash Detection | 15d | 2024-10-23 A | 2024-11-08 A | P2.BIM.L6.20.110 | 100% |
| P2.BIM.L6.40.110 |  | BIM / L6 - Coordination Sign Off | 5d | 2024-11-11 A | 2024-11-15 A | P2.BIM.L6.30.110 | 100% |
| P2.BIM.L6.40.130 |  | BIM / L6 - Prep, Submit, Review, and Approve Shop Drawings | 35d | 2024-12-16 A | 2025-02-24 A | P2.BIM.L6.40.110 | 100% |
| P2.BIM.L6.40.140 |  | BIM / L6 - Fab & Deliver MEP | 30d | 2025-03-03 A | 2025-04-11 A | P2.BIM.L6.40.130 FF | 100% |
|  | 15 | **BIM - L7** |  | 2024-09-25 | 2025-05-23 |  |  |
| P2.BIM.L7.20.110 |  | BIM / L7 - Model Development | 15d | 2024-09-25 A | 2024-10-16 A | P2.BIM.L6.20.110 SS | 100% |
| P2.BIM.L7.30.110 |  | BIM / L7 - Trade Coordination and Clash Detection | 12d | 2024-10-21 A | 2024-11-29 A | P2.BIM.L7.20.110 | 100% |

| ID | WBS | Task | Duration | Start | Finish | Predecessors | Complete | Total float |
| --- | --- | --- | --- | --- | --- | --- | --- | --- |
| P2.BIM.L7.40.110 |  | BIM / L7 - Coordination Sign Off | 5d | 2024-11-08 A | 2024-11-22 A | P2.BIM.L7.30.110 | 100% |  |
| P2.BIM.L7.40.140 |  | BIM / L7 - Fab & Deliver MEP | 30d | 2025-03-10 A | 2025-04-18 A | P2.BIM.L7.40.130 FF | 100% |  |
| P2.BIM.L7.40.130 |  | BIM / L7 - Prep, Submit, Review, and Approve Shop Drawings | 35d | 2025-04-17 A | 2025-05-23 A | P2.BIM.L7.40.110 | 100% |  |
|  | 16 | **BIM - L8** |  | 2024-10-16 | 2025-08-12 |  |  |  |
| P2.BIM.L8.20.110 |  | BIM / L8 - Model Development | 20d | 2024-10-16 A | 2024-11-20 A | P2.BIM.L7.20.110 FF | 100% |  |
| P2.BIM.L8.40.130 |  | BIM / L8 - Prep, Submit, Review, and Approve Shop Drawings | 35d | 2025-03-20 A | 2025-08-12 A | P2.BIM.L6.40.130 | 100% |  |
| P2.BIM.L8.40.140 |  | BIM / L8 - Fab & Deliver MEP | 30d | 2025-03-27 A | 2025-07-31 A | P2.BIM.L8.40.130 FF, P2.BIM.L8.40.130 SS | 100% |  |
| P2.BIM.L8.40.150 |  | BIM / L8 - Preliminary Sign Off | 1d | 2025-04-01 A | 2025-04-01 A | P2.BIM.L8.30.110 SS+65d | 100% |  |
| P2.BIM.L8.30.110 |  | BIM / L8 - Trade Coordination and Clash Detection | 15d | 2025-04-16 A | 2025-04-25 A | P2.BIM.L8.20.110 | 100% |  |
| P2.BIM.L8.40.110 |  | BIM / L8 - Coordination Sign Off | 5d | 2025-04-28 A | 2025-05-30 A | P2.BIM.L8.30.110, P2.BIM.L8.40.130 SS | 100% |  |
|  | 17 | **BIM - Main Roof / Penthouse** |  | 2024-11-12 | 2025-08-06 |  |  |  |
| P2.BIM.MRPH.20.110 |  | BIM / Main Roof / Penthouse - Model Development | 20d | 2024-11-12 A | 2025-01-22 A | P2.BIM.L8.20.110 SS+2d | 100% |  |
| P2.BIM.MRPH.30.120 |  | BIM / Main Roof / Penthouse - Preliminary Sign Off | 1d | 2025-04-04 A | 2025-04-04 A | P2.BIM.MRPH.30.110 SS | 100% |  |
| P2.BIM.MRPH.30.110 |  | BIM / Main Roof / Penthouse - Trade Coordination and Clash Detection | 15d | 2025-04-23 A | 2025-06-11 A | P2.BIM.MRPH.20.110 | 100% |  |
| P2.BIM.MRPH.40.140 |  | BIM / Main Roof / Penthouse - Fab & Deliver MEP | 30d | 2025-06-01 A | 2025-07-31 A | P2.BIM.MRPH.40.130 SS, P2.BIM.MRPH.40.110 FF | 100% |  |
| P2.BIM.MRPH.40.110 |  | BIM / Main Roof / Penthouse - Coordination Sign Off | 5d | 2025-06-11 A | 2025-06-27 A | P2.BIM.MRPH.30.110, P2.BIM.L8.40.130, P2.BIM.L8.40.110, P2.BIM.MRPH.30.110 SS+65d | 100% |  |
| P2.BIM.MRPH.40.130 |  | BIM / Main Roof / Penthouse - Prep, Submit, Review, and Approve Shop Drawings | 35d | 2025-06-20 A | 2025-08-06 A | P2.BIM.MRPH.30.120 | 100% |  |
|  | 3 | **Phase 5 - BIM Modeling & Coordination (Draft)** |  | 2026-09-01 | 2027-04-05 |  |  |  |
|  | 1 | **BIM - L1 F-Wing** |  | 2026-09-01 | 2026-11-10 |  |  |  |
| P5.BIM.L1.20.100 |  | BIM / L1 F-Wing - Model Development | 20d | 2026-09-01 | 2026-09-29 | MOD.P5.XXX.160, P5.DES.340 |  | 228d |
| P5.BIM.L1..30.100 |  | BIM / L1 F-Wing - Trade Coordination and Clash Detection | 20d | 2026-09-30 | 2026-10-27 | P5.BIM.L1.20.100 |  | 328d |
| P5.BIM.L1.40.100 |  | BIM / L1 F-Wing - Coordination Sign Off | 5d | 2026-10-28 | 2026-11-03 | P5.BIM.L1..30.100 |  | 328d |
| P5.BIM.L1.50.100 |  | BIM / L1 F-Wing - BIM Model Updated and Ready for Field Use | 5d | 2026-11-04 | 2026-11-10 | P5.BIM.L1.40.100 |  | 328d |
|  | 2 | **BIM - L2 F-Wing** |  | 2026-09-30 | 2026-12-10 |  |  |  |
| P5.BIM.L2.20.100 |  | BIM / L2 F-Wing - Model Development | 20d | 2026-09-30 | 2026-10-27 | P5.BIM.L1.20.100 |  | 228d |
| P5.BIM.L2..30.100 |  | BIM / L2 F-Wing - Trade Coordination and Clash Detection | 20d | 2026-10-28 | 2026-11-24 | P5.BIM.L2.20.100 |  | 308d |
| P5.BIM.L2.40.100 |  | BIM / L2 F-Wing - Coordination Sign Off | 5d | 2026-11-25 | 2026-12-03 | P5.BIM.L2..30.100 |  | 308d |
| P5.BIM.L2.50.100 |  | BIM / L2 F-Wing - BIM Model Updated and Ready for Field Use | 5d | 2026-12-04 | 2026-12-10 | P5.BIM.L2.40.100 |  | 308d |
|  | 3 | **BIM - L3 F-Wing** |  | 2026-10-28 | 2027-01-11 |  |  |  |
| P5.BIM.L3.20.100 |  | BIM / L3 F-Wing - Model Development | 20d | 2026-10-28 | 2026-11-24 | P5.BIM.L2.20.100 |  | 228d |
| P5.BIM.L3..30.100 |  | BIM / L3 F-Wing - Trade Coordination and Clash Detection | 20d | 2026-11-25 | 2026-12-24 | P5.BIM.L3.20.100 |  | 288d |
| P5.BIM.L3.40.100 |  | BIM / L3 F-Wing - Coordination Sign Off | 5d | 2026-12-28 | 2027-01-04 | P5.BIM.L3..30.100 |  | 288d |
| P5.BIM.L3.50.100 |  | BIM / L3 F-Wing - BIM Model Updated and Ready for Field Use | 5d | 2027-01-05 | 2027-01-11 | P5.BIM.L3.40.100 |  | 288d |
|  | 4 | **BIM - L4 F-Wing** |  | 2026-11-25 | 2027-02-08 |  |  |  |
| P5.BIM.L4.20.100 |  | BIM / L4 F-Wing - Model Development | 20d | 2026-11-25 | 2026-12-24 | P5.BIM.L3.20.100 |  | 228d |
| P5.BIM.L4..30.100 |  | BIM / L4 F-Wing - Trade Coordination and Clash Detection | 20d | 2026-12-28 | 2027-01-25 | P5.BIM.L4.20.100 |  | 268d |
| P5.BIM.L4.40.100 |  | BIM / L4 F-Wing - Coordination Sign Off | 5d | 2027-01-26 | 2027-02-01 | P5.BIM.L4..30.100 |  | 268d |
| P5.BIM.L4.50.100 |  | BIM / L4 F-Wing - BIM Model Updated and Ready for Field Use | 5d | 2027-02-02 | 2027-02-08 | P5.BIM.L4.40.100 |  | 268d |
|  | 5 | **BIM - L5 F-Wing** |  | 2026-12-28 | 2027-03-08 |  |  |  |
| P5.BIM.L5.20.100 |  | BIM / L5 F-Wing - Model Development | 20d | 2026-12-28 | 2027-01-25 | P5.BIM.L4.20.100 |  | 228d |
| P5.BIM.L5..30.100 |  | BIM / L5 F-Wing - Trade Coordination and Clash Detection | 20d | 2027-01-26 | 2027-02-22 | P5.BIM.L5.20.100 |  | 248d |
| P5.BIM.L5.40.100 |  | BIM / L5 F-Wing - Coordination Sign Off | 5d | 2027-02-23 | 2027-03-01 | P5.BIM.L5..30.100 |  | 248d |
| P5.BIM.L5.50.100 |  | BIM / L5 F-Wing - BIM Model Updated and Ready for Field Use | 5d | 2027-03-02 | 2027-03-08 | P5.BIM.L5.40.100 |  | 248d |
|  | 6 | **BIM - L6 F-Wing** |  | 2027-01-26 | 2027-04-05 |  |  |  |
| P5.BIM.L6.20.100 |  | BIM / L6 F-Wing - Model Development | 20d | 2027-01-26 | 2027-02-22 | P5.BIM.L5.20.100 |  | 228d |
| P5.BIM.L6..30.100 |  | BIM / L6 F-Wing - Trade Coordination and Clash Detection | 20d | 2027-02-23 | 2027-03-22 | P5.BIM.L6.20.100 |  | 228d |
| P5.BIM.L6.40.100 |  | BIM / L6 F-Wing - Coordination Sign Off | 5d | 2027-03-23 | 2027-03-29 | P5.BIM.L6..30.100 |  | 228d |
| P5.BIM.L6.50.100 |  | BIM / L6 F-Wing - BIM Model Updated and Ready for Field Use | 5d | 2027-03-30 | 2027-04-05 | P5.BIM.L6.40.100 |  | 228d |
|  | 3 | **PERMITTING** |  | 2022-09-06 | 2027-08-20 |  |  |  |
|  | 6 | **NIH Permitting, Demo, and Site Selection Approvals** |  | 2022-11-15 | 2023-01-09 |  |  |  |
|  | 8 | **Phase 1A - ACRF Garage** |  | 2022-11-15 | 2023-01-09 |  |  |  |
| P1.SS.T1A.100 |  | Prepare & Submit NIH Global Notification/Site Selection - ACRF Garage | 5d | 2022-11-15 A | 2022-11-18 A | P1A.DES.590 | 100% |  |
| P1.SS.T1A.110 |  | Review & Approve NIH Global Notification/Site Selection - ACRF Garage | 45d | 2022-11-21 A | 2023-01-09 A | P1.SS.T1A.100 | 100% |  |
| P1.SS.T1A.120 |  | Site Selection Approved - Contractor Control of Area - ACRF Garage | 0d | 2023-01-09 A | 2023-01-09 A | P1.SS.T1A.110 FF | 100% |  |
|  | 7 | **Demolition Permits** |  | 2023-03-21 | 2027-08-20 |  |  |  |
|  | 3 | **Phase 0A - Emergency Egress & Facade Demo** |  | 2023-03-21 | 2023-05-25 |  |  |  |
| P1.DEMO.1.130 |  | Prepare & Submit Demo Permit - Emergency Egress Exits | 15d | 2023-03-21 A | 2023-04-28 A | P0A.DES.150 SS | 100% |  |
| P1.DEMO.2.130 |  | Review & Approve Demo Permit - Emergency Egress Exits | 5d | 2023-05-22 A | 2023-05-25 A | P1.DEMO.1.130 | 100% |  |
|  | 4 | **Phase 0C - Facade Demolition & Protection** |  | 2024-01-10 | 2024-03-04 |  |  |  |
| P1.DEMO.1.140 |  | Prepare & Submit Demo Permit - Facade Demolition | 20d | 2024-01-10 A | 2024-02-14 A | P2A.DES.575 | 100% |  |
| P1.DEMO.2.140 |  | Review & Approve Demo Permit - Facade Demolition | 30d | 2024-02-15 A | 2024-03-04 A | P1.DEMO.1.140 | 100% |  |
|  | 1 | **Phase 1** |  | 2023-04-03 | 2024-06-19 |  |  |  |
|  | 1 | **Existing Utility Tunnel** |  | 2023-06-06 | 2023-08-28 |  |  |  |
| P1.DEMO.1.100 |  | Prepare & Submit Demo Permit - Utility Tunnel | 15d | 2023-06-06 A | 2023-07-05 A | BP3.310.2.100 | 100% |  |
| P1.DEMO.2.100 |  | Review & Approve Demo Permit - Utility Tunnel | 10d | 2023-07-25 A | 2023-08-28 A | P1.DEMO.1.100 | 100% |  |
|  | 2 | **ACRF Garage** |  | 2023-04-03 | 2023-10-16 |  |  |  |
|  | 1 | **Phase 1A - ACRF Garage Shafts / MEP** |  | 2023-04-03 | 2023-04-14 |  |  |  |
| P1A.DEMO.1.100 |  | Prepare & Submit Demo Permit - ACRF Garage Shafts / MEP | 5d | 2023-04-03 A | 2023-04-07 A | BP3.024.1.140 SS+5d | 100% |  |
| P1A.DEMO.2.100 |  | Review & Approve Demo Permit - ACRF Garage Shafts / MEP | 5d | 2023-04-10 A | 2023-04-14 A | P1A.DEMO.1.100 | 100% |  |
|  | 2 | **Phase 1 - ACRF Garage Structure** |  | 2023-07-18 | 2023-10-16 |  |  |  |

| ID | WBS | Task | Duration | Start | Finish | Predecessors | Complete | Total float |
| --- | --- | --- | --- | --- | --- | --- | --- | --- |
| P1.DEMO.1.110 |  | Prepare & Submit Demo Permit - ACRF Garage Structure | 15d | 2023-07-18 A | 2023-10-02 A | P1.DES.410, BP3.024.1.100 SS | 100% |  |
| P1.DEMO.2.110 |  | Review & Approve Demo Permit - ACRF Garage Structure | 10d | 2023-10-03 A | 2023-10-16 A | P1.DEMO.1.110 | 100% |  |
|  | 4 | **CRC Facade** |  | 2024-05-16 | 2024-06-19 |  |  |  |
| P1.DEMO.1.120 |  | Prepare & Submit Demo Permit - CRC Facade | 1d | 2024-05-16 A | 2024-05-16 A | P2A.DES.555 | 100% |  |
| P1.DEMO.2.120 |  | Review & Approve Demo Permit - CRC Facade | 10d | 2024-05-21 A | 2024-06-19 A | P1.DEMO.1.120 | 100% |  |
|  | 2 | **Phase 5** |  | 2027-06-18 | 2027-08-20 |  |  |  |
|  | 1 | **Phase 5 - CRC** |  | 2027-06-18 | 2027-08-20 |  |  |  |
| P5.DEMO.1.100 |  | Prepare & Submit Demo Permit - CRC - Phase 5 | 15d | 2027-06-18 | 2027-07-09 | P5.PREC.120 |  | 40d |
| P5.DEMO.2.100 |  | Review & Approve Demo Permit - CRC - Phase 5 | 30d | 2027-07-12 | 2027-08-20 | P5.DEMO.1.100 |  | 40d |
|  | 1 | **MDE - Land Disturbance** |  | 2022-09-06 | 2023-05-30 |  |  |  |
|  | 1 | **MDE Permit - Phase 0** |  | 2022-09-06 | 2023-03-17 |  |  |  |
| P0.MDE.100 |  | Phase 0 - NIH MDE Internal Review | 10d | 2022-09-06 A | 2022-09-20 A | P0.DES.240 | 100% |  |
| P0.MDE.110 |  | Phase 0 - MDE Permit Expediter Review | 10d | 2022-09-21 A | 2022-10-03 A | P0.MDE.100 | 100% |  |
| P0.MDE.120 |  | Phase 0 - Permit Expediter Comment Reconciliation | 10d | 2022-10-04 A | 2022-10-26 A | P0.MDE.110 | 100% |  |
| P0.MDE.130 |  | Phase 0 - MDE Permit Review & Issuance (E&SC only) | 30d | 2022-10-27 A | 2023-01-23 A | P0.MDE.120 | 100% |  |
| P0.MDE.140 |  | Phase 0 - MDE Permit Issued | 1d | 2023-01-23 A | 2023-01-23 A | P0.MDE.130 FF, P0.MDE.130 | 100% |  |
|  | 1 | **MDE Permit - Phase 0 - Field Mod #1 - E&SC Measures** |  | 2023-01-25 | 2023-02-01 |  |  |  |
| P0.MDE.MOD1.100 |  | HP / Design Team - Prepare & Submit to NIH ORF/DEP - Phase 0 MDE Permit Field Mod #1 | 2d | 2023-01-25 A | 2023-01-26 A | P0.MDE.140 | 100% |  |
| P0.MDE.MOD1.110 |  | NIH ORF/DEP - Review and Comment - Phase 0 MDE Permit Field Mod #1 | 10d | 2023-01-26 A | 2023-01-27 A | P0.MDE.MOD1.100 | 100% |  |
| P0.MDE.MOD1.120 |  | MDE - Review & Recommend - Phase 0 MDE Permit Field Mod #1 | 14d | 2023-01-30 A | 2023-01-31 A | P0.MDE.MOD1.110 | 100% |  |
| P0.MDE.MOD1.130 |  | Approval & Issuance - Phase 0 MDE Permit Field Mod #1 | 1d | 2023-02-01 A | 2023-02-01 A | P0.MDE.MOD1.120 | 100% |  |
|  | 2 | **MDE Permit - Phase 0 - Field Mod #2 - Early Work - Water Main** |  | 2023-02-02 | 2023-03-17 |  |  |  |
| P0.MDE.MOD2.100 |  | HP / Design Team - Prepare & Submit to NIH ORF/DEP - Phase 0 MDE Permit Field Mod #2 | 5d | 2023-02-02 A | 2023-02-08 A | P0.MDE.MOD1.130 FF+1d | 100% |  |
| P0.MDE.MOD2.110 |  | NIH ORF/DEP - Review and Comment - Phase 0 MDE Permit Field Mod #2 | 10d | 2023-02-09 A | 2023-02-14 A | P0.MDE.MOD2.100 | 100% |  |
| P0.MDE.MOD2.120 |  | HP / Design Team - Final Comment Resolution and Resubmission to NIH ORF/DEP - Phase 0 MDE Permit Field Mod #2 | 2d | 2023-02-14 A | 2023-02-27 A | P0.MDE.MOD2.110 | 100% |  |
| P0.MDE.MOD2.130 |  | NIH ORF/DEP - Back Check Comment Resolution and Submit to MDE - Phase 0 MDE Permit Field Mod #2 | 5d | 2023-02-27 A | 2023-02-27 A | P0.MDE.MOD2.120 | 100% |  |
| P0.MDE.MOD2.140 |  | MDE - Review & Recommend - Phase 0 MDE Permit Field Mod #2 | 14d | 2023-02-28 A | 2023-03-16 A | P0.MDE.MOD2.130 | 100% |  |
| P0.MDE.MOD2.150 |  | NIH ORF/DEP - Approval & Issuance - Phase 0 MDE Permit Field Mod #2 | 1d | 2023-03-17 A | 2023-03-17 A | P0.MDE.MOD2.140 | 100% |  |
|  | 2 | **MDE Permit - Phase 1** |  | 2022-12-22 | 2023-05-30 |  |  |  |
| P1.MDE.150 |  | HP / Design Team - Prepare & Submit to NIH ORF/DEP - Phase 1 MDE Permit Ammendment - Rev 0 | 1d | 2022-12-22 A | 2023-01-21 A | P1.DES.340 | 100% |  |
| P1.MDE.140 |  | NIH ORF/DEP - Review and Submit to MDE - Phase 1 MDE Permit Ammendment - Rev 0 | 10d | 2023-01-23 A | 2023-01-27 A | P1.MDE.150 | 100% |  |
| P1.MDE.160 |  | MDE - Review and Comment - Phase 1 MDE Permit Ammendment - Rev 0 | 30d | 2023-01-30 A | 2023-02-08 A | P1.MDE.140, P0.MDE.140 | 100% |  |
| P1.MDE.170 |  | HP / Design Team - Design Team Comment Resolution - Phase 1 MDE Permit Ammendment - Rev 0 | 9d | 2023-02-09 A | 2023-02-15 A | P1.MDE.160 | 100% |  |
| P1.MDE.240 |  | HP / Design Team - Comment Conference - Phase 1 MDE Permit Ammendment - Rev 0 (Wasn't Necessary) | 1d | 2023-02-16 A | 2023-02-16 A | P1.MDE.170 | 100% |  |
| P1.MDE.180 |  | HP / Design Team - Final Comment Resolution and Resubmission to NIH ORF/DEP - Phase 1 MDE Permit Ammendment - Rev 1 | 5d | 2023-02-17 A | 2023-02-21 A | P1.MDE.240 | 100% |  |
| P1.MDE.190 |  | NIH ORF/DEP - Review and Resubmission to MDE - Phase 1 MDE Permit Ammendment - Rev 1 | 10d | 2023-02-22 A | 2023-03-01 A | P1.MDE.180 | 100% |  |
| P1.MDE.200 |  | MDE - Review Resubmission and Recommend for Approval - Phase 1 MDE Permit Ammendment - Rev 1 | 30d | 2023-03-02 A | 2023-03-06 A | P1.MDE.190 | 100% |  |
| P1.MDE.250 |  | HP / Design Team - Design Team Comment Resolution of Resubmission - Phase 1 MDE Permit Ammendment - Rev 1 | 9d | 2023-03-07 A | 2023-03-20 A | P1.MDE.200 | 100% |  |
| P1.MDE.260 |  | HP / Design Team - Comment Conf for Resubmission Comments - Phase 1 MDE Permit Ammendment - Rev 1 (**UD8.0 - Not Req'd) | 1d | 2023-03-20 A | 2023-03-20 A | P1.MDE.250 | 100% |  |
| P1.MDE.270 |  | HP / Design Team - Final Comment Resolution and Re-Resubmission to NIH ORF/DEP - Phase 1 MDE Permit Ammend - Rev 2 | 5d | 2023-03-20 A | 2023-03-20 A | P1.MDE.260 | 100% |  |
| P1.MDE.280 |  | NIH ORF/DEP - Review and Re-Resubmission to MDE - Phase 1 MDE Permit Ammendment - Rev 2 | 10d | 2023-03-20 A | 2023-03-21 A | P1.MDE.270 | 100% |  |
| P1.MDE.290 |  | MDE - Review Re-Resubmission and Recommend for Approval - Phase 1 MDE Permit Ammendment - Rev 2 | 7d | 2023-03-21 A | 2023-03-30 A | P1.MDE.280 | 100% |  |
| P1.MDE.210 |  | MDE - Permit Signed - Phase 1 MDE Permit Ammendment | 14d | 2023-04-01 A | 2023-04-25 A | P1.MDE.290 FF, P1.MDE.290 | 100% |  |
| P1.MDE.220 |  | MDE - Notice of Intent (NOI) Review Period - Phase 1 MDE Permit Ammendment | 14d | 2023-04-28 A | 2023-05-22 A | P1.MDE.210 | 100% |  |
| P1.MDE.230 |  | MDE - NOI Approval - Phase 1 MDE Permit Ammendment | 1d | 2023-05-23 A | 2023-05-23 A | P1.MDE.220 | 100% |  |
| P1.MDE.130 |  | MDE Permit Issued - Phase 1 MDE Permit Ammendment | 14d | 2023-05-24 A | 2023-05-30 A | P1.MDE.230 | 100% |  |
|  | 5 | **MDE - Air Emissions** |  | 2024-07-30 | 2025-11-20 |  |  |  |
| P2.MDE.140 |  | Prep & File MDE Air Emission Generator Permit | 5d | 2024-07-30 A | 2025-04-02 A | BP1.263.2.100 SS, P1.MDE.130, BP1.260.0.100 | 100% |  |
| P2.MDE.150 |  | MDE Air Emission Generator Permit Review | 150d | 2025-04-02 A | 2025-11-20 A | P2.MDE.140 | 100% |  |
|  | 3 | **ADRB Presentations** |  | 2023-01-16 | 2023-09-25 |  |  |  |
| P2.ADRB.100 |  | Exterior Design Progression Presentation Review (from 65% Phase 2) | 5d | 2023-01-16 A | 2023-01-20 A | P5.DES.140, P2.DES.110 | 100% |  |
| P2.ADRB.110 |  | Exterior Design Progression Presentation Review (from 95% Phase 2) | 5d | 2023-09-25 A | 2023-09-25 A | P2.ADRB.100 | 100% |  |
|  | 4 | **NIH/AHJ** |  | 2024-03-29 | 2025-12-01 |  |  |  |
| P2A.NIH.130 |  | SRLM Life Safety AHJ Permit Review (from 100% IFC Phase 2 Design) 2A | 20d | 2024-03-29 A | 2024-04-24 A | P2A.DES.555 FF | 100% |  |
| P2C.NIH.110 |  | SRLM Life Safety AHJ Permit Review (from 100% IFC Phase 2 Design) 2C | 20d | 2024-10-31 A | 2025-12-01 | P2C.DES.210 FF, P2B.DES.785 FF | 95% | 98d |
|  | 4 | **PRECONSTRUCTION** |  | 2022-04-26 | 2026-09-30 |  |  |  |
|  | 3 | **Pre-Work Submittals & Approval** |  | 2022-04-26 | 2023-06-16 |  |  |  |
|  | 1 | **Submittal** |  | 2022-04-26 | 2023-06-09 |  |  |  |
| PWS.100 |  | Prepare & Submit - Contractor Quality Control Plan | 20d | 2022-04-26 A | 2022-05-04 A | PWS.110 | 100% |  |
| PWS.110 |  | Prepare & Submit - Site Specific Safety Plan | 15d | 2022-04-26 A | 2022-05-17 A | EXS.100 | 100% |  |
| PWS.160 |  | Prepare & Submit - Preliminary D-B Schedule | 15d | 2022-04-26 A | 2022-05-13 A | EXS.100, EXS.100 SS | 100% |  |
| PWS.220 |  | Prepare & Submit - Initial Site Access Personnel | 10d | 2022-04-26 A | 2022-05-09 A | EXS.100 | 100% |  |
| PWS.120 |  | Prepare & Submit - Site Specific Phase 0 Logistics Plan | 20d | 2022-06-28 A | 2022-08-26 A | PWS.110 SS, P0.DES.100 SS | 100% |  |
| PWS.180 |  | Prepare & Submit - Site Specific SWPPP & Haz Material Handling | 20d | 2022-09-01 A | 2022-09-29 A | PWS.110 SS, PWS.100 | 100% |  |
| PWS.250 |  | Prepare & Submit - Site Specific Phase 1 Logistics Plan | 20d | 2022-11-01 A | 2022-11-17 A | P1.DES.280, PWS.120 | 100% |  |
| PWS.270 |  | Prepare & Submit - Site Specific Phase 2 Logistics Plan | 15d | 2023-06-05 A | 2023-06-09 A | P2C.DES.145 | 100% |  |
|  | 2 | **NIH Review** |  | 2022-05-05 | 2023-06-16 |  |  |  |
| PWS.130 |  | Review & Approve - Contractor Quality Control Plan | 10d | 2022-05-05 A | 2022-05-16 A | PWS.100 | 100% |  |
| PWS.230 |  | Review & Issue- Initial Site Access Personnel Clearance | 10d | 2022-05-10 A | 2022-05-23 A | PWS.220 | 100% |  |
| PWS.170 |  | Review & Approve - Preliminary D-B Schedule | 10d | 2022-05-14 A | 2022-05-26 A | PWS.160 | 100% |  |

| ID | WBS | Task | Duration | Start | Finish | Predecessors | Complete | Total float |
| --- | --- | --- | --- | --- | --- | --- | --- | --- |
| PWS.140 |  | Review & Approve - Site Specific Safety Plan | 10d | 2022-05-18 A | 2022-06-28 A | PWS.110 | 100% |  |
| PWS.210 |  | Phase 0 Pre-Construction Meeting - Site Investigation Phase | 2d | 2022-05-26 A | 2022-05-27 A | PWS.140 SS, PDS.230, PWS.230 | 100% |  |
| PWS.150 |  | Review & Approve - Site Specific Phase 0 Logistics Plan | 10d | 2022-09-01 A | 2022-09-15 A | PWS.120 | 100% |  |
| PWS.190 |  | Reivew & Approve - Site Specific SWPPP & Haz Material Handling | 10d | 2022-09-30 A | 2022-10-13 A | PWS.180 | 100% |  |
| PWS.260 |  | Review & Approve - Site Specific Phase 1 Logistics Plan | 10d | 2022-11-18 A | 2022-12-05 A | PWS.250 | 100% |  |
| PWS.280 |  | Review & Approve - Site Specific Phase 2 Logistics Plan | 10d | 2023-06-12 A | 2023-06-16 A | PWS.270 | 100% |  |
|  | 2 | **Phases 0-2 - Buy Out, Submittals, Approval, Fabrication, Mock-ups** |  | 2022-11-03 | 2026-07-22 |  |  |  |
|  | 6 | **Bid Package #0 - Phase 0 Pre-work** |  | 2022-11-03 | 2023-05-01 |  |  |  |
|  | 1 | **Submittal** |  | 2022-11-03 | 2023-01-24 |  |  |  |
| SUB.P0.170 |  | Prepare & Submit - Garage Field Office Drawings | 25d | 2022-11-03 A | 2022-12-09 A | P0.DES.165 | 100% |  |
| SUB.P0.130 |  | Prepare & Submit - Vehicle Inspection Station/Guard Booths | 20d | 2022-12-12 A | 2023-01-10 A | P0.DES.160 | 100% |  |
| SUB.P0.100 |  | Prepare & Submit - Fencing, Barriers, Temp Protection, Utility Services | 10d | 2022-12-19 A | 2023-01-03 A | P0.DES.160 | 100% |  |
| SUB.P0.180 |  | Prepare & Submit - Temporary Exiting Structures & OH Protection Measures | 25d | 2022-12-19 A | 2023-01-24 A | P0A.DES.170 FF | 100% |  |
|  | 2 | **NIH Review & Approval** |  | 2022-12-12 | 2023-01-27 |  |  |  |
| RAP.P0.180 |  | Review & Approve - Garage Field Office Drawings | 10d | 2022-12-12 A | 2022-12-23 A | SUB.P0.170 | 100% |  |
| RAP.P0.110 |  | Review & Approve - Fencing, Barriers, Temp Protection, Utility Services | 10d | 2023-01-04 A | 2023-01-17 A | P0.DES.165, SUB.P0.100 | 100% |  |
| RAP.P0.140 |  | Review & Approve - Vehicle Inspection Station/Guard Booths | 10d | 2023-01-11 A | 2023-01-24 A | SUB.P0.130 | 100% |  |
| RAP.P0.193 |  | Review & Approve - Temporary Exiting Structures & OH Protection Measures | 10d | 2023-01-25 A | 2023-01-27 A | SUB.P0.180 | 100% |  |
|  | 3 | **Fabrication** |  | 2022-12-26 | 2023-05-01 |  |  |  |
| FAD.P0.120 |  | Fabricate & Deliver - Fencing, Barriers, Temp Protection, Utility Services | 15d | 2022-12-26 A | 2023-01-27 A | RAP.P0.110 | 100% |  |
| FAD.P0.190 |  | Fabricate & Deliver- Garage Field Office Components/Equipment | 40d | 2022-12-27 A | 2023-02-20 A | RAP.P0.180 | 100% |  |
| FAD.P0.150 |  | Fabricate & Deliver - Vehicle Inspection Station/Guard Booths | 45d | 2023-01-25 A | 2023-05-01 A | RAP.P0.140 | 100% |  |
| FAD.P0.200 |  | Fabricate & Deliver - Temporary Exiting Structures & OH Protection Measures | 45d | 2023-01-30 A | 2023-01-31 A | RAP.P0.193 | 100% |  |
|  | 8 | **Bid Package 1** |  | 2022-12-12 | 2026-05-10 |  |  |  |
|  | 1 | **Electric Track Vehicle System** |  | 2023-09-05 | 2024-12-05 |  |  |  |
| BP1.125.1.100 |  | Prep/Submit/Design - Electric Track Vehicle System - St. Onge | 40d | 2023-09-05 A | 2023-12-13 A | P2C.DES.145 | 100% |  |
| BP1.125.0.100 |  | Buyout - Electric Track Vehicle System (Design) (Teledyamics) | 30d | 2023-12-14 A | 2024-08-28 A | BP1.125.1.100 | 100% |  |
| BP1.125.1.110 |  | Prep/Submit/Design - Electric Track Vehicle System - Teledynamics | 40d | 2023-12-15 A | 2024-10-15 A | BP1.125.0.100 FF+20d, BP1.125.1.100 | 100% |  |
| BP1.125.2.100 |  | Review/Approve - Electric Track Vehicle System | 35d | 2024-10-15 A | 2024-10-25 A | BP1.125.1.110 | 100% |  |
| BP1.125.3.100 |  | Lead/Fab/Deliver - Drug Trolley Track & Equipment | 30d | 2024-10-31 A | 2024-12-05 A | BP1.125.2.100 | 100% |  |
| BP1.125.3.110 |  | Lead/Fab/Deliver - Drug Trolley Hangers | 20d | 2024-10-31 A | 2024-12-05 A | BP1.125.2.100 | 100% |  |
|  | 2 | **Pneumatic Tube** |  | 2023-01-03 | 2024-11-14 |  |  |  |
| BP1.149.0.110 |  | Buyout - Pneumatic Tube (Design) | 30d | 2023-01-03 A | 2023-11-13 A | P2.DES.110 SS+30d | 100% |  |
| BP1.149.0.100 |  | Buyout - Pneumatic Tube (Construction) | 30d | 2024-05-28 A | 2024-06-26 A | P2C.DES.295 SS | 100% |  |
| BP1.149.1.100 |  | Prep/Submit - Pneumatic Tube | 20d | 2024-08-01 A | 2024-08-20 A | BP1.149.0.100 | 100% |  |
| BP1.149.2.100 |  | Review/Approve - Pneumatic Tube | 35d | 2024-08-20 A | 2024-10-03 A | BP1.149.1.100 | 100% |  |
| BP1.149.3.110 |  | Lead/Fab/Deliver - Pneumatic Tube Hangers | 20d | 2024-10-29 A | 2024-11-14 A | BP1.149.2.100 | 100% |  |
| BP1.149.3.100 |  | Lead/Fab/Deliver - Pneumatic Tube | 50d | 2024-11-01 A | 2024-11-14 A | BP1.149.2.100 | 100% |  |
|  | 3 | **Modular Ceilings** |  | 2022-12-27 | 2025-12-01 |  |  |  |
| BP1.095.0.100 |  | Buyout - Modular Ceilings | 30d | 2022-12-27 A | 2023-02-03 A | P2.DES.315 | 100% |  |
| BP1.095.1.100 |  | Prep/Submit/Design - Modular Ceilings (With 2C Design) | 150d | 2023-04-14 A | 2024-09-19 A | P2C.DES.295 FF, P2C.DES.145 SS, BP1.095.0.100 | 100% |  |
| BP1.095.2.100 |  | Review/Approve - Modular Ceilings | 21d | 2024-09-19 A | 2024-10-16 A | P2C.DES.185 SS, BP1.095.1.100 | 100% |  |
| BP1.095.3.200 |  | Lead/Fab/Deliver - Structural Steel Supports Flexible OR | 50d | 2024-10-16 A | 2024-12-26 A | BP1.095.2.100 | 100% |  |
| BP1.095.3.220 |  | Lead/Fab/Deliver - Ceiling Level Components | 50d | 2025-09-03 A | 2025-12-01 | BP1.095.2.100 | 100% | 323d |
|  | 4 | **Egress Stairs** |  | 2023-01-16 | 2023-05-31 |  |  |  |
| BP1.055.0.200 |  | Buyout - Egress Stairs - 1A | 30d | 2023-01-16 A | 2023-03-14 A | P1A.DES.590 | 100% |  |
| BP1.055.1.200 |  | Prep/Submit/Design - Egress Stairs - 1A | 10d | 2023-03-08 A | 2023-04-19 A | BP1.055.0.200 | 100% |  |
| BP1.055.2.200 |  | Review/Approve - Egress Stairs- 1A | 10d | 2023-04-04 A | 2023-04-28 A | BP1.055.1.200 | 100% |  |
| BP1.055.3.300 |  | Lead/Fab/Deliver - Egress Stairs- 1A | 56d | 2023-04-19 A | 2023-05-31 A | BP1.055.2.200 | 100% |  |
|  | 5 | **Fire Protection** |  | 2023-02-13 | 2025-07-28 |  |  |  |
| BP1.210.0.100 |  | Buyout - Fire Protection - Phase 1A | 16d | 2023-02-13 A | 2023-03-08 A | P2.DES.315 | 100% |  |
| BP1.210.1.100 |  | Buyout - Fire Protection - Phase 2 | 40d | 2023-03-18 A | 2023-06-19 A | P1.DES.330, P2.DES.265, BP1.210.0.100 | 100% |  |
| BP1.210.0.110 |  | Prep/Submit/Design - Fire Protection | 16d | 2024-03-29 A | 2024-09-02 A | P2C.DES.295, BP1.210.1.100 | 100% |  |
| BP1.210.2.100 |  | Review/Approve - Fire Protection | 35d | 2024-03-29 A | 2024-10-30 A | BP1.210.0.110 FF | 100% |  |
| BP1.210.3.100 |  | Lead/Fab/Deliver - Fire Protection | 40d | 2024-08-19 A | 2024-09-03 A | BP1.210.2.100 SS | 100% |  |
| BP1.210.3.200 |  | Lead/Fab/Deliver - Fire Pump | 90d | 2025-06-01 A | 2025-07-28 A | BP1.210.2.100 | 100% |  |
|  | 6 | **Elevators** |  | 2022-12-19 | 2025-07-14 |  |  |  |
| BP1.142.0.100 |  | Buyout - Elevators | 30d | 2022-12-19 A | 2023-01-31 A | P2.DES.315 | 100% |  |
| BP1.142.1.110 |  | Prep/Submit - Elevator Elevator Embeds | 20d | 2023-07-24 A | 2023-10-19 A | P2.DES.140, BP1.142.0.100 | 100% |  |
| BP1.142.2.110 |  | Review/Approve - Elevators Embeds | 35d | 2023-10-19 A | 2023-10-26 A | BP1.142.1.110 | 100% |  |
| BP1.142.1.500 |  | Lead/Fab/Deliver - Elevator Steel | 10d | 2023-10-20 A | 2023-10-27 A | BP1.142.2.110 | 100% |  |
| BP1.142.2.100 |  | Review/Approve - Elevators | 35d | 2024-03-04 A | 2024-05-28 A | BP1.142.1.100 | 100% |  |
| BP1.142.1.100 |  | Prep/Submit - Elevators | 20d | 2024-03-06 A | 2024-05-28 A | BP1.142.0.100 | 100% |  |
| BP1.142.3.100 |  | Lead/Fab/Deliver - Elevator Fronts | 100d | 2024-06-13 A | 2025-07-14 A | BP1.142.2.100 | 100% |  |
| BP1.142.3.200 |  | Lead/Fab/Deliver - Elevator Rails | 40d | 2024-06-13 A | 2025-05-15 A | BP1.142.2.100 | 100% |  |
| BP1.142.3.300 |  | Lead/Fab/Deliver - Elevator Cabs | 80d | 2024-06-13 A | 2025-07-14 A | BP1.142.2.100 | 100% |  |
| BP1.142.3.400 |  | Lead/Fab/Deliver - Elevator Machines | 150d | 2024-06-13 A | 2024-10-28 A | BP1.142.2.100 | 100% |  |
|  | 7 | **Mechanical** |  | 2022-12-12 | 2025-09-29 |  |  |  |
| BP1.200.0.100 |  | Buyout - Mech/Plumbing | 30d | 2022-12-12 A | 2023-01-24 A | EXS.100 SS | 100% |  |
| BP1.233.3.200 |  | Lead/Fab/Deliver - EF's (1A) | 50d | 2023-01-09 A | 2023-02-21 A | P1A.DES.630 | 100% |  |

| ID | WBS | Task | Duration | Start | Finish | Predecessors | Complete |
| --- | --- | --- | --- | --- | --- | --- | --- |
| BP1.200.1.100 |  | Prep/Submit - Mech/Plumbing - Phase 1 / 1A | 20d | 2023-01-25 A | 2023-10-31 A | P1.DES.410, BP1.200.0.100 | 100% |
| BP1.200.2.100 |  | Review/Approve - Mech/Plumbing - Phase 1 / 1A | 35d | 2023-11-15 A | 2023-12-26 A | P1.DES.420, BP1.200.1.100 | 100% |
| BP1.232.3.100 |  | Lead/Fab/Deliver - Mechanical Piping in Tunnel | 30d | 2023-12-19 A | 2024-01-25 A | BP1.200.2.100 | 100% |
| BP1.233.1.120 |  | Prep/Submit - Variable Frequency Drive (VFD) System | 20d | 2024-04-01 A | 2024-04-10 A | P2C.DES.295, BP1.200.0.100 | 100% |
| BP1.237.1.100 |  | Prep/Submit - AHU's | 20d | 2024-06-03 A | 2024-06-06 A | P2C.DES.285, BP1.200.0.100 | 100% |
| BP1.237.2.100 |  | Review/Approve - AHU's | 35d | 2024-06-10 A | 2024-09-23 A | BP1.237.1.100 | 100% |
| BP1.235.1.100 |  | Prep/Submit - Heat Exchangers | 20d | 2024-07-18 A | 2024-07-30 A | P2C.DES.295, BP1.200.0.100 | 100% |
| BP1.200.1.170 |  | Prep/Submit - Condensate Pumps | 20d | 2024-08-14 A | 2024-08-15 A | P2C.DES.295 | 100% |
| BP1.200.1.150 |  | Prep/Submit - Pumps | 20d | 2024-08-16 A | 2024-08-16 A | P2C.DES.295 | 100% |
| BP1.200.2.150 |  | Review/Approve - Pumps | 35d | 2024-08-16 A | 2024-09-20 A | BP1.200.1.150 | 100% |
| BP1.200.2.170 |  | Review/Approve - Condensate Pumps | 35d | 2024-08-16 A | 2024-09-20 A | BP1.200.1.170 | 100% |
| BP1.233.2.120 |  | Review/Approve - Variable Frequency Drive (VFD) System | 35d | 2024-08-16 A | 2024-09-26 A | BP1.233.1.120 | 100% |
| BP1.235.2.100 |  | Review/Approve - Heat Exchangers | 35d | 2024-08-16 A | 2024-09-20 A | BP1.235.1.100 | 100% |
| BP1.233.3.100 |  | Lead/Fab/Deliver - Ductwork | 30d | 2024-09-02 A | 2024-10-10 A | BP1.200.2.100, BP1.200.2.110 | 100% |
| BP1.200.1.160 |  | Prep/Submit - Steam Specialties | 20d | 2024-09-03 A | 2024-10-28 A | P2C.DES.295 | 100% |
| BP1.233.2.110 |  | Review/Approve - UVC Lighting for Airstream Disinfection | 35d | 2024-09-03 A | 2024-10-31 A | BP1.233.1.110 | 100% |
| BP1.238.2.110 |  | Review/Approve - Humidifiers | 35d | 2024-09-03 A | 2024-10-31 A | BP1.238.1.110 | 100% |
| BP1.237.3.100 |  | Lead/Fab/Deliver - HRU's | 140d | 2024-09-20 A | 2025-04-30 A | BP1.200.2.100, BP1.200.2.110 | 100% |
| BP1.237.3.200 |  | Lead/Fab/Deliver - AHU's | 140d | 2024-09-23 A | 2025-02-28 A | BP1.200.2.100, BP1.200.2.110, BP1.237.2.100 | 100% |
| BP1.238.1.100 |  | Prep/Submit - FCU's | 20d | 2024-10-01 A | 2024-11-04 A | BP1.200.0.100 | 100% |
| BP1.250.1.100 |  | Prep/Submit - Control Systems Integration | 20d | 2024-10-01 A | 2024-12-09 A | BP1.200.0.100 | 100% |
| BP1.250.1.110 |  | Prep/Submit - BAS | 20d | 2024-10-01 A | 2024-12-16 A | BP1.200.0.100 | 100% |
| BP1.200.2.160 |  | Review/Approve - Steam Specialties | 35d | 2024-10-08 A | 2025-02-25 A | BP1.200.1.160 | 100% |
| BP1.230.2.110 |  | Review/Approve - Control Valves and Dampers | 35d | 2024-10-16 A | 2025-02-13 A | BP1.230.1.110 | 100% |
| BP1.230.1.110 |  | Prep/Submit - Control Valves and Dampers | 20d | 2024-10-18 A | 2024-10-21 A | P2C.DES.235 SS, BP1.200.0.100 | 100% |
| BP1.233.1.110 |  | Prep/Submit - UVC Lighting for Airstream Disinfection | 20d | 2024-10-18 A | 2024-10-21 A | P2C.DES.235 SS, BP1.200.0.100 | 100% |
| BP1.238.1.110 |  | Prep/Submit - Humidifiers | 20d | 2024-10-18 A | 2024-10-21 A | P2C.DES.235 SS, BP1.200.0.100 | 100% |
| BP1.224.3.940 |  | Lead/Fab/Deliver - Pumps | 180d | 2024-10-21 A | 2025-01-01 A | BP1.200.2.150 | 100% |
| BP1.235.3.100 |  | Lead/Fab/Deliver - Heat Exchangers | 192d | 2024-10-21 A | 2025-01-23 A | BP1.235.2.100 | 100% |
| BP1.233.3.400 |  | Lead/Fab/Deliver - Variable Frequency Drive (VFD) System | 301d | 2024-10-28 A | 2025-08-08 A | BP1.233.2.120 | 100% |
| BP1.230.1.100 |  | Prep/Submit - Laboratory Temperature and Airflow Control Systems | 20d | 2024-11-15 A | 2025-02-28 A | P2C.DES.295, BP1.200.0.100 | 100% |
| BP1.250.2.100 |  | Review/Approve - Control Systems Integration | 35d | 2024-12-09 A | 2025-02-26 A | BP1.250.1.100 | 100% |
| BP1.250.2.110 |  | Review/Approve - BAS | 35d | 2024-12-16 A | 2025-04-10 A | BP1.250.1.110 | 100% |
| BP1.233.3.300 |  | Lead/Fab/Deliver - EF's (2) | 90d | 2025-01-07 A | 2025-04-15 A | BP1.200.2.100, BP1.200.2.110 | 100% |
| BP1.238.2.100 |  | Review/Approve - FCU's | 35d | 2025-02-03 A | 2025-02-21 A | BP1.238.1.100 | 100% |
| BP1.230.2.100 |  | Review/Approve - Laboratory Temperature and Airflow Control Systems | 35d | 2025-02-05 A | 2025-06-02 A | BP1.230.1.100 | 100% |
| BP1.230.3.110 |  | Lead/Fab/Deliver - Control Valves and Dampers | 99d | 2025-02-13 A | 2025-05-24 A | BP1.230.2.110 | 100% |
| BP1.224.3.950 |  | Lead/Fab/Deliver - Steam Specialties | 120d | 2025-02-22 A | 2025-06-20 A | BP1.200.2.160 | 100% |
| BP1.250.3.100 |  | Lead/Fab/Deliver - Control Systems Integration | 99d | 2025-02-26 A | 2025-07-07 A | BP1.250.2.100 | 100% |
| BP1.224.3.960 |  | Lead/Fab/Deliver - Condensate Pumps | 180d | 2025-02-28 A | 2025-05-12 A | BP1.200.2.170 | 100% |
| BP1.233.3.110 |  | Lead/Fab/Deliver - UVC Lighting for Airstream Disinfection | 99d | 2025-03-01 A | 2025-03-30 A | BP1.233.2.110 | 100% |
| BP1.238.3.190 |  | Lead/Fab/Deliver - Humidifiers | 99d | 2025-03-01 A | 2025-03-30 A | BP1.238.2.110 | 100% |
| BP1.238.3.100 |  | Lead/Fab/Deliver - VAV/FCU's | 56d | 2025-03-21 A | 2025-06-16 A | BP1.200.2.100, BP1.200.2.110, BP1.238.2.100 | 100% |
| BP1.250.3.110 |  | Lead/Fab/Deliver - BAS | 99d | 2025-04-11 A | 2025-07-03 A | BP1.250.2.110 | 100% |
| BP1.230.3.100 |  | Lead/Fab/Deliver - Laboratory Temperature and Airflow Control Systems | 85d | 2025-04-16 A | 2025-07-25 A | BP1.230.2.100 FF, BP1.230.2.100 SS | 100% |
| BP1.233.1.100 |  | Prep/Submit - Grilles, Registers and Diffusers | 20d | 2025-04-21 A | 2025-04-22 A | BP1.200.0.100 | 100% |
| BP1.233.2.100 |  | Review/Approve - Grilles, Registers and Diffusers | 35d | 2025-04-22 A | 2025-05-22 A | BP1.233.1.100 | 100% |
| BP1.233.3.410 |  | Lead/Fab/Deliver - Grilles, Registers and Diffusers | 85d | 2025-05-23 A | 2025-09-29 A | BP1.233.2.100 | 100% |
|  | 9 | **Plumbing** |  | 2024-06-01 | 2026-05-10 |  |  |
| BP1.200.2.110 |  | Review/Approve - Mech/Plumbing - Phase 2 | 35d | 2024-06-01 A | 2024-06-28 A | BP1.200.1.110 SS+15d | 100% |
| BP1.220.3.100 |  | Lead/Fab/Deliver - Mixing Valves | 30d | 2024-06-11 A | 2025-01-01 A | BP1.200.2.100, BP1.200.2.110 | 100% |
| BP1.226.1.110 |  | Prep/Submit - High Purity Water Pipe | 20d | 2024-07-01 A | 2024-07-12 A | P2C.DES.205, BP1.200.0.100 | 100% |
| BP1.226.2.110 |  | Review/Approve - High Purity Water Pipe | 35d | 2024-07-12 A | 2024-11-08 A | BP1.226.1.110 | 100% |
| BP1.200.1.110 |  | Prep/Submit - Mech/Plumbing - Phase 2 | 20d | 2024-07-18 A | 2024-08-14 A | P2C.DES.295 SS, BP1.200.0.100 | 100% |
| BP1.220.1.140 |  | Prep/Submit - Plumbing Equipment | 20d | 2024-08-01 A | 2024-08-15 A | P2C.DES.295, BP1.200.0.100 | 100% |
| BP1.226.1.100 |  | Prep/Submit - Lab Compressed-Air Systems | 20d | 2024-08-01 A | 2024-08-21 A | P2C.DES.295, BP1.200.0.100 | 100% |
| BP1.226.3.120 |  | Prep/ Submit - Backflow Preventer Skids | 20d | 2024-08-12 A | 2024-08-13 A | BP1.200.0.100 | 100% |
| BP1.226.3.130 |  | Review/ Approve - Backflow Preventer Skids | 35d | 2024-08-13 A | 2024-09-13 A | BP1.226.3.120 | 100% |
| BP1.220.2.140 |  | Review/Approve - Plumbing Equipment | 35d | 2024-08-16 A | 2025-01-10 A | BP1.220.1.140 | 100% |
| BP1.226.2.100 |  | Review/Approve - Lab Compressed-Air Systems | 35d | 2024-08-21 A | 2024-09-23 A | BP1.226.1.100 | 100% |
| BP1.226.3.100 |  | Lead/Fab/Deliver - Med Gas | 50d | 2024-09-02 A | 2025-01-07 A | BP1.200.2.100, BP1.200.2.110 | 100% |
| BP1.224.1.100 |  | Prep/Submit - Plumbing Fixtures | 20d | 2024-10-01 A | 2024-10-04 A | P2C.DES.235 SS, BP1.200.0.100 | 100% |
| BP1.226.3.140 |  | Lead/ Fab/ Deliver - Backflow Preventer Skids | 112d | 2024-10-21 A | 2025-03-17 A | BP1.226.3.130 | 100% |
| BP1.223.1.100 |  | Prep/Submit - Domestic Water Softeners | 20d | 2024-11-06 A | 2024-11-11 A | P2C.DES.205, BP1.200.0.100 | 100% |
| BP1.223.2.100 |  | Review/Approve - Domestic Water Softeners | 35d | 2024-11-11 A | 2024-11-20 A | BP1.223.1.100 | 100% |
| BP1.224.2.100 |  | Review/Approve - Plumbing Fixtures | 35d | 2024-11-21 A | 2025-01-10 A | BP1.224.1.100 | 100% |
| BP1.226.3.110 |  | Lead/Fab/Deliver - High Purity Water Pipe | 365d | 2025-02-04 A | 2025-03-19 A | BP1.226.2.110 | 100% |
| BP1.226.1.150 |  | Vendor [Neu-Ion] Released to Submit High Purity Water System Submittals - Lab | 1d | 2025-02-11 A | 2025-02-11 A | P2C.DES.435 | 100% |
| BP1.226.1.160 |  | HP Release Funds to Vendor (Evoqua) to Submit High Purity Water System Submittals - CSP | 1d | 2025-02-11 A | 2025-02-11 A | P2C.DES.435 | 100% |
| BP1.226.1.120 |  | Prep/Submit - High Purity Water System - CSP | 28d | 2025-02-12 A | 2025-05-30 A | P2C.DES.205, BP1.226.1.160 | 100% |

| ID | WBS | Task | Duration | Start | Finish | Predecessors | Complete | Total float |
| --- | --- | --- | --- | --- | --- | --- | --- | --- |
| BP1.226.1.130 |  | Prep/Submit - High Purity Water System - Lab | 18d | 2025-02-12 A | 2025-04-25 A | P2C.DES.205, BP1.226.1.150 | 100% |  |
| BP1.220.3.120 |  | Lead/Fab/Deliver - Plumbing Equipment Sump Pumps | 168d | 2025-04-01 A | 2025-07-01 A | BP1.220.2.140 | 100% |  |
| BP1.220.3.110 |  | Lead/Fab/Deliver - Plumbing Equipment Water Heater | 95d | 2025-04-10 A | 2025-09-19 A | BP1.220.2.140 | 100% |  |
| BP1.226.1.140 |  | Prep/Submit - Waste Water Tanks | 20d | 2025-04-18 A | 2025-04-30 A | P2C.DES.205 | 100% |  |
| BP1.220.3.140 |  | Lead/Fab/Deliver - Plumbing Equipment Pumps | 100d | 2025-04-21 A | 2025-07-01 A | BP1.220.2.140 | 100% |  |
| BP1.223.3.100 |  | Lead/Fab/Deliver - Domestic Water Softeners | 99d | 2025-04-21 A | 2025-12-31 | BP1.223.2.100 | 69% | 236d |
| BP1.226.3.900 |  | Lead/Fab/Deliver - Lab Compressed-Air Systems | 170d | 2025-05-15 A | 2025-10-17 A | BP1.226.2.100 | 100% |  |
| BP1.226.2.120 |  | Review/Approve - High Purity Water Equipment - CSP | 35d | 2025-05-30 A | 2025-07-19 A | BP1.226.1.120 SS, BP1.226.1.120 FF | 100% |  |
| BP1.226.2.170 |  | Review/Approve - Waste Water Tanks | 35d | 2025-06-05 A | 2025-07-01 A | BP1.226.1.140 | 100% |  |
| BP1.224.3.100 |  | Lead/Fab/Deliver - Plumbing Fixtures | 84d | 2025-06-26 A | 2025-11-01 A | BP1.200.2.100, BP1.200.2.110, BP1.224.2.100 | 100% |  |
| BP1.226.2.130 |  | Review/Approve - High Purity Water Equipment - Lab | 35d | 2025-06-30 A | 2025-08-04 A | BP1.226.1.130 | 100% |  |
| BP1.226.2.180 |  | Lead/Fab/Deliver - Waste Water Tanks | 168d | 2025-07-15 A | 2025-11-01 A | BP1.226.2.170 | 100% |  |
| BP1.226.2.140 |  | Lead/Fab/Deliver - High Purity Water Equipment - CSP | 119d | 2025-08-13 A | 2025-10-22 A | BP1.226.2.120 | 100% |  |
| BP1.226.2.150 |  | Lead/Fab/Deliver - High Purity Water Equipment - Lab | 161d | 2025-12-01 | 2026-05-10 | BP1.226.2.130 |  | 115d |
|  | 8 | **Electrical** |  | 2022-12-19 | 2025-12-12 |  |  |  |
| BP1.260.0.100 |  | Buyout - Electrical (HP) | 30d | 2022-12-19 A | 2023-01-31 A | EXS.100 SS | 100% |  |
| BP1.260.1.130 |  | Prep/Submit - Underground Ducts and Raceways for Electrical Systems | 50d | 2023-08-15 A | 2023-10-27 A | P1.DES.460, BP1.260.0.100 | 100% |  |
| BP1.260.0.110 |  | Buyout - Electrical Switchgear | 40d | 2023-09-25 A | 2024-02-26 A | P2B.DES.685, BP1.260.0.100 | 100% |  |
| BP1.260.0.120 |  | Buyout - Electrical Gen/ATS | 40d | 2023-09-25 A | 2024-02-16 A | P2B.DES.685, BP1.260.0.100 | 100% |  |
| BP1.260.0.130 |  | Buyout - Electrical UPS | 40d | 2023-09-25 A | 2024-04-29 A | P2B.DES.685, BP1.260.0.100 | 100% |  |
| BP1.260.2.130 |  | Review/Approve - Underground Ducts and Raceways for Electrical Systems | 35d | 2023-10-27 A | 2024-02-09 A | BP1.260.1.130 | 100% |  |
| BP1.263.1.120 |  | Prep/Submit - Automatic Transfer Switches | 50d | 2024-02-07 A | 2024-07-01 A | BP1.260.0.120 | 100% |  |
| BP1.260.3.130 |  | Lead/Fab/Deliver - Underground Ducts and Raceways for Electrical Systems | 99d | 2024-02-10 A | 2024-02-19 A | BP1.260.2.130 | 100% |  |
| BP1.263.1.100 |  | Prep/Submit - Generators | 45d | 2024-02-19 A | 2024-06-04 A | BP1.260.0.120 | 100% |  |
| BP1.260.1.200 |  | Prep/Submit - Enclosed Bus Assemblies | 30d | 2024-02-26 A | 2024-09-16 A | BP1.260.0.110 | 100% |  |
| BP1.260.1.300 |  | Prep/Submit - Electrical Meters | 50d | 2024-02-26 A | 2024-10-28 A | BP1.260.0.110 | 100% |  |
| BP1.261.1.110 |  | Prep/Submit - Low-Voltage Switchgear | 50d | 2024-02-26 A | 2024-05-16 A | BP1.260.0.110 | 100% |  |
| BP1.261.1.120 |  | Prep/Submit - Low-Voltage Transformers | 35d | 2024-02-26 A | 2024-05-13 A | BP1.260.0.110 | 100% |  |
| BP1.261.1.130 |  | Prep/Submit - Switchboards | 25d | 2024-02-26 A | 2024-04-23 A | BP1.260.0.110 | 100% |  |
| BP1.261.1.150 |  | Prep/Submit - Liquid-Filled, Medium-Voltage Transformers | 25d | 2024-02-26 A | 2024-05-16 A | BP1.260.0.110 | 100% |  |
| BP1.261.1.160 |  | Prep/Submit - Medium-Voltage Vacuum Interrupter Switchgear | 25d | 2024-02-26 A | 2024-05-16 A | BP1.260.0.110 | 100% |  |
| BP1.261.1.170 |  | Prep/Submit - Panelboards | 25d | 2024-02-26 A | 2024-07-11 A | BP1.260.0.110 | 100% |  |
| BP1.260.1.110 |  | Prep/Submit - Low-Voltage Electrical Power Conductors and Cables | 50d | 2024-03-18 A | 2024-03-25 A | P2C.DES.295, BP1.260.0.100 | 100% |  |
| BP1.261.2.100 |  | Review/Approve - Switchboards | 10d | 2024-04-24 A | 2024-07-18 A | BP1.261.1.130 SS | 100% |  |
| BP1.263.1.110 |  | Prep/Submit - Static Uninterruptible Power Supply | 50d | 2024-04-30 A | 2024-07-03 A | BP1.260.0.130 | 100% |  |
| BP1.261.2.120 |  | Review/Approve - Low-Voltage Transformers | 20d | 2024-05-14 A | 2024-07-05 A | BP1.261.1.120 | 100% |  |
| BP1.261.2.110 |  | Review/Approve - Low-Voltage Switchgear | 20d | 2024-05-17 A | 2024-06-05 A | BP1.261.1.110 | 100% |  |
| BP1.261.2.150 |  | Review/Approve - Liquid-Filled, Medium-Voltage Transformers | 15d | 2024-05-17 A | 2024-07-18 A | BP1.261.1.150 | 100% |  |
| BP1.261.2.160 |  | Review/Approve - Medium-Voltage Vacuum Interrupter Switchgear | 20d | 2024-05-17 A | 2024-06-05 A | BP1.261.1.160 | 100% |  |
| BP1.260.1.140 |  | Prep/Submit - Medium-Voltage Cables | 50d | 2024-05-20 A | 2024-06-12 A | P2B.DES.795, BP1.260.0.100 | 100% |  |
| BP1.260.1.180 |  | Prep/Submit - Ground Ring Monitoring | 50d | 2024-05-28 A | 2024-06-28 A | P2B.DES.795, BP1.260.0.100 | 100% |  |
| BP1.263.2.100 |  | Review/Approve - Generators | 20d | 2024-06-05 A | 2024-07-10 A | BP1.263.1.100 | 100% |  |
| BP1.261.3.110 |  | Lead/Fab/Deliver - Low-Voltage Switchgear | 329d | 2024-06-06 A | 2025-04-28 A | BP1.261.2.110 | 100% |  |
| BP1.261.3.160 |  | Lead/Fab/Deliver - Medium-Voltage Vacuum Interrupter Switchgear | 231d | 2024-06-06 A | 2025-03-28 A | BP1.261.2.160 | 100% |  |
| BP1.260.2.140 |  | Review/Approve - Medium-Voltage Cables | 35d | 2024-06-13 A | 2024-09-03 A | BP1.260.1.140 | 100% |  |
| BP1.260.2.180 |  | Review/Approve - Ground Ring Monitoring | 16d | 2024-06-13 A | 2024-06-28 A | BP1.260.1.180 | 100% |  |
| BP1.263.2.120 |  | Review/Approve - Automatic Transfer Switches | 20d | 2024-07-02 A | 2024-09-30 A | BP1.263.1.120 | 100% |  |
| BP1.263.2.110 |  | Review/Approve - Static Uninterruptible Power Supply | 35d | 2024-07-05 A | 2024-10-01 A | BP1.263.1.110 | 100% |  |
| BP1.261.2.170 |  | Review/Approve - Panelboards | 10d | 2024-07-12 A | 2025-03-28 A | BP1.261.1.170 | 100% |  |
| BP1.260.0.140 |  | Buyout - Electrical Lighting | 30d | 2024-07-18 A | 2024-10-15 A | P2C.DES.295, BP1.260.0.100 | 100% |  |
| BP1.261.3.150 |  | Lead/Fab/Deliver - Liquid-Filled Medium-Voltage Transformers | 314d | 2024-07-22 A | 2025-08-29 A | BP1.261.2.150 | 100% |  |
| BP1.262.3.200 |  | Lead/Fab/Deliver - Switchboards - Priority 1 | 240d | 2024-07-23 A | 2025-04-03 A | BP1.261.2.100, BP1.263.3.110 FF | 100% |  |
| BP1.262.3.210 |  | Lead/Fab/Deliver - Switchboards - Priority 2 | 270d | 2024-08-24 A | 2025-09-05 A | BP1.261.2.100, BP1.263.3.110 FF | 100% |  |
| BP1.260.2.110 |  | Review/Approve - Low-Voltage Electrical Power Conductors and Cables | 35d | 2024-09-10 A | 2024-11-14 A | BP1.260.1.110 | 100% |  |
| BP1.260.2.200 |  | Review/Approve - Enclosed Bus Assemblies | 21d | 2024-09-17 A | 2024-11-22 A | BP1.260.1.200 | 100% |  |
| BP1.262.3.220 |  | Lead/Fab/Deliver - Switchboards - Priority 3 | 299d | 2024-10-07 A | 2025-11-03 A | BP1.261.2.100, BP1.263.3.110 FF | 100% |  |
| BP1.263.3.100 |  | Lead/Fab/Deliver - Generators | 455d | 2024-10-18 A | 2025-01-16 A | BP1.263.2.100 | 100% |  |
| BP1.260.3.140 |  | Lead/Fab/Deliver - Medium-Voltage Cables | 210d | 2024-10-21 A | 2025-02-20 A | BP1.260.2.140 | 100% |  |
| BP1.263.3.110 |  | Lead/Fab/Deliver - Static Uninterruptible Power Supply | 99d | 2024-10-23 A | 2025-08-01 A | BP1.263.2.110 | 100% |  |
| BP1.261.3.120 |  | Lead/Fab/Deliver - Low-Voltage Transformers | 240d | 2024-10-25 A | 2025-03-12 A | BP1.261.2.120 | 100% |  |
| BP1.260.2.300 |  | Review/Approve - Electrical Meters | 21d | 2024-10-28 A | 2025-03-28 A | BP1.260.1.300 | 100% |  |
| BP1.260.3.110 |  | Lead/Fab/Deliver - Low-Voltage Electrical Power Conductors and Cables | 99d | 2024-11-15 A | 2025-05-19 A | BP1.260.2.110 | 100% |  |
| BP1.260.3.200 |  | Lead/Fab/Deliver - Enclosed Bus Assemblies | 210d | 2024-11-26 A | 2025-01-30 A | BP1.260.2.200 | 100% |  |
| BP1.260.3.300 |  | Lead/Fab/Deliver - Electrical Meters | 180d | 2024-11-28 A | 2025-08-01 A | BP1.260.2.300 SS | 100% |  |
| BP1.261.3.170 |  | Lead/Fab/Deliver - Liquid Filled - Medium-Voltage - Network Protectors | 241d | 2024-12-02 A | 2025-08-01 A | BP1.261.2.150, BP1.261.3.150 SS | 100% |  |
| BP1.265.1.110 |  | Prep/Submit - Lighting - Exterior | 20d | 2024-12-16 A | 2025-02-28 A | BP1.260.0.140, P2C.DES.295 | 100% |  |
| BP1.265.1.120 |  | Prep/Submit - Lighting - Roadway | 20d | 2024-12-16 A | 2025-02-28 A | BP1.260.0.140, P2C.DES.295 | 100% |  |
| BP1.263.3.120 |  | Lead/Fab/Deliver - Automatic Transfer Switches | 220d | 2024-12-20 A | 2025-05-23 A | BP1.263.2.120 | 100% |  |
| BP1.262.3.100 |  | Lead/Fab/Deliver - Panel Boards | 182d | 2025-01-10 A | 2025-05-19 A | BP1.261.2.170 SS | 100% |  |
| BP1.265.1.100 |  | Prep/Submit - Lighting Controls | 20d | 2025-02-03 A | 2025-02-28 A | BP1.260.0.140, P2C.DES.295 | 100% |  |

| ID | WBS | Task | Duration | Start | Finish | Predecessors | Complete | Total float |
| --- | --- | --- | --- | --- | --- | --- | --- | --- |
| BP1.265.3.100 |  | Lead/Fab/Deliver - Decorative Lighting | 148d | 2025-03-01 A | 2025-10-01 A | BP1.260.0.140 | 100% |  |
| BP1.265.2.100 |  | Review/Approve - Lighting Controls | 35d | 2025-03-03 A | 2025-06-02 A | BP1.265.1.100 | 100% |  |
| BP1.265.2.110 |  | Review/Approve - Lighting - Exterior | 35d | 2025-03-03 A | 2025-06-02 A | BP1.265.1.110 | 100% |  |
| BP1.265.2.120 |  | Review/Approve - Lighting - Roadway | 35d | 2025-03-03 A | 2025-12-01 | BP1.265.1.120 | 100% | 316d |
| BP1.260.3.180 |  | Lead/Fab/Deliver - Ground Ring Monitoring | 99d | 2025-04-01 A | 2025-10-06 A | BP1.260.2.180 | 100% |  |
| BP1.265.3.110 |  | Lead/Fab/Deliver - Lighting - Exterior | 99d | 2025-04-19 A | 2025-08-01 A | BP1.265.2.110 FF, BP1.265.2.110 SS | 100% |  |
| BP1.265.3.120 |  | Lead/Fab/Deliver - Lighting - Roadway | 99d | 2025-04-19 A | 2025-12-12 | BP1.265.2.120 FF, BP1.265.2.120 SS | 88% | 453d |
| BP1.265.3.900 |  | Lead/Fab/Deliver - Lighting Controls | 99d | 2025-04-19 A | 2025-08-18 A | BP1.265.2.100 FF, BP1.265.2.100 SS | 100% |  |
| BP1.283.3.200 |  | Lead/Fab/Deliver - Med Gas Alarm Panels | 98d | 2025-05-15 A | 2025-08-08 A | BP1.200.2.100, BP1.200.2.110 | 100% |  |
|  | 10 | **Low Voltage** |  | 2024-06-26 | 2025-12-12 |  |  |  |
| BP1.270.3.100 |  | Lead/Fab/Deliver - Low Voltage Pathway | 40d | 2024-06-26 A | 2024-09-26 A | P2C.DES.295, BP1.260.0.100 | 100% |  |
| BP1.270.1.100 |  | Prep/Submit - Communications | 20d | 2024-10-25 A | 2024-11-01 A | P2C.DES.235 SS | 100% |  |
| BP1.271.1.100 |  | Prep/Submit - Nurse Call/Code Blue Systems | 20d | 2024-10-25 A | 2024-11-01 A | P2C.DES.235 SS | 100% |  |
| BP1.271.1.110 |  | Prep/Submit - Intercommunications and Program Systems | 20d | 2024-10-25 A | 2024-11-01 A | P2C.DES.235 SS | 100% |  |
| BP1.274.1.100 |  | Prep/Submit - Audio-Video Systems and Equipment | 20d | 2024-10-25 A | 2024-11-01 A | P2C.DES.235 SS | 100% |  |
| BP1.275.1.100 |  | Prep/Submit - Paging Systems | 20d | 2024-10-25 A | 2024-11-01 A | P2C.DES.235 SS | 100% |  |
| BP1.280.1.110 |  | Prep/Submit - Electronic Safety and Security | 20d | 2024-10-25 A | 2024-11-01 A | P2C.DES.235 SS | 100% |  |
| BP1.270.2.100 |  | Review/Approve - Communications | 35d | 2024-11-01 A | 2024-11-05 A | BP1.270.1.100 | 100% |  |
| BP1.271.2.100 |  | Review/Approve - Nurse Call/Code Blue Systems | 35d | 2024-11-01 A | 2024-11-05 A | BP1.271.1.100 | 100% |  |
| BP1.271.2.110 |  | Review/Approve - Intercommunications and Program Systems | 35d | 2024-11-01 A | 2024-12-05 A | BP1.271.1.110 | 100% |  |
| BP1.274.2.100 |  | Review/Approve - Audio-Video Systems and Equipment | 35d | 2024-11-01 A | 2024-11-05 A | BP1.274.1.100 | 100% |  |
| BP1.275.2.100 |  | Review/Approve - Paging Systems | 35d | 2024-11-01 A | 2024-11-05 A | BP1.275.1.100 | 100% |  |
| BP1.280.2.110 |  | Review/Approve - Electronic Safety and Security | 35d | 2024-11-01 A | 2024-11-05 A | BP1.280.1.110 | 100% |  |
| BP1.274.3.100 |  | Lead/Fab/Deliver - Audio-Video Systems and Equipment | 99d | 2024-12-03 A | 2025-12-02 | BP1.274.2.100 | 98% | 372d |
| BP1.275.3.100 |  | Lead/Fab/Deliver - LV Paging | 40d | 2024-12-03 A | 2025-12-01 | BP1.275.2.100 | 100% | 155d |
| BP1.270.3.120 |  | Lead/Fab/Deliver - CommunicationsEquipment | 112d | 2024-12-26 A | 2025-05-30 A | BP1.270.2.100 | 100% |  |
| BP1.275.3.200 |  | Lead/Fab/Deliver - LV Nurse Call | 40d | 2025-01-17 A | 2025-03-01 A | BP1.271.2.100 | 100% |  |
| BP1.271.3.110 |  | Lead/Fab/Deliver - Intercommunications and Program Systems | 99d | 2025-01-27 A | 2025-12-12 | BP1.271.2.110 | 88% | 362d |
| BP1.280.3.100 |  | Lead/Fab/Deliver - LV Security | 40d | 2025-03-03 A | 2025-03-21 A | BP1.280.2.110 | 100% |  |
| BP1.280.1.100 |  | Prep/Submit - Fire Detection and Alarm | 20d | 2025-03-10 A | 2025-03-10 A | P2C.DES.235 SS | 100% |  |
| BP1.280.2.100 |  | Review/Approve - Fire Detection and Alarm | 35d | 2025-03-10 A | 2025-05-06 A | BP1.280.1.100 | 100% |  |
| BP1.283.3.100 |  | Lead/Fab/Deliver - LV Fire Alarm | 40d | 2025-05-06 A | 2025-05-30 A | BP1.280.2.100, BP1.260.0.100 | 100% |  |
|  | 9 | **Bid Package 2** |  | 2023-01-06 | 2026-05-14 |  |  |  |
|  | 16 | **Fa ade Maintenance Equipment** |  | 2023-01-06 | 2026-02-24 |  |  |  |
| BP2.112.0.100 |  | Buyout - Facade Maintenance Equipment | 30d | 2023-01-06 A | 2023-07-26 A | P2.DES.315 | 100% |  |
| P2.MTG.MOB.200 |  | Summit Premobilization & Kick-off Meeting | 1d | 2023-04-18 A | 2023-04-18 A | BP2.112.0.100 SS | 100% |  |
| P2.FAD.FM.100 |  | Prepare Davitt Base & Anchor Shop Drawings - Facade Maintenance | 15d | 2023-12-04 A | 2024-01-03 A | P2.DES.FM.210 | 100% |  |
| P2.FAD.FM.110 |  | Review Davitt Base & Anchor Shop Drawings - Facade Maintenance | 15d | 2024-01-04 A | 2024-02-05 A | P2.FAD.FM.100 | 100% |  |
| P2.FAD.FM.130 |  | Review & Approve Davitt Base & Anchor Shop Drawings - Facade Maintenance | 10d | 2024-02-06 A | 2024-02-20 A | P2.FAD.FM.110 | 100% |  |
| P2.FAD.FM.160 |  | Prepare Facade Maintenance Shop Drawings | 20d | 2024-02-23 A | 2024-03-14 A | P2.FAD.FM.130 | 100% |  |
| P2.FAD.FM.170 |  | Review & Approve Facade Maintenance Shop Drawings | 10d | 2024-03-15 A | 2024-03-29 A | P2.FAD.FM.160 | 100% |  |
| P2.FAD.FM.140 |  | Release Davitt Base & Anchors - Facade Maintenance | 1d | 2024-04-01 A | 2024-04-01 A | P2.FAD.FM.130, P2.FAD.FM.170 | 100% |  |
| P2.FAD.FM.150 |  | Davitt Base & Anchors Fabrication | 75d | 2024-04-02 A | 2024-04-24 A | P2.FAD.FM.140 | 100% |  |
| P2.FAD.FM.180 |  | Assemble & Ship Davit Base & Anchor Assemblies - Facade Maintenance | 5d | 2024-04-25 A | 2024-05-03 A | P2.FAD.FM.150 | 100% |  |
| P2.FAD.FM.220 |  | Release Facade Maintenance Equipment For Fabrication | 15d | 2024-04-30 A | 2024-06-12 A | P2.FAD.FM.170 | 100% |  |
| P2.FAD.FM.230 |  | Davitt Arm Procurement | 60d | 2024-05-22 A | 2025-03-20 A | P2.FAD.FM.220 SS | 100% |  |
| P2.FAD.FM.240 |  | Cable System Procurement | 60d | 2024-05-22 A | 2025-03-20 A | P2.FAD.FM.220 SS | 100% |  |
| P2.FAD.FM.200 |  | Davitt Base & Anchor Delivery for Structure- Facade Maintenance | 1d | 2024-10-15 A | 2024-10-31 A | P2.FAD.FM.180 | 100% |  |
| P2.FAD.FM.250 |  | Landing Platform Procurement | 60d | 2025-12-01 | 2026-02-24 | P2.FAD.FM.220 |  | 279d |
|  | 17 | **Architectural Precast** |  | 2023-01-06 | 2024-12-21 |  |  |  |
| BP2.034.0.100 |  | Buyout - Architectural Precast | 30d | 2023-01-06 A | 2023-03-17 A | P2.DES.315 | 100% |  |
| P2.MTG.MOB.300 |  | ACD Premobilization & Kick-off Meeting | 1d | 2023-04-21 A | 2023-04-21 A | BP2.034.0.100 | 100% |  |
|  | 1 | **Phase 1A - Architectural Precast** |  | 2023-04-04 | 2023-08-30 |  |  |  |
| BP2.034.1.110 |  | Prep/Submit - Architectural Precast - Phase 1A | 10d | 2023-04-04 A | 2023-04-12 A | BP2.034.0.100, P1A.DES.650 FF | 100% |  |
| BP2.034.2.110 |  | Review/Approve - Architectural Precast - Phase 1A | 10d | 2023-04-13 A | 2023-05-17 A | BP2.034.1.110 | 100% |  |
| BP2.034.3.110 |  | Lead/Fab/Deliver - Architectural Precast - Phase 1A | 28d | 2023-05-18 A | 2023-08-30 A | BP2.034.2.110 | 100% |  |
|  | Precast | **Precast Preconstruction & Procurement** |  | 2023-10-16 | 2024-12-21 |  |  |  |
| P2.FAD.PC.100 |  | Prepare Embed Shop Drawings - Precast | 15d | 2023-10-16 A | 2024-03-28 A | P2.DES.PC.170 | 100% |  |
| P2.FAD.PC.130 |  | Brick Procurement | 120d | 2023-10-27 A | 2024-05-20 A | P2.DES.PC.230 | 100% |  |
| P2.FAD.PC.110 |  | Prepare Precast Shop Drawings | 30d | 2023-12-22 A | 2024-03-28 A | P2.DES.PC.290 | 100% |  |
| P2.FAD.PC.140 |  | Review & Approve Embed Shop Drawings - Precast | 20d | 2024-03-29 A | 2024-05-15 A | P2.FAD.PC.100 | 100% |  |
| P2.FAD.PC.150 |  | Review Precast Shop Drawings | 20d | 2024-03-29 A | 2024-04-18 A | P2.FAD.PC.110 | 100% |  |
| P2.FAD.PC.190 |  | Release Embeds - Precast | 1d | 2024-03-29 A | 2024-03-29 A | P2.FAD.PC.100 | 100% |  |
| P2.FAD.PC.210 |  | Embed Fabrication - Precast | 20d | 2024-04-01 A | 2024-05-14 A | P2.FAD.PC.190 | 100% |  |
| P2.FAD.PC.220 |  | Release Precast For Fabrication | 15d | 2024-04-19 A | 2024-04-19 A | P2.FAD.PC.150, P2.FAD.GG.400 | 100% |  |
| P2.FAD.PC.230 |  | Precast Mold Creation | 110d | 2024-04-22 A | 2024-10-10 A | P2.FAD.PC.220 FF | 100% |  |
| P2.FAD.PC.260 |  | Precast Fabrication - Brick Faced Panels | 120d | 2024-04-26 A | 2024-10-31 A | P2.FAD.PC.200 FF, P2.FAD.PC.130 SS+20d, P2.FAD.PC.230 SS | 100% |  |
| P2.FAD.PC.280 |  | Precast Fabrication - Terracotta Faced Panels | 100d | 2024-04-26 A | 2024-10-24 A | P2.FAD.PC.200 FF, P2.FAD.PC.120 SS+120d, P2.FAD.PC.230 SS | 100% |  |
| P2.FAD.PC.170 |  | Revise & Resubmit Precast Shop Drawings | 15d | 2024-05-01 A | 2024-06-07 A | P2.FAD.PC.150 | 100% |  |
| P2.FAD.PC.240 |  | Assemble & Ship Embed Assemblies - Precast | 5d | 2024-05-15 A | 2024-05-22 A | P2.FAD.PC.210 | 100% |  |

| ID | WBS | Task | Duration | Start | Finish | Predecessors | Complete | Total float |
| --- | --- | --- | --- | --- | --- | --- | --- | --- |
| P2.FAD.PC.250 |  | Embed Delivery for Structure - Precast | 1d | 2024-05-23 A | 2024-05-23 A | P2.FAD.PC.240 | 100% |  |
| P2.FAD.PC.200 |  | Review & Approve Precast Shop Drawings | 10d | 2024-06-10 A | 2024-07-18 A | P2.FAD.PC.170 | 100% |  |
| P2.FAD.PC.270 |  | Delivery - Precast | 5d | 2024-12-16 A | 2024-12-21 A | P2.FAD.PC.260, P2.FAD.PC.280, P2.FAD.GG.290 | 100% |  |
|  | 19 | **Terracotta Panels** |  | 2023-01-09 | 2024-06-28 |  |  |  |
| BP2.042.0.100 |  | Buyout - Terracotta Panels | 30d | 2023-01-09 A | 2023-03-17 A | P2.DES.315 | 100% |  |
| BP2.042.1.100 |  | Prep/Submit - Terracotta Panels | 20d | 2023-06-15 A | 2023-07-31 A | BP2.042.0.100 | 100% |  |
| BP2.042.2.100 |  | Review/Approve - Terracotta Panels | 35d | 2023-08-01 A | 2023-10-27 A | BP2.042.1.100 | 100% |  |
| P2.FAD.PC.120 |  | Terracotta Procurement | 185d | 2023-10-30 A | 2024-06-28 A | BP2.042.2.100, P2.DES.PC.230 | 100% |  |
|  | 18 | **Exterior Glazing** |  | 2023-01-09 | 2026-05-14 |  |  |  |
| BP2.088.0.200 |  | Buyout - Exterior Glazing | 30d | 2023-01-09 A | 2023-05-08 A | P2.DES.315 | 100% |  |
| P2.MTG.MOB.100 |  | GPR - Premobilization & Kick-Off Meeting | 1d | 2023-04-13 A | 2023-04-13 A | BP2.088.0.200 FF, BP2.088.0.200 SS | 100% |  |
|  | Glass & Glazing | **Glass & Glazing Preconstruction & Procurement** |  | 2023-10-16 | 2026-05-14 |  |  |  |
| P2.FAD.GG.100 |  | Prepare Embed Shop Drawings - Glass & Glazing | 20d | 2023-10-16 A | 2024-01-04 A | BP4.030.1.110 | 100% |  |
| P2.FAD.GG.120 |  | Fabricate Extrusions (Dyes) | 100d | 2023-12-22 A | 2024-05-21 A | P2.DES.GG.250 | 100% |  |
| P2.FAD.GG.130 |  | Review Embed Shop Drawings - Glass & Glazing | 10d | 2024-01-05 A | 2024-01-26 A | P2.FAD.GG.100 | 100% |  |
| P2.FAD.GG.110 |  | Prepare Glass & Glazing Shop Drawings (Windows) | 15d | 2024-02-05 A | 2024-02-23 A | P2.DES.GG.320 FF+5d | 100% |  |
| P2.FAD.GG.160 |  | Revise & Resubmit Embed Shop Drawings - Glass & Glazing | 10d | 2024-02-07 A | 2024-02-28 A | P2.FAD.GG.130 | 100% |  |
| P2.FAD.GG.140 |  | Review Glass & Glazing Shop Drawings (Windows) | 10d | 2024-02-23 A | 2024-03-01 A | P2.FAD.GG.110 | 100% |  |
| P2.FAD.GG.180 |  | Review & Approve Embed Shop Drawings - Glass & Glazing | 10d | 2024-02-28 A | 2024-03-21 A | P2.FAD.GG.160 | 100% |  |
| P2.FAD.GG.170 |  | Revise & Resubmit Glass & Glazing Shop Drawings | 5d | 2024-03-04 A | 2024-04-03 A | P2.FAD.GG.140 | 100% |  |
| P2.FAD.GG.190 |  | Release Embeds - Glass & Glazing | 1d | 2024-03-21 A | 2024-03-21 A | P2.FAD.GG.180 | 100% |  |
| P2.FAD.GG.210 |  | Embed Fabrication - Glass & Glazing | 30d | 2024-03-22 A | 2024-04-19 A | P2.FAD.GG.190 | 100% |  |
| P2.FAD.GG.330 |  | Prepare Curtain Wall & Storefront Shop Drawings | 20d | 2024-03-29 A | 2024-07-15 A | P2A.DES.555 | 100% |  |
| P2.FAD.GG.200 |  | Review & Approve Glass & Glazing Shop Drawings (Windows) | 10d | 2024-04-03 A | 2024-04-16 A | P2.FAD.GG.170 | 100% |  |
| P2.FAD.GG.220 |  | Release Glass & Glazing For Fabrication (Windows) | 5d | 2024-04-17 A | 2024-04-23 A | P2.FAD.GG.200 | 100% |  |
| P2.FAD.GG.250 |  | Assemble & Ship Embed Assemblies - Glass & Glazing | 5d | 2024-04-22 A | 2024-04-26 A | P2.FAD.GG.210 | 100% |  |
| P2.FAD.GG.150 |  | Fabricate Glass for Windows | 80d | 2024-04-24 A | 2024-06-27 A | P2.FAD.GG.220 | 100% |  |
| P2.FAD.GG.400 |  | Embed Delivery for Precast - Glass & Glazing | 1d | 2024-04-26 A | 2024-04-26 A | P2.FAD.GG.250 | 100% |  |
| P2.FAD.GG.240 |  | Fabricate Aluminum Extrusions (Windows) | 60d | 2024-04-29 A | 2024-06-27 A | P2.FAD.GG.220, P2.FAD.GG.120 FF+30d | 100% |  |
| P2.FAD.GG.410 |  | Embed Fabrication - CurtainWall | 15d | 2024-05-08 A | 2024-05-29 A | P2.FAD.GG.330 SS | 100% |  |
| P2.FAD.GG.260 |  | Embed Delivery for Structure - Glass & Glazing | 1d | 2024-05-30 A | 2024-05-30 A | P2.FAD.GG.410 | 100% |  |
| P2.FAD.GG.270 |  | Assemble & Glaze Units (Windows) | 50d | 2024-06-28 A | 2024-09-15 A | P2.FAD.GG.240, P2.FAD.GG.150 | 100% |  |
| P2.FAD.GG.360 |  | Review & Approve Curtain Wall Shop Drawings | 15d | 2024-07-16 A | 2024-09-09 A | P2.FAD.GG.330 SS | 100% |  |
| P2.FAD.GG.380 |  | Release CurtainWall & Storefront For Fabrication | 5d | 2024-09-09 A | 2024-09-25 A | P2.FAD.GG.360 | 100% |  |
| P2.FAD.GG.320 |  | Fabricate Aluminum Extrusions (Curtainwall & Storefront Frames) | 60d | 2024-09-26 A | 2024-12-31 A | P2.FAD.GG.380 | 100% |  |
| P2.FAD.GG.370 |  | Fabricate Glass for CurtainWall & Storefront | 80d | 2024-09-26 A | 2025-04-15 A | P2.FAD.GG.380 | 100% |  |
| P2.FAD.GG.230 |  | Fabricate Back-pans & Shadowboxes | 75d | 2024-09-27 A | 2025-02-21 A | P2.FAD.GG.380 | 100% |  |
| P2.FAD.GG.280 |  | Deliver Units to Precast Shops | 5d | 2024-10-09 A | 2024-10-14 A | P2.FAD.GG.270 | 100% |  |
| P2.FAD.GG.290 |  | Pre-Glaze Units into Precast Panels | 40d | 2024-10-11 A | 2024-11-22 A | P2.FAD.GG.280, P2.FAD.PC.260 FF+15d | 100% |  |
| P2.FAD.GG.390 |  | Assemble & Glaze Units (Storefront & CurtainWall) | 20d | 2025-01-02 A | 2025-04-21 A | P2.FAD.GG.320, P2.FAD.GG.230 FF, P2.FAD.GG.370 FF | 100% |  |
| P2.FAD.GG.135 |  | Prep/Submit - Aluminum Storefront (Doors Only - Framing with Curtain Wall) | 14d | 2025-04-01 A | 2025-04-14 A | P2.DES.GG.340 | 100% |  |
| P2.FAD.GG.420 |  | Deliver Curtain Wall (Early) | 5d | 2025-04-07 A | 2025-04-11 A | P2.FAD.GG.135 SS+4d | 100% |  |
| P2.FAD.GG.145 |  | Review/Approve - Doors/Frames - Aluminum Storefront (Doors Only - Framing with Curtain Wall) | 35d | 2025-04-14 A | 2025-06-18 A | P2.FAD.GG.135 | 100% |  |
| P2.FAD.GG.300 |  | Deliver Curtain Wall | 5d | 2025-04-22 A | 2025-04-29 A | P2.FAD.GG.420 SS | 100% |  |
| P2.FAD.GG.215 |  | Lead/Fab/Deliver - Doors/Frames - Aluminum Storefront (Doors Only - Framing with Curtain Wall) | 105d | 2025-06-19 A | 2025-12-28 | P2.FAD.GG.145 | 73% | 326d |
| P2.FAD.GG.310 |  | Deliver Storefront Doors | 5d | 2026-05-08 | 2026-05-14 | P2.FAD.GG.215, P2.FAD.GG.290, P2.FAD.GG.390, P2.L1.F.LC.1070 |  | 137d |
|  | 20 | **Metal Panels** |  | 2023-03-01 | 2025-06-20 |  |  |  |
| BP2.074.0.100 |  | Buyout - Metal Panels | 30d | 2023-03-01 A | 2023-04-25 A | P2.DES.315 | 100% |  |
| P2.MTG.MOB.400 |  | Eastern Premobilizaiton & Kick-off Meeting | 1d | 2023-05-03 A | 2023-05-03 A | BP2.074.0.100 | 100% |  |
| P2.FAD.MP.100 |  | Prepare Metal Panel Shop Drawings | 20d | 2024-05-01 A | 2024-11-04 A | P2.DES.MP.280 | 100% |  |
| P2.FAD.MP.200 |  | Review Metal Panel Shop Drawings | 10d | 2024-11-05 A | 2024-11-27 A | P2.FAD.MP.100 | 100% |  |
| P2.FAD.MP.300 |  | Revise & Resubmit Metal Panel Shop Drawings | 15d | 2024-11-11 A | 2024-12-10 A | P2.FAD.MP.200 | 100% |  |
| P2.FAD.MP.400 |  | Review & Approve Metal Panel Shop Drawings | 10d | 2024-12-11 A | 2025-01-06 A | P2.FAD.MP.300 | 100% |  |
| P2.FAD.MP.800 |  | Louver Procurement | 100d | 2025-01-02 A | 2025-02-04 A | P2.FAD.MP.500 | 100% |  |
| P2.FAD.MP.500 |  | Release Metal Panel Scopes For Fabrication | 15d | 2025-01-07 A | 2025-01-29 A | P2.FAD.MP.400 | 100% |  |
| P2.FAD.MP.600 |  | ACM Product Procurement | 80d | 2025-01-30 A | 2025-06-20 A | P2.FAD.MP.500 | 100% |  |
| P2.FAD.MP.700 |  | Panel Procurement | 80d | 2025-01-30 A | 2025-06-20 A | P2.FAD.MP.500 | 100% |  |
|  | 5 | **Fixed Louvers** |  | 2024-03-18 | 2025-06-20 |  |  |  |
| BP2.089.1.100 |  | Prep/Submit - Fixed Louvers | 20d | 2024-03-18 A | 2024-05-30 A | P2.FAD.MP.100 SS | 100% |  |
| BP2.089.2.100 |  | Review/Approve - Fixed Louvers | 35d | 2024-05-31 A | 2024-11-20 A | BP2.089.1.100 | 100% |  |
| BP2.089.3.100 |  | Lead/Fab/Deliver - Fixed Louvers | 100d | 2024-11-21 A | 2025-06-20 A | BP2.089.2.100 | 100% |  |
|  | 21 | **Exterior Expansion Joints** |  | 2023-08-30 | 2025-12-28 |  |  |  |
| BP2.079.0.200 |  | Buyout - Exterior Expansion Joints | 30d | 2023-08-30 A | 2023-11-17 A | P2.DES.315 | 100% |  |
| BP2.079.1.200 |  | Prep/Submit - Exterior Expansion Joints | 20d | 2024-10-28 A | 2025-04-23 A | BP2.079.0.200, P2C.DES.205 | 100% |  |
| BP2.079.2.200 |  | Review/Approve - Exterior Expansion Joints | 30d | 2025-04-24 A | 2025-08-27 A | BP2.079.1.200 | 100% |  |
| BP2.079.3.200 |  | Lead/Fab/Deliver - Stainless Steel Covers | 15d | 2025-08-28 A | 2025-12-28 | BP2.079.2.200 |  | 43d |
| BP2.079.3.230 |  | Lead/Fab/Deliver - Joint Slide Seismic Covers | 15d | 2025-08-28 A | 2025-12-28 | BP2.079.2.200 |  | 43d |
|  | 22 | **Interior Expansion Joints** |  | 2023-08-30 | 2025-07-31 |  |  |  |
| BP2.079.0.100 |  | Buyout - Interior Expansion Joints | 30d | 2023-08-30 A | 2023-11-17 A | P2C.DES.225 | 100% |  |
| BP2.079.1.100 |  | Prep/Submit - Interior Expansion Joints | 20d | 2024-10-28 A | 2025-03-20 A | BP2.079.0.100, P2C.DES.205 | 100% |  |

| ID | WBS | Task | Duration | Start | Finish | Predecessors | Complete | Total float |
| --- | --- | --- | --- | --- | --- | --- | --- | --- |
| BP2.079.2.100 |  | Review/Approve - Interior Expansion Joints | 35d | 2025-03-21 A | 2025-03-24 A | BP2.079.1.100 | 100% |  |
| BP2.079.3.100 |  | Lead/Fab/Deliver - Expansion Joints | 80d | 2025-03-25 A | 2025-07-31 A | BP2.079.2.100 | 100% |  |
|  | 23 | **Roofing** |  | 2023-01-09 | 2026-04-03 |  |  |  |
| BP2.073.0.100 |  | Buyout - Roofing | 30d | 2023-01-09 A | 2023-05-24 A | P2.DES.315 | 100% |  |
| P2.MTG.MOB.500 |  | Elite Premobilization & Kick-off Meeting | 1d | 2023-05-03 A | 2023-05-03 A | BP2.073.0.100 SS | 100% |  |
| BP2.070.1.100 |  | Prep/Submit - Roofing - Sheet Metal | 20d | 2024-02-19 A | 2024-03-18 A | BP2.073.0.100, P2.DES.RF.270 | 100% |  |
| BP2.070.1.110 |  | Prep/Submit - Roofing - Vegetated | 20d | 2024-02-21 A | 2024-03-15 A | BP2.073.0.100, P2.DES.RF.270 | 100% |  |
| BP2.070.2.110 |  | Review/Approve - Roofing - Vegetated | 35d | 2024-03-18 A | 2024-11-13 A | BP2.070.1.110 | 100% |  |
| BP2.076.1.100 |  | Prep/Submit - Roof Specialties | 20d | 2024-03-18 A | 2025-01-21 A | BP2.073.0.100, P2.DES.RF.270 | 100% |  |
| BP2.070.2.100 |  | Review/Approve - Roofing - Sheet Metal | 35d | 2024-03-19 A | 2025-01-27 A | BP2.070.1.100 | 100% |  |
| BP2.073.1.100 |  | Prep/Submit - Roofing | 30d | 2024-10-18 A | 2025-01-21 A | BP2.073.0.100, P2C.DES.205 | 100% |  |
| BP2.073.2.100 |  | Review/Approve - Roofing | 35d | 2025-01-21 A | 2025-01-27 A | BP2.073.1.100 | 100% |  |
| BP2.076.2.100 |  | Review/Approve - Roof Specialties | 35d | 2025-01-21 A | 2025-01-27 A | BP2.076.1.100 | 100% |  |
| BP2.073.3.100 |  | Lead/Fab/Deliver - Roofing System | 10d | 2025-02-01 A | 2025-03-28 A | BP2.073.2.100 | 100% |  |
| BP2.076.3.100 |  | Lead/Fab/Deliver - Roof Specialties | 30d | 2025-02-01 A | 2025-03-30 A | BP2.076.2.100 | 100% |  |
| BP2.073.3.110 |  | Lead/Fab/Deliver - Roofing Pavers | 50d | 2025-02-14 A | 2025-06-07 A | BP2.073.2.100 | 100% |  |
| BP2.070.3.100 |  | Lead/Fab/Deliver - Roofing - Sheet Metal | 126d | 2025-06-20 A | 2025-12-15 | BP2.070.2.100, P2.L11.EMMR.3.150 | 88% | 371.01d |
| BP2.070.3.110 |  | Lead/Fab/Deliver - Roofing - Vegetated | 30d | 2026-03-05 | 2026-04-03 | BP2.070.2.110, P2.MR.EMT.2000 FF, P2.SITE.15 |  | 192d |
|  | 4 | **Exterior Cladding** |  | 2023-04-04 | 2025-10-30 |  |  |  |
| BP2.044.0.100 |  | Buyout - Exterior Stone Cladding | 30d | 2023-04-04 A | 2023-06-05 A | P2.DES.275 | 100% |  |
| P2.MTG.MOB.600 |  | Rugo Premobilization & Kick-off Meeting | 1d | 2023-06-09 A | 2023-06-09 A | BP2.044.0.100 | 100% |  |
| P2.FAD.ST.100 |  | Prepare Exterior Cladding Shop Drawings | 20d | 2024-03-28 A | 2024-09-16 A | P2.DES.ST.250, P2.FAD.GG.330 SS+10d | 100% |  |
| P2.FAD.ST.130 |  | Review & Approve Exterior Cladding Shop Drawings | 10d | 2024-09-10 A | 2024-10-07 A | P2.FAD.ST.100 | 100% |  |
| P2.FAD.ST.140 |  | Release Exterior Cladding Scopes For Fabrication | 15d | 2024-10-08 A | 2025-01-21 A | P2.FAD.ST.130 | 100% |  |
| P2.FAD.ST.160 |  | Exterior Facade Stone Product Procurement | 168d | 2024-10-09 A | 2025-07-28 A | P2.FAD.ST.140 SS | 100% |  |
| P2.FAD.ST.150 |  | Lead/Fab/Deliver - Site Stone | 40d | 2025-10-01 A | 2025-10-30 A | P2.FAD.ST.160 | 100% |  |
|  | 10 | **Bid Package 3** |  | 2023-01-09 | 2023-12-27 |  |  |  |
|  | 16 | **Utilities** |  | 2023-01-09 | 2023-07-02 |  |  |  |
| BP3.330.0.100 |  | Buyout - Utilities | 30d | 2023-01-09 A | 2023-04-21 A | P1.DES.440 | 100% |  |
| BP3.330.1.100 |  | Prep/Submit - Utilities | 20d | 2023-04-10 A | 2023-04-28 A | BP3.330.0.100, P1.DES.310 | 100% |  |
| BP3.330.1.110 |  | Prep/Submit - Utilities - Early Work Water Main | 5d | 2023-04-10 A | 2023-04-14 A | BP3.330.0.100 | 100% |  |
| BP3.330.2.110 |  | Review/Approve - Utilities - Early Work Water Main | 5d | 2023-04-17 A | 2023-04-28 A | BP3.330.1.110 | 100% |  |
| BP3.330.3.110 |  | Lead/Fab/Deliver - Utilities - Early Work Water Main | 14d | 2023-04-24 A | 2023-05-12 A | BP3.330.2.110 | 100% |  |
| BP3.330.2.100 |  | Review/Approve - Utilities | 5d | 2023-05-01 A | 2023-05-11 A | BP3.330.1.100 | 100% |  |
| BP3.330.1.140 |  | Existing Ductbank Test-Pits | 5d | 2023-05-22 A | 2023-05-26 A | BP3.330.0.100 | 100% |  |
| BP3.330.3.100 |  | Lead/Fab/Deliver - Utilities | 35d | 2023-05-25 A | 2023-06-22 A | BP3.330.2.100 | 100% |  |
| BP3.330.1.130 |  | Ductbank & Storm Structure Design Adjustments - from TestPits (SS-110 & CB20-17) | 2d | 2023-05-29 A | 2023-05-30 A | BP3.330.1.140 | 100% |  |
| BP3.330.1.120 |  | Prep/Submit - Utilities (Sanitary Structure SS-110 & Storm Structure CB20-17) | 3d | 2023-05-31 A | 2023-06-05 A | BP3.330.1.130 | 100% |  |
| BP3.330.2.120 |  | Review/Approve - Utilities (Sanitary Structure SS-110 & Storm Structure CB20-17) | 3d | 2023-06-05 A | 2023-06-07 A | BP3.330.1.120, BP3.330.2.100 | 100% |  |
| BP3.330.3.120 |  | Lead/Fab/Deliver - Utilities (Sanitary Structure SS-110 & Storm Structure CB20-17) | 12d | 2023-06-08 A | 2023-07-02 A | BP3.330.2.120 | 100% |  |
|  | 17 | **Demolition** |  | 2023-01-09 | 2023-07-31 |  |  |  |
|  | 1 | **Demo - Phase 0A** |  | 2023-01-09 | 2023-05-31 |  |  |  |
| BP3.024.0.110 |  | Buyout - Demolition - Phase 0A | 30d | 2023-01-09 A | 2023-03-30 A | P1.DES.440 | 100% |  |
| BP3.024.1.110 |  | Prep/Submit - Demolition - Phase 0A | 10d | 2023-04-03 A | 2023-04-14 A | BP3.024.0.110, P0A.DES.150 | 100% |  |
| BP3.024.2.110 |  | Review/Approve - Demolition - Phase 0A | 15d | 2023-04-14 A | 2023-05-31 A | P0A.DES.180 FF, P0A.DES.190 FF, BP3.024.1.110 | 100% |  |
| BP3.024.3.110 |  | Lead - Demolition - Phase 0A | 14d | 2023-04-17 A | 2023-04-25 A | BP3.024.2.110 SS | 100% |  |
|  | 2 | **Demo - Phase 0C** |  | 2023-01-09 | 2023-07-31 |  |  |  |
| BP3.024.0.120 |  | Buyout - Demolition - Phase 0C | 30d | 2023-01-09 A | 2023-03-30 A | P1.DES.440 | 100% |  |
| BP3.024.1.120 |  | Prep/Submit - Demolition - Phase 0C | 10d | 2023-03-13 A | 2023-03-17 A | BP3.024.0.120, P0C.DES.110 | 100% |  |
| BP3.024.2.120 |  | Review/Approve - Demolition - Phase 0C | 15d | 2023-03-17 A | 2023-07-31 A | P0C.DES.170 FF, P0C.DES.180 FF, BP3.024.1.120 | 100% |  |
|  | 3 | **Demo - Phase 1** |  | 2023-01-09 | 2023-07-31 |  |  |  |
| BP3.024.0.100 |  | Buyout - Demolition - Phase 1 | 30d | 2023-01-09 A | 2023-03-30 A | P1.DES.440 | 100% |  |
| BP3.024.3.100 |  | Lead - Demolition - Phase 1 | 21d | 2023-06-20 A | 2023-06-30 A | BP3.024.2.100 SS | 100% |  |
| BP3.024.1.100 |  | Prep/Submit - Demolition - Phase 1 | 10d | 2023-06-23 A | 2023-06-29 A | BP3.024.0.100, P1.DES.410 SS | 100% |  |
| BP3.024.2.100 |  | Review/Approve - Demolition - Phase 1 | 20d | 2023-06-30 A | 2023-07-31 A | BP3.024.1.100 | 100% |  |
|  | 4 | **Demo - Phase 1A** |  | 2023-01-09 | 2023-04-25 |  |  |  |
| BP3.024.0.140 |  | Buyout - Demolition - Phase 1A | 30d | 2023-01-09 A | 2023-03-30 A | P1.DES.440 | 100% |  |
| BP3.024.1.140 |  | Prep/Submit - Demolition - Phase 1A | 10d | 2023-03-16 A | 2023-03-17 A | BP3.024.0.140, P1A.DES.630 | 100% |  |
| BP3.024.2.140 |  | Review/Approve - Demolition - Phase 1A | 15d | 2023-03-20 A | 2023-04-13 A | P1A.DES.640 FF+5d, BP3.024.1.140 | 100% |  |
| BP3.024.3.140 |  | Lead - Demolition - Phase 1A | 5d | 2023-04-13 A | 2023-04-25 A | BP3.024.2.140 FF | 100% |  |
|  | 18 | **Earthwork** |  | 2023-01-09 | 2023-07-01 |  |  |  |
| BP3.310.0.100 |  | Buyout - Earthwork | 30d | 2023-01-09 A | 2023-06-06 A | P1.DES.440 | 100% |  |
| BP3.310.1.100 |  | Prep/Submit - Earthwork | 7d | 2023-05-04 A | 2023-05-26 A | BP3.310.0.100, P1.DES.320 | 100% |  |
| BP3.310.2.100 |  | Review/Approve - Earthwork | 17d | 2023-05-30 A | 2023-06-13 A | BP3.310.1.100 | 100% |  |
| BP3.310.3.100 |  | Lead/Fab/Deliver - Earthwork | 7d | 2023-05-31 A | 2023-07-01 A | BP3.310.2.100 | 100% |  |
|  | 19 | **Auger Cast Piles** |  | 2023-01-09 | 2023-12-27 |  |  |  |
| BP3.316.0.100 |  | Buyout - Auger Cast Piles | 30d | 2023-01-09 A | 2023-04-18 A | P1.DES.440 | 100% |  |
| BP3.316.1.100 |  | Prep/Submit/Design - Auger Cast Piles | 30d | 2023-04-07 A | 2023-04-28 A | BP3.316.0.100, P1.DES.320 | 100% |  |
| BP3.316.2.100 |  | Review/Approve - Auger Cast Piles | 35d | 2023-10-02 A | 2023-11-29 A | BP3.316.1.100 | 100% |  |
| BP3.316.3.100 |  | Lead/Fab/Deliver - Auger Cast Piles | 15d | 2023-11-30 A | 2023-12-27 A | BP3.316.2.100 | 100% |  |

| ID | WBS | Task | Duration | Start | Finish | Predecessors | Complete | Total float |
| --- | --- | --- | --- | --- | --- | --- | --- | --- |
|  | 20 | **Earth Support - SOE** |  | 2023-01-09 | 2023-07-26 |  |  |  |
| BP3.315.0.100 |  | Buyout - Earth Support - SOE | 30d | 2023-01-09 A | 2023-04-18 A | P1.DES.440 | 100% |  |
| BP3.315.1.100 |  | Prep/Submit/Design - Earth Support - SOE | 30d | 2023-04-07 A | 2023-05-26 A | BP3.315.0.100, P1.DES.320 | 100% |  |
| BP3.315.2.100 |  | Review/Approve - Earth Support - SOE | 35d | 2023-05-30 A | 2023-07-11 A | BP3.315.1.100 | 100% |  |
| BP3.315.3.100 |  | Lead/Fab/Deliver - Earth Support - SOE | 25d | 2023-07-11 A | 2023-07-26 A | BP3.315.2.100 | 100% |  |
|  | 11 | **Bid Package 4** |  | 2023-03-28 | 2025-04-30 |  |  |  |
|  | 1 | **Miscellaneous Metals** |  | 2023-09-25 | 2025-04-30 |  |  |  |
| BP4.055.0.100 |  | Buyout - Miscellaneous Metals | 30d | 2023-09-25 A | 2024-01-02 A | P2A.DES.575 FF, P2C.DES.225 | 100% |  |
| BP4.055.1.100 |  | Prep/Submit - Miscellaneous Metals | 40d | 2024-01-04 A | 2024-04-02 A | BP4.055.0.100, P1.DES.410 | 100% |  |
| BP4.055.1.200 |  | Prep/Submit - Miscellaneous Metals Embeds for Concrete | 30d | 2024-01-04 A | 2024-04-02 A | BP4.055.0.100, P1.DES.410 | 100% |  |
| BP4.055.2.200 |  | Review/Approve - Miscellaneous Metals Embeds for Concrete | 35d | 2024-02-29 A | 2024-04-30 A | BP4.055.1.200 FF+5d | 100% |  |
| BP4.055.1.190 |  | Prep/Submit - Metal Pan Stairs | 20d | 2024-04-01 A | 2024-04-10 A | BP4.055.0.100, P2A.DES.555 | 100% |  |
| BP4.055.2.100 |  | Review/Approve - Miscellaneous Metals | 35d | 2024-04-02 A | 2024-04-30 A | BP4.055.1.100 FF+5d | 100% |  |
| BP4.055.1.300 |  | Prep/Submit - Steel Gratings | 20d | 2024-04-11 A | 2024-04-26 A | BP4.055.0.100 | 100% |  |
| BP4.055.3.400 |  | Lead/Fab/Deliver - Stairs | 75d | 2024-04-22 A | 2024-07-17 A | BP4.055.2.190 SS | 100% |  |
| BP4.055.2.300 |  | Review/Approve - Steel Gratings | 35d | 2024-04-29 A | 2024-05-28 A | BP4.055.1.300 | 100% |  |
| BP4.055.3.510 |  | Lead/Fab/Deliver - Miscellaneous Metals Embeds for Concrete | 20d | 2024-05-01 A | 2024-05-30 A | BP4.055.2.200 | 100% |  |
| BP4.055.3.100 |  | Lead/Fab/Deliver - Miscellaneous Metals | 40d | 2024-05-24 A | 2024-07-26 A | BP4.055.2.100 | 100% |  |
| BP4.055.3.300 |  | Lead/Fab/Deliver - Steel Gratings | 50d | 2024-05-29 A | 2024-09-16 A | BP4.055.2.300 | 100% |  |
| BP4.055.2.190 |  | Review/Approve - Metal Pan Stairs | 20d | 2024-07-05 A | 2024-10-21 A | BP4.055.1.190 | 100% |  |
| BP4.055.3.200 |  | Lead/Fab/Deliver - Catwalks | 60d | 2024-07-08 A | 2024-07-23 A | BP4.055.2.100, P2C.DES.295 | 100% |  |
| BP4.055.1.110 |  | Prep/Submit - Pipe and Tube Railings | 20d | 2024-09-30 A | 2024-10-30 A | BP4.055.0.100 | 100% |  |
| BP4.055.2.110 |  | Review/Approve - Pipe and Tube Railings | 35d | 2024-09-30 A | 2025-01-29 A | BP4.055.1.110 | 100% |  |
| BP4.055.3.150 |  | Lead/Fab/Deliver - Pipe and Tube Railings | 99d | 2025-01-29 A | 2025-04-30 A | BP4.055.2.110 | 100% |  |
|  | 2 | **Concrete** |  | 2023-03-28 | 2024-05-10 |  |  |  |
| BP4.030.0.100 |  | Buyout - Concrete | 30d | 2023-03-28 A | 2023-06-23 A | P2.DES.315 | 100% |  |
| BP4.030.1.100 |  | Prep/Submit - Concrete & Underslab WP (PD, Pour Sequencing, Procedures, Shoring, Control Joints) | 20d | 2023-07-18 A | 2023-09-14 A | BP4.030.0.100, P1.DES.410 | 100% |  |
| BP4.030.2.100 |  | Review/Approve - Concrete & Underslab WP (PD, Pour Sequencing, Procedures, Shoring, Control Joints) | 35d | 2023-07-19 A | 2023-11-28 A | BP4.030.1.100 | 100% |  |
| BP4.030.1.120 |  | Prep/Submit - Concrete Batch Plant | 20d | 2023-08-23 A | 2023-08-24 A | BP4.030.0.100 | 100% |  |
| BP4.030.2.120 |  | Review/Approve - Concrete Batch Plant | 20d | 2023-08-25 A | 2023-09-07 A | BP4.030.1.120 | 100% |  |
| BP4.030.1.110 |  | Prep/Submit - Concrete Shop Drawings, Phase 1 | 20d | 2023-09-15 A | 2023-10-14 A | BP4.030.1.100 | 100% |  |
| BP4.030.2.130 |  | Construct Batch Plant | 25d | 2023-10-02 A | 2023-11-09 A | BP4.030.2.120 | 100% |  |
| BP4.030.2.110 |  | Review/Approve - Concrete Shop Drawings, Phase 1 | 35d | 2023-10-16 A | 2024-01-02 A | BP4.030.1.110 | 100% |  |
| BP4.030.1.130 |  | Prep/Submit - Concrete Shop Drawings, Phase 2 | 60d | 2023-12-26 A | 2024-03-26 A | P2A.DES.555 FF+15d, P2A.DES.575 | 100% |  |
| BP4.030.3.110 |  | Lead/Fab/Deliver - Under Slab Waterproofing | 10d | 2024-01-01 A | 2024-02-14 A | BP4.030.2.100 | 100% |  |
| BP4.030.3.100 |  | Lead/Fab/Deliver - Concrete | 1d | 2024-01-03 A | 2024-01-03 A | BP4.030.2.110, BP4.030.2.130, BP4.030.2.100 | 100% |  |
| BP4.030.2.140 |  | Review/Approve - Concrete Shop Drawings, Phase 2 | 35d | 2024-03-26 A | 2024-05-10 A | BP4.030.1.130 | 100% |  |
|  | 3 | **Masonry** |  | 2024-04-25 | 2024-10-05 |  |  |  |
| BP4.040.0.100 |  | Buyout - Masonry | 30d | 2024-04-25 A | 2024-08-06 A | P2C.DES.175 FF | 100% |  |
| BP4.040.1.100 |  | Prep/Submit - Masonry | 15d | 2024-08-28 A | 2024-09-04 A | BP4.040.0.100 | 100% |  |
| BP4.040.2.100 |  | Review/Approve - Masonry | 35d | 2024-09-05 A | 2024-10-01 A | BP4.040.1.100 | 100% |  |
| BP4.040.3.100 |  | Lead/Fab/Deliver - Masonry | 30d | 2024-10-02 A | 2024-10-05 A | BP4.040.2.100 | 100% |  |
|  | 4 | **Waterproofing** |  | 2023-03-28 | 2024-03-27 |  |  |  |
| BP4.071.0.110 |  | Buyout - Waterproofing - Phase 1A | 30d | 2023-03-28 A | 2023-06-16 A | P1A.DES.650 | 100% |  |
| BP4.071.1.110 |  | Prep/Submit - Waterproofing - Phase 1A | 20d | 2023-06-20 A | 2023-08-03 A | BP4.071.0.110 | 100% |  |
| BP4.071.2.110 |  | Review/Approve - Waterproofing - Phase 1A | 35d | 2023-08-04 A | 2023-09-11 A | BP4.071.1.110 | 100% |  |
| BP4.071.0.100 |  | Buyout - Waterproofing | 30d | 2023-08-28 A | 2023-11-17 A | P2C.DES.335 | 100% |  |
| BP4.071.3.110 |  | Lead/Fab/Deliver - Waterproofing - Phase 1A | 5d | 2023-09-11 A | 2023-09-18 A | BP4.071.2.110 | 100% |  |
| BP4.071.1.100 |  | Prep/Submit - Waterproofing | 20d | 2023-11-20 A | 2024-02-21 A | BP4.071.0.100, P1.DES.410 | 100% |  |
| BP4.071.2.100 |  | Review/Approve - Waterproofing | 20d | 2024-02-26 A | 2024-03-25 A | BP4.071.1.100 | 100% |  |
| BP4.071.3.100 |  | Lead/Fab/Deliver - Waterproofing | 5d | 2024-03-25 A | 2024-03-27 A | BP4.071.2.100 FF+5d | 100% |  |
|  | 12 | **Bid Package 5** |  | 2023-04-04 | 2026-05-17 |  |  |  |
|  | 1 | **Shielding (Lead)** |  | 2023-04-04 | 2024-12-02 |  |  |  |
| BP5.134.0.200 |  | Buyout - Shielding (Lead) | 10d | 2023-04-04 A | 2023-06-23 A | BP5.092.0.200 FF | 100% |  |
| BP5.134.1.200 |  | Prep/Submit - Shielding (Lead) | 20d | 2024-01-01 A | 2024-02-01 A | BP5.134.0.200, P2C.DES.295 | 100% |  |
| BP5.134.2.200 |  | Review/Approve - Shielding (Lead) | 35d | 2024-02-02 A | 2024-02-19 A | BP5.134.1.200 | 100% |  |
| BP5.134.3.200 |  | Lead/Fab/Deliver - Shielding (Lead) | 120d | 2024-11-18 A | 2024-12-02 A | BP5.134.2.200 | 100% |  |
|  | 2 | **Shielding (Copper)** |  | 2023-05-18 | 2024-09-27 |  |  |  |
| BP5.134.0.100 |  | Buyout - RF Shielding (Copper) | 10d | 2023-05-18 A | 2023-06-22 A | P2.DES.275 | 100% |  |
| BP5.134.1.100 |  | Design - RF Shielding (Copper) | 60d | 2023-06-23 A | 2024-09-27 A | P2C.DES.180 FF, BP5.134.0.100 | 100% |  |
|  | 3 | **Drywall & Related** |  | 2023-04-04 | 2025-12-21 |  |  |  |
| BP5.092.0.200 |  | Buyout - Drywall & Related | 10d | 2023-04-04 A | 2023-06-23 A | P2.DES.315 | 100% |  |
| BP5.092.1.200 |  | Prep/Submit - Drywall & Related | 20d | 2024-03-01 A | 2024-03-05 A | BP5.092.0.200, P2C.DES.185 | 100% |  |
| BP5.092.2.200 |  | Review/Approve - Drywall & Related | 35d | 2024-03-06 A | 2024-09-23 A | BP5.092.1.200 | 100% |  |
| BP5.054.1.100 |  | Prep/Submit - Metal Framing & Drywall for Priority Walls - Cold Formed | 20d | 2024-05-28 A | 2024-07-31 A | BP5.092.0.200, P2C.DES.285 | 100% |  |
| BP5.054.2.100 |  | Review/Approve - Metal Framing - Cold Formed | 35d | 2024-06-28 A | 2024-09-30 A | BP5.054.1.100 SS | 100% |  |
| BP5.054.3.100 |  | Lead/Fab/Deliver - Framing | 30d | 2024-08-27 A | 2024-10-07 A | BP5.054.2.100 FF | 100% |  |
| BP5.095.3.100 |  | Lead/Fab/Deliver - ACT Grid/Tile | 42d | 2025-04-01 A | 2025-04-30 A | BP5.092.2.200 | 100% |  |
| BP4.134.3.130 |  | Lead/Fab/Deliver - Radiation Protection Lead Gypsum Board | 21d | 2025-12-01 | 2025-12-21 | BP5.092.2.200 |  | 85d |
|  | 4 | **Doors Frames & Hardware** |  | 2024-06-20 | 2026-05-17 |  |  |  |

| ID | WBS | Task | Duration | Start | Finish | Predecessors | Complete | Total float |
| --- | --- | --- | --- | --- | --- | --- | --- | --- |
| BP5.081.0.100 |  | Buyout - Doors Frames & Hardware - Priority Masonry | 7d | 2024-06-20 A | 2024-08-22 A | P2C.DES.165, P2C.DES.175 | 100% |  |
| BP5.081.0.110 |  | Buyout - Doors Frames & Hardware | 20d | 2024-07-18 A | 2024-10-08 A | P2C.DES.165, P2C.DES.175 | 100% |  |
| BP5.081.1.400 |  | Prep/Submit - Frames - Aluminum (Masonry) - Priority | 20d | 2024-08-16 A | 2024-08-23 A | BP5.081.0.100 SS | 100% |  |
| BP5.081.2.400 |  | Review/Approve - Frames - Aluminum (Masonry) - Priority | 35d | 2024-08-23 A | 2024-09-04 A | BP5.081.1.400 FF | 100% |  |
| BP5.081.3.400 |  | Lead/Fab/Deliver - Frames - Hollow Metal (Masonry) - Priority | 40d | 2024-10-01 A | 2024-10-28 A | BP5.081.2.400 | 100% |  |
| BP5.081.1.100 |  | Prep/Submit - Doors Frames & Hardware | 20d | 2024-10-08 A | 2024-11-15 A | P2C.DES.295, BP5.081.0.110 SS | 100% |  |
| BP5.083.1.110 |  | Prep/Submit - Doors/Frames - Lead Lined | 20d | 2024-10-08 A | 2024-11-15 A | BP5.081.0.110, P2C.DES.200 | 100% |  |
| BP5.081.2.100 |  | Review/Approve - Doors Frames & Hardware | 35d | 2024-12-11 A | 2024-12-25 A | BP5.081.1.100 | 100% |  |
| BP5.083.2.110 |  | Review/Approve - Doors/Frames - Lead Lined | 35d | 2024-12-11 A | 2024-12-25 A | BP5.083.1.110 | 100% |  |
| BP5.081.3.200 |  | Lead/Fab/Deliver - Priority Door Frames | 80d | 2025-01-20 A | 2025-02-27 A | BP5.081.2.100 | 100% |  |
| BP5.081.1.410 |  | Prep/Submit - Doors/Frame - GFRP (LSP) | 20d | 2025-01-27 A | 2025-03-04 A | BP5.081.0.110 SS | 100% |  |
| BP5.081.2.410 |  | Review/Approve - Doors/Frame - GFRP (LSP) | 35d | 2025-03-04 A | 2025-12-19 | BP5.081.1.410 | 57% | 150d |
| BP5.083.3.110 |  | Lead/Fab/Deliver - Door Frames - Lead Lined | 70d | 2025-04-01 A | 2025-09-01 A | BP5.083.2.110 | 100% |  |
| BP5.081.3.300 |  | Lead/Fab/Deliver - Doors & Hardware | 120d | 2025-12-01 | 2026-03-30 | BP5.081.2.100 |  | 304d |
| BP5.081.3.410 |  | Lead/Fab/Deliver - Doors/Frames - HM/Hardware | 168d | 2025-12-01 | 2026-05-17 | BP5.081.1.100 |  | 137d |
| BP5.083.3.120 |  | Lead/Fab/Deliver - Doors - Lead Lined | 168d | 2025-12-01 | 2026-05-17 | BP5.083.2.110 |  | 137d |
| BP4.134.3.100 |  | Lead/Fab/Deliver - RF Frames/ Doors (Shielded) | 99d | 2025-12-02 | 2026-03-10 | BP5.081.2.100, PCO.225.1140 |  | 205d |
| BP5.081.3.420 |  | Lead/Fab/Deliver - Doors/Frame/HDW - GFRP (LSP) | 70d | 2025-12-20 | 2026-02-27 | BP5.081.2.410 |  | 216d |
|  | 13 | **Bid Package 6** |  | 2023-01-30 | 2026-07-22 |  |  |  |
|  | 1 | **Headwalls** |  | 2023-01-30 | 2026-05-08 |  |  |  |
| BP6.102.0.100 |  | Buyout - Headwalls | 30d | 2023-01-30 A | 2023-06-29 A | P2.DES.315 | 100% |  |
| BP6.102.1.100 |  | Prep/Submit - Headwalls | 20d | 2024-12-19 A | 2025-03-04 A | BP6.102.0.100, P2C.DES.205 | 100% |  |
| BP6.102.2.100 |  | Review/Approve - Headwalls | 35d | 2025-03-04 A | 2025-12-19 | BP6.102.1.100 | 57% | 156d |
| BP6.102.3.100 |  | Lead/Fab/Deliver - Headwalls | 140d | 2025-12-20 | 2026-05-08 | BP6.102.2.100 |  | 226d |
|  | 2 | **Lab Casework** |  | 2023-02-13 | 2026-03-10 |  |  |  |
| BP6.123.0.100 |  | Buyout - Lab Casework | 30d | 2023-02-13 A | 2023-06-23 A | P2.DES.275 | 100% |  |
| BP6.123.1.100 |  | Prep/Submit - Lab Casework | 20d | 2025-03-19 A | 2025-03-20 A | BP6.123.0.100, P2C.DES.210 | 100% |  |
| BP6.123.2.100 |  | Review/Approve - Lab Casework | 35d | 2025-03-20 A | 2025-04-18 A | BP6.123.1.100 | 100% |  |
| BP6.123.3.100 |  | Lead/Fab/Deliver - Lab Casework | 100d | 2025-12-01 | 2026-03-10 | BP6.123.2.100 |  | 203d |
|  | 3 | **Laboratory/Med Equipment** |  | 2023-02-13 | 2026-07-22 |  |  |  |
| BP6.115.0.100 |  | Buyout - Laboratory/Med Equipment | 30d | 2023-02-13 A | 2023-06-23 A | P2.DES.275 | 100% |  |
| BP6.115.1.100 |  | Prep/Submit - Laboratory/Med Equipment | 20d | 2024-10-01 A | 2024-12-31 A | BP6.115.0.100, P2C.DES.235 SS | 100% |  |
| BP6.115.2.100 |  | Review/Approve - Laboratory/Med Equipment | 35d | 2024-10-21 A | 2024-12-31 A | BP6.115.1.100 | 100% |  |
| BP6.115.3.100 |  | Lead/Fab/Deliver - Laboratory/Med Equipment | 100d | 2024-12-31 A | 2025-02-17 A | BP6.115.2.100 | 100% |  |
| BP6.115.1.140 |  | Prep/Submit - Biological Safety Cabinets | 20d | 2025-02-04 A | 2025-03-07 A | BP6.115.0.100, P2C.DES.205 | 100% |  |
| BP6.115.2.140 |  | Review/Approve - Biological Safety Cabinets | 35d | 2025-03-07 A | 2025-05-01 A | BP6.115.1.140 | 100% |  |
| BP6.115.3.140 |  | Lead/Fab/Deliver - Biological Safety Cabinets | 99d | 2025-12-01 | 2026-03-09 | BP6.115.2.140 |  | 296d |
| BP6.117.1.100 |  | Prep/Submit - Equipment - Patient Care | 20d | 2025-12-01 | 2025-12-29 | BP6.115.0.100, P2C.DES.205, BP6.115.1.140 |  | 115d |
| BP6.117.1.110 |  | Prep/Submit - Equipment - Operating Room | 20d | 2025-12-30 | 2026-01-27 | BP6.115.0.100, P2C.DES.205, BP6.117.1.100 |  | 115d |
| BP6.117.2.100 |  | Review/Approve - Equipment - Patient Care | 35d | 2025-12-30 | 2026-02-17 | BP6.117.1.100 |  | 120d |
| BP6.117.1.120 |  | Prep/Submit - Equipment - Radiology | 20d | 2026-01-28 | 2026-02-24 | BP6.115.0.100, P2C.DES.205, BP6.117.1.110 |  | 115d |
| BP6.117.2.110 |  | Review/Approve - Equipment - Operating Room | 35d | 2026-02-18 | 2026-04-07 | BP6.117.1.110, BP6.117.2.100 |  | 120d |
| BP6.117.3.100 |  | Lead/Fab/Deliver - Equipment - Patient Care | 99d | 2026-02-18 | 2026-05-27 | BP6.117.2.100 |  | 221d |
| BP6.117.2.120 |  | Review/Approve - Equipment - Radiology | 35d | 2026-02-25 | 2026-04-14 | BP6.117.1.120 |  | 115d |
| BP6.117.3.110 |  | Lead/Fab/Deliver - Equipment - Operating Room | 99d | 2026-04-08 | 2026-07-15 | BP6.117.2.110 |  | 172d |
| BP6.117.3.120 |  | Lead/Fab/Deliver - Equipment - Radiology | 99d | 2026-04-15 | 2026-07-22 | BP6.117.2.120 |  | 165d |
|  | 4 | **Cold Rooms** |  | 2023-02-13 | 2026-02-18 |  |  |  |
| BP6.132.0.100 |  | Buyout - Cold Rooms | 30d | 2023-02-13 A | 2023-07-21 A | P2.DES.315 | 100% |  |
| BP6.132.1.100 |  | Prep/Submit - Cold Rooms | 20d | 2025-03-17 A | 2025-03-17 A | BP6.132.0.100, P2C.DES.210 | 100% |  |
| BP6.132.2.100 |  | Review/Approve - Cold Rooms | 35d | 2025-03-17 A | 2025-06-30 A | BP6.132.1.100 | 100% |  |
| BP6.132.3.100 |  | Lead/Fab/Deliver - Cold Rooms | 80d | 2025-12-01 | 2026-02-18 | BP6.132.2.100 |  | 19d |
|  | 5 | **Cleanroom GFRP** |  | 2023-07-03 | 2026-03-10 |  |  |  |
| BP6.092.0.100 |  | Buyout - Cleanroom GFRP | 30d | 2023-07-03 A | 2023-12-07 A | P2C.DES.225 | 100% |  |
| BP6.092.1.100 |  | Prep/Submit - Cleanroom GFRP | 20d | 2024-08-12 A | 2025-02-06 A | BP6.092.0.100, P2C.DES.235 SS | 100% |  |
| BP6.092.2.100 |  | Review/Approve - Cleanroom GFRP | 35d | 2025-03-04 A | 2025-06-30 A | BP6.092.1.100 | 100% |  |
| BP6.092.3.100 |  | Lead/Fab/Deliver - Cleanroom GFRP | 100d | 2025-12-01 | 2026-03-10 | BP6.092.2.100 |  | 162d |
|  | 14 | **Bid Package 7** |  | 2023-08-30 | 2026-07-21 |  |  |  |
|  | 12 | **Structural Steel** |  | 2023-09-25 | 2025-03-28 |  |  |  |
| BP7.051.0.100 |  | Buyout - Strucutral Steel Framing | 30d | 2023-09-25 A | 2024-01-04 A | P2A.DES.575 FF | 100% |  |
| BP7.051.0.110 |  | Buyout - Architectural Structural Steel Framing | 30d | 2023-09-25 A | 2024-01-04 A | P2C.DES.225 | 100% |  |
| BP7.051.1.100 |  | Prep/Submit - Strucutral Steel Framing | 20d | 2024-03-20 A | 2024-04-26 A | BP7.051.0.100, P2A.DES.555 | 100% |  |
| BP7.051.2.100 |  | Review/Approve - Strucutral Steel Framing | 35d | 2024-04-03 A | 2024-06-26 A | BP7.051.1.100 | 100% |  |
| BP7.053.1.100 |  | Prep/Submit - Steel Decking | 20d | 2024-04-09 A | 2024-04-23 A | BP7.051.0.100, P2A.DES.555 | 100% |  |
| BP7.053.2.100 |  | Review/Approve - Steel Decking | 35d | 2024-04-24 A | 2024-08-26 A | BP7.053.1.100 | 100% |  |
| BP7.051.3.100 |  | Lead/Fab/Deliver - Structural Steel Framing | 98d | 2024-06-20 A | 2024-08-20 A | BP7.051.2.100 | 100% |  |
| BP7.051.1.110 |  | Prep/Submit - Architectural Structural Steel Framing | 20d | 2024-07-01 A | 2024-07-15 A | BP7.051.0.110, P2A.DES.555 | 100% |  |
| BP7.051.2.110 |  | Review/Approve - Architectural Structural Steel Framing | 35d | 2024-07-15 A | 2024-08-26 A | BP7.051.1.110 | 100% |  |
| BP7.053.3.100 |  | Lead/Fab/Deliver - Steel Decking | 45d | 2024-09-23 A | 2024-10-21 A | BP7.053.2.100 | 100% |  |
| BP7.051.3.110 |  | Lead/Fab/Deliver - Architectural Structural Steel Framing | 49d | 2024-12-03 A | 2025-03-28 A | BP7.051.2.110 | 100% |  |
|  | 1 | **Paint & Wall Covering** |  | 2023-09-29 | 2026-02-18 |  |  |  |

| ID | WBS | Task | Duration | Start | Finish | Predecessors | Complete | Total float |
| --- | --- | --- | --- | --- | --- | --- | --- | --- |
| BP7.099.0.100 |  | Buyout - Paint & Wall Covering | 30d | 2023-09-29 A | 2024-03-25 A | P2C.DES.180 FF, P2C.DES.225 | 100% |  |
| BP7.099.1.100 |  | Prep/Submit - Paint & Wall Covering | 20d | 2024-06-26 A | 2024-07-08 A | BP7.099.0.100 | 100% |  |
| BP7.099.2.100 |  | Review/Approve - Paint & Wall Covering | 35d | 2024-07-08 A | 2024-07-17 A | BP7.099.1.100 FF+10d | 100% |  |
| BP7.099.3.100 |  | Lead/Fab/Deliver - Paint | 5d | 2024-09-30 A | 2024-10-07 A | BP7.099.2.100 | 100% |  |
| BP7.097.3.100 |  | Lead/Fab/Deliver - Wall Covering | 80d | 2025-12-01 | 2026-02-18 | BP7.099.2.100 |  | 295d |
|  | 2 | **Building Specialties** |  | 2023-08-30 | 2026-04-26 |  |  |  |
| BP7.100.0.100 |  | Buyout - Building Specialties | 30d | 2023-08-30 A | 2024-04-23 A | P2C.DES.225 | 100% |  |
| BP7.100.0.110 |  | Buyout - Photoluminescent markings | 30d | 2024-03-26 A | 2024-07-08 A | P2C.DES.295 | 100% |  |
| BP7.100.1.110 |  | Prep/Submit - Photoluminescent markings | 20d | 2024-06-10 A | 2024-08-23 A | BP7.100.0.110 | 100% |  |
| BP7.102.1.130 |  | Prep/Submit - Partitions - Demountable | 20d | 2024-07-01 A | 2024-08-12 A | BP7.100.0.100, P2C.DES.235 SS | 100% |  |
| BP7.102.1.140 |  | Prep/Submit - Partitions - Folding Panel | 20d | 2024-07-12 A | 2024-07-12 A | BP7.100.0.100, P2C.DES.295 | 100% |  |
| BP7.102.2.140 |  | Review/Approve - Partitions - Folding Panel | 35d | 2024-07-12 A | 2024-09-30 A | BP7.102.1.140 | 100% |  |
| BP7.102.2.130 |  | Review/Approve - Partitions - Demountable | 35d | 2024-08-12 A | 2025-01-13 A | BP7.102.1.130 | 100% |  |
| BP7.100.2.110 |  | Review/Approve - Photoluminescent markings | 35d | 2024-08-26 A | 2025-03-05 A | BP7.100.1.110 | 100% |  |
| BP7.102.1.110 |  | Prep/Submit - Cubicle Curtains and Track | 20d | 2024-12-10 A | 2024-12-18 A | BP7.100.0.100 | 100% |  |
| BP7.105.1.100 |  | Prep/Submit - Metal Lockers | 20d | 2025-01-13 A | 2025-02-03 A | BP7.100.0.100, P2C.DES.205 | 100% |  |
| BP7.102.1.120 |  | Prep/Submit - Toilet Compartment | 20d | 2025-01-15 A | 2025-02-10 A | BP7.100.0.100, P2C.DES.205 | 100% |  |
| BP7.102.2.110 |  | Review/Approve - Cubicle Curtains and Track | 35d | 2025-01-27 A | 2025-12-12 | BP7.102.1.110 | 71% | 205d |
| BP7.105.2.100 |  | Review/Approve - Metal Lockers | 35d | 2025-02-01 A | 2025-10-24 A | BP7.105.1.100 | 100% |  |
| BP7.102.2.120 |  | Review/Approve - Toilet Compartment | 35d | 2025-02-10 A | 2025-10-07 A | BP7.102.1.120 | 100% |  |
| BP7.100.1.100 |  | Prep/Submit - Building Specialties | 20d | 2025-02-21 A | 2025-03-20 A | BP7.100.0.100, P2C.DES.210 | 100% |  |
| BP7.100.2.100 |  | Review/Approve - Building Specialties | 35d | 2025-03-20 A | 2025-04-10 A | BP7.100.1.100 | 100% |  |
| BP7.100.3.110 |  | Lead/Fab/Deliver - Photoluminescent markings | 50d | 2025-07-21 A | 2025-10-24 A | BP7.100.2.110 | 100% |  |
| BP7.100.3.100 |  | Lead/Fab/Deliver - Building Specialties | 50d | 2025-12-01 | 2026-01-19 | BP7.100.2.100 |  | 317d |
| BP7.102.3.120 |  | Lead/Fab/Deliver - Toilet Compartment | 42d | 2025-12-01 | 2026-01-11 | BP7.102.2.120 |  | 256d |
| BP7.102.3.130 |  | Lead/Fab/Deliver - Partitions - Demountable | 147d | 2025-12-01 | 2026-04-26 | BP7.102.2.130 |  | 204d |
| BP7.102.3.140 |  | Lead/Fab/Deliver - Partitions - Folding Panel | 147d | 2025-12-01 | 2026-04-26 | BP7.102.2.140 |  | 203d |
| BP7.102.3.200 |  | Lead/Fab/Deliver - Toilet Partitions | 50d | 2025-12-01 | 2026-01-19 | BP7.100.2.100 |  | 387d |
| BP7.102.3.300 |  | Lead/Fab/Deliver - Wall Protection / Crash Guards | 80d | 2025-12-01 | 2026-02-18 | BP7.100.2.100 |  | 47d |
| BP7.105.3.100 |  | Lead/Fab/Deliver - Metal Lockers | 99d | 2025-12-01 | 2026-03-09 | BP7.105.2.100 |  | 192d |
| BP7.102.3.110 |  | Lead/Fab/Deliver - Cubicle Curtains and Track | 42d | 2025-12-13 | 2026-01-23 | BP7.102.2.110 |  | 296d |
|  | 3 | **Epoxy Floors** |  | 2023-10-12 | 2025-09-05 |  |  |  |
| BP7.096.0.200 |  | Buyout - Epoxy Floors | 30d | 2023-10-12 A | 2024-04-18 A | P2C.DES.225 | 100% |  |
| BP7.096.1.200 |  | Prep/Submit - Epoxy Floors | 20d | 2024-09-18 A | 2024-11-21 A | BP7.096.0.200, P2C.DES.235 SS | 100% |  |
| BP7.096.2.200 |  | Review/Approve - Epoxy Floors | 35d | 2024-11-22 A | 2025-02-21 A | BP7.096.1.200 | 100% |  |
| BP7.096.3.200 |  | Lead/Fab/Deliver - Epoxy Floors | 60d | 2025-05-01 A | 2025-09-05 A | BP7.096.2.200 | 100% |  |
|  | 4 | **Carpet & Resilient** |  | 2023-10-12 | 2026-01-29 |  |  |  |
| BP7.096.0.100 |  | Buyout - Carpet | 30d | 2023-10-12 A | 2024-07-01 A | P2C.DES.225 | 100% |  |
| BP7.096.1.100 |  | Prep/Submit - Carpet | 20d | 2024-10-25 A | 2024-11-13 A | BP7.096.0.100, P2C.DES.235 SS | 100% |  |
| BP7.096.2.100 |  | Review/Approve - Carpet | 35d | 2024-11-04 A | 2025-04-30 A | BP7.096.1.100 | 100% |  |
| BP7.096.3.100 |  | Lead/Fab/Deliver - Carpet | 60d | 2025-12-01 | 2026-01-29 | BP7.096.2.100 |  | 277d |
|  | 5 | **Tile** |  | 2023-10-12 | 2026-01-29 |  |  |  |
| BP7.093.0.100 |  | Buyout - Tile | 30d | 2023-10-12 A | 2024-07-01 A | P2C.DES.225 | 100% |  |
| BP7.093.1.100 |  | Prep/Submit - Tile | 20d | 2024-10-25 A | 2024-11-21 A | BP7.093.0.100, P2C.DES.235 SS | 100% |  |
| BP7.093.2.100 |  | Review/Approve - Tile | 35d | 2024-11-22 A | 2025-03-20 A | BP7.093.1.100 | 100% |  |
| BP7.093.3.100 |  | Lead/Fab/Deliver - Tile | 60d | 2025-12-01 | 2026-01-29 | BP7.093.2.100 |  | 262d |
|  | 6 | **Ornamental Metals** |  | 2023-10-23 | 2026-03-21 |  |  |  |
| BP4.055.0.110 |  | Buyout - Glazed Decorative Metal Railings | 30d | 2023-10-23 A | 2024-04-01 A | P2C.DES.225 | 100% |  |
| BP7.057.0.100 |  | Buyout - Ornamental Metals | 30d | 2023-11-27 A | 2024-04-01 A | P2C.DES.225 | 100% |  |
| BP4.055.0.120 |  | Buyout - Formed Metal Panels | 30d | 2024-03-15 A | 2024-04-03 A | P2C.DES.285 SS | 100% |  |
| BP4.055.1.120 |  | Prep/Submit - Decorative Metal Railings | 20d | 2024-10-21 A | 2025-01-08 A | BP4.055.0.110, P2C.DES.235 SS | 100% |  |
| BP4.055.2.120 |  | Review/Approve - Decorative Metal Railings | 35d | 2025-01-09 A | 2025-01-22 A | BP4.055.1.120 | 100% |  |
| BP4.055.3.110 |  | Lead/Fab/Deliver - Decorative Metal Railings | 99d | 2025-02-03 A | 2025-02-28 A | BP4.055.2.120 | 100% |  |
| BP4.055.1.130 |  | Prep/Submit - Glazed Decorative Metal Railings | 20d | 2025-02-17 A | 2025-02-18 A | BP4.055.0.110, P2C.DES.210 | 100% |  |
| BP4.055.1.310 |  | Prep/Submit - Formed Metal Panels | 20d | 2025-02-17 A | 2025-02-18 A | BP4.055.0.120 | 100% |  |
| BP7.057.1.100 |  | Prep/Submit - Ornamental Metals | 20d | 2025-02-17 A | 2025-02-18 A | BP7.057.0.100, P2C.DES.210 | 100% |  |
| BP4.055.2.130 |  | Review/Approve - Glazed Decorative Metal Railings | 35d | 2025-02-19 A | 2025-03-13 A | BP4.055.1.130 | 100% |  |
| BP4.055.2.310 |  | Review/Approve - Formed Metal Panels | 35d | 2025-02-19 A | 2025-12-12 | BP4.055.1.310 | 71% | 171d |
| BP7.057.2.100 |  | Review/Approve - Ornamental Metals | 35d | 2025-02-19 A | 2025-03-13 A | BP7.057.1.100 | 100% |  |
| BP4.055.3.120 |  | Lead/Fab/Deliver - Glazed Decorative Metal Railings | 99d | 2025-03-03 A | 2025-04-30 A | BP4.055.2.130 | 100% |  |
| BP7.057.3.100 |  | Lead/Fab/Deliver - Ornamental Metals | 80d | 2025-12-01 | 2026-02-18 | BP7.057.2.100 |  | 278d |
| BP4.055.3.520 |  | Lead/Fab/Deliver - Formed Metal Panels | 99d | 2025-12-13 | 2026-03-21 | BP4.055.2.310 |  | 247d |
|  | 7 | **Interior Glass** |  | 2024-08-22 | 2026-02-18 |  |  |  |
| BP7.088.0.100 |  | Buyout - Interior Glass | 8d | 2024-08-22 A | 2024-09-24 A | P2C.DES.180 | 100% |  |
| BP2.088.1.100 |  | Prep/Submit - Glazing - Decorative | 20d | 2025-02-15 A | 2025-04-28 A | BP7.088.0.100, P2C.DES.210 | 100% |  |
| BP7.088.1.100 |  | Prep/Submit - Interior Glass | 20d | 2025-02-15 A | 2025-06-03 A | P2A.DES.555, BP7.088.0.100, P2C.DES.185 | 100% |  |
| BP2.088.2.100 |  | Review/Approve - Glazing - Decorative | 35d | 2025-04-28 A | 2025-06-27 A | BP2.088.1.100 | 100% |  |
| BP7.088.2.100 |  | Review/Approve - Interior Glass | 35d | 2025-06-04 A | 2025-11-10 A | BP7.088.1.100 | 100% |  |
| BP2.088.3.100 |  | Lead/Fab/Deliver - Glazing - Decorative | 105d | 2025-06-18 A | 2025-12-28 | BP2.088.2.100 | 73% | 351d |
| BP2.134.3.140 |  | Lead/Fab/Deliver - Radiation Protection Lead Glass | 99d | 2025-06-18 A | 2025-12-28 | BP2.088.2.100 | 72% | 274d |

| ID | WBS | Task | Duration | Start | Finish | Predecessors | Complete | Total float |
| --- | --- | --- | --- | --- | --- | --- | --- | --- |
| BP7.088.3.100 |  | Lead/Fab/Deliver - Interior Glass | 80d | 2025-11-11 A | 2026-02-18 | BP7.088.2.100 |  | 250d |
|  | 8 | **Millwork** |  | 2024-01-16 | 2026-02-03 |  |  |  |
| BP7.062.0.100 |  | Buyout - Millwork | 30d | 2024-01-16 A | 2024-04-24 A | P2C.DES.225 | 100% |  |
| BP7.062.1.100 |  | Prep/Submit - Millwork | 20d | 2024-07-12 A | 2024-10-10 A | BP7.062.0.100, P2C.DES.235 SS | 100% |  |
| BP7.064.1.100 |  | Prep/Submit - Cabinets | 20d | 2024-07-12 A | 2024-10-10 A | BP7.062.0.100, P2C.DES.235 SS | 100% |  |
| BP7.123.1.100 |  | Prep/Submit - Solid Surfacing Countertops | 20d | 2024-07-12 A | 2024-10-10 A | BP7.062.0.100, P2C.DES.235 SS | 100% |  |
| BP7.062.2.100 |  | Review/Approve - Millwork | 35d | 2024-10-10 A | 2025-06-09 A | BP7.062.1.100 | 100% |  |
| BP7.064.2.100 |  | Review/Approve - Cabinets | 35d | 2024-10-10 A | 2025-06-09 A | BP7.064.1.100 | 100% |  |
| BP7.123.2.100 |  | Review/Approve - Solid Surfacing Countertops | 35d | 2024-10-10 A | 2025-06-09 A | BP7.123.1.100 | 100% |  |
| BP7.062.3.100 |  | Lead/Fab/Deliver - Millwork | 80d | 2025-06-30 A | 2026-02-02 | BP7.062.2.100 | 20% | 237d |
| BP7.064.3.100 |  | Lead/Fab/Deliver - Cabinets | 126d | 2025-06-30 A | 2026-02-02 | BP7.064.2.100 | 49% | 239d |
| BP7.123.3.100 |  | Lead/Fab/Deliver - Solid Surfacing Countertops | 99d | 2025-06-30 A | 2026-02-03 | BP7.123.2.100 | 35% | 220d |
|  | 9 | **Signage** |  | 2023-09-04 | 2026-01-19 |  |  |  |
| BP7.101.0.100 |  | Buyout - Signage | 30d | 2023-09-04 A | 2024-07-22 A | P2C.DES.225 | 100% |  |
| BP7.101.1.100 |  | Prep/Submit - Signage | 20d | 2025-04-07 A | 2025-04-30 A | BP7.101.0.100, P2C.DES.210 | 100% |  |
| BP7.101.2.100 |  | Review/Approve - Signage | 35d | 2025-05-15 A | 2025-09-10 A | BP7.101.1.100 | 100% |  |
| BP7.101.3.100 |  | Lead/Fab/Deliver - Signage | 50d | 2025-12-01 | 2026-01-19 | BP7.101.2.100 |  | 338d |
|  | 10 | **Stretched Fabric Wall System** |  | 2024-01-16 | 2025-12-10 |  |  |  |
| BP7.097.0.110 |  | Buyout - Stretched-Fabric Wall Systems | 30d | 2024-01-16 A | 2024-04-24 A | P2C.DES.395 | 100% |  |
| BP7.097.1.110 |  | Prep/Submit - Stretched-Fabric Wall Systems | 20d | 2024-07-12 A | 2024-10-09 A | BP7.097.0.110, P2C.DES.235 SS | 100% |  |
| BP7.097.2.110 |  | Review/Approve - Stretched-Fabric Wall Systems | 35d | 2024-10-10 A | 2025-03-31 A | BP7.097.1.110 | 100% |  |
| BP7.097.3.110 |  | Lead/Fab/Deliver - Stretched-Fabric Wall Systems | 99d | 2025-04-01 A | 2025-12-10 | BP7.097.2.110 | 90% | 327d |
|  | 11 | **Appliances** |  | 2025-12-01 | 2026-07-21 |  |  |  |
| BP7.113.0.100 |  | Buyout - Appliances | 30d | 2025-12-01 | 2026-01-13 | P2C.DES.210 |  | 48d |
| BP7.113.1.100 |  | Prep/Submit - Appliances | 20d | 2026-01-14 | 2026-02-10 | BP7.113.0.100 |  | 48d |
| BP7.113.2.100 |  | Review/Approve - Appliances | 35d | 2026-02-11 | 2026-03-31 | BP7.113.1.100 |  | 48d |
| BP7.113.3.100 |  | Lead/Fab/Deliver - Appliances | 112d | 2026-04-01 | 2026-07-21 | BP7.113.2.100 |  | 69d |
|  | 15 | **Bid Package 8** |  | 2023-10-09 | 2026-03-05 |  |  |  |
|  | 6 | **OH Coiling Doors** |  | 2023-10-09 | 2026-03-05 |  |  |  |
| BP8.083.0.100 |  | Buyout - Doors - Overhead Coiling | 30d | 2023-10-09 A | 2023-11-17 A | P2C.DES.225 | 100% |  |
| BP8.083.1.100 |  | Prep/Submit - Doors - Overhead Coiling | 20d | 2023-12-01 A | 2024-04-01 A | BP8.083.0.100 | 100% |  |
| BP8.083.2.100 |  | Review/Approve - Doors - Overhead Coiling | 35d | 2024-04-02 A | 2024-10-01 A | BP8.083.1.100 | 100% |  |
| BP8.083.3.100 |  | Lead/Fab/Deliver - Doors - Overhead Coiling | 100d | 2025-06-01 A | 2026-03-05 | BP8.083.2.100 | 5% | 39d |
|  | 1 | **Playfield & Equipment** |  | 2023-12-08 | 2026-02-18 |  |  |  |
| BP8.116.0.100 |  | Buyout - Playfield & Equipment | 30d | 2023-12-08 A | 2024-11-27 A | P2C.DES.225 | 100% |  |
| BP8.116.1.100 |  | Prep/Submit - Playfield & Equipment | 20d | 2024-12-23 A | 2025-01-08 A | BP8.116.0.100, P2C.DES.295 | 100% |  |
| BP8.116.2.100 |  | Review/Approve - Playfield & Equipment | 35d | 2024-12-23 A | 2025-01-08 A | BP8.116.1.100 | 100% |  |
| BP8.116.3.100 |  | Lead/Fab/Deliver - Playfield & Equipment | 80d | 2025-12-01 | 2026-02-18 | BP8.116.2.100 |  | 378d |
|  | 2 | **Decorative Fence and Gates** |  | 2024-01-02 | 2026-01-19 |  |  |  |
| BP8.323.0.200 |  | Buyout - Decorative Fence and Gates | 20d | 2024-01-02 A | 2024-09-27 A | P2C.DES.225 | 100% |  |
| BP8.323.1.200 |  | Prep/Submit - Decorative Fence and Gates | 20d | 2025-02-20 A | 2025-02-26 A | BP8.323.0.200, P2C.DES.185 | 100% |  |
| BP8.323.2.200 |  | Review/Approve - Decorative Fence and Gates | 35d | 2025-04-07 A | 2025-06-03 A | BP8.323.1.200 | 100% |  |
| BP8.323.3.200 |  | Lead/Fab/Deliver - Decorative Fence and Gates | 50d | 2025-12-01 | 2026-01-19 | BP8.323.2.200 |  | 422d |
|  | 3 | **Anti-Ram Bollards** |  | 2024-01-02 | 2026-01-19 |  |  |  |
| BP8.323.0.100 |  | Buyout - Anti-Ram Bollards | 30d | 2024-01-02 A | 2024-09-27 A | P2C.DES.225 | 100% |  |
| BP8.323.1.100 |  | Prep/Submit - Anti-Ram Bollards | 20d | 2025-04-09 A | 2025-04-09 A | BP8.323.0.100, P2C.DES.185 | 100% |  |
| BP8.323.2.100 |  | Review/Approve - Anti-Ram Bollards | 35d | 2025-04-09 A | 2025-05-13 A | BP8.323.1.100 | 100% |  |
| BP8.323.3.100 |  | Lead/Fab/Deliver - Anti-Ram Bollards | 50d | 2025-12-01 | 2026-01-19 | BP8.323.2.100 |  | 190d |
|  | 4 | **Site Furnishings** |  | 2023-11-02 | 2026-01-19 |  |  |  |
| BP8.129.0.100 |  | Buyout - Site Furnishings | 30d | 2023-11-02 A | 2024-04-23 A | P2C.DES.225 | 100% |  |
| BP8.129.1.100 |  | Prep/Submit - Site Furnishings | 20d | 2024-09-05 A | 2024-09-06 A | BP8.129.0.100, P2C.DES.235 SS | 100% |  |
| BP8.129.2.100 |  | Review/Approve - Site Furnishings | 35d | 2024-09-07 A | 2025-01-27 A | BP8.129.1.100 | 100% |  |
| BP8.129.3.100 |  | Lead/Fab/Deliver - Site Furnishings | 50d | 2025-12-01 | 2026-01-19 | BP8.129.2.100 |  | 408d |
|  | 5 | **Site Concrete** |  | 2024-07-18 | 2025-10-03 |  |  |  |
| BP8.320.0.100 |  | Buyout - Site Concrete | 30d | 2024-07-18 A | 2024-07-31 A | P2C.DES.295 | 100% |  |
| BP8.320.1.100 |  | Prep/Submit - Site Concrete | 20d | 2025-04-18 A | 2025-04-21 A | P1.DES.410, BP8.320.0.100, P2C.DES.210 | 100% |  |
| BP8.320.2.100 |  | Review/Approve - Site Concrete | 35d | 2025-04-22 A | 2025-05-13 A | BP8.320.1.100 | 100% |  |
| BP8.320.3.100 |  | Lead/Fab/Deliver - Site Concrete | 30d | 2025-10-01 A | 2025-10-03 A | BP8.320.2.100 | 100% |  |
|  | 7 | **Site Asphalt** |  | 2025-02-01 | 2025-09-30 |  |  |  |
| BP8.320.0.110 |  | Buyout - Asphalt | 30d | 2025-02-01 A | 2025-03-05 A | P2C.DES.210 | 100% |  |
| BP8.320.1.110 |  | Prep/Submit - Asphalt | 20d | 2025-04-07 A | 2025-04-30 A | BP8.320.0.110 | 100% |  |
| BP8.320.2.110 |  | Review/Approve - Asphalt | 35d | 2025-05-01 A | 2025-05-15 A | BP8.320.1.110 | 100% |  |
| BP8.320.3.110 |  | Lead/Fab/Deliver - Asphalt | 30d | 2025-09-01 A | 2025-09-30 A | BP8.320.2.110 | 100% |  |
|  | 1 | **Bid Package 9** |  | 2023-10-12 | 2026-03-05 |  |  |  |
|  | 7 | **Hydraulic Lift** |  | 2023-10-12 | 2026-03-05 |  |  |  |
| BP9.111.0.110 |  | Buyout - Hydraulic Lift | 30d | 2023-10-12 A | 2023-11-07 A | P2C.DES.225 | 100% |  |
| BP9.111.1.110 |  | Prep/Submit - Hydraulic Lift | 20d | 2023-12-01 A | 2024-04-01 A | BP9.111.0.110 | 100% |  |
| BP9.111.2.110 |  | Review/Approve - Hydraulic Lift | 35d | 2024-04-02 A | 2024-05-22 A | BP9.111.1.110 | 100% |  |
| BP9.111.3.110 |  | Lead/Fab/Deliver - Hydraulic Lift | 150d | 2025-06-01 A | 2026-03-05 | BP9.111.2.110 | 37% | 25d |
|  | 1 | **Material Hoist** |  | 2024-03-01 | 2024-09-30 |  |  |  |

| ID | WBS | Task | Duration | Start | Finish | Predecessors | Complete |
| --- | --- | --- | --- | --- | --- | --- | --- |
| BP9.111.0.120 |  | Buyout - Material Hoist | 30d | 2024-03-01 A | 2024-03-29 A | P2C.DES.235 SS | 100% |
| BP9.111.1.120 |  | Prep/Submit - Material Hoist | 20d | 2024-04-08 A | 2024-04-30 A | BP9.111.0.120, P2C.DES.235 SS | 100% |
| BP9.111.2.120 |  | Review/Approve - Material Hoist | 35d | 2024-05-01 A | 2024-08-23 A | BP9.111.1.120 | 100% |
| BP9.111.3.120 |  | Lead/Fab/Deliver - Material Hoist | 150d | 2024-08-23 A | 2024-09-30 A | BP9.111.2.120 | 100% |
|  | 7 | **Bid Package 10** |  | 2024-06-05 | 2024-09-26 |  |  |
|  | 8 | **Entrance Grilles** |  | 2024-06-05 | 2024-09-26 |  |  |
| BP10.124.1.100 |  | Prep/Submit - Entrance Floor Grilles | 20d | 2024-06-05 A | 2024-06-10 A | BP7.100.0.100, P2C.DES.235 SS | 100% |
| BP10.124.2.100 |  | Review/Approve - Entrance Floor Grilles | 35d | 2024-06-11 A | 2024-08-20 A | BP10.124.1.100 | 100% |
| BP10.124.3.100 |  | Lead/Fab/Deliver - Entrance Floor Grilles | 99d | 2024-08-21 A | 2024-09-26 A | BP10.124.2.100 | 100% |
|  | 5 | **Phase 5 - Buy Out, Submittals, Approval, Fabrication, Mock-ups (Draft)** |  |  |  |  |  |
|  | 1 | **Mock Ups** |  | 2023-04-13 | 2026-09-18 |  |  |
|  | 1 | **Exterior Mock-ups** |  | 2023-04-13 | 2026-09-18 |  |  |
|  | 1 | **Performance Mock-up** |  | 2023-04-13 | 2024-04-10 |  |  |
| P2.DES.PMU.100 |  | GPR Prepare Performance Mock-up Drawings | 15d | 2023-04-13 A | 2023-05-03 A | P2.MTG.MOB.100 | 100% |
| P2.DES.PMU.110 |  | Designer Review Performance Mock-up Drawings | 10d | 2023-05-04 A | 2023-05-18 A | P2.DES.PMU.100 | 100% |
| P2.DES.PMU.120 |  | GPR Revise Performance Mock-up Drawings | 10d | 2023-05-19 A | 2023-07-07 A | P2.DES.PMU.110 | 100% |
| P2.DES.PMU.130 |  | Designer Review Performance Mock-up Drawings | 5d | 2023-06-01 A | 2023-06-09 A | P2.DES.PMU.120 | 100% |
| P2.DES.PMU.140 |  | ACD Prepare Supplementary Precast Mock-up Drawings | 5d | 2023-06-01 A | 2023-07-03 A | P2.DES.PMU.130 | 100% |
| P2.DES.PMU.160 |  | Testing Agency Prepare Drawings from Integrated PMU Drawings | 5d | 2023-06-09 A | 2023-07-20 A | P2.DES.PMU.150 | 100% |
| P2.DES.PMU.150 |  | Designer Review & Approve Integrated Performance Mock-up Drawings | 5d | 2023-07-10 A | 2023-07-18 A | P2.DES.PMU.140 | 100% |
| P2.DES.PMU.170 |  | Designer Review Lab PMU Drawings | 5d | 2023-07-21 A | 2023-07-27 A | P2.DES.PMU.160 | 100% |
| P2.DES.PMU.180 |  | Testing Agency Finalize Integrated PMU Drawings | 10d | 2023-07-28 A | 2023-08-30 A | P2.DES.PMU.170 | 100% |
| P2.DES.PMU.190 |  | NIH Review Performance Mock-up Drawings | 10d | 2023-07-28 A | 2023-09-15 A | P2.DES.PMU.180 | 100% |
| P2.DES.PMU.220 |  | Release Performance Mock-up Materials - Curtain Wall | 1d | 2023-08-30 A | 2023-08-30 A | P2.DES.PMU.180 | 100% |
| P2.DES.PMU.240 |  | Mock-up Material Procurement | 75d | 2023-08-31 A | 2024-01-15 A | P2.DES.PMU.220 | 100% |
| P2.DES.PMU.200 |  | Revise Performance Mock-up Drawings | 20d | 2023-09-18 A | 2023-10-20 A | P2.DES.PMU.190 | 100% |
| P2.DES.PMU.230 |  | Release Performance Mock-up Materials - Precast | 1d | 2023-09-29 A | 2023-09-29 A | P2.DES.PMU.180 | 100% |
| P2.DES.PMU.250 |  | Mock-up Material Procurement & Fabrication - Precast | 65d | 2023-09-30 A | 2024-01-30 A | P2.DES.PMU.230 | 100% |
| P2.DES.PMU.210 |  | NIH Review & Approve Performance Mock-up Drawings | 10d | 2023-10-23 A | 2023-11-09 A | P2.DES.PMU.200 | 100% |
| P2.DES.PMU.260 |  | Mock-up Fabrication & Assembly - Curtain Wall | 10d | 2024-01-16 A | 2024-02-09 A | P2.DES.PMU.240 | 100% |
| P2.DES.PMU.280 |  | Mock-up Installation & Pre-Testing | 15d | 2024-02-12 A | 2024-02-23 A | P2.DES.PMU.260 FF+10d, P2.DES.PMU.250 FF+5d, P2.DES.PMU.210 | 100% |
| P2.DES.PMU.290 |  | Mock-up Testing | 2d | 2024-02-26 A | 2024-02-27 A | P2.DES.PMU.280 | 100% |
| P2.DES.PMU.310 |  | Mock-up Correction & Re-Testing | 10d | 2024-02-28 A | 2024-03-19 A | P2.DES.PMU.290 | 100% |
| P2.DES.PMU.300 |  | Prepare, Submit & Record Performance Mock-up Results | 20d | 2024-03-20 A | 2024-04-10 A | P2.DES.PMU.310, P2.DES.PMU.290 | 100% |
|  | 2 | **Visual Mock-up** |  | 2023-04-13 | 2026-09-18 |  |  |
| P2.DES.VMU.100 |  | Prepare Visual Mock-up Design Drawings | 15d | 2023-04-13 A | 2023-05-03 A | P2.DES.275 | 100% |
| P2.DES.VMU.110 |  | Review Visual Mock-up Design Drawings | 10d | 2023-05-04 A | 2023-05-17 A | P2.DES.VMU.100 | 100% |
| P2.DES.VMU.120 |  | Revise Visual Mock-up Design Drawings | 5d | 2023-05-18 A | 2023-05-24 A | P2.DES.VMU.110 | 100% |
| P2.DES.VMU.130 |  | Present Preliminary Visual Mock-up Design Drawings to NIH | 1d | 2023-05-25 A | 2023-05-25 A | P2.DES.VMU.120 | 100% |
| P2.DES.VMU.140 |  | Revise & Resubmit Visual Mock-up Design Drawings | 10d | 2023-05-26 A | 2023-06-13 A | P2.DES.VMU.130 | 100% |
| P2.DES.VMU.150 |  | NIH Review Visual Mock-up Design Drawings | 10d | 2023-06-14 A | 2023-07-19 A | P2.DES.VMU.140 FF, P2.DES.VMU.140 | 100% |
| P2.DES.VMU.160 |  | Revise Visual Mock-up Design Drawings | 5d | 2023-07-20 A | 2023-07-25 A | P2.DES.VMU.150 | 100% |
| P2.DES.VMU.180 |  | Prepare Visual Mock-up Shop Drawings - Precast | 10d | 2023-07-26 A | 2023-08-23 A | P2.DES.VMU.160 | 100% |
| P2.DES.VMU.190 |  | Prepare Visual Mock-up Shop Drawings - Glass & Glazing | 10d | 2023-07-26 A | 2023-08-23 A | P2.DES.VMU.160 | 100% |
| P2.DES.VMU.200 |  | Prepare Visual Mock-up Shop Drawings - Metal Panel | 10d | 2023-07-26 A | 2023-08-23 A | P2.DES.VMU.160 | 100% |
| P2.DES.VMU.230 |  | Prepare Visual Mock-up Shop Drawings - Roofing | 10d | 2023-07-26 A | 2023-08-23 A | P2.DES.VMU.160 | 100% |
| P2.DES.VMU.240 |  | Review Visual Mock-up Shop Drawings - Precast | 10d | 2023-08-24 A | 2023-08-30 A | P2.DES.VMU.180 | 100% |
| P2.DES.VMU.250 |  | Review Visual Mock-up Shop Drawings - Glazing | 10d | 2023-08-24 A | 2023-08-30 A | P2.DES.VMU.190 FF, P2.DES.VMU.190 | 100% |
| P2.DES.VMU.260 |  | Review Visual Mock-up Shop Drawings - Metal Panel | 10d | 2023-08-24 A | 2023-08-30 A | P2.DES.VMU.200 | 100% |
| P2.DES.VMU.290 |  | Review Visual Mock-up Shop Drawings - Roofing | 10d | 2023-08-24 A | 2023-08-30 A | P2.DES.VMU.230 | 100% |
| P2.DES.VMU.300 |  | Revise & Resubmit Visual Mock-up Shop Drawings - Precast | 5d | 2023-08-31 A | 2023-09-29 A | P2.DES.VMU.240 | 100% |
| P2.DES.VMU.310 |  | Revise & Resubmit Visual Mock-up Shop Drawings - Glazing | 5d | 2023-08-31 A | 2023-09-29 A | P2.DES.VMU.250 FF, P2.DES.VMU.250 | 100% |
| P2.DES.VMU.320 |  | Revise & Resubmit Visual Mock-up Shop Drawings - Metal Panel | 5d | 2023-08-31 A | 2023-09-29 A | P2.DES.VMU.260 | 100% |
| P2.DES.VMU.350 |  | Revise & Resubmit Visual Mock-up Shop Drawings - Roofing | 5d | 2023-08-31 A | 2023-09-29 A | P2.DES.VMU.290 | 100% |
| P2.DES.VMU.360 |  | Review & Approve Visual Mock-up Shop Drawings - Precast | 20d | 2023-10-16 A | 2023-11-27 A | P2.DES.VMU.300 | 100% |
| P2.DES.VMU.430 |  | Release Visual Mock-up Materials - Precast | 1d | 2023-10-17 A | 2023-10-17 A | P2.DES.VMU.360 | 100% |
| P2.DES.VMU.490 |  | Visual Mock-up Material Procurement - Precast | 100d | 2023-10-18 A | 2024-03-15 A | P2.DES.VMU.430 | 100% |
| P2.DES.VMU.370 |  | Review & Approve Visual Mock-up Shop Drawings - Glazing | 20d | 2023-10-19 A | 2023-11-27 A | P2.DES.VMU.310 FF, P2.DES.VMU.310 | 100% |
| P2.DES.VMU.410 |  | Review Visual Mock-up Shop Drawings - Roofing | 20d | 2023-10-24 A | 2023-11-27 A | P2.DES.VMU.350 | 100% |
| P2.DES.VMU.380 |  | Review Visual Mock-up Shop Drawings - Metal Panel | 20d | 2023-10-31 A | 2023-11-27 A | P2.DES.VMU.320 | 100% |
| P2.DES.VMU.220 |  | Prepare Visual Mock-up Shop Drawings - Exterior Cladding | 10d | 2023-11-01 A | 2023-11-14 A | P2.DES.VMU.160 | 100% |
| P2.DES.VMU.420 |  | Release Visual Mock-up Materials - Glazing | 1d | 2023-11-08 A | 2023-11-08 A | P2.DES.VMU.370 | 100% |
| P2.DES.VMU.480 |  | Visual Mock-up Material Procurement - Glazing | 85d | 2023-11-09 A | 2024-02-19 A | P2.DES.VMU.420 | 100% |
| P2.DES.VMU.280 |  | Review Visual Mock-up Shop Drawings - Exterior Cladding | 10d | 2023-11-14 A | 2023-11-27 A | P2.DES.VMU.220 | 100% |
| P2.DES.VMU.340 |  | Revise & Resubmit Visual Mock-up Shop Drawings - Exterior Cladding | 5d | 2023-11-28 A | 2023-12-27 A | P2.DES.VMU.280 | 100% |
| P2.DES.VMU.690 |  | Revise & Resubmit Visual Mock-up Shop Drawings - Roofing | 5d | 2023-12-18 A | 2024-01-15 A | P2.DES.VMU.410 | 100% |
| P2.DES.VMU.710 |  | Revise & Resubmit Visual Mock-up Shop Drawings - Metal Panel | 5d | 2023-12-18 A | 2024-01-15 A | P2.DES.VMU.380 | 100% |
| P2.DES.VMU.750 |  | Prepare Visual Mock-up Shop Drawings - Louvers | 10d | 2023-12-18 A | 2024-01-31 A | P2.DES.VMU.160 | 100% |
| P2.DES.VMU.760 |  | Prepare Visual Mock-up Shop Drawings - Quench Vents | 10d | 2024-01-02 A | 2024-01-15 A | P2.DES.VMU.380 | 100% |
| P2.DES.VMU.210 |  | Prepare Visual Mock-up Shop Drawings - Support Structure | 10d | 2024-01-04 A | 2024-01-16 A | P2.DES.VMU.160 | 100% |

| ID | WBS | Task | Duration | Start | Finish | Predecessors | Complete | Total float |
| --- | --- | --- | --- | --- | --- | --- | --- | --- |
| P2.DES.VMU.400 |  | Review & Approve Visual Mock-up Shop Drawings - Exterior Cladding | 5d | 2024-01-16 A | 2024-02-01 A | P2.DES.VMU.340 | 100% |  |
| P2.DES.VMU.700 |  | Review & Approve Visual Mock-up Shop Drawings - Roofing | 20d | 2024-01-16 A | 2024-02-01 A | P2.DES.VMU.690 | 100% |  |
| P2.DES.VMU.720 |  | Review & Approve Visual Mock-up Shop Drawings - Metal Panel | 20d | 2024-01-16 A | 2024-02-01 A | P2.DES.VMU.710 | 100% |  |
| P2.DES.VMU.820 |  | Review Visual Mock-up Shop Drawings - Quench Vents | 10d | 2024-01-16 A | 2024-02-28 A | P2.DES.VMU.760 | 100% |  |
| P2.DES.VMU.270 |  | Review Visual Mock-up Shop Drawings - Support Structure | 10d | 2024-01-17 A | 2024-01-25 A | P2.DES.VMU.210 | 100% |  |
| P2.DES.VMU.450 |  | Release Visual Mock-up Materials - Support Structure | 1d | 2024-01-26 A | 2024-01-26 A | P2.DES.VMU.270 | 100% |  |
| P2.DES.VMU.510 |  | Visual Mock-up Material Procurement - Support Structure | 25d | 2024-01-30 A | 2024-03-01 A | P2.DES.VMU.450, P2.DES.VMU.270 | 100% |  |
| P2.DES.VMU.770 |  | Review Visual Mock-up Shop Drawings - Louvers | 10d | 2024-01-31 A | 2024-02-13 A | P2.DES.VMU.750 | 100% |  |
| P2.DES.VMU.440 |  | Release Visual Mock-up Materials - Metal Panel | 1d | 2024-02-02 A | 2024-02-02 A | P2.DES.VMU.720 | 100% |  |
| P2.DES.VMU.460 |  | Release Visual Mock-up Materials - Exterior Cladding | 1d | 2024-02-02 A | 2024-02-02 A | P2.DES.VMU.400 | 100% |  |
| P2.DES.VMU.470 |  | Release Visual Mock-up Materials - Roofing | 1d | 2024-02-02 A | 2024-02-02 A | P2.DES.VMU.700 | 100% |  |
| P2.DES.VMU.500 |  | Visual Mock-up Material Procurement - Metal Panel | 40d | 2024-02-05 A | 2024-08-19 A | P2.DES.VMU.440 | 100% |  |
| P2.DES.VMU.520 |  | Visual Mock-up Material Procurement - Exterior Cladding | 40d | 2024-02-05 A | 2024-05-13 A | P2.DES.VMU.460 | 100% |  |
| P2.DES.VMU.530 |  | Visual Mock-up Material Procurement - Roofing | 40d | 2024-02-05 A | 2024-06-28 A | P2.DES.VMU.470 | 100% |  |
| P2.DES.VMU.800 |  | Release Visual Mock-up Materials - Louvers | 1d | 2024-02-14 A | 2024-02-14 A | P2.DES.VMU.770 | 100% |  |
| P2.DES.VMU.810 |  | Visual Mock-up Material Procurement - Louver | 70d | 2024-02-15 A | 2024-05-26 A | P2.DES.VMU.800 | 100% |  |
| P2.DES.VMU.550 |  | Mock-up Fabrication & Assembly of Glazed Units | 20d | 2024-02-20 A | 2024-04-01 A | P2.DES.VMU.480 | 100% |  |
| P2.DES.VMU.850 |  | Release Visual Mock-up Materials - Quench Vent | 1d | 2024-02-29 A | 2024-02-29 A | P2.DES.VMU.820 | 100% |  |
| P2.DES.VMU.540 |  | Mock-up Installation & Inspections - Support Structure | 10d | 2024-03-04 A | 2024-03-07 A | P2.DES.VMU.510 | 100% |  |
| P2.DES.VMU.860 |  | Visual Mock-up Material Procurement - Quench Vent | 50d | 2024-03-05 A | 2024-05-28 A | P2.DES.VMU.850 | 100% |  |
| P2.DES.VMU.570 |  | Mock-up Installation - Precast | 5d | 2024-03-26 A | 2024-03-28 A | P2.DES.VMU.540, P2.DES.VMU.490 SS, P1.B2.03.020 | 100% |  |
| P2.DES.VMU.590 |  | Mock-up Installation - Framing & Sheathing | 10d | 2024-04-01 A | 2024-04-12 A | P2.DES.VMU.570 | 100% |  |
| P2.DES.VMU.870 |  | Mock-up Installation - AVB | 2d | 2024-04-10 A | 2024-04-16 A | P2.DES.VMU.590 | 100% |  |
| P2.DES.VMU.580 |  | Mock-up Installation - Curtain Wall, Canopy & Storefront | 10d | 2024-04-22 A | 2024-04-30 A | P2.DES.VMU.570, P2.DES.VMU.550, P2.DES.VMU.870 | 100% |  |
| P2.DES.VMU.610 |  | Mock-up Installation - Exterior Cladding | 5d | 2024-05-13 A | 2024-05-13 A | P2.DES.VMU.520, P2.DES.VMU.870 | 100% |  |
| P2.DES.VMU.620 |  | Mock-up Installation - Roofing | 5d | 2024-05-13 A | 2024-08-02 A | P2.DES.VMU.530 FF, P2.DES.VMU.580 | 100% |  |
| P2.DES.VMU.730 |  | Mock-up Installation - Louver | 5d | 2024-05-27 A | 2024-05-27 A | P2.DES.VMU.810 | 100% |  |
| P2.DES.VMU.740 |  | Mock-up Installation - Quench Vent | 5d | 2024-05-28 A | 2024-05-28 A | P2.DES.VMU.860 | 100% |  |
| P2.DES.VMU.600 |  | Mock-up Installation - Metal Panel | 5d | 2024-07-10 A | 2024-08-23 A | P2.DES.VMU.610, P2.DES.VMU.500, P2.DES.VMU.580, P2.DES.VMU.870, P2.DES.VMU.620 | 100% |  |
| P2.DES.VMU.630 |  | Mock-up Installation - Caulking, Roof Trim-Out, & Misc Finishes | 5d | 2024-08-15 A | 2024-12-23 A | P2.DES.VMU.610, P2.DES.VMU.600, P2.DES.VMU.740 | 100% |  |
| P2.DES.VMU.640 |  | Mock-up Inspections | 5d | 2025-01-23 A | 2025-01-23 A | P2.DES.VMU.570 FF, P2.DES.VMU.730, P2.DES.VMU.740, P2.DES.VMU.630, P2.DES.VMU.620 | 100% |  |
| P2.DES.VMU.670 |  | Visual Mock Up Onsite | 383d | 2025-01-23 A | 2026-08-20 | P2.DES.VMU.640 SS | 52% | 109d |
| P2.DES.VMU.650 |  | Submit & Record Visual Mock-up Results | 5d | 2025-01-24 A | 2025-01-25 A | P2.DES.VMU.640 | 100% |  |
| P2.DES.VMU.680 |  | Remove Visual Mockup | 20d | 2026-08-21 | 2026-09-18 | P2.FAC.F.9030, P2.FAC.Z1.9030, P2.FAC.Z2.9030, P2.FAC.Z3.9030 |  | 109d |
|  | 2 | **Interior Clinical Mock-up** |  | 2023-10-03 | 2025-08-15 |  |  |  |
|  | 1 | **Interior Mock Up Precon** |  | 2023-10-03 | 2025-08-15 |  |  |  |
| CW.FD-MU -170 |  | HP Request As-Builts for Blood Bank (RFI 125) | 5d | 2023-10-03 A | 2023-10-26 A | P2C.DES.225 FF | 100% |  |
| CW.FD-MU -490 |  | ZGF Prepares and Develops Draft CMU Layout, Schedule, & Equipment List | 25d | 2023-10-06 A | 2023-10-16 A | P2A.DES.455 | 100% |  |
| CW.FD-MU -460 |  | ZGF Developed Mockup Design for Blood Bank Location | 25d | 2023-10-27 A | 2023-12-01 A | CW.FD-MU -170, CW.FD-MU -490 | 100% |  |
| CW.FD-MU -470 |  | NIH Review Mockup Layout for Blood Bank Location | 5d | 2023-12-01 A | 2023-12-29 A | CW.FD-MU -460 | 100% |  |
| CW.FD-MU -480 |  | HP Search for Alternate Mockup Locations on behalf of NIH | 5d | 2024-01-02 A | 2024-02-01 A | CW.FD-MU -470 | 100% |  |
| CW.FD-MU -150 |  | Prep/Submit Shop Drawings/Samples/ Submittals - Framing & R/I Trades | 40d | 2024-01-29 A | 2024-10-31 A | CW.FD-MU -110 SS | 100% |  |
| CW.FD-MU -120 |  | NIH Provides Space Or Issues Notice to Rent Space | 5d | 2024-02-02 A | 2024-04-05 A | P2C.DES.225, CW.FD-MU -480 | 100% |  |
| CW.FD-MU -110 |  | Design Development of Mock-up in Rental Space | 50d | 2024-02-06 A | 2024-05-03 A | CW.FD-MU -120 SS+10d | 100% |  |
| CW.FD-MU -200 |  | Rental Agreement for Space & Occupation | 20d | 2024-04-08 A | 2024-05-31 A | CW.FD-MU -120 | 100% |  |
| CW.FD-MU -140 |  | Submit Mock Up Drawings to NIH for Comments | 10d | 2024-05-06 A | 2024-05-15 A | CW.FD-MU -200, CW.FD-MU -110 | 100% |  |
| CW.FD-MU -180 |  | Design Submission to NIH for Approval | 10d | 2024-05-16 A | 2024-11-01 A | CW.FD-MU -140 | 100% |  |
| CW.FD-MU -430 |  | Prep/Submit - Paint - Clinical Mock-up | 5d | 2024-07-10 A | 2024-07-17 A | BP7.099.0.100 | 100% |  |
| CW.FD-MU -440 |  | Review/Approve/Release - Paint - Clinical Mock-up | 35d | 2024-07-17 A | 2024-07-17 A | CW.FD-MU -430 SS | 100% |  |
| CW.FD-MU -410 |  | Review/Approve/Release - Modular Ceilings - Clinical Mock-up | 35d | 2024-08-19 A | 2024-09-05 A | CW.FD-MU -400 | 100% |  |
| CW.FD-MU -400 |  | Prep/Submit - Modular Ceilings - Clinical Mock-up | 20d | 2024-08-22 A | 2024-09-05 A | BP1.095.1.100 FF, BP1.095.0.100 | 100% |  |
| CW.FD-MU -340 |  | Prep/Submit - Building Specialties - Clinical Mock-up | 5d | 2024-09-02 A | 2024-09-05 A | BP7.100.0.100, CW.FD-MU -140 | 100% |  |
| CW.FD-MU -370 |  | Prep/Submit - Flooring - Clinical Mock-up | 20d | 2024-09-02 A | 2024-10-02 A | BP7.093.0.100, BP7.096.0.100, BP7.096.0.200 | 100% |  |
| CW.FD-MU -160 |  | Framing & Rough-In Trades - Deliveries - Clinical Mock-ups | 22d | 2024-09-03 A | 2024-09-30 A | CW.FD-MU -150 SS+10d | 100% |  |
| CW.FD-MU -350 |  | Review/Approve/Release - Building Specialties - Clinical Mock-up | 35d | 2024-09-05 A | 2025-03-14 A | CW.FD-MU -340 SS | 100% |  |
| CW.FD-MU -220 |  | Prep/Submit - Lab Casework & Equipment - Clinical Mock-up | 10d | 2024-09-30 A | 2024-09-30 A | BP6.123.0.100, CW.FD-MU -140 | 100% |  |
| CW.FD-MU -240 |  | Review/Approve/Release - Lab Casework & Equipment - Clinical Mock-up | 35d | 2024-09-30 A | 2025-01-16 A | CW.FD-MU -220 FF | 100% |  |
| CW.FD-MU -380 |  | Review/Approve/Release - Flooring - Clinical Mock-up | 35d | 2024-10-02 A | 2025-02-03 A | CW.FD-MU -370 | 100% |  |
| CW.FD-MU -280 |  | Prep/Submit - Door Frames - Clinical Mock-up | 5d | 2024-10-31 A | 2025-01-08 A | CW.FD-MU -140 | 100% |  |
| CW.FD-MU -310 |  | Prep/Submit - Doors & Hardware - Clinical Mock-up | 20d | 2024-10-31 A | 2025-01-08 A | BP5.081.0.110, CW.FD-MU -140 | 100% |  |
| CW.FD-MU -420 |  | Lead/Fab/Delivery - Modular Ceilings - Clinical Mock-up | 50d | 2024-11-01 A | 2025-02-03 A | CW.FD-MU -410 | 100% |  |
| CW.FD-MU -450 |  | Lead/Fab/Delivery - Paint - Clinical Mock-up | 20d | 2024-11-01 A | 2025-02-03 A | CW.FD-MU -440 | 100% |  |
| CW.FD-MU -190 |  | Mock Up Design Set Approved | 0d | 2024-11-01 A | 2024-11-01 A | CW.FD-MU -180 FF | 100% |  |
| CW.FD-MU -290 |  | Review/Approve/Release - Door Frames - Clinical Mock-up | 35d | 2025-01-08 A | 2025-02-10 A | CW.FD-MU -280 SS | 100% |  |
| CW.FD-MU -320 |  | Review/Approve/Release - Doors & Hardware - Clinical Mock-up | 35d | 2025-01-08 A | 2025-02-10 A | CW.FD-MU -310 | 100% |  |
| CW.FD-MU -390 |  | Lead/Fab/Delivery - Flooring- Clinical Mock-up | 30d | 2025-01-27 A | 2025-02-07 A | CW.FD-MU -380 | 100% |  |
| CW.FD-MU -230 |  | Lead/Fab/Delivery - Lab Casework & Equipment - Clinical Mock-up | 40d | 2025-02-03 A | 2025-02-21 A | CW.FD-MU -240 | 100% |  |
| CW.FD-MU -270 |  | Lead/Fab/Delivery - Interior Glazing - Clinical Mock-up | 50d | 2025-02-03 A | 2025-02-25 A | BP7.088.0.100, CW.FD-MU -140 | 100% |  |
| CW.FD-MU -300 |  | Lead/Fab/Delivery - Door Frames - Clinical Mock-up | 30d | 2025-03-01 A | 2025-03-20 A | CW.FD-MU -290 | 100% |  |
| CW.FD-MU -330 |  | Lead/Fab/Delivery - Doors & Hardware - Clinical Mock-up | 50d | 2025-04-01 A | 2025-06-16 A | CW.FD-MU -320 | 100% |  |

| ID | WBS | Task | Duration | Start | Finish | Predecessors | Complete | Total float |
| --- | --- | --- | --- | --- | --- | --- | --- | --- |
| CW.FD-MU -360 |  | Lead/Fab/Delivery - Building Specialties - Clinical Mock-up | 40d | 2025-06-02 A | 2025-06-30 A | CW.FD-MU -350 | 100% |  |
| CW.FD-MU -210 |  | NIH final review of Clincial Mock-ups | 5d | 2025-08-15 A | 2025-08-15 A | CW.INTMU -1940, CW.INTMU -1840, CW.INTMU -300, CW.FD-MU -190, CW.INTMU -1740 | 100% |  |
|  | 2 | **Hybrid Operating Room - 3-2845** |  | 2024-09-03 | 2025-07-24 |  |  |  |
| CW.INTMU -100 |  | Layout, Frame, Caulk, HTF Tops - Hybrid Operating Room - 3-2845 | 13d | 2024-09-03 A | 2024-09-26 A | CW.FD-MU -160 | 100% |  |
| CW.INTMU -120 |  | OH Rough Coordination - Hybrid Operating Room - 3-2845 | 10d | 2024-09-17 A | 2025-03-28 A | CW.INTMU -100 SS | 100% |  |
| CW.INTMU -190 |  | In Wall and Above Ceiling - Hybrid Operating Room - 3-2845 | 20d | 2024-09-17 A | 2025-04-28 A | CW.INTMU -200 SS | 100% |  |
| CW.INTMU -200 |  | Frame Cieling Soffit - Hybrid Operating Room - 3-2845 | 20d | 2024-09-17 A | 2024-10-01 A | CW.INTMU -120 SS | 100% |  |
| CW.INTMU -140 |  | NIH In Wall and OH RI Inspection - Hybrid Operating Room - 3-2845 | 5d | 2024-10-25 A | 2024-10-25 A | CW.INTMU -190 SS | 100% |  |
| CW.INTMU -160 |  | HTF Walls and Soffits - Hybrid Operating Room - 3-2845 | 60d | 2025-06-02 A | 2025-06-12 A | CW.INTMU -140 | 100% |  |
| CW.INTMU -180 |  | Interior Finishes and Mill Work - Hybrid Operating Room - 3-2845 | 44d | 2025-07-03 A | 2025-07-14 A | CW.FD-MU -450, CW.FD-MU -390, CW.FD-MU -300, CW.FD-MU -230, CW.INTMU -160 SS+23d | 100% |  |
| CW.INTMU -220 |  | NIH Flexible Ceiling Inspection - Hybrid Operating Room - 3-2845 | 13d | 2025-07-14 A | 2025-07-18 A | CW.INTMU -180, CW.FD-MU -420 | 100% |  |
| CW.INTMU -230 |  | Final Trims and Division 10 Install - Hybrid Operating Room - 3-2845 | 20d | 2025-07-14 A | 2025-07-18 A | CW.INTMU -220, CW.FD-MU -330, CW.FD-MU -360, CW.FD-MU -270 | 100% |  |
| CW.INTMU -300 |  | NIH Functional/Final Review - Hybrid Operating Room - 3-2845 | 11d | 2025-07-24 A | 2025-07-24 A | CW.INTMU -230 | 100% |  |
|  | 4 | **Minor Procedure Room - 3-3910** |  | 2024-09-03 | 2025-07-24 |  |  |  |
| CW.INTMU -1750 |  | Layout, Frame, Caulk, HTF Tops - Minor Procedure Room - 3-3910 | 13d | 2024-09-03 A | 2024-09-26 A | CW.FD-MU -160 | 100% |  |
| CW.INTMU -1760 |  | OH Rough Coordination - Minor Procedure Room - 3-3910 | 10d | 2024-09-17 A | 2025-03-28 A | CW.INTMU -1750 SS+5d | 100% |  |
| CW.INTMU -1770 |  | Frame Cieling Soffit - Minor Procedure Room - 3-3910 | 20d | 2024-09-17 A | 2024-12-02 A | CW.INTMU -1760 SS | 100% |  |
| CW.INTMU -1780 |  | In Wall and Above Ceiling - Minor Procedure Room - 3-3910 | 20d | 2024-09-17 A | 2024-10-24 A | CW.INTMU -1770 SS | 100% |  |
| CW.INTMU -1790 |  | NIH In Wall and OH RI Inspection - Minor Procedure Room - 3-3910 | 5d | 2024-10-25 A | 2024-10-25 A | CW.INTMU -1780 SS | 100% |  |
| CW.INTMU -1800 |  | HTF Walls and Soffits - Minor Procedure Room - 3-3910 | 15d | 2025-06-02 A | 2025-06-12 A | CW.INTMU -1790 | 100% |  |
| CW.INTMU -1810 |  | Interior Finishes and Mill Work - Minor Procedure Room - 3-3910 | 44d | 2025-06-18 A | 2025-06-20 A | CW.FD-MU -390, CW.FD-MU -300, CW.FD-MU -230, CW.FD-MU -450, CW.INTMU -1800 | 100% |  |
| CW.INTMU -1830 |  | Final Trims and Division 10 Install - Minor Procedure Room - 3-3910 | 15d | 2025-07-14 A | 2025-07-18 A | CW.INTMU -1810, CW.FD-MU -330, CW.FD-MU -360, CW.FD-MU -270, CW.FD-MU -420 | 100% |  |
| CW.INTMU -1840 |  | NIH Functional/Final Review - Minor Procedure Room - 3-3910 | 4d | 2025-07-24 A | 2025-07-24 A | CW.INTMU -1830 | 100% |  |
|  | 5 | **MRI Room - 1-2815** |  | 2024-09-03 | 2025-07-24 |  |  |  |
| CW.INTMU -1850 |  | Layout, Frame, Caulk, HTF Tops - MRI Room - 1-2815 | 13d | 2024-09-03 A | 2024-09-26 A | CW.FD-MU -160 | 100% |  |
| CW.INTMU -1860 |  | OH Rough Coordination - MRI Room - 1-2815 | 10d | 2024-09-17 A | 2025-03-28 A | CW.INTMU -1850 SS+5d | 100% |  |
| CW.INTMU -1870 |  | Frame Cieling Soffit - MRI Room - 1-2815 | 20d | 2024-09-17 A | 2024-12-02 A | CW.INTMU -1860 SS | 100% |  |
| CW.INTMU -1880 |  | In Wall and Above Ceiling - MRI Room - 1-2815 | 20d | 2024-09-17 A | 2025-03-04 A | CW.INTMU -1870 SS | 100% |  |
| CW.INTMU -1890 |  | NIH In Wall and OH RI Inspection - MRI Room - 1-2815 | 5d | 2024-10-25 A | 2024-10-25 A | CW.INTMU -1880 SS | 100% |  |
| CW.INTMU -1900 |  | HTF Walls and Soffits - MRI Room - 1-2815 | 15d | 2025-06-02 A | 2025-06-12 A | CW.INTMU -1890 | 100% |  |
| CW.INTMU -1910 |  | Interior Finishes and Mill Work - MRI Room - 1-2815 | 44d | 2025-06-18 A | 2025-06-20 A | CW.FD-MU -390, CW.FD-MU -300, CW.FD-MU -230, CW.FD-MU -450, CW.INTMU -1900 | 100% |  |
| CW.INTMU -1930 |  | Final Trims and Division 10 Install - MRI Room - 1-2815 | 15d | 2025-07-14 A | 2025-07-18 A | CW.INTMU -1910, CW.FD-MU -330, CW.FD-MU -360, CW.FD-MU -270 | 100% |  |
| CW.INTMU -1940 |  | NIH Functional/Final Review - MRI Room - 1-2815 | 4d | 2025-07-24 A | 2025-07-24 A | CW.INTMU -1930 | 100% |  |
|  | 6 | **Pre/Post Anesthesia Room - 3-5820-21** |  | 2024-09-03 | 2025-07-24 |  |  |  |
| CW.INTMU -1650 |  | Layout, Frame, Caulk, HTF Tops - Pre/Post Anesthesia Room - 3-5820-21 | 13d | 2024-09-03 A | 2024-09-26 A | CW.FD-MU -160 | 100% |  |
| CW.INTMU -1660 |  | OH Rough Coordination - Pre/Post Anesthesia Room - 3-5820-21 | 2d | 2024-09-17 A | 2024-11-29 A | CW.INTMU -1650 SS+5d | 100% |  |
| CW.INTMU -1670 |  | Frame Cieling Soffit - Pre/Post Anesthesia Room - 3-5820-21 | 20d | 2024-09-17 A | 2024-12-02 A | CW.INTMU -1650, CW.INTMU -1660 | 100% |  |
| CW.INTMU -1680 |  | In Wall and Above Ceiling - Pre/Post Anesthesia Room - 3-5820-21 | 4d | 2024-09-17 A | 2024-10-24 A | CW.INTMU -1670 SS | 100% |  |
| CW.INTMU -1690 |  | NIH In Wall and OH RI Inspection - Pre/Post Anesthesia Room - 3-5820-21 | 5d | 2024-10-25 A | 2024-10-25 A | CW.INTMU -1680 SS | 100% |  |
| CW.INTMU -1700 |  | HTF Walls and Soffits - Pre/Post Anesthesia Room - 3-5820-21 | 14d | 2025-07-14 A | 2025-07-18 A | CW.INTMU -1690 | 100% |  |
| CW.INTMU -1710 |  | Interior Finishes and Mill Work - Pre/Post Anesthesia Room - 3-5820-21 | 44d | 2025-07-14 A | 2025-07-18 A | CW.INTMU -1700, CW.FD-MU -390, CW.FD-MU -300, CW.FD-MU -230, CW.FD-MU -450 | 100% |  |
| CW.INTMU -1730 |  | Final Trims and Division 10 Install - Pre/Post Anesthesia Room - 3-5820-21 | 15d | 2025-07-14 A | 2025-07-18 A | CW.INTMU -1710, CW.FD-MU -330, CW.FD-MU -360, CW.FD-MU -270, CW.INTMU -1660 | 100% |  |
| CW.INTMU -1740 |  | NIH Functional/Final Review - Pre/Post Anesthesia Room - 3-5820-21 | 4d | 2025-07-24 A | 2025-07-24 A | CW.INTMU -1730 | 100% |  |
|  | 4 | **OFOI Equipment** |  | 2023-11-09 | 2026-09-30 |  |  |  |
|  | 3 | **PCO 708 - Medical Equipment Procurement** |  | 2023-11-09 | 2026-01-15 |  |  |  |
| OFOI.PWS.1080 |  | D-B Team - Submits Serial Letter to NIH (SL#0086) - Major Medical Equipment | 1d | 2023-11-09 A | 2023-11-09 A | P2C.DES.150 | 100% |  |
| OFOI.PWS.1250 |  | D-B Team - Submits Serial Letter to NIH (SL#0283) - Major Medical Equipment | 1d | 2024-10-16 A | 2024-10-16 A | OFOI.PWS.1080 | 100% |  |
| OFOI.PWS.1160 |  | D-B Team - Re-Submits Serial Letter to NIH (SL#0283) During Partnering Meeting | 1d | 2024-11-19 A | 2024-11-19 A | OFOI.PWS.1250 | 100% |  |
| OFOI.PWS.1150 |  | NIH Review and Provides Direction on SL#0086 & SL#0283 | 20d | 2024-11-20 A | 2024-12-02 A | OFOI.PWS.1160 | 100% |  |
| OFOI.PWS.1090 |  | D-B Team - Proceeds with Verbal Direction from NIH during Partnering Session 11/19/2024 | 1d | 2024-12-02 A | 2024-12-03 A | OFOI.PWS.1150 SS | 100% |  |
| OFOI.PWS.1100 |  | D-B Team - Coordination/Mapping - Major Medical Equipment - B2 | 16d | 2024-12-04 A | 2025-01-24 A | OFOI.PWS.1090 FF | 100% |  |
| OFOI.PWS.1260 |  | D-B Team - Coordination/Mapping - Major Medical Equipment - L1 | 10d | 2024-12-12 A | 2025-05-16 A | OFOI.PWS.1090, OFOI.PWS.1110 FF, OFOI.PWS.1340 | 100% |  |
| OFOI.PWS.1270 |  | D-B Team - Coordination/Mapping - Major Medical Equipment - L3 | 10d | 2024-12-25 A | 2025-06-30 A | OFOI.PWS.1090, OFOI.PWS.1030 FF, OFOI.PWS.1340 | 100% |  |
| OFOI.PWS.1330 |  | NIH Contract MOD from NIH to Proceed with Coordination | 1d | 2025-01-28 A | 2025-04-09 A | OFOI.PWS.1150 | 100% |  |
| OFOI.PWS.1340 |  | D-B Team Proceeds per OAC Meeting 4/9/25 | 1d | 2025-04-09 A | 2025-04-09 A | OFOI.PWS.1330 SS | 100% |  |
| OFOI.PWS.1110 |  | D-B Team - BIM Modeling - Major Medical Equipment - B2 | 10d | 2025-05-05 A | 2025-05-16 A | OFOI.PWS.1100, P2.BIM.L8.40.110, OFOI.PWS.1340 | 100% |  |
| OFOI.PWS.1020 |  | D-B Team - BIM Coordination - B2 | 10d | 2025-05-19 A | 2025-06-13 A | OFOI.PWS.1010, OFOI.PWS.1110 | 100% |  |
| OFOI.PWS.1310 |  | D-B Team - BIM Modeling - Major Medical Equipment - L1 | 10d | 2025-05-19 A | 2025-05-28 A | OFOI.PWS.1260, OFOI.PWS.1110 | 100% |  |
| OFOI.PWS.1030 |  | D-B Team - BIM Coordination - L1 | 20d | 2025-06-04 A | 2025-09-19 A | OFOI.PWS.1310 | 100% |  |
| OFOI.PWS.1120 |  | D-B Team - BIM Shop Drawings - Major Medical Equipment - B2 | 6d | 2025-06-13 A | 2025-06-20 A | OFOI.PWS.1020 | 100% |  |
| OFOI.PWS.1280 |  | Internal (DOR Review) - Shop Drawings - Major Medical Equipment - B2 | 10d | 2025-06-25 A | 2025-12-01 | OFOI.PWS.1120 | 100% | 83d |
| OFOI.PWS.1320 |  | D-B Team - BIM Modeling - Major Medical Equipment - L3 | 10d | 2025-07-03 A | 2025-07-17 A | OFOI.PWS.1270 | 100% |  |
| OFOI.PWS.1040 |  | D-B Team - BIM Coordination - L3 | 30d | 2025-07-18 A | 2025-09-19 A | OFOI.PWS.1320 | 100% |  |
| OFOI.PWS.1300 |  | Internal (DOR Review) - Shop Drawings - Major Medical Equipment - L3 | 10d | 2025-09-12 A | 2026-01-14 | OFOI.PWS.1200 |  | 28d |
| OFOI.PWS.1290 |  | Internal (DOR Review) - Shop Drawings - Major Medical Equipment - L1 | 10d | 2025-09-17 A | 2025-12-26 | OFOI.PWS.1170 |  | 35d |
| OFOI.PWS.1130 |  | External (NIH Review) - Shop Drawings - Major Medical Equipment - B2 | 0d | 2025-12-01 | 2025-12-01 | OFOI.PWS.1280 |  | 83d |
| OFOI.PWS.1170 |  | D-B Team - BIM Shop Drawings - Major Medical Equipment - L1 | 6d | 2025-12-01 | 2025-12-08 | OFOI.PWS.1030 |  | 35d |
| OFOI.PWS.1200 |  | D-B Team - BIM Shop Drawings - Major Medical Equipment - L3 | 10d | 2025-12-01 | 2025-12-12 | OFOI.PWS.1040 |  | 28d |
| OFOI.PWS.1220 |  | Ready to start Construction Activities - Major Medical Equipment - B2 | 1d | 2025-12-01 | 2025-12-01 | OFOI.PWS.1130 |  | 83d |
| OFOI.PWS.1230 |  | Ready to start Construction Activities - Major Medical Equipment - L1 | 1d | 2025-12-26 | 2025-12-29 | OFOI.PWS.1180 FF |  | 35d |

| ID | WBS | Task | Duration | Start | Finish | Predecessors | Complete | Total float | Constraint |
| --- | --- | --- | --- | --- | --- | --- | --- | --- | --- |
| OFOI.PWS.1180 |  | External (NIH Review) - Shop Drawings - Major Medical Equipment - L1 | 0d | 2025-12-29 | 2025-12-29 | OFOI.PWS.1290 |  | 35d |  |
| OFOI.PWS.1240 |  | Ready to start Construction Activities - Major Medical Equipment - L3 | 1d | 2026-01-14 | 2026-01-15 | OFOI.PWS.1210 FF |  | 28d |  |
| OFOI.PWS.1210 |  | External (NIH Review) - Shop Drawings - Major Medical Equipment - L3 | 0d | 2026-01-15 | 2026-01-15 | OFOI.PWS.1300 |  | 28d |  |
|  | 1 | **OFOI Preconstruction** |  | 2024-11-19 | 2024-11-19 |  |  |  |  |
| OFOI.PWS.1000 |  | NIH Procurement of Major Medical Equipment & Distribution of Vendor Specific Shop Drawings (NOT BEING PROVIDED) | 20d | 2024-11-19 A | 2024-11-19 A | P2C.DES.295 | 100% |  |  |
| OFOI.PWS.1010 |  | D-B Team Design Finalization & Coordination of Vendor Specific Shop Drawings (NOT BEING PROVIDED) | 20d | 2024-11-19 A | 2024-11-19 A | OFOI.PWS.1000 | 100% |  |  |
|  | 2 | **OFOI Equipment Deliveries** |  | 2026-03-20 | 2026-09-30 |  |  |  |  |
|  | 1 | **B2 - OFOI Equipment Deliveries** |  | 2026-05-15 | 2026-08-05 |  |  |  |  |
| OFOI.EQUIP.B2.1020 |  | MRI (IV) - Equipment / MRI Room B2-2820 & MRI EQ Room B202820A | 5d | 2026-05-15 | 2026-05-21 | CW.INTMU -1850, OFOI.PWS.1000, OFOI.PWS.1220 |  | 167d | as late as possible |
| OFOI.EQUIP.B2.1030 |  | MRI/CT - Equipment / MRI/CT Room B2-2840 & MRI EQ Room B202840A | 5d | 2026-05-15 | 2026-05-21 | OFOI.PWS.1000, OFOI.PWS.1220 |  | 167d | as late as possible |
| OFOI.EQUIP.B2.1000 |  | Cath Lab 1 (III) - Equipment / B2-2822 | 5d | 2026-07-30 | 2026-08-05 | OFOI.PWS.1000, OFOI.PWS.1220 |  | 117d | as late as possible |
| OFOI.EQUIP.B2.1010 |  | Cath Lab 2 (III) - Equipment / B2-2842 | 5d | 2026-07-30 | 2026-08-05 | OFOI.PWS.1000, OFOI.PWS.1220 |  | 117d | as late as possible |
| OFOI.EQUIP.B2.1040 |  | XR EQ - Equipment / B2-2826 | 5d | 2026-07-30 | 2026-08-05 | OFOI.PWS.1000, OFOI.PWS.1220 |  | 117d | as late as possible |
| OFOI.EQUIP.B2.1050 |  | XR EQ - Equipment / B2-2846 | 5d | 2026-07-30 | 2026-08-05 | OFOI.PWS.1000, OFOI.PWS.1220 |  | 117d | as late as possible |
|  | 2 | **L1 - OFOI Equipment Deliveries** |  | 2026-03-20 | 2026-03-26 |  |  |  |  |
| OFOI.EQUIP.L1.1000 |  | MRI 3T (1) - Equipment / MRI Room 1-2855 & MRI EQ (III) Room 1-2839 | 5d | 2026-03-20 | 2026-03-26 | OFOI.PWS.1000, OFOI.PWS.1230 |  | 177d | as late as possible |
| OFOI.EQUIP.L1.1010 |  | MRI 3T (2) - Equipment / MRI Room 1-2835 & MRI EQ (III) Room 1-2839 | 5d | 2026-03-20 | 2026-03-26 | OFOI.PWS.1000, OFOI.PWS.1230 |  | 177d | as late as possible |
| OFOI.EQUIP.L1.1020 |  | MRI 3T (3) - Equipment / MRI Room 1-2815 & MRI EQ (III) Room 1-2819 | 5d | 2026-03-20 | 2026-03-26 | OFOI.PWS.1000, OFOI.PWS.1230 |  | 177d | as late as possible |
| OFOI.EQUIP.L1.1030 |  | MRI 1.5T (4) - Equipment / MRI Room 1-2805 & MRI EQ (III) Room 1-2809 | 5d | 2026-03-20 | 2026-03-26 | OFOI.PWS.1000, OFOI.PWS.1230 |  | 177d | as late as possible |
| OFOI.EQUIP.L1.1040 |  | MRI 1.5T (5) - Equipment / MRI Room 1-2825 & MRI EQ (III) Room 1-2829 | 5d | 2026-03-20 | 2026-03-26 | OFOI.PWS.1000, OFOI.PWS.1230 |  | 177d | as late as possible |
| OFOI.EQUIP.L1.1050 |  | MRI 1.5T (6) - Equipment / MRI Room 1-2845 & MRI EQ (III) Room 1-2829 | 5d | 2026-03-20 | 2026-03-26 | OFOI.PWS.1000, OFOI.PWS.1230 |  | 177d | as late as possible |
| OFOI.EQUIP.L1.1060 |  | MRI 1.5T (FUTURE) (7) - Equipment / MRI Room 1-2865 & MRI EQ (III) Room 1-2849 | 5d | 2026-03-20 | 2026-03-26 | OFOI.PWS.1000, OFOI.PWS.1230 |  | 177d | as late as possible |
| OFOI.EQUIP.L1.1070 |  | CT (1) - Equipment / CT Room 1-3912 | 5d | 2026-03-20 | 2026-03-26 | OFOI.PWS.1000, OFOI.PWS.1230 |  | 172d | as late as possible |
| OFOI.EQUIP.L1.1080 |  | CT (2) - Equipment / CT Room 1-3910 | 5d | 2026-03-20 | 2026-03-26 | OFOI.PWS.1000, OFOI.PWS.1230 |  | 172d | as late as possible |
| OFOI.EQUIP.L1.1090 |  | CT (3) - Equipment / CT Room 1-3916 | 5d | 2026-03-20 | 2026-03-26 | OFOI.PWS.1000, OFOI.PWS.1230 |  | 172d | as late as possible |
| OFOI.EQUIP.L1.1100 |  | CT (4) - Equipment / CT Room 1-3918 | 5d | 2026-03-20 | 2026-03-26 | OFOI.PWS.1000, OFOI.PWS.1230 |  | 172d | as late as possible |
|  | 3 | **L3 - OFOI Equipment Deliveries** |  | 2026-03-26 | 2026-09-30 |  |  |  |  |
| OFOI.EQUIP.L3.1000 |  | MRI (1) - Equipment / MRI Room 3-2825 & MRI EQ Room 3-2825B | 5d | 2026-03-26 | 2026-04-01 | OFOI.PWS.1000, OFOI.PWS.1240 |  | 205d | as late as possible |
| OFOI.EQUIP.L3.1010 |  | MRI (2) - Equipment / MRI Room 3-2815 & MRI EQ Room 3-2815A | 5d | 2026-03-26 | 2026-04-01 | OFOI.PWS.1000, OFOI.PWS.1240 |  | 205d | as late as possible |
| OFOI.EQUIP.L3.1020 |  | Hybrid OR (1) - Equipment / Hybrid OR Room 3-2805 | 5d | 2026-09-11 | 2026-09-17 | OFOI.PWS.1000, OFOI.PWS.1240 |  | 87d | as late as possible |
| OFOI.EQUIP.L3.1030 |  | Hybrid OR (2) - Equipment / Hybrid OR Room 3-2845 | 5d | 2026-09-11 | 2026-09-17 | OFOI.PWS.1000, OFOI.PWS.1240 |  | 87d | as late as possible |
| OFOI.EQUIP.L3.1040 |  | Hybrid OR (3) - Equipment / Hybrid OR Room 3-2855 | 5d | 2026-09-11 | 2026-09-17 | OFOI.PWS.1000, OFOI.PWS.1240 |  | 87d | as late as possible |
| OFOI.EQUIP.L3.1050 |  | Hybrid OR (4) - Equipment / Hybrid OR Room 3-2835 | 5d | 2026-09-11 | 2026-09-17 | OFOI.PWS.1000, OFOI.PWS.1240 |  | 87d | as late as possible |
| OFOI.EQUIP.L3.1120 |  | IR Procedure (1) - Equipment / IR Procedure Room 3-2905 | 5d | 2026-09-18 | 2026-09-24 | OFOI.PWS.1000, OFOI.PWS.1240 |  | 82d | as late as possible |
| OFOI.EQUIP.L3.1130 |  | IR Procedure (2) - Equipment / IR Procedure Room 3-2915 | 5d | 2026-09-18 | 2026-09-24 | OFOI.PWS.1000, OFOI.PWS.1240 |  | 82d | as late as possible |
| OFOI.EQUIP.L3.1140 |  | IR Procedure (3) - Equipment / IR Procedure Room 3-2925 | 5d | 2026-09-18 | 2026-09-24 | OFOI.PWS.1000, OFOI.PWS.1240 |  | 82d | as late as possible |
| OFOI.EQUIP.L3.1060 |  | OR (1) - Equipment / OR Room 3-2865 | 5d | 2026-09-24 | 2026-09-30 | OFOI.PWS.1000, OFOI.PWS.1240 |  | 78d | as late as possible |
| OFOI.EQUIP.L3.1070 |  | OR (2) - Equipment / OR Room 3-2940 | 5d | 2026-09-24 | 2026-09-30 | OFOI.PWS.1000, OFOI.PWS.1240 |  | 78d | as late as possible |
| OFOI.EQUIP.L3.1080 |  | OR (3) - Equipment / OR Room 3-2950 | 5d | 2026-09-24 | 2026-09-30 | OFOI.PWS.1000, OFOI.PWS.1240 |  | 78d | as late as possible |
| OFOI.EQUIP.L3.1090 |  | OR (4) - Equipment / OR Room 3-3911 | 5d | 2026-09-24 | 2026-09-30 | OFOI.PWS.1000, OFOI.PWS.1240 |  | 78d | as late as possible |
| OFOI.EQUIP.L3.1100 |  | OR (5) - Equipment / OR Room 3-3915 | 5d | 2026-09-24 | 2026-09-30 | OFOI.PWS.1000, OFOI.PWS.1240 |  | 78d | as late as possible |
| OFOI.EQUIP.L3.1110 |  | OR (6) - Equipment / OR Room 3-3925 | 5d | 2026-09-24 | 2026-09-30 | OFOI.PWS.1000, OFOI.PWS.1240 |  | 78d | as late as possible |
| OFOI.EQUIP.L3.1150 |  | GI Minor Procedure (1) - Equipment / GR Minor Procedure Room 3-3920 | 5d | 2026-09-24 | 2026-09-30 | OFOI.PWS.1000, OFOI.PWS.1240 |  | 78d | as late as possible |
| OFOI.EQUIP.L3.1160 |  | GI Minor Procedure (2) - Equipment / GR Minor Procedure Room 3-3930 | 5d | 2026-09-24 | 2026-09-30 | OFOI.PWS.1000, OFOI.PWS.1240 |  | 78d | as late as possible |
| OFOI.EQUIP.L3.1170 |  | Minor Procedure (2) - Equipment / Minor Procedure Room 3-3910 | 5d | 2026-09-24 | 2026-09-30 | OFOI.PWS.1000, OFOI.PWS.1240 |  | 78d | as late as possible |
| OFOI.EQUIP.L3.1180 |  | Minor Procedure (3) - Equipment / Minor Procedure Room 3-3916 | 5d | 2026-09-24 | 2026-09-30 | OFOI.PWS.1000, OFOI.PWS.1240 |  | 78d | as late as possible |
|  | 13 | **PHASES 0, 1, 2 - CONSTRUCTION** |  | 2015-08-11 | 2028-09-05 |  |  |  |  |
|  | 1 | **Preconstruction Coordination** |  | 2023-01-25 | 2023-07-03 |  |  |  |  |
| PWS.200 |  | HP / NIH - Preconstruction Coordination Meeting - - Phase 0 | 2d | 2023-01-25 A | 2023-01-26 A | P0.MDE.140, RAP.P0.110, RAP.P0.140, PWS.190, PWS.140, PWS.170 | 100% |  |  |
| PWS.P0B.100 |  | HP / NIH - Preconstruction Coordination Meeting - Phase 0B | 1d | 2023-04-14 A | 2023-04-14 A | P0B.DES.160 | 100% |  |  |
| PWS.P0A.100 |  | HP / NIH - Preconstruction Coordination Meeting - Phase 0A | 1d | 2023-05-08 A | 2023-05-08 A | P0A.DES.220, P1.DEMO.2.130 | 100% |  |  |
| PWS.240 |  | HP / NIH - Preconstruction Coordination Meeting - Phase 1 | 1d | 2023-06-05 A | 2023-06-05 A | P1.MDE.130, PWS.260 | 100% |  |  |
| PWS.P0C.100 |  | HP / NIH - Preconstruction Coordination Meeting - Phase 0C | 1d | 2023-07-03 A | 2023-07-03 A | P0C.DES.190 | 100% |  |  |
|  | 5 | **Phase 0 - Enabling Work** |  | 2022-10-24 | 2024-11-11 |  |  |  |  |
|  | 1 | **P0 - Site Prep & E&SC** |  | 2022-10-24 | 2023-06-21 |  |  |  |  |
| P0.SPM.100 |  | Site Control & Layout | 5d | 2022-10-24 A | 2022-10-28 A | PWS.200 | 100% |  |  |
| P0.SPM.120 |  | Install Traffic Control Devices-Close Down SRLM Work Zone | 2d | 2023-03-06 A | 2023-03-07 A | P0.RIP.160 | 100% |  |  |
| P0.SPM.110 |  | Install ***Hard Bubble*** (Site Jersey Barriers, Fencing & Gates - SRLM Site) | 8d | 2023-05-08 A | 2023-06-21 A | P0.SUM.110 FF, P0.SPM.130 FF, P1.TVIF.100, P0.SPM.120 | 100% |  |  |
| P0.SPM.130 |  | Install Child Care OH Protection Pathway | 10d | 2023-05-08 A | 2023-06-21 A | P0.RIP.160, FAD.P0.200 | 100% |  |  |
|  | 2 | **P0 - Road and Surface Improvements** |  | 2023-01-30 | 2023-06-12 |  |  |  |  |
| P0.RIP.100 |  | Set up Construction Work Zone/Traffic Control - Island Infills | 5d | 2023-01-30 A | 2023-01-30 A | P1.TVIF.100 SS, FAD.P0.120 | 100% |  |  |
| P0.RIP.110 |  | Demo Site Features/Misc Utility Relocates - Island Infills | 15d | 2023-02-06 A | 2023-05-08 A | P0.RIP.100 | 100% |  |  |
| P0.RIP.120 |  | Grading & Drainage Work - Island Infills | 4d | 2023-03-16 A | 2023-05-15 A | P0.RIP.110 | 100% |  |  |
| P0.RIP.130 |  | Subgrade, Base Aggregate Course | 4d | 2023-05-08 A | 2023-05-11 A | P0.RIP.120 SS+8d | 100% |  |  |
| P0.RIP.150 |  | Final Grading, Stablize Area | 2d | 2023-05-09 A | 2023-05-11 A | P0.RIP.120 | 100% |  |  |
| P0.RIP.140 |  | Asphalt Paving | 4d | 2023-05-11 A | 2023-05-15 A | P0.RIP.130 SS+5d | 100% |  |  |
| P0.RIP.160 |  | Signage, Pavement Marking, Modify Traffic Control | 5d | 2023-05-18 A | 2023-06-07 A | P0.RIP.140 | 100% |  |  |
| P0.RIP.170 |  | Install Fire Department/Shuttle Access Controls at Child Care Center (with Hard Bubble) | 8d | 2023-05-18 A | 2023-06-12 A | P0.RIP.140, P0.RIP.150 | 100% |  |  |
|  | 3 | **P0 - Temporary Vehicle Inspection Facility (TVIF)** |  | 2023-01-30 | 2023-06-26 |  |  |  |  |
| P1.TVIF.100 |  | Set Up Construction Work Zone/Traffic Controls | 5d | 2023-01-30 A | 2023-01-30 A | P0.SPM.100 | 100% |  |  |

| ID | WBS | Task | Duration | Start | Finish | Predecessors | Complete |
| --- | --- | --- | --- | --- | --- | --- | --- |
| P1.TVIF.110 |  | Site Prep/E&S Controls | 5d | 2023-02-13 A | 2023-02-17 A | P1.TVIF.100, FAD.P0.120 | 100% |
| P1.TVIF.120 |  | Underground Utility Services to Location (Water, Sewer, Power, Comm) | 20d | 2023-02-20 A | 2023-03-29 A | P1.TVIF.110 | 100% |
| P1.TVIF.140 |  | TVIF Foundations & Retaining Wall | 10d | 2023-02-22 A | 2023-03-17 A | P1.TVIF.120 SS+2d | 100% |
| P1.TVIF.150 |  | Set Guard booths | 5d | 2023-03-27 A | 2023-04-24 A | P1.TVIF.140, FAD.P0.150, FAD.P0.190 | 100% |
| P1.TVIF.130 |  | Install TVIF Canopy Structure | 15d | 2023-04-24 A | 2023-05-19 A | P1.TVIF.150 | 100% |
| P1.TVIF.170 |  | Final Fencing/Vehicle Controls | 10d | 2023-04-27 A | 2023-05-22 A | P1.TVIF.150 | 100% |
| P1.TVIF.160 |  | Final Fit Out & Connect Services to Facilities | 10d | 2023-05-18 A | 2023-05-25 A | P1.TVIF.130 | 100% |
| P1.TVIF.180 |  | Test/Commssion TVIF Systems | 2d | 2023-06-07 A | 2023-06-08 A | P1.TVIF.160, P1.TVIF.170 | 100% |
| P1.TVIF.190 |  | Open TVIF | 1d | 2023-06-26 A | 2023-06-26 A | P0.SUM.100 FF, P1.TVIF.180, P0.RIP.170, P0.SPM.110 | 100% |
|  | 4 | **P0A - Temporary Emergency Egress** |  | 2023-03-09 | 2024-11-11 |  |  |
| P0.A.CRC.100 |  | NIH - Tennant Space Adjustment Notification - Emergency Egress - (From P0A.DES.160) | 5d | 2023-03-21 A | 2023-03-27 A | P0A.DES.120 SS | 100% |
|  | 3 | **P0A - Emergency Egress Stair 1-7 (North Egress)** |  | 2023-06-08 | 2024-11-11 |  |  |
| P0.CRC.110 |  | Ex. Stair S1-7 - Clear and Establish Exterior Egress | 10d | 2023-06-08 A | 2023-06-21 A | P0A.DES.210 | 100% |
| P0.CRC.140 |  | Ex. Stair S1-7 - Install Temporary Egress Signage and Close Exterior Exit | 2.5d | 2023-07-14 A | 2023-07-17 A | P0.CRC.130 FF+1d | 100% |
| P0.CRC.120 |  | Ex. Stair S1-7 - Install Egress over Duct Support and SOE | 6.25d | 2023-07-24 A | 2023-08-14 A | P0.CRC.110, P1.SOE.270 | 100% |
| P0.CRC.150 |  | Ex. Stair S1-7 - Demo Existing Exterior Stairs | 2d | 2023-07-24 A | 2023-07-26 A | P0.CRC.140, P1.SOE.260 | 100% |
| P0.CRC.170 |  | Ex. Stair S1-7 - Install Scaffold Egress from Stair S1-7 Exterior Door | 5d | 2023-08-07 A | 2023-09-28 A | P0.CRC.150 | 100% |
| P0.CRC.130 |  | Ex. Stair S1-7 - Level 1 Stair S1-7 Reverse Interior Door Swing | 3d | 2023-08-24 A | 2023-08-25 A | P0.CRC.120 | 100% |
| P0.CRC.180 |  | Ex. Stair S1-7 - NIH AHJ Life Safety Inspection and Sign Off (Includes Any Needed Adjustments From Inspection) | 1d | 2023-09-26 A | 2023-09-28 A | P0.CRC.170 | 100% |
| P0.CRC.190 |  | Ex. Stair S1-7 - Exit to Exterior Reopened / New North Egress In Service | 1d | 2023-09-28 A | 2023-09-28 A | P0.SUM.120 FF, P0.CRC.180 | 100% |
| P0.CRC.160 |  | Ex. Stair S1-7 - Patch/Repair Existing Waterproofing Systems | 2d | 2024-11-11 A | 2024-11-11 A | BP4.071.3.100, P0.CRC.150, P1.B2.03.430 | 100% |
|  | 2 | **P0A - Emergency Egress - Ex. Stair S3-9 (South Egress)** |  | 2023-03-09 | 2023-08-15 |  |  |
| P0.A.CRC.200 |  | Ex. Stair S3-9 - NIH Tenant Ready for Office Adjustments | 30d | 2023-03-09 A | 2023-04-05 A | P0.A.CRC.100 | 100% |
| P0.A.CRC.210 |  | Ex. Stair S3-9 - Existing Building / Office Protections | 5d | 2023-05-22 A | 2023-05-23 A | BP3.024.3.110, PWS.P0A.100, P0.A.CRC.200 | 100% |
| P0.A.CRC.230 |  | Ex. Stair S3-9 - Barrier Walls/Exiting Corridor/Stair | 10d | 2023-05-22 A | 2023-06-16 A | P0.A.CRC.220 SS+2d | 100% |
| P0.A.CRC.240 |  | Ex. Stair S3-9 - Demo Exterior Facade for South Egress Reroute | 5d | 2023-05-30 A | 2023-06-07 A | P0.A.CRC.230 SS+7d | 100% |
| P0.A.CRC.220 |  | Ex. Stair S3-9 - MEP Adjustments | 5d | 2023-06-20 A | 2023-06-22 A | P0.A.CRC.210 | 100% |
| P0.A.CRC.250 |  | Ex. Stair S3-9 - Build Back Exterior Facade / Egress Door / Stair Structure / OH Protection | 15d | 2023-06-22 A | 2023-07-11 A | P0.A.CRC.240, FAD.P0.200 | 100% |
| P0.A.CRC.260 |  | Ex. Stair S3-9 - Adjust Existing Ex. Stair S3-9 Door Swing | 3d | 2023-07-12 A | 2023-07-14 A | P0.A.CRC.250 | 100% |
| P0.A.CRC.270 |  | Ex. Stair S3-9 - Adjust Emergency Exit Signage / Life Safety Devices | 3d | 2023-07-12 A | 2023-07-14 A | P0.A.CRC.250 | 100% |
| P0.A.CRC.280 |  | Ex. Stair S3-9 - NIH AHJ Life Safety Inspection and Sign Off (Includes Any Needed Adjustments From Inspection) | 3d | 2023-07-17 A | 2023-07-19 A | P0.A.CRC.260, P0.A.CRC.270 | 100% |
| P0.A.CRC.290 |  | Ex. Stair S3-9 - Stair 15 Exit to Exterior Closed / New South Egress In Service | 0d | 2023-08-15 A | 2023-08-15 A | P0.SUM.120 FF, P0.A.CRC.280 | 100% |
|  | 5 | **P0B - Interior Window Infills & Temporary Air Intake** |  | 2023-04-17 | 2023-07-29 |  |  |
|  | 1 | **P0B - Interior Window Infills** |  | 2023-04-17 | 2023-06-30 |  |  |
| P0.B.CRC.120 |  | Set Up Work Zones (Barrier Walls,Access Pathways) - North Elevation | 5d | 2023-04-17 A | 2023-04-21 A | P0B.DES.170 FF, PWS.P0B.100 | 100% |
| P0.B.CRC.140 |  | Prep & Infill Windows (Interior Work) - North Elevation | 15d | 2023-04-24 A | 2023-05-22 A | P0.B.CRC.120 | 100% |
| P0.B.CRC.170 |  | Prep & Infill Windows (Interior Work) - West/South Elevations | 15d | 2023-06-12 A | 2023-06-30 A | P0.SUM.130 FF, P0.C.CRC.110 SS+5d | 100% |
|  | 2 | **P0B - Temporary Air Intake** |  | 2023-06-20 | 2023-07-29 |  |  |
| P0.B.CRC.130 |  | Frame Air Intake Structure - North Elevation | 7d | 2023-06-20 A | 2023-07-12 A | P0.B.CRC.110 | 100% |
| P0.B.CRC.100 |  | Set Up Work Zones (Barrier Walls,Access Pathways) - North Elevation | 5d | 2023-07-03 A | 2023-07-10 A | P0B.DES.170 FF | 100% |
| P0.B.CRC.110 |  | Prep Area for Air Intake Construction - North Elevation | 5d | 2023-07-11 A | 2023-07-17 A | P0.B.CRC.100 | 100% |
| P0.B.CRC.150 |  | Sheath Air Intake Structure - North Elevation | 7d | 2023-07-12 A | 2023-07-18 A | P0.B.CRC.130 | 100% |
| P0.B.CRC.160 |  | Waterproof and Finish Air Intake Structure - North Elevation | 7d | 2023-07-28 A | 2023-07-29 A | P0.SUM.150 FF, P0.B.CRC.150 | 100% |
|  | F | **P0C - Facade Removal** |  | 2023-07-17 | 2024-06-21 |  |  |
|  | 2 | **P0C - North Elevation** |  | 2023-07-17 | 2023-08-16 |  |  |
| P0.C.CRC.100 |  | Set Up Work Zones (Barrier Walls,Access Pathways) - North Elevation | 5d | 2023-07-17 A | 2023-07-21 A | P0C.DES.200 FF, PWS.P0C.100 | 100% |
| P0.C.CRC.120 |  | DcX Existing MEP along Facade to be Removed - North Elevation | 10d | 2023-07-19 A | 2023-08-01 A | P0.C.CRC.100 SS+2d | 100% |
| P0.C.CRC.130 |  | Demo Facade Brick & Precast - North Elevation | 10d | 2023-07-19 A | 2023-08-01 A | BP3.024.2.120, P0.B.CRC.140 SS+5d, P0.C.CRC.120 SS | 100% |
| P0.C.CRC.170 |  | Demo Punch Windows - North Elevation | 6d | 2023-08-02 A | 2023-08-09 A | P0.C.CRC.130 | 100% |
| P0.C.CRC.180 |  | Install Exterior Weather Protection at New Exterior Enclosures - North Elevation | 5d | 2023-08-10 A | 2023-08-16 A | P0.C.CRC.170 | 100% |
|  | 1 | **P0C - West/South Elevation** |  | 2023-07-19 | 2024-06-21 |  |  |
| P0.C.CRC.110 |  | Set Up Work Zones (Barrier Walls,Access Pathways) - West/South Elevations | 10d | 2023-07-19 A | 2023-08-01 A | P0.C.CRC.100 | 100% |
| P0.C.CRC.140 |  | DcX Existing MEP along Facade to be Removed - West/South Elevations | 10d | 2023-08-02 A | 2023-08-15 A | P0.C.CRC.110 SS+10d | 100% |
| P0.C.CRC.160 |  | Demo Facade Brick & Precast - West/South Elevations | 10d | 2023-08-09 A | 2023-08-22 A | P0.C.CRC.140 SS+5d, P0.B.CRC.170 SS+10d, P0.C.CRC.130 | 100% |
| P0.C.CRC.190 |  | Demo Punch Windows - West/South Elevations West/South Elevations | 9d | 2023-08-23 A | 2023-09-04 A | P0.C.CRC.160, P0.C.CRC.170 | 100% |
| P0.C.CRC.150 |  | Construct Temporary Exterior Shaft Enclosure - Stair 15 | 10d | 2024-03-11 A | 2024-03-27 A | P0.C.CRC.110, P1.DEMO.2.140 | 100% |
| P0.C.CRC.220 |  | Install Swing Stage at Ex. Stair 3-9 - West/South Elevations | 10d | 2024-04-01 A | 2024-04-12 A | P0.SUM.140 FF, P0.C.CRC.190, P0.C.CRC.150 | 100% |
| P0.C.CRC.210 |  | Demo Glass Enclosure - Ex. Stair S3-9 | 20d | 2024-04-15 A | 2024-06-14 A | P0.C.CRC.220 | 100% |
| P0.C.CRC.230 |  | Install Temp Weather Protection - West/South Elevations | 10d | 2024-05-20 A | 2024-06-21 A | P0.C.CRC.210 FF+5d | 100% |
|  | 10 | **Phase 1 - Construction** |  | 2022-12-22 | 2026-06-24 |  |  |
|  | 1 | **P1A - ACRF Garage Prep** |  | 2022-12-22 | 2024-06-06 |  |  |
|  | 4 | **P1A - Exterior Kiosk Work** |  | 2023-01-09 | 2024-06-06 |  |  |
| P1A.GARV.340 |  | Set up Work Zones - Isolation Fencing/Barriers @ Exterior Kiosk Work | 5d | 2023-01-09 A | 2023-01-10 A | P0.MDE.140 | 100% |
| P1A.GARV.330 |  | Cut/Cap Kiosk Utilities | 15d | 2023-02-20 A | 2023-03-06 A | P1A.GARV.440 | 100% |
| P1A.GARV.350 |  | Demo Surface Hardscapes & Install ES&C | 10d | 2023-02-20 A | 2023-03-06 A | P1A.GARV.340 | 100% |
| P1A.GARV.360 |  | Demolish or Relocate Existing Exterior/Site Utilities to Remain | 10d | 2023-02-20 A | 2023-02-21 A | P1A.GARV.330, P1A.GARV.350 | 100% |
| P1A.GARV.390 |  | Erect Precast / Caulk / Seal | 10d | 2023-08-30 A | 2023-09-18 A | BP2.034.3.110 | 100% |
| P1A.GARV.380 |  | Lay Metal Decking and Supports @ Kiosks | 7d | 2023-09-25 A | 2023-10-02 A | P1A.GARV.390 SS+4d, P1A.GARV.180, P1A.GARV.360 | 100% |
| P1A.GARV.400 |  | Install Roof Membrane | 7d | 2023-10-02 A | 2023-10-10 A | P1A.GARV.380 SS+2d | 100% |
| P1A.GARV.410 |  | Backfill Kiosks | 5d | 2023-10-06 A | 2023-10-11 A | BP4.071.3.110, P1A.GARV.380, P1A.GARV.400 | 100% |

| ID | WBS | Task | Duration | Start | Finish | Predecessors | Complete | Total float |
| --- | --- | --- | --- | --- | --- | --- | --- | --- |
| P1A.GARV.470 |  | Louver Installation | 5d | 2023-10-12 A | 2023-10-30 A | P1A.GARV.310 FF | 100% |  |
| P1A.GARV.530 |  | Install Kiosk Metal Panels | 5d | 2023-10-30 A | 2023-11-13 A | P1A.GARV.470 | 100% |  |
| P1A.GARV.480 |  | Temporarily Stabilize & Restore Surface Features | 5d | 2023-11-06 A | 2023-11-20 A | P1A.GARV.530 | 100% |  |
| P1A.GARV.500 |  | PHASE 1A Punchlist | 30d | 2023-11-15 A | 2024-06-06 A | P1A.GARV.530 FF, P1A.GARV.490 | 100% |  |
| P1A.GARV.510 |  | PHASE 1A Final Completion Inspection | 5d | 2023-11-15 A | 2024-06-06 A | P1A.GARV.500 | 100% |  |
| P1A.GARV.490 |  | PHASE 1A Substantial Completion & Warranty Start | 0d | 2023-11-15 A | 2023-11-15 A | P1A.GARV.480 FF, P1A.GARV.310 FF | 100% |  |
| P1A.GARV.520 |  | PHASE 1A Final Completion | 0d | 2024-06-06 A | 2024-06-06 A | P1A.GARV.510 | 100% |  |
|  | 1 | **P1A - Interior Ventilation and Egress Work** |  | 2022-12-22 | 2023-10-31 |  |  |  |
| P1A.GARV.220 |  | Submit Outage Requests - MEPF Cut, Cap Activitites | 10d | 2022-12-22 A | 2023-01-06 A | P1A.DES.600 SS | 100% |  |
| P1A.GARV.110 |  | Set up Work Zones - Isolation Fencing/Barriers/Exiting | 5d | 2023-01-09 A | 2023-01-11 A | P1.SS.T1A.120 | 100% |  |
| P1A.GARV.099 |  | Clear MEP in Parking Garage P1 Demolition Zone - Level B3 | 10d | 2023-01-10 A | 2023-04-03 A | P1A.GARV.100 | 100% |  |
| P1A.GARV.420 |  | Clear MEP in Parking Garage P1 Demolition Zone - Level B2 | 10d | 2023-01-10 A | 2023-04-03 A | P1A.GARV.099 | 100% |  |
| P1A.GARV.430 |  | Clear MEP in Parking Garage P1 Demolition Zone - Level B1 | 10d | 2023-01-10 A | 2023-04-03 A | P1A.GARV.420 | 100% |  |
| P1A.GARV.120 |  | Construct Fire Rated Separation Construction Partitions | 15d | 2023-01-23 A | 2023-02-24 A | P1A.GARV.110 | 100% |  |
| P1A.GARV.100 |  | Cut/Cap Garage Utilities | 15d | 2023-01-25 A | 2023-04-03 A | P1A.GARV.110, P1A.GARV.440 | 100% |  |
| P1A.GARV.130 |  | Temporary Re-route existing Ductwork along garage wall for New Work | 15d | 2023-01-25 A | 2023-01-26 A | P1A.GARV.110 SS+10d, P1A.GARV.120 SS | 100% |  |
| P1A.GARV.440 |  | Outage Request Approved by NIH | 0d | 2023-01-25 A | 2023-01-25 A | P1A.GARV.220 FF | 100% |  |
| P1.GARV.120 |  | Plumbing - P1 Garage & West Wing Reconfiguation | 50d | 2023-02-13 A | 2023-02-18 A | P1A.GARV.110 | 100% |  |
| P1A.GARV.140 |  | Demo Existing Walls & Structure | 5d | 2023-04-17 A | 2023-04-18 A | BP3.024.3.140, P1A.DES.650, P1A.GARV.100, P1A.GARV.120, P1A.DEMO.2.100 | 100% |  |
| P1A.GARV.150 |  | Saw Cut/Demo Garage Slab for Shafts | 10d | 2023-04-25 A | 2023-05-18 A | P1A.GARV.130 SS+5d, P1A.GARV.140 | 100% |  |
| P1A.GARV.160 |  | Steel Supports and Grating at Shaft Openings | 10d | 2023-05-10 A | 2023-05-26 A | P1A.GARV.150 SS+5d | 100% |  |
| P1A.GARV.200 |  | Install Panelboard & Boxes | 2d | 2023-05-15 A | 2023-07-05 A | P1A.GARV.190 | 100% |  |
| P1A.GARV.180 |  | CMU Partitions - B3, B2, B1 Level | 20d | 2023-05-22 A | 2023-06-09 A | P1.GARV.120 SS+10d, P1A.GARV.160 SS+5d | 100% |  |
| P1A.GARV.190 |  | Overhead Elec/FA Rough-in | 15d | 2023-05-22 A | 2023-07-14 A | P1A.GARV.180 SS | 100% |  |
| P1A.GARV.210 |  | R/I Pathways / Pull Wire / Elec/FA | 10d | 2023-06-05 A | 2023-07-29 A | P1A.GARV.200 | 100% |  |
| P1A.GARV.230 |  | Install New Garage Egress Stairs | 20d | 2023-06-05 A | 2023-06-28 A | P1A.GARV.180, BP1.055.3.300 | 100% |  |
| P1A.GARV.240 |  | Garage Exhaust Fans - (Includes Set, Trim, and Controls) - B3, B2, B1 | 15d | 2023-06-12 A | 2023-06-30 A | BP1.233.3.200 | 100% |  |
| P1A.GARV.450 |  | Fire Suppression Bulk Mains and Branches | 15d | 2023-06-14 A | 2023-07-12 A | P1A.GARV.180, BP1.210.0.100 | 100% |  |
| P1A.GARV.270 |  | Outage - Tie-in/Term/Test Panelboard Feeder and Panelboard | 3d | 2023-06-20 A | 2023-06-21 A | P1A.GARV.260 | 100% |  |
| P1A.GARV.460 |  | Fire Suppression Standpipes and Risers | 10d | 2023-07-08 A | 2023-07-14 A | P1A.GARV.250 FF, P1A.GARV.450, P1A.GARV.230 | 100% |  |
| P1A.GARV.260 |  | Trim Out Elec/FA | 5d | 2023-08-07 A | 2023-09-25 A | P1A.GARV.460 FF+2d, P1A.GARV.250, P1A.GARV.240, P1A.GARV.210 | 100% |  |
| P1A.GARV.250 |  | Block Fill and Paint CMU | 5d | 2023-10-02 A | 2023-10-06 A | P1A.GARV.180 | 100% |  |
| P1A.GARV.290 |  | Fluid Applied Coatings at Shaft Walls | 10d | 2023-10-04 A | 2023-10-17 A | P1A.GARV.400 FF+5d, P1A.GARV.180 | 100% |  |
| P1A.GARV.280 |  | Test & Checkout Elec/FA | 5d | 2023-10-09 A | 2023-10-13 A | P1A.GARV.270 | 100% |  |
| P1A.GARV.300 |  | Final MEP Connections/Test/Commission | 5d | 2023-10-16 A | 2023-10-20 A | P1A.GARV.280 | 100% |  |
| P1A.GARV.320 |  | Stair Inspection/Open Stair/Close Stair B3Z.21 in Garage | 5d | 2023-10-24 A | 2023-10-30 A | P1A.GARV.470 FF, P1A.GARV.280 | 100% |  |
| P1A.GARV.310 |  | New Ventilation Shafts Operational to allow for Demo of Existing Garage | 1d | 2023-10-31 A | 2023-10-31 A | P1.SUM.100 FF, P1A.GARV.410 FF, P1A.GARV.300, P1A.GARV.290 | 100% |  |
|  | 3 | **P1A - 15kV Work** |  | 2023-01-23 | 2023-07-06 |  |  |  |
| P1A.GARV.15K.100 |  | Fabricate/Deliver 15kV Cable, Terms, and Splices | 140d | 2023-01-23 A | 2023-04-11 A | P1A.DES.570 | 100% |  |
| P1A.GARV.15K.130 |  | Install Pathways for new Feeders from 59 per ED5001 | 10d | 2023-03-13 A | 2023-04-28 A | P1A.GARV.15K.110, P1A.GARV.099 | 100% |  |
| P1A.GARV.15K.140 |  | Submit Outage Requests - 15kV Work | 20d | 2023-03-21 A | 2023-03-24 A | P1A.GARV.15K.100 SS+80d | 100% |  |
| P1A.GARV.15K.150 |  | NIH Review & Approve Outage Request - 15kV Work | 20d | 2023-03-25 A | 2023-05-01 A | P1A.GARV.15K.140 | 100% |  |
| P1A.GARV.15K.110 |  | Demo Sub 59 Feeders 60,61,70,71,80,81 from Sub 59 to EN-14 per ED5000 | 10d | 2023-05-01 A | 2023-05-12 A | P1A.GARV.110 | 100% |  |
| P1A.GARV.15K.160 |  | Install Sub 59 Feeders 60,61,70,71,80,81 from Sub 59 to EN-14 ED5001 | 5d | 2023-05-15 A | 2023-05-19 A | P1A.GARV.15K.150, P1A.GARV.15K.130, P1A.GARV.15K.100 | 100% |  |
| P1A.GARV.15K.170 |  | Term/Fireproof/Test Sub 59 Feeders 60,61,70,71,80,81 from Sub 59 to EN-14 ED5001 | 5d | 2023-05-22 A | 2023-05-26 A | P1A.GARV.15K.160 | 100% |  |
| P1A.GARV.15K.180 |  | Transfer loads from Sub 63 feeders 86,87,106,107,116,117 to Sub 59 Feeders 60,61,70,71,80,81 | 3d | 2023-05-30 A | 2023-06-08 A | P1A.GARV.15K.170 | 100% |  |
| P1A.GARV.15K.190 |  | Demo existing Sub 63 feeders 86,87,106,107,116,117 from EN-14 to EN-10E per ED50002 | 5d | 2023-06-12 A | 2023-06-15 A | P1A.GARV.15K.180 | 100% |  |
| P1A.GARV.15K.120 |  | Demo Feeders 62, 72, 82, 73L1 (ESSEG Activity ID XX-XXXX) | 5d | 2023-06-19 A | 2023-07-06 A | P1A.GARV.15K.110 SS | 100% |  |
|  | 3 | **P1 - Site Work** |  | 2023-06-14 | 2024-01-31 |  |  |  |
|  | 1 | **Site Preparations/Demolition** |  | 2023-06-14 | 2024-01-31 |  |  |  |
| P1.CIV.110 |  | Clear/Relocate Utilities for Excavation | 20d | 2023-06-23 A | 2023-09-06 A | P1.CIV.290 SS | 100% |  |
| P1.CIV.130 |  | Install Temporary Utiltities to Serve Construction (Power, Water) | 20d | 2023-11-20 A | 2024-01-31 A | P1.CIV.320 FF, P1.CIV.170, PCO.185.16 | 100% |  |
|  | 5 | **MDE Phase 1 - Sequence of Construction** |  | 2023-06-14 | 2023-10-02 |  |  |  |
| P1.CIV.250 |  | Demo Existing Surface Features - Fences, Gates, Bollards, Etc | 5d | 2023-06-14 A | 2023-08-23 A | P1.CIV.290 | 100% |  |
| P1.CIV.260 |  | Demo Playground | 10d | 2023-06-18 A | 2023-08-04 A | P1.CIV.250 | 100% |  |
| P1.CIV.290 |  | Install all E&SC Surface Features, Perimeter Dikes/Swales, and Sediment Basin | 10d | 2023-06-19 A | 2023-09-22 A | BP3.310.3.100, P1.UTL.220 SS+10d, PWS.240 | 100% |  |
| P1.CIV.280 |  | Demo Site Surface Finishes (Asphalt, Concrete, Etc.) | 10d | 2023-07-21 A | 2023-10-02 A | P1.CIV.290 | 100% |  |
| P1.CIV.300 |  | Clear, Grub & Rough Grade SRLM LOD | 10d | 2023-08-08 A | 2023-08-18 A | P1.CIV.250 SS+5d, P1.CIV.280 SS+5d, P1.CIV.260 FF, P0.B.CRC.160, P0.A.CRC.290, P1.TVIF.190 | 100% |  |
| P1.CIV.310 |  | Phase 1 Sequence Complete - Proceed to Phase 2 Sequence | 0d | 2023-08-18 A | 2023-08-18 A | P1.CIV.300 FF | 100% |  |
|  | 6 | **SIte Utilities** |  | 2023-05-12 | 2026-06-24 |  |  |  |
|  | 2 | **Water Line** |  | 2023-05-12 | 2026-06-24 |  |  |  |
| P1.UTL.220 |  | Water Main - STA. 0+00 to 2+00 | 20d | 2023-05-12 A | 2023-06-14 A | BP3.330.3.110, P1.BIM.WTR.50.100, P0.MDE.MOD2.150 | 100% |  |
| P1.UTL.240 |  | Water Main - STA. 2+00 to 4+80 | 10d | 2023-06-14 A | 2023-06-29 A | P1.UTL.220 | 100% |  |
| P1.UTL.250 |  | Water - SRLM Hydrant - South (02/C-U301-PH1) | 5d | 2026-06-11 | 2026-06-17 | P1.BG.WP.100, P1.PED.150, P2.SITE.25 |  | 144d |
| P1.UTL.230 |  | Water - SRLM Hydrant - North (07/C-U301-PH1) | 5d | 2026-06-18 | 2026-06-24 | P1.BG.WP.120, P1.UTL.250, P2.SITE.13 |  | 144d |
|  | 3 | **Storm** |  | 2023-07-12 | 2026-06-10 |  |  |  |
| P1.UTL.260 |  | Install Temp Storm Piping and Pump Stations (SOE Tier 2 Excavation - P1.SOE.160) | 12d | 2023-11-20 A | 2024-01-31 A | PCO.185.56 | 100% |  |
| P1.UTL.430 |  | Install Temp Storm Pump Around to allow excavation/demo of Z3 existing storm (PCO 185) | 5d | 2023-12-07 A | 2023-12-15 A | PCO.185.66 SS+10d | 100% |  |
| P1.UTL.440 |  | Remove existing storm Z3 priority areas (PCO 185) | 5d | 2023-12-18 A | 2023-12-20 A | P1.UTL.430 | 100% |  |
| P1.UTL.110 |  | New Storm Main Line Complete and In Service - ACRF Garage 18" Discharge | 0d | 2024-02-15 A | 2024-02-15 A | P1.UTL.130 FF | 100% |  |

| ID | WBS | Task | Duration | Start | Finish | Predecessors | Complete | Total float |
| --- | --- | --- | --- | --- | --- | --- | --- | --- |
| P1.UTL.270 |  | Remove Temp Storm Piping and Pump Stations | 5d | 2024-03-15 A | 2024-03-20 A | P1.GARV.120, P1.UTL.110, P1.UTL.210 | 100% |  |
| P1.UTL.210 |  | New Storm Main Complete and In Service - B10 Discharge | 0d | 2024-03-15 A | 2024-03-15 A | P1.UTL.160 FF, P1.PED.130 FF | 100% |  |
|  | 1 | **Storm - Outside of SOE - Bldg 10 Discharge** |  | 2023-07-12 | 2025-02-14 |  |  |  |
| P1.UTL.100 |  | Storm - MH20-22 - MH20-23 - MH20-24 | 10d | 2023-07-12 A | 2023-08-19 A | P1.UTL.280 | 100% |  |
| P1.UTL.280 |  | Install Structures and Piping from MH20-22 to CB20-17 @ Center Dr/Bldg 10 Entrance | 10d | 2023-07-12 A | 2023-07-27 A | BP3.330.3.100, P1.CIV.290 SS+4d, P1.BIM.SU.50.100, BP3.330.3.120 FF+5d | 100% |  |
| P1.UTL.140 |  | Storm - EX CB20-17 and RCP into SOE (to tie into MH20-19) | 7d | 2023-07-17 A | 2023-08-10 A | P1.UTL.180 FF+2d, P1.SUM.140 SS, P1.UTL.380 | 100% |  |
| P1.UTL.410 |  | Install Temp Storm Piping to Facilitate Demo of Existing CB20-17 to Ex Structure | 5d | 2023-07-25 A | 2023-08-02 A | P1.UTL.280 | 100% |  |
| P1.UTL.180 |  | Demo Existing Storm - Ex CB20-17 to Ex Structure | 5d | 2023-08-02 A | 2023-08-07 A | P1.UTL.410 | 100% |  |
| P1.UTL.160 |  | Storm - Ex CO20-21 - MH20-21 - MH20-20 - MH2019A | 10d | 2025-02-03 A | 2025-02-14 A | P1.BG.BF.170 | 100% |  |
|  | 6 | **Storm - Inside SOE - ACRF Discharge** |  | 2023-11-30 | 2024-02-14 |  |  |  |
| P1.UTL.120 |  | Storm - MH20-24 - MH20-25 - MH20-25A - MH20-26 | 5d | 2023-11-30 A | 2024-01-25 A | P1.UTL.430 FF, PCO.185.56, P1.SOE.220 | 100% |  |
| P1.UTL.170 |  | Storm - MH20-27 - MH20-27A - MH20-28 | 5d | 2024-02-07 A | 2024-02-09 A | P1.UTL.120, P1.SOE.520, P1.SOE.570 | 100% |  |
| P1.UTL.130 |  | Storm - MH20-28 - MH 20-29 - Ex. Garage Discharge | 5d | 2024-02-10 A | 2024-02-14 A | P1.SUM.140 FF, P1.UTL.170 | 100% |  |
|  | 2 | **Storm - Inside SOE - Bldg 10 Discharge** |  | 2023-12-14 | 2024-01-19 |  |  |  |
| P1.UTL.420 |  | Storm - MH20-18 - MH20-19 | 5d | 2023-12-14 A | 2024-01-19 A | P1.UTL.120 SS, P1.UTL.180 FF+2d, P1.UTL.140, PCO.185.56 | 100% |  |
|  | 4 | **Storm - Catch Basin CB20-24 to MB-1 Outfall** |  | 2025-12-12 | 2026-01-05 |  |  |  |
| P1.UTL.300 |  | Storm - CB20-24 - CB20-23 - CB20-22 - CB20-21 | 5d | 2025-12-12 | 2025-12-18 | P1.UTL.270, P1.BGS.300 |  | 144d |
| P1.UTL.360 |  | Storm - CB20-21 - CB20-20 - MB1 Outfall | 5d | 2025-12-19 | 2025-12-26 | P1.UTL.300 |  | 144d |
| P1.UTL.290 |  | Storm - Trench Drain TD20-20 | 5d | 2025-12-29 | 2026-01-05 | P1.UTL.360 |  | 144d |
|  | 5 | **Storm - Micro-Basin Drains** |  | 2026-02-03 | 2026-06-10 |  |  |  |
| P1.UTL.310 |  | Storm - MB20-22A - MB20-22 - MH20-22 | 5d | 2026-02-03 | 2026-02-09 | P1.BG.SD.150, P2.SITE.64, P2.SITE.6 |  | 170d |
| P1.UTL.320 |  | Storm - MB20-24 - MH20-24 | 5d | 2026-02-10 | 2026-02-16 | P1.UTL.310, P2.SITE.124 |  | 250d |
| P1.UTL.330 |  | Storm - MB20-25 - MH20-25 | 5d | 2026-02-17 | 2026-02-23 | P2.SITE.174, P1.UTL.320 |  | 250d |
| P1.UTL.340 |  | Storm - MB20-26 - MH20-26 | 5d | 2026-05-20 | 2026-05-27 | P2.SITE.274, P1.UTL.330 |  | 189d |
| P1.UTL.350 |  | Storm - TD20-27 - MH20-27A | 5d | 2026-05-28 | 2026-06-03 | P2.SITE.224, P1.UTL.340 |  | 189d |
| P1.UTL.370 |  | Storm - CB10-11 - CB10-12 | 5d | 2026-06-04 | 2026-06-10 | P1.UTL.350 |  | 189d |
|  | 4 | **Sanitary** |  | 2023-07-10 | 2023-07-31 |  |  |  |
| P1.UTL.380 |  | Sanitary - Tunnel Discharge - SS-120 - SS-110 - EX-100 | 5d | 2023-07-10 A | 2023-07-31 A | BP3.330.3.100, P1.BIM.SU.50.100, BP3.330.3.120 FF+5d, P1.MDE.130 | 100% |  |
|  | 1 | **Natural Gas** |  | 2024-08-01 | 2024-08-07 |  |  |  |
| P1.UTL.390 |  | Natural Gas - Sleave & Connection at Gas Main to Building @ B2 South | 5d | 2024-08-01 A | 2024-08-07 A | P1.BG.WP.100 SS | 100% |  |
|  | 5 | **Electrical Duct Banks** |  | 2024-11-11 | 2024-11-19 |  |  |  |
| P1.UTL.400 |  | Duct Bank - MH EN-10E to STUB-ELEC-1 (B1 Level) | 10d | 2024-11-11 A | 2024-11-19 A | P1.B2.03.150, BP1.260.3.130, P1.BG.WP.110 | 100% |  |
|  | 9 | **Support of Excavation - Mass Ex** |  | 2023-07-13 | 2024-09-26 |  |  |  |
|  | 7 | **PCO185 - Asbestos Contaminated Soils Remediation** |  | 2023-10-03 | 2024-09-26 |  |  |  |
| PCO.185.01 |  | ACM Telecom Ductbank Discovered In Tier 2 Excavation | 1d | 2023-10-03 A | 2023-10-03 A | P1.SOE.160 SS | 100% |  |
| PCO.185.02 |  | ACM Ductbank Barriacaded by NIH DEP (3d Enviro) | 1d | 2023-10-04 A | 2023-10-04 A | PCO.185.01 | 100% |  |
| PCO.185.03 |  | Excavation Continues in Non Impacted Areas | 3d | 2023-10-05 A | 2023-10-09 A | PCO.185.02 | 100% |  |
| PCO.185.04 |  | Petroleum Odor & Concrete Like Mtrl Encountered In Excavation | 1d | 2023-10-10 A | 2023-10-10 A | P1.SOE.160, P1.SOE.130, PCO.185.03 | 100% |  |
| PCO.185.05 |  | NIH DEP (3d Enviro) Takes Samples of Soil and Concrete Like Material | 1d | 2023-10-10 A | 2023-10-10 A | PCO.185.03 | 100% |  |
| PCO.185.06 |  | NIH DEP (3d Enviro) Barricades area where samples taken. | 1d | 2023-10-11 A | 2023-10-11 A | PCO.185.04, PCO.185.05 | 100% |  |
| PCO.185.07 |  | NIH Issues Stop Work Notice for SOE Area where Asbestos and Petroleum Discovered | 1d | 2023-10-12 A | 2023-10-12 A | PCO.185.06 | 100% |  |
| PCO.185.08 |  | NIH Stop Work Order In Effect Until 10/16/2023 | 2d | 2023-10-13 A | 2023-10-16 A | PCO.185.07 | 100% |  |
| PCO.185.09 |  | NIH Allows Access to Job on North & HP Conducts ACM Awareness For All Trades | 2d | 2023-10-17 A | 2023-10-18 A | PCO.185.08 | 100% |  |
| PCO.185.10 |  | Site Closed for Testing & NIH Recieved Results For Other ACM Containing Areas Stop Work Issued on South Side | 2d | 2023-10-19 A | 2023-10-20 A | PCO.185.09 | 100% |  |
| PCO.185.11 |  | Abatement Work Plan Development & Approval | 7d | 2023-10-23 A | 2023-10-31 A | PCO.185.10 | 100% |  |
| PCO.185.12 |  | DEP/3D Start Abatement | 0d | 2023-11-01 A | 2023-11-01 A | PCO.185.11 | 100% |  |
| PCO.185.26 |  | Abatement Duration - For Priority Areas 1-3 (North) | 3d | 2023-11-01 A | 2023-11-06 A | PCO.185.12 SS | 100% |  |
| PCO.185.36 |  | Air Sampling & Testing Post Abatement For Priority Areas 1-3 (North) | 3d | 2023-11-02 A | 2023-11-07 A | PCO.185.26 SS+1d | 100% |  |
| PCO.185.13 |  | Projected Abatement Duration - For Priority Areas 4 (South) | 10d | 2023-11-06 A | 2023-11-15 A | PCO.185.26 | 100% |  |
| PCO.185.14 |  | Air Sampling & Testing Post Abatement For Priority Areas 4 (South) | 10d | 2023-11-06 A | 2023-11-16 A | PCO.185.13 SS+1d | 100% |  |
| PCO.185.56 |  | Recommence Excavation For Priority Areas 1-3 (North) | 1d | 2023-11-07 A | 2023-11-13 A | PCO.185.46 | 100% |  |
| PCO.185.46 |  | Test Results Show All Clear For Priority Areas 1-3 (North) | 0d | 2023-11-07 A | 2023-11-07 A | PCO.185.36 FF | 100% |  |
| PCO.185.16 |  | Recommence Excavation For Priority Areas 4 (South) | 1d | 2023-11-16 A | 2023-11-20 A | PCO.185.15 | 100% |  |
| PCO.185.66 |  | Abatement Duration For Priority Areas 5 (South) | 15d | 2023-11-16 A | 2023-12-01 A | PCO.185.13 | 100% |  |
| PCO.185.15 |  | Test Results Show All Clear For Priority Areas 4 (South) | 0d | 2023-11-16 A | 2023-11-16 A | PCO.185.14 FF | 100% |  |
| PCO.185.76 |  | Air Sampling & Testing Post Abatement For Priority Areas 5 (South) | 15d | 2023-11-17 A | 2023-12-04 A | PCO.185.66 SS+1d | 100% |  |
| PCO.185.86 |  | Test Results Show All Clear For Priority Areas 5 (South) | 0d | 2023-12-04 A | 2023-12-04 A | PCO.185.76 FF | 100% |  |
| PCO.185.96 |  | Recommence Excavation For Priority Areas 5 (South) | 1d | 2023-12-05 A | 2023-12-05 A | PCO.185.86 | 100% |  |
| PCO.185.106 |  | Abatement Duration For Priority Areas 6 (South-Demo) | 3d | 2023-12-06 A | 2023-12-08 A | P1.SOE.580 | 100% |  |
| PCO.185.116 |  | Air Sampling & Testing Post Abatement For Priority Areas 6 (South-Demo) | 3d | 2023-12-06 A | 2023-12-11 A | PCO.185.106 SS+1d | 100% |  |
| PCO.185.126 |  | Test Results Show All Clear For Priority Areas 6 (South-Demo) | 0d | 2023-12-11 A | 2023-12-11 A | PCO.185.116 FF | 100% |  |
| PCO.185.136 |  | Recommence Excavation For Priority Areas 6 (South-Demo) | 1d | 2023-12-12 A | 2023-12-12 A | PCO.185.126 | 100% |  |
| PCO.185.146 |  | Issued MOD for PCO 185 - 45 Calendar Day Extension | 0d | 2024-09-26 A | 2024-09-26 A | PCO.185.136 FF | 100% |  |
|  | 6 | **Emergency Duct Bank Support** |  | 2023-07-13 | 2023-12-09 |  |  |  |
| P1.SOE.260 |  | Selective Excavation @ Emergency Duct Bank Support Area and PH 0A Emergency Egress Paths | 5d | 2023-07-13 A | 2023-07-21 A | P1.SOE.250 | 100% |  |
| P1.SOE.250 |  | Soldier Piles @ Emergency Duct Bank Support Area and PH 0A Emergency Egress Paths | 3d | 2023-07-24 A | 2023-07-26 A | BP3.315.3.100, P1.CIV.290 | 100% |  |
| P1.SOE.270 |  | Install Emergency Duct Bank Support Steel | 15d | 2023-07-26 A | 2023-08-18 A | P1.SOE.260 SS+10d | 100% |  |
| P1.SOE.280 |  | Excavate/Lag - Tiers 2-5 @ Emergency Duct Bank Support Area and PH 0A Emergency Egress Paths | 10d | 2023-08-19 A | 2023-10-31 A | P1.CIV.170 SS+5d, P0.CRC.190 FF | 100% |  |
| P1.SOE.530 |  | Complete Post ACM Excavate/Lag - Tiers 2-5 @ Emergency Duct Bank Support Area and PH 0A Emergency Egress Paths | 2d | 2023-11-10 A | 2023-12-01 A | P1.CIV.170 SS+5d, P0.CRC.190 FF, P1.CIV.320, P1.SOE.280, PCO.185.56 | 100% |  |
| P1.SOE.490 |  | Underpinning - Existing Building @ Emergency Duct Bank Support Area and PH 0A Emergency Egress Paths | 10d | 2023-11-24 A | 2023-12-09 A | P1.SOE.280 SS+5d, P1.SOE.530 SS+5d | 100% |  |

| ID | WBS | Task | Duration | Start | Finish | Predecessors | Complete | Total float |
| --- | --- | --- | --- | --- | --- | --- | --- | --- |
|  | 2 | **Tier 1 (Elev. 345' - 340')** |  | 2023-07-20 | 2023-12-11 |  |  |  |
| P1.SOE.120 |  | Install SOE Soldier Piles | 19d | 2023-07-20 A | 2023-09-29 A | P1.CIV.310, P1.UTL.240, P1.SOE.250 | 100% |  |
| P1.SOE.130 |  | Excavate/Lag - Tier 1 | 10d | 2023-08-14 A | 2023-10-09 A | P1.SOE.120 SS+3d, P1.UTL.180, P1.UTL.100, P1.CIV.110, P1.UTL.380 | 100% |  |
| P1.SOE.500 |  | Complete Post Asbestos Abatement Excavate/Lag - Tier 1 - Priority Area 4 | 3d | 2023-11-20 A | 2023-11-22 A | PCO.185.16 | 100% |  |
| P1.SOE.540 |  | Complete Post Asbestos Abatement Excavate/Lag - Tier 1 - Priority Area 5 | 3d | 2023-12-06 A | 2023-12-11 A | PCO.185.96 | 100% |  |
|  | 4 | **Tier 2 (Elev. 340' - 335')** |  | 2023-09-21 | 2023-12-27 |  |  |  |
| P1.SOE.160 |  | Excavate/Lag - Tier 2 | 10d | 2023-09-21 A | 2023-10-09 A | P1.UTL.100 | 100% |  |
| P1.SOE.150 |  | Tieback - Sector Z2 - Tier 2 | 5d | 2023-09-27 A | 2023-09-29 A | P1.SOE.160 SS+5d | 100% |  |
| P1.UTL.190 |  | Demo Elec Duct Banks from ACRF Garage to EN10/11 | 5d | 2023-10-05 A | 2023-10-09 A | P1A.GARV.15K.190, P1A.GARV.15K.120 | 100% |  |
| P1.SOE.380 |  | Tieback - Sector Z3 - Tier 2 | 5d | 2023-10-09 A | 2023-10-26 A | P1.UTL.180, P1.SOE.150, P1.UTL.380 | 100% |  |
| P1.UTL.200 |  | Complete Demo Elec Duct Banks from ACRF Garage to EN10/11 | 10d | 2023-11-20 A | 2023-12-14 A | P1.SOE.510, P1.UTL.190 | 100% |  |
| P1.SOE.170 |  | Tieback - Sector Z1 - Tier 2 | 5d | 2023-11-21 A | 2023-12-27 A | P1.SOE.510 | 100% |  |
| P1.SOE.510 |  | Complete Post Asbestos Abatement Excavate/Lag - Tier 2 - Priority Area 4 | 5d | 2023-11-27 A | 2023-11-30 A | P1.SOE.500 | 100% |  |
| P1.SOE.580 |  | Support SW Ductbank Inside Excavation (Was incidental to Excavation prior to PCO-185) | 10d | 2023-11-29 A | 2023-12-20 A | P1.SOE.510 | 100% |  |
| P1.SOE.550 |  | Complete Post Asbestos Abatement Excavate/Lag - Tier 2 - Priority Area 5 | 9d | 2023-12-07 A | 2023-12-19 A | P1.SOE.540 | 100% |  |
|  | 1 | **Tier 3 (Elev. 335' - 330')** |  | 2023-10-04 | 2023-12-28 |  |  |  |
| P1.CIV.170 |  | Demo Tunnel Structure and Piping during Tier 3 Excavation | 10d | 2023-10-04 A | 2023-10-31 A | P1.CIV.230 | 100% |  |
| P1.SOE.200 |  | Excavate/Lag - Tier 3 | 10d | 2023-10-12 A | 2023-10-26 A | P1.SOE.150 FF+2d, P1.SOE.380 FF+2d, P1.CIV.170 FF, P1.UTL.190 FF | 100% |  |
| P1.SOE.560 |  | Complete Post Asbestos Abatement Excavate/Lag - Tier 3 - Priority Area 5 | 5d | 2023-12-07 A | 2023-12-19 A | P1.SOE.550 | 100% |  |
| P1.SOE.210 |  | Complete Post Asbestos Abatement Excavate/Lag - Tier 3 - Priority Area 4 | 5d | 2023-12-13 A | 2023-12-15 A | P1.UTL.260 SS+5d, P1.SOE.170 FF+2d, P1.SOE.200, P1.UTL.200, P1.SOE.580 | 100% |  |
| P1.CIV.320 |  | Complete Post Asbestos Abatement Demo Tunnel Structure and Piping during Tier 3 Excavation | 8d | 2023-12-15 A | 2023-12-28 A | P1.CIV.170, P1.SOE.510, P1.SOE.550 | 100% |  |
|  | 5 | **Tier 4 (Elev. 330' - 325')** |  | 2023-10-26 | 2024-01-31 |  |  |  |
| P1.SOE.220 |  | Excavate/Lag - Tier 4 | 10d | 2023-10-26 A | 2023-10-31 A | P1.SOE.200 | 100% |  |
| P1.SOE.520 |  | Complete Post Asbestos Abatement Excavate/Lag - Tier 4 - Priority Area 4 | 5d | 2023-12-27 A | 2024-01-31 A | P1.SOE.210, P1.SOE.220 | 100% |  |
| P1.SOE.570 |  | Complete Post Asbestos Abatement Excavate/Lag - Tier 4 - Priority Area 5 | 5d | 2023-12-28 A | 2024-01-24 A | P1.SOE.560, P1.SOE.220 | 100% |  |
|  | 3 | **Tier 5 (Elev. 325' to 322' Subgrade)** |  | 2024-01-15 | 2024-03-13 |  |  |  |
| P1.SOE.390 |  | Excavate/Lag - Tier 5 to Subgrade | 3d | 2024-01-15 A | 2024-01-31 A | P1.SOE.530, P1.SOE.520, P1.SOE.570 | 100% |  |
| P1.UTL.150 |  | Demo Existing Deep Storm and Sanitary within Excavation | 5d | 2024-02-15 A | 2024-02-16 A | P1.UTL.130, P1.UTL.260 | 100% |  |
| P1.SOE.440 |  | Backfill and Restore Subgrade | 5d | 2024-02-19 A | 2024-03-06 A | P1.SUM.120 FF, P1.UTL.150 | 100% |  |
| P1.SOE.330 |  | Underpinning - Existing Building | 10d | 2024-02-26 A | 2024-03-13 A | P1.CIV.320, P1.SOE.520 | 100% |  |
| P1.SOE.460 |  | Pull North Excavation Ramp | 5d | 2024-02-27 A | 2024-02-28 A | P1.SOE.390 | 100% |  |
| P1.SOE.430 |  | Detailed Excavation Clean Up & Turnover | 5d | 2024-02-29 A | 2024-03-06 A | P1.UTL.150 SS, P1.SOE.440 FF, P1.SOE.490, P1.SOE.460 | 100% |  |
|  | 2 | **Demolition** |  | 2023-12-13 | 2024-01-25 |  |  |  |
|  | 2 | **ACRF Garage - Demo** |  | 2023-12-13 | 2024-01-25 |  |  |  |
| P1.DMO.ACRF.100 |  | Demo - MEP Systems - All Levels | 15d | 2023-12-13 A | 2024-01-25 A | P1.DMO.ACRF.120 SS, P1.DES.420, P1.UTL.260 FF+2d, P1A.GARV.310 FF, P1.DEMO.2.110 | 100% |  |
| P1.DMO.ACRF.120 |  | Demo - P1 Level Structure (Reduced by 2 work days due to PCO 185) | 8d | 2023-12-13 A | 2023-12-20 A | BP3.024.3.100, P1A.GARV.430, P1A.GARV.320, P1.SOE.510 | 100% |  |
| P1.DMO.ACRF.130 |  | Demo - P2 Level Structure | 6d | 2023-12-21 A | 2023-12-28 A | P1.SOE.210, P1.DMO.ACRF.120, PCO.185.136 | 100% |  |
| P1.DMO.ACRF.140 |  | Demo - P3 Level Structure | 6d | 2023-12-29 A | 2024-01-10 A | P1.SOE.520, P1.DMO.ACRF.130 | 100% |  |
| P1.DMO.ACRF.150 |  | Demo - Finish Detail Demolition (Reduced by 3 work days to PCO-185 Acceleration) | 7d | 2024-01-11 A | 2024-01-25 A | P1.DMO.ACRF.100 FF, P1.DMO.ACRF.140 | 100% |  |
|  | 8 | **Structure** |  | 2023-07-20 | 2026-05-05 |  |  |  |
|  | 10 | **Deep Foundations, Below Grade Structure & U/G Utilities** |  | 2024-01-05 | 2025-12-26 |  |  |  |
|  | 2 | **Auger Cast Piles** |  | 2024-01-05 | 2024-03-07 |  |  |  |
| P1.B3.03.430 |  | Auger Cast Piles - B2 - Z3 - Priority Areas | 5d | 2024-01-05 A | 2024-01-18 A | P1.B2.03.005, P1.B3.02.010 | 100% |  |
| P1.B2.03.960 |  | Auger Cast Piles - ***East Tower Crane Foundation*** | 3d | 2024-01-08 A | 2024-01-17 A | P1.UTL.420 SS, BP3.316.3.100, P1.UTL.440, P1.SOE.390 | 100% |  |
| P1.B2.03.005 |  | Auger Cast Piles - ***West Tower Crane Foundation*** | 3d | 2024-01-22 A | 2024-01-25 A | P1.B2.03.960 | 100% |  |
| P1.B2.03.010 |  | Auger Cast Piles - B2 - Z1 | 5d | 2024-01-24 A | 2024-02-01 A | P1.B3.03.010 | 100% |  |
| P1.B2.03.030 |  | Auger Cast Piles - B2 - Z2 | 5d | 2024-01-25 A | 2024-02-29 A | P1.B2.03.010 | 100% |  |
| P1.B3.03.010 |  | Auger Cast Piles - B3 - Z1 | 5d | 2024-01-31 A | 2024-02-14 A | P1.UTL.110 FF, P1.B3.03.430 | 100% |  |
| P1.B2.03.020 |  | Auger Cast Piles - B2 - Z3 | 10d | 2024-02-15 A | 2024-03-07 A | P1.B2.03.030 FF, P1.SOE.430 FF | 100% |  |
|  | 5 | **West Tower Crane** |  | 2024-01-19 | 2025-12-26 |  |  |  |
| P1.B2.03.940 |  | Electrical - West Tower Crane Foundation | 3d | 2024-01-19 A | 2024-01-23 A | P1.B2.03.005 | 100% |  |
| P1.B2.03.910 |  | West Tower Crane Foundation | 5d | 2024-01-29 A | 2024-01-31 A | P1.CIV.130, PWS.280, P1.B2.03.940 | 100% |  |
| P1.BGS.190 |  | West Tower Crane In Operation (Structure & Precast Facade) (cal days) | 554d | 2024-02-05 A | 2025-11-15 A | P1.BGS.270 SS | 100% |  |
| P1.BGS.270 |  | Erect West Tower Crane | 5d | 2024-02-05 A | 2024-02-06 A | P1.B2.03.910 | 100% |  |
| P1.BGS.290 |  | Deconstruct West Tower Crane | 0d | 2025-11-14 A | 2025-11-15 A | P1.BGS.190 FF, P2.L11.EMMR.3.240 | 100% |  |
| P1.BGS.310 |  | FRP - Hatch - West Tower Crane | 5d | 2025-11-24 A | 2025-12-03 A | P1.BGS.290 | 100% |  |
| P1.BGS.320 |  | Waterproof - Hatch - West Tower Crane | 5d | 2025-12-12 | 2025-12-18 | P1.BGS.310 |  | 211d |
| P1.BGS.330 |  | Backfill - West Tower Crane | 5d | 2025-12-19 | 2025-12-26 | P1.BGS.320 |  | 211d |
|  | 3 | **East Tower Crane** |  | 2024-01-19 | 2025-11-17 |  |  |  |
| P1.B2.03.970 |  | UG Electrical - East Tower Crane Foundation | 3d | 2024-01-19 A | 2024-01-23 A | P1.B2.03.005 | 100% |  |
| P1.B2.03.920 |  | East Tower Crane Foundation | 5d | 2024-01-29 A | 2024-01-31 A | P1.SOE.490, P1.B2.03.970, P1.B2.03.910 | 100% |  |
| P1.BGS.180 |  | Erect East Tower Crane | 5d | 2024-02-01 A | 2024-02-05 A | P1.B2.03.920 | 100% |  |
| P1.BGS.280 |  | East Tower Crane In Operation (Structure, Precast Facade, Clearstory Glass) (cal days) | 539d | 2024-02-01 A | 2025-11-17 A | P1.BGS.180 SS | 100% |  |
| P1.BGS.300 |  | Deconstruct East Tower Crane | 0d | 2025-11-15 A | 2025-11-17 A | P2.MR.E.230, P2.L11.EMMR.3.240, P1.BGS.280 FF | 100% |  |
|  | 11 | **B3 - Foundations, SOG, Walls** |  | 2024-01-26 | 2024-04-30 |  |  |  |
| P1.B3.02.010 |  | Clean Up and Excavate - B3 - Z1 | 3d | 2024-01-26 A | 2024-01-31 A | P1.DMO.ACRF.150 | 100% |  |
| P1.B3.03.110 |  | Pile Caps - Z1 / Placement # B3.1 --- (**1st PH 1 Concrete Activity) | 5d | 2024-02-19 A | 2024-03-12 A | BP4.030.3.100, P1.B2.03.030 FF, P1.BGS.270 | 100% |  |
| P1.B3.20.010 |  | Underslab Plumbing - B3 - Z1 | 5d | 2024-02-22 A | 2024-03-07 A | P1.BIM.UG.50.100, P1.B2.03.030 FF | 100% |  |
| P1.B3.33.010 |  | Underslab Drainage System - B3 - Z1 | 10d | 2024-02-22 A | 2024-03-14 A | P1.B3.03.110 FF+5d, P1.B3.20.010 FF, WEATHER.TIA1010 | 100% |  |
| P1.B3.07.010 |  | Underslab Waterproofing - B3 - Z1 | 3d | 2024-03-15 A | 2024-03-18 A | BP4.030.3.110, P1.B3.33.010 FF+1d | 100% |  |

| ID | WBS | Task | Duration | Start | Finish | Predecessors | Complete |
| --- | --- | --- | --- | --- | --- | --- | --- |
| P1.B3.03.420 |  | SOG Grade Beams - Z1 / Placement # B3.1 | 5d | 2024-03-18 A | 2024-03-21 A | P1.B3.07.010 | 100% |
| P1.B3.03.120 |  | Column & Walls - Z1 / Placement # B3.2 | 10d | 2024-03-20 A | 2024-04-01 A | P1.B3.03.420 | 100% |
| P1.B3.03.210 |  | Deck Slabs - Shore & Reinforce - Z1 / Placement # B3.2 | 10d | 2024-04-03 A | 2024-04-11 A | P2.BIM.B3.40.100, P2.BIM.B3.40.120, P2.BIM.MEPR.30.100, P2.BIM.MEPR.40.100, P1.B3.03.120 | 100% |
| P1.B3.20.210 |  | Deck Slabs - MEP Penetrations & In-Slab Pathways - B3 - Z1 (South Mech Space) | 3d | 2024-04-10 A | 2024-04-15 A | P1.B3.03.210 SS+7d | 100% |
| P1.B3.07.110 |  | Waterproofing @ Exterior Basement Walls - B3 - Z1 | 5d | 2024-04-11 A | 2024-04-30 A | BP4.071.3.100, P1.B3.03.120 | 100% |
| P1.B3.07.120 |  | Waterproofing @ Interior Basement Walls - B3 - Z1 (South Mech Space) | 5d | 2024-04-11 A | 2024-04-16 A | P1.B3.03.410 | 100% |
| P1.B3.02.120 |  | Backfill Interior Basement Walls - B3 - Z1 | 3d | 2024-04-15 A | 2024-04-23 A | P1.B3.07.120 SS+3d, P1.B3.02.110 | 100% |
| P1.B3.03.310 |  | Decks Slabs - Inspect & Place - Z1 / Placement # B3.2 | 2d | 2024-04-15 A | 2024-04-16 A | P1.B3.03.210, P1.B3.20.210 | 100% |
| P1.B3.03.410 |  | Decks Slabs - **CURE** - Z1 / Placement # B3.2 | 7d | 2024-04-16 A | 2024-04-22 A | P1.B3.03.310 | 100% |
| P1.B3.02.110 |  | Backfill Exterior Basement Walls - B3 - Z1 | 5d | 2024-04-25 A | 2024-04-30 A | P1.B3.07.110 | 100% |
|  | 1 | **B2 - Pile Caps, Grade Beams, Pits** |  | 2024-01-31 | 2024-06-11 |  |  |
| P1.B2.03.980 |  | Pile Caps & Grade Beams - Z3 (Priority) | 5d | 2024-01-31 A | 2024-02-12 A | P1.B3.03.430 | 100% |
| P1.B2.03.110 |  | Pile Caps & Grade Beams - Z1 | 15d | 2024-02-28 A | 2024-03-11 A | P1.B3.03.110 FF, P1.SOE.330 FF, P1.B2.03.980, WEATHER.TIA1010 | 100% |
| P1.B2.03.130 |  | Pile Caps & Grade Beams - Z3 | 10d | 2024-03-11 A | 2024-04-01 A | P1.BGS.180, P1.B2.03.110 | 100% |
| P1.B2.03.040 |  | Elevator Pits - Z1 | 5d | 2024-03-28 A | 2024-04-15 A | P1.B2.07.010 SS, BP1.142.1.500 | 100% |
| P1.B2.03.120 |  | Pile Caps & Grade Beams - Z2 | 15d | 2024-03-28 A | 2024-06-11 A | P1.SUM.105 FF, P1.B2.03.130 FF, P1.B2.03.020 | 100% |
| P1.B2.07.010 |  | Waterproofing @ Elev Pits - B2 - Z1 | 10d | 2024-03-28 A | 2024-04-16 A | P1.B2.03.110 SS+5d, BP4.071.3.100 | 100% |
| P1.B2.03.050 |  | Elevator Pits - Z3 | 5d | 2024-04-22 A | 2024-04-22 A | P1.B2.03.130 SS+10d, P1.B2.07.020, P1.B2.03.040 | 100% |
| P1.B2.07.020 |  | Waterproofing @ Elev Pits - B2 - Z3 | 2d | 2024-04-22 A | 2024-04-29 A | P1.B2.03.130 SS, P1.B2.07.010 | 100% |
|  | 8 | **B2 - U/S Utilities** |  | 2024-03-27 | 2024-06-20 |  |  |
| P1.B2.20.030 |  | MEP - Deep Underground Plumbing - B2 - Z3 | 15d | 2024-03-27 A | 2024-05-07 A | P1.B2.03.130 FF, P1.B2.03.980 | 100% |
| P1.B2.20.010 |  | MEP - Deep Underground Plumbing - B2 - Z1 | 12d | 2024-04-08 A | 2024-05-14 A | P1.B2.20.030 FF+5d, P1.B2.03.020, P1.B2.03.110 | 100% |
| P1.B2.20.140 |  | MEP - Deep Underground Electrical - B2 - Z3 | 5d | 2024-04-09 A | 2024-05-07 A | P1.B2.03.130, P1.B2.03.980 | 100% |
| P1.B2.20.040 |  | MEP - Deep Underground Electrical - B2 - Z1 | 12d | 2024-04-10 A | 2024-04-30 A | P1.B3.07.110 FF, P1.B2.03.020, P1.B2.03.110, P1.B3.07.110 | 100% |
| P1.B2.20.150 |  | MEP - Deep Underground Electrical - B2 - Z1 (After B3 Backfill) | 5d | 2024-04-17 A | 2024-04-30 A | P1.B3.02.110 | 100% |
| P1.B2.20.160 |  | MEP - Deep Underground Plumbing - B2 - Z1 (After B3 Backfill) | 5d | 2024-04-17 A | 2024-04-23 A | P1.B3.02.110 | 100% |
| P1.B2.20.180 |  | Underslab Drainage System - B2 - Z3 | 13d | 2024-04-17 A | 2024-05-14 A | P1.B2.03.120 SS+2d | 100% |
| P1.B2.20.10 |  | Underslab Drainage System - B2 - Z1 | 2d | 2024-04-22 A | 2024-04-26 A | P1.B2.03.110 | 100% |
| P1.B2.20.020 |  | MEP - Deep Underground Plumbing - B2 - Z2 | 10d | 2024-04-24 A | 2024-06-20 A | P1.B2.03.120 FF+3d, P1.B2.20.010 FF+3d | 100% |
| P1.B2.20.050 |  | MEP - Deep Underground Electrical - B2 - Z2 | 15d | 2024-04-26 A | 2024-06-20 A | P1.B2.03.120 FF+3d, P1.B2.20.040 FF+3d | 100% |
| P1.B2.20.170 |  | Underslab Drainage System - B2 - Z2 | 8d | 2024-05-03 A | 2024-05-14 A | P1.B2.20.10, P1.B2.03.120 SS+2d | 100% |
|  | 4 | **B2 to L1 - SOG, Decks, Overbuild/Topping Slabs** |  | 2024-04-22 | 2025-03-19 |  |  |
|  | 1 | **Z1** |  | 2024-05-01 | 2025-03-19 |  |  |
| P1.B2.03.210 |  | SOG - Prep & Reinforce - Z1 / Placement # B2.1 | 20d | 2024-05-01 A | 2024-05-15 A | P1.B2.07.110 FF, P1.B2.03.040 FF, P1.B3.02.120 FF, P1.B2.20.150, P1.B2.20.160 | 100% |
| P1.B2.07.110 |  | Underslab Waterproofing - Z1 / Placement # B2.1 | 5d | 2024-05-01 A | 2024-05-14 A | P1.B2.20.150, P1.B2.20.160, P1.B2.20.10 | 100% |
| P1.B2.03.310 |  | SOG - Inspect & Place - Z1 / Placement # B2.1 | 3d | 2024-05-02 A | 2024-05-14 A | P1.B2.03.210 FF, P1.B2.20.110 | 100% |
| P1.B2.20.110 |  | MEP - Sub Slab / In Slab Pathways - Z1 / Placement # B2.1 | 10d | 2024-05-02 A | 2024-05-15 A | P1.B2.03.210 SS+5d, P2.BIM.B2.40.120 | 100% |
| P1.B2.03.410 |  | SOG - **CURE** - Z1 / Placement # B2.1 | 3d | 2024-05-03 A | 2024-05-19 A | P1.B2.03.310, WEATHER.TIA1030 | 100% |
| P1.B2.XXX |  | US MEP/Fine Grade/Mudmat - Utility Tunnel - Z1 | 15d | 2024-06-12 A | 2024-06-17 A | P1.B2.03.310 SS+5d, P1.B2.03.410 SS+5d, WEATHER.TIA1030 | 100% |
| P1.B2.03.240 |  | SOG - Prep & Reinforce - Utility Tunnel - Z1 | 15d | 2024-06-17 A | 2024-06-19 A | P1.B2.03.310 SS+5d, P1.B2.XXX SS+5d, P1.B2.03.410 SS+5d, WEATHER.TIA1030 | 100% |
| P1.B2.03.340 |  | SOG - Inspect & Place - Utility Tunnel - Z1 / Placement # B2.4 | 2d | 2024-06-20 A | 2024-06-20 A | P1.B2.03.240 | 100% |
| P1.B2.03.440 |  | SOG - **CURE** - Utility Tunnel - Z1 / Placement # B2.4 | 7d | 2024-06-20 A | 2024-06-27 A | P1.B2.03.340 | 100% |
| P1.B2.03.270 |  | Overbuild & Topping Slabs - B2 - Z1 | 5d | 2025-03-03 A | 2025-03-19 A | P1.1.03.610, P1.B2.03.290 | 100% |
|  | 3 | **Z2** |  | 2024-05-06 | 2024-11-13 |  |  |
| P1.B2.20.120 |  | MEP - Sub Slab / In Slab Pathways - Z2 / Placement # B2.2 | 10d | 2024-05-06 A | 2024-06-26 A | P1.B2.03.220 SS, P2.BIM.B2.40.120 | 100% |
| P1.B2.03.220 |  | SOG - Prep & Reinforce - Z2 / Placement # B2.2 | 20d | 2024-05-26 A | 2024-07-04 A | P1.B2.03.210 SS+10d, P1.B2.20.020 SS+2d, P1.B2.20.050 SS+2d, P1.B2.07.120 SS | 100% |
| P1.B2.07.120 |  | Underslab Waterproofing - Z2 / Placement # B2.2 | 5d | 2024-05-29 A | 2024-06-28 A | P1.B2.20.050 FF, P1.B2.20.020 FF, P1.B2.20.170 | 100% |
| P1.B2.03.320 |  | SOG - Inspect & Place - Z2 / Placement # B2.2 | 8d | 2024-06-03 A | 2024-07-09 A | P1.B2.03.220 SS, P1.B2.20.120 SS, WEATHER.TIA1050 | 100% |
| P1.B2.03.250 |  | SOG - Prep & Reinforce - Utility Tunnel - Z2 | 15d | 2024-06-18 A | 2024-07-09 A | P1.Z2.200 SS+5d | 100% |
| P1.Z2.200 |  | US MEP/Fine Grade/Mudmat - Utility Tunnel - Z2 | 15d | 2024-06-19 A | 2024-07-03 A | P1.B2.03.320 SS | 100% |
| P1.B2.03.350 |  | SOG - Inspect & Place - Utility Tunnel - Z2 / Placement # B2.5 | 2d | 2024-06-20 A | 2024-07-03 A | P1.B2.03.250 SS | 100% |
| P1.B2.03.450 |  | SOG - **CURE** - Utility Tunnel - Z2 / Placement # B2.5 | 7d | 2024-07-03 A | 2024-07-10 A | P1.B2.03.350 | 100% |
| P1.B2.03.420 |  | SOG - **CURE** - Z2 / Placement # B2.2 | 10d | 2024-07-09 A | 2024-07-16 A | P1.B2.03.320 | 100% |
| P1.B2.03.280 |  | Overbuild & Topping Slabs - B2 - Z2 | 5d | 2024-11-11 A | 2024-11-13 A | P1.1.03.610 | 100% |
|  | 2 | **Z3** |  | 2024-04-22 | 2024-11-15 |  |  |
| P1.B2.03.230 |  | SOG - Prep & Reinforce - Z3 / Placement # B2.3 | 20d | 2024-04-22 A | 2024-07-08 A | P1.B2.07.130 SS, P1.B2.03.050, P1.B2.20.030 SS+2d, P1.B2.20.140 SS+2d | 100% |
| P1.B2.07.130 |  | Underslab Waterproofing - Z3 / Placement # B2.3 | 5d | 2024-04-25 A | 2024-07-08 A | P1.B2.20.180 FF+1d, P1.B2.20.140 FF+1d, P1.B2.20.030 FF+1d | 100% |
| P1.B2.20.130 |  | MEP - Sub Slab / In Slab Pathways - Z3 / Placement # B2.3 | 10d | 2024-04-26 A | 2024-06-26 A | P1.B2.03.230 SS+5d, P2.BIM.B2.40.120 | 100% |
| P1.B2.03.330 |  | SOG - Inspect & Place - Z3 / Placement # B2.3 | 3d | 2024-05-02 A | 2024-07-09 A | P1.B2.03.230 SS, P1.SUM.135 FF, P1.B2.20.130 FF | 100% |
| P1.B2.03.430 |  | SOG - **CURE** - Z3 / Placement # B2.3 | 3d | 2024-05-02 A | 2024-07-16 A | P1.B2.03.330 SS+1d | 100% |
| P1.Z3.120 |  | US MEP/Fine Grade/Mudmat - Utility Tunnel - Z3 | 15d | 2024-05-14 A | 2024-06-27 A | P1.B2.03.430 SS | 100% |
| P1.B2.03.260 |  | SOG - Prep & Reinforce - Utility Tunnel - Z3 | 15d | 2024-05-21 A | 2024-07-09 A | P1.Z3.120, P1.B2.03.330 SS+4d, P1.B2.03.430 SS+4d | 100% |
| P1.B2.03.360 |  | SOG - Inspect & Place - Utility Tunnel - Z3 / Placement # B2.6 | 2d | 2024-05-28 A | 2024-07-09 A | P1.B2.03.260 FF, P1.B2.03.260 SS | 100% |
| P1.B2.03.460 |  | SOG - **CURE** - Utility Tunnel - Z3 / Placement # B2.6 | 7d | 2024-05-28 A | 2024-07-16 A | P1.B2.03.360 FF+3d | 100% |
| P1.B2.03.290 |  | Overbuild & Topping Slabs - B2 - Z3 | 5d | 2024-11-13 A | 2024-11-15 A | P1.B2.03.280 FF | 100% |
|  | 7 | **B2 to L1 - Columns, Walls, Decks** |  | 2024-04-15 | 2024-10-22 |  |  |
|  | 1 | **Z1** |  | 2024-04-22 | 2024-09-30 |  |  |
| P1.1.03.110 |  | Columns & Walls - Z1 / Placement # L1.1 | 15d | 2024-04-22 A | 2024-06-20 A | P1.B2.03.110 | 100% |
| P1.1.03.210 |  | Deck Slabs - Shore & Reinforce - Z1 / Placement # L1.1 | 20d | 2024-05-20 A | 2024-06-20 A | P2.FAD.PC.250, P2.FAD.PC.140, P2.FAD.GG.260, P1.1.03.110 FF, P1.B2.03.410 FF, P1.B2.03.410 | 100% |
| P1.B2.03.140 |  | Tunnel/Basement Walls - Utility Tunnel - Z1 / Placement # L1.4 | 15d | 2024-06-03 A | 2024-06-11 A | P1.B2.03.440 SS+2d | 100% |

| ID | WBS | Task | Duration | Start | Finish | Predecessors | Complete |
| --- | --- | --- | --- | --- | --- | --- | --- |
| Z1.L1.210 |  | Deck Slabs - MEP Penetrations & In-Slab Pathways - L1 - Z1 | 5d | 2024-06-05 A | 2024-06-25 A | P1.1.03.210 SS+2d, P2.BIM.L1.40.120 | 100% |
| P1.B2.03.170 |  | FRP Deck Slab - Utility Tunnel - Z1 | 5d | 2024-06-06 A | 2024-06-12 A | P1.B2.03.140, P1.BIM.UT.50.100 | 100% |
| P1.1.03.310 |  | Decks Slabs - Inspect & Place - Z1 / Placement # L1.1 | 2d | 2024-06-12 A | 2024-06-26 A | Z1.L1.210, Z1.L1.220, P1.1.03.210 FF | 100% |
| P1.1.03.410 |  | Decks Slabs - **CURE to Strip** - Z1 / Placement # L1.1 | 5d | 2024-06-13 A | 2024-06-28 A | P1.1.03.310 | 100% |
| P1.1.03.670 |  | Decks Slabs - **FULL CURE to Strip** - Z1 / Placement # L1.1 | 28d | 2024-06-13 A | 2024-07-11 A | P1.1.03.310 | 100% |
| Z1.L1.220 |  | Embeds - Catwalks - L1 - Z1 | 5d | 2024-06-20 A | 2024-06-20 A | P1.1.03.210 SS+7d, BP4.055.3.510 | 100% |
| P1.1.03.510 |  | Deck Slabs - Strip & Reshore - Z1 / Placement # L1.1 | 5d | 2024-07-01 A | 2024-07-08 A | P1.1.03.410 | 100% |
| P1.1.03.610 |  | Remove Reshores @ Concrete Decks Above (After #L1.1 100% Strength & L3.1 Reshore) - Z1 / Placement # L1.1 | 4d | 2024-09-30 A | 2024-09-30 A | P1.1.03.510, P1.1.03.670, P2.3.03.510 SS+3d | 100% |
| P1.1.03.640 |  | Remove Reshores @ Interst SOMD Above (After #L1.1 100% Strength & #L3.1 Reshore) - Z1 / Placement # L1.1 | 4d | 2024-09-30 A | 2024-09-30 A | P1.1.03.670, P2.3.03.510 SS | 100% |
|  | 3 | **Z2** |  | 2024-05-15 | 2024-10-03 |  |  |
| P1.1.03.120 |  | Columns & Walls - Z2 / Placement # L1.2 | 15d | 2024-05-15 A | 2024-07-23 A | P1.1.03.130 SS, P1.B2.03.120 FF | 100% |
| P1.1.03.220 |  | Deck Slabs - Shore & Reinforce - Z2 / Placement # L1.2 | 20d | 2024-06-24 A | 2024-08-01 A | P1.1.03.120 SS+5d, P2.FAD.PC.140, P1.B2.03.420 | 100% |
| P1.B2.03.150 |  | Tunnel/Basement Walls - Utility Tunnel - Z2 / Placement # L1.5 | 15d | 2024-07-16 A | 2024-08-12 A | P1.B2.03.450 | 100% |
| Z2.L1.200 |  | Deck Slabs - MEP Penetrations & In-Slab Pathways - L1 - Z2 | 20d | 2024-07-30 A | 2024-07-31 A | P1.1.03.220 SS+2d, P2.BIM.L1.40.120 | 100% |
| P1.1.03.320 |  | Decks Slabs - Inspect & Place - Z2 / Placement # L1.2 | 2d | 2024-08-05 A | 2024-08-06 A | Z2.L1.200 SS, P1.1.03.220 | 100% |
| P1.1.03.420 |  | Decks Slabs - **CURE to Strip** - Z2 / Placement # L1.2 | 5d | 2024-08-07 A | 2024-08-12 A | P1.1.03.320 | 100% |
| P1.1.03.680 |  | Decks Slabs - **FULL CURE** - Z2 / Placement # L1.2 | 28d | 2024-08-07 A | 2024-09-04 A | P1.1.03.320 | 100% |
| P1.1.03.520 |  | Deck Slabs - Strip & Reshore - Z2 / Placement # L1.2 | 5d | 2024-08-09 A | 2024-08-12 A | P1.1.03.420 | 100% |
| P1.B2.03.1000 |  | Steel Angle for Tunnel Lid - Utility Tunnel - Z2 | 10d | 2024-08-15 A | 2024-09-06 A | P1.B2.03.150 | 100% |
| P1.B2.03.180 |  | FRP Deck Slab - Utility Tunnel - Z2 | 5d | 2024-08-21 A | 2024-10-03 A | P1.UT.Z2.100 FF, P1.B2.03.1000 FF | 100% |
| P1.1.03.620 |  | Remove Reshores @ Concrete Decks Above (After #L1.2 100% Strength & L3.2 Reshore) - Z2 / Placement # L1.2 | 4d | 2024-09-30 A | 2024-09-30 A | P1.1.03.520, P1.1.03.680, P2.3.03.520 SS | 100% |
| P1.1.03.650 |  | Remove Reshores @ Interst SOMD Above (After #L1.2 100% Strength & #L3.2 Reshore) - Z2 / Placement # L1.2 | 4d | 2024-09-30 A | 2024-09-30 A | P1.1.03.520, P1.1.03.680, P1.1.03.640 FF, P2.3.03.520 SS | 100% |
|  | 2 | **Z3** |  | 2024-04-15 | 2024-10-22 |  |  |
| P1.1.03.130 |  | Columns & Walls - Z3 / Placement # L1.3 | 15d | 2024-04-15 A | 2024-07-31 A | P1.1.03.110 FF, P1.B2.03.130 | 100% |
| P1.B2.03.160 |  | Tunnel/Basement Walls - Utility Tunnel - Z3 / Placement # L1.6 | 15d | 2024-06-24 A | 2024-08-21 A | P1.B2.03.460 FF+2d, P1.SUM.145 | 100% |
| P1.1.03.230 |  | Deck Slabs - Shore & Reinforce - Z3 / Placement # L1.3 | 20d | 2024-07-29 A | 2024-08-06 A | P1.1.03.130 SS+5d, P1.B2.03.430 SS+2d, P2.FAD.PC.140 | 100% |
| Z3.L1.230 |  | Deck Slabs - MEP Penetrations & In-Slab Pathways - L1 - Z3 | 15d | 2024-07-29 A | 2024-08-13 A | P1.1.03.230 SS+2d, P2.BIM.L1.40.120 | 100% |
| Z3.L1.240 |  | Embeds - Catwalks - L1 - Z3 | 5d | 2024-08-07 A | 2024-08-13 A | P1.1.03.230 SS+7d, BP4.055.3.510 | 100% |
| P1.1.03.330 |  | Decks Slabs - Inspect & Place - Z3 / Placement # L1.3 | 2d | 2024-08-12 A | 2024-08-15 A | P1.1.03.230, Z3.L1.230, Z3.L1.240 | 100% |
| P1.1.03.430 |  | Decks Slabs - **CURE to Strip** - Z3 / Placement # L1.3 | 5d | 2024-08-16 A | 2024-08-20 A | P1.1.03.330 | 100% |
| P1.1.03.690 |  | Decks Slabs - **FULL CURE** - Z3 / Placement # L1.3 | 28d | 2024-08-16 A | 2024-09-12 A | P1.1.03.330 | 100% |
| P1.B2.03.530 |  | Deck Slabs - Strip & Reshore - Z3 / Placement # L1.3 | 5d | 2024-08-23 A | 2024-08-27 A | P1.1.03.430 | 100% |
| P1.B2.03.1010 |  | Steel Angle for Tunnel Lid - Utility Tunnel - Z3 | 10d | 2024-09-05 A | 2024-09-19 A | P1.B2.03.160 | 100% |
| P1.B2.03.190 |  | FRP Deck Slab - Utility Tunnel - Z3 | 5d | 2024-09-16 A | 2024-10-10 A | P1.B2.03.1010, P1.UT.Z3.100 | 100% |
| P1.1.03.630 |  | Remove Reshores @ Concrete Decks Above (After #L1.3 100% Strength & #L3.3 Reshore) - Z3 / Placement # L1.3 | 5d | 2024-10-09 A | 2024-10-22 A | P1.B2.03.530, P1.1.03.690, P2.3.03.330 | 100% |
| P1.1.03.660 |  | Remove Reshores @ Interst SOMD Above (After #L1.3 100% Strength & #L3.3 Reshore) - Z3 / Placement # L1.3 | 5d | 2024-10-09 A | 2024-10-22 A | P1.1.03.650, P1.B2.03.530, P1.1.03.690, P2.3.03.330 | 100% |
|  | 9 | **Exterior Waterproofing and Backfill** |  | 2024-07-16 | 2025-01-15 |  |  |
| P1.BG.WP.100 |  | Waterproofing @ Tunnel/Basement Walls - Z1 | 10d | 2024-07-16 A | 2024-10-31 A | P1.UT.Z1.110 FF | 100% |
| P1.BG.WP.110 |  | Waterproofing @ Tunnel/Basement Walls - Z2 | 3d | 2024-08-07 A | 2024-10-29 A | P1.UT.Z2.110 SS | 100% |
| P1.BG.WP.120 |  | Waterproofing @ Tunnel/Basement Walls - Z3 | 10d | 2024-09-23 A | 2024-11-21 A | P1.B2.03.190 SS | 100% |
| P1.BG.SD.150 |  | Install Upper Zone Storm Manholes & Piping | 10d | 2024-10-10 A | 2024-11-15 A | P1.BG.WP.120 SS | 100% |
| P1.BG.BF.130 |  | Backfill Tunnel/Basement Walls - Z2 | 10d | 2024-10-21 A | 2024-11-22 A | P1.1.03.680, P1.BG.BF.100 SS, P1.BG.WP.110, P1.UTL.400 FF | 100% |
| P1.BG.BF.170 |  | Backfill Tunnel/Basement Walls - Z3 | 5d | 2024-10-23 A | 2024-12-31 A | P1.BG.WP.120 SS, P1.BG.BF.130 SS, P0.CRC.160 FF | 100% |
| P1.BG.BF.100 |  | Backfill Tunnel/Basement Walls - Z1 | 10d | 2024-10-29 A | 2024-11-27 A | P1.1.03.670, P1.BG.WP.100 | 100% |
| P1.BG.BF.160 |  | Complete Backfill to Grade | 10d | 2024-11-25 A | 2025-01-15 A | P1.BG.BF.100, P1.BG.BF.130, P1.BG.SD.150, P1.BG.BF.170 FF | 100% |
|  | 4 | **Tunnels** |  | 2023-07-20 | 2026-05-05 |  |  |
|  | 2 | **Utility** |  | 2023-07-20 | 2026-04-07 |  |  |
| P1.CIV.160 |  | Close Isolation Valves in Tunnel/Mech Room/Cut Cap & Safe - Tunnel MEP | 20d | 2023-07-20 A | 2023-08-28 A | P1.DEMO.2.100 | 100% |
| P1.CIV.230 |  | Build Separation Barriers at Tunnel Ends | 15d | 2023-09-01 A | 2023-09-11 A | P1.CIV.160 | 100% |
|  | 4 | **Procurement & Fabrication** |  | 2024-06-03 | 2024-09-10 |  |  |
| P1.UT.3.140 |  | Fabricate MEP Racks - Utility Tunnel - Z3 | 20d | 2024-06-03 A | 2024-09-02 A | P1.DES.420, P1.BIM.UT.50.100, BP1.232.3.100 | 100% |
| P1.UT.3.150 |  | MEP Rack Delivery - Utility Tunnel - Z3 | 2d | 2024-07-29 A | 2024-09-02 A | P1.UT.3.140 SS | 100% |
| P1.UT.3.100 |  | Fabricate MEP Racks - Utility Tunnel - Z1 | 20d | 2024-08-16 A | 2024-09-02 A | P1.DES.420, P1.UT.3.140 FF | 100% |
| P1.UT.3.110 |  | MEP Rack Delivery - Utility Tunnel - Z1 | 2d | 2024-08-16 A | 2024-09-02 A | P1.UT.3.100 SS+5d | 100% |
| P1.UT.3.120 |  | Fabricate MEP Racks - Utility Tunnel - Z2 | 20d | 2024-09-02 A | 2024-09-06 A | P1.UT.3.100, P1.DES.420 | 100% |
| P1.UT.3.130 |  | MEP Rack Delivery - Utility Tunnel - Z2 | 2d | 2024-09-09 A | 2024-09-10 A | P1.UT.3.120 | 100% |
|  | 2 | **Piping & Precast** |  | 2024-06-12 | 2025-06-18 |  |  |
|  | 1 | **Z1** |  | 2024-06-12 | 2025-06-18 |  |  |
| P1.UT.Z1.110 |  | Deck Slabs - **CURE** - Utility Tunnel - Z1 | 7d | 2024-06-12 A | 2024-06-19 A | P1.B2.03.170 | 100% |
| P1.UT.Z1.100 |  | Lift and Place Rack - Utility Tunnel - Z1 | 4d | 2024-09-04 A | 2024-09-19 A | P1.B2.03.140, P1.UT.3.110 | 100% |
| P1.UT.Z1.120 |  | Fit Racks - Utility Tunnel - Z1 | 4d | 2024-09-04 A | 2024-09-19 A | P1.UT.Z1.110 | 100% |
| P1.UT.Z1.130 |  | Rack CHWS / CHWR and Balance Piping - Utility Tunnel - Z1 | 10d | 2024-09-10 A | 2024-10-11 A | P1.UT.Z1.120, P1.SUM.175 FF | 100% |
| P1.UT.Z1.140 |  | Weld CHWS and CHWR Piping - Utility Tunnel - Z1.B | 20d | 2024-10-14 A | 2024-11-29 A | P1.UT.Z1.130 | 100% |
| P1.UT.Z1.150 |  | Weld CHWS and CHWR Piping - Utility Tunnel - Z1.A | 20d | 2024-11-11 A | 2025-01-20 A | P1.UT.Z1.140 | 100% |
| P1.UT.Z1.160 |  | Weld Balance Piping - Utility Tunnel - Z1 | 20d | 2025-02-18 A | 2025-06-18 A | P1.SUM.185 FF, P1.UT.Z1.150 | 100% |
|  | 2 | **Z2** |  | 2024-08-22 | 2025-06-18 |  |  |
| P1.UT.Z2.110 |  | Deck Slabs - **CURE** - Utility Tunnel - Z2 | 7d | 2024-08-22 A | 2024-09-11 A | P1.B2.03.180 SS | 100% |
| P1.UT.Z2.100 |  | Lift and Place Rack - Utility Tunnel - Z2 | 7d | 2024-09-10 A | 2024-09-12 A | P1.B2.03.150, P1.UT.3.130 | 100% |
| P1.UT.Z2.120 |  | Fit Racks - Utility Tunnel - Z2 | 7d | 2024-09-10 A | 2024-09-12 A | P1.UT.Z2.110 | 100% |
| P1.UT.Z2.130 |  | Rack CHWS / CHWR and Balance Piping - Utility Tunnel - Z2 | 10d | 2024-09-12 A | 2024-10-14 A | P1.UT.Z2.120, P1.SUM.175 FF | 100% |

| ID | WBS | Task | Duration | Start | Finish | Predecessors | Complete | Total float |
| --- | --- | --- | --- | --- | --- | --- | --- | --- |
| P1.UT.Z2.150 |  | Weld CHWS and CHWR Piping - Utility Tunnel - Z2.C | 18d | 2024-12-11 A | 2025-01-20 A | P1.UT.Z1.150 SS, P1.UT.Z2.130 | 100% |  |
| P1.UT.Z2.140 |  | Weld CHWS and CHWR Piping - Utility Tunnel - Z2.B | 6d | 2025-01-13 A | 2025-01-20 A | P1.UT.Z3.150, P1.UT.Z2.130 | 100% |  |
| P1.UT.Z2.160 |  | Weld CHWS and CHWR Piping - Utility Tunnel - Z2.A | 10d | 2025-01-21 A | 2025-02-21 A | P1.UT.Z2.140, P1.UT.Z2.150 | 100% |  |
| P1.UT.Z2.170 |  | Weld Balance Piping - Utility Tunnel - Z2 | 20d | 2025-02-18 A | 2025-06-18 A | P1.SUM.185 FF, P1.UT.Z2.140 | 100% |  |
|  | 3 | **Z3** |  | 2024-07-31 | 2025-06-18 |  |  |  |
| P1.UT.Z3.100 |  | Lift and Place Rack - Utility Tunnel - Z3 | 10d | 2024-07-31 A | 2024-09-20 A | P1.B2.03.160 SS+2d, P1.UT.3.150 SS | 100% |  |
| P1.UT.Z3.110 |  | Deck Slabs - **CURE** - Utility Tunnel - Z3 | 7d | 2024-09-17 A | 2024-09-24 A | P1.B2.03.190 SS, P1.UT.Z1.110 | 100% |  |
| P1.UT.Z3.120 |  | Fit Racks - Utility Tunnel - Z3 | 10d | 2024-09-17 A | 2024-09-20 A | P1.UT.Z3.110 SS | 100% |  |
| P1.UT.Z3.130 |  | Rack CHWS / CHWR and Balance Piping - Utility Tunnel - Z3 | 12d | 2024-09-23 A | 2024-10-22 A | P1.UT.Z3.120, P1.SUM.175 FF | 100% |  |
| P1.UT.Z3.140 |  | Weld CHWS and CHWR Piping - Utility Tunnel - Z3.C | 12d | 2024-10-23 A | 2024-11-29 A | P1.UT.Z3.130 | 100% |  |
| P1.UT.Z3.150 |  | Weld CHWS and CHWR Piping - Utility Tunnel - Z3.B | 20d | 2024-11-20 A | 2025-01-10 A | P1.UT.Z3.140 | 100% |  |
| P1.UT.Z3.160 |  | Weld Balance Piping - Utility Tunnel - Z3 | 20d | 2025-01-07 A | 2025-06-18 A | P1.UT.Z3.140, P1.SUM.185 FF | 100% |  |
|  | 6 | **Mechanical Fit Out & Finishes** |  | 2025-02-22 | 2026-04-07 |  |  |  |
| P2.UTT.390 |  | Painting - CHWS and CHWR - Utility Tunnel | 15d | 2025-02-22 A | 2025-03-21 A | P1.UT.Z2.160 | 100% |  |
| P2.UTT.400 |  | Insulate CHWS and CHWR - Utility Tunnel | 15d | 2025-02-22 A | 2025-04-25 A | P2.UTT.390 SS+5d | 100% |  |
| P2.UTT.120 |  | Pressure Testing - CHWS and CHWR - Utility Tunnel | 10d | 2025-02-28 A | 2025-04-21 A | P1.UT.Z2.160, P1.B2.03.270 FF | 100% |  |
| P2.UTT.130 |  | Flushing - CHWS and CHWR - Utility Tunnel | 5d | 2025-04-22 A | 2025-04-25 A | P2.UTT.120 | 100% |  |
| P2.UTT.110 |  | Chemical Treatment - CHWS and CHWR - Utility Tunnel | 5d | 2025-04-25 A | 2025-04-25 A | P2.UTT.130 | 100% |  |
| P2.UTT.410 |  | Reinstate CHWS and CHWR Loop - Utility Tunnel | 0d | 2025-04-28 A | 2025-04-28 A | P2.UTT.400, P2.UTT.390, P2.UTT.110 | 100% |  |
| P2.UTT.380 |  | Testing and Insualtion of Balance Piping - Utility Tunnel | 20d | 2025-07-22 A | 2025-12-05 | P1.UT.Z1.160, P1.UT.Z3.160, P1.UT.Z2.170 | 75% | 94d |
| P2.UTT.420 |  | Fire Suppression - Utility Tunnel | 10d | 2025-09-22 A | 2025-09-29 A | P2.UTT.380, P1.UTL.390 | 100% |  |
| P2.UTT.430 |  | Lighting, Power, Comm, Fire Alarm - Utility Tunnel | 15d | 2025-12-08 | 2025-12-29 | P2.UTT.380 |  | 94d |
| P2.UTT.140 |  | Test/Outages/Restore Services - Utility Tunnel | 10d | 2025-12-30 | 2026-01-13 | P2.UTT.430, P2.UTT.410, P2.UTT.380, P2.UTT.420, P2SUM.218 FF |  | 94d |
| P2.UTT.300 |  | Interior Finishes - Pipe ID - Utility Tunnel | 10d | 2026-01-14 | 2026-01-27 | P2.UTT.140 |  | 94d |
| P2.UTT.340 |  | Interior Finishes, Ceiling & Walls - Utility Tunnel | 20d | 2026-01-28 | 2026-02-24 | P2.UTT.300, P1.BGS.300 |  | 94d |
| P2.UTT.350 |  | Interior Finishes - Paint - Utility Tunnel | 10d | 2026-02-25 | 2026-03-10 | P2.UTT.340 |  | 94d |
| P2.UTT.360 |  | Interior Finishes - Flooring - Utility Tunnel | 10d | 2026-03-11 | 2026-03-24 | P2.UTT.350 |  | 94d |
| P2.UTT.370 |  | Interior Finishes - Device Trim-Out - Utility Tunnel | 10d | 2026-03-25 | 2026-04-07 | P2.UTT.360 |  | 94d |
|  | 1 | **Pedestrian** |  | 2024-09-09 | 2026-05-05 |  |  |  |
|  | 1 | **Structure - East** |  | 2024-09-09 | 2024-12-13 |  |  |  |
| P1.PED.210 |  | Slab on Grade - Pedestrian Tunnel - East Half | 5d | 2024-09-09 A | 2024-09-17 A | P1.PED.310 | 100% |  |
| P1.PED.310 |  | Prep Subgrade & Under Slab Waterproofing - Pedestrian Tunnel - East Half | 2d | 2024-09-09 A | 2024-09-10 A | P1.B2.03.160, P1.B3.07.120, P1.B3.07.110 | 100% |  |
| P1.PED.220 |  | FRP Walls - Pedestrian Tunnel - East Half | 5d | 2024-09-26 A | 2024-10-02 A | P1.PED.210 | 100% |  |
| P1.PED.290 |  | Walls - **CURE** - Pedestrian Tunnel - East Half | 7d | 2024-10-02 A | 2024-10-09 A | P1.PED.220 | 100% |  |
| P1.PED.230 |  | Decks Slabs - Pedestrian Tunnel - East Half | 7d | 2024-10-10 A | 2024-10-18 A | P1.PED.290 | 100% |  |
| P1.PED.320 |  | Deck Slabs - **CURE** - Pedestrian Tunnel - East Half | 7d | 2024-10-18 A | 2024-10-31 A | P1.PED.230 | 100% |  |
| P1.PED.240 |  | Waterproofing/Backfill - Pedestrian Tunnel - East Half | 15d | 2024-10-22 A | 2024-12-02 A | P1.PED.320 | 100% |  |
| P1.PED.250 |  | Construct Fire Dept Access Lane through East Half Work Zone | 4d | 2024-12-09 A | 2024-12-13 A | P1.PED.240 | 100% |  |
| P1.PED.260 |  | Signage/Shift/Close Convent Road | 1d | 2024-12-13 A | 2024-12-13 A | P1.PED.250 | 100% |  |
|  | 2 | **Structure - West** |  | 2024-12-16 | 2025-05-30 |  |  |  |
| P1.PED.110 |  | Clear Utilities at Pedestrian Tunnel Work Zone | 3d | 2024-12-16 A | 2024-12-20 A | P1.PED.260, P1.CIV.110 SS | 100% |  |
| P1.PED.160 |  | Soldier Piles - Pedestrian Tunnel - West Half | 3d | 2024-12-16 A | 2024-12-19 A | P1.PED.110 | 100% |  |
| P1.PED.100 |  | Excavate/Lag - Pedestrian Tunnel - West Half - Tiers 1 & 2 | 4d | 2024-12-20 A | 2024-12-31 A | P1.PED.160 | 100% |  |
| P1.PED.170 |  | Whaler/Support Beams - Pedestrian Tunnel - West Half | 5d | 2024-12-31 A | 2025-01-10 A | P1.PED.100 | 100% |  |
| P1.PED.340 |  | Excavate/Lag - Pedestrian Tunnel - West Half - Tiers 3 & 4 to Subgrade | 4d | 2025-02-05 A | 2025-02-21 A | P1.PED.170 | 100% |  |
| P1.PED.280 |  | Prep Subgrade & Under Slab Waterproofing - Pedestrian Tunnel - West Half | 2d | 2025-02-24 A | 2025-02-25 A | P1.PED.340 | 100% |  |
| P1.PED.120 |  | Slab on Grade - Pedestrian Tunnel - West Half | 5d | 2025-02-25 A | 2025-02-27 A | P1.PED.280 | 100% |  |
| P1.PED.135 |  | Walls - **CURE** - Pedestrian Tunnel - West Half | 5d | 2025-03-06 A | 2025-03-25 A | P1.PED.130 | 100% |  |
| P1.PED.140 |  | Deck Slabs - Pedestrian Tunnel - West Half | 3d | 2025-03-11 A | 2025-03-27 A | P1.PED.135 | 100% |  |
| P1.PED.130 |  | FRP Walls - Pedestrian Tunnel - West Half | 5d | 2025-03-17 A | 2025-03-20 A | P1.PED.120 | 100% |  |
| P1.PED.330 |  | Deck Slabs - **CURE** - Pedestrian Tunnel - West Half | 10d | 2025-03-28 A | 2025-04-25 A | P1.PED.140 | 100% |  |
| P1.PED.150 |  | Waterproofing/Backfill - Pedestrian Tunnel - West Half | 3d | 2025-04-15 A | 2025-04-30 A | P1.PED.330 SS+14d | 100% |  |
| P1.PED.180 |  | Signage/Shift/Reconfigure Fire Dept Access on Convent Drive | 8d | 2025-05-26 A | 2025-05-30 A | P1.PED.150, P1.SUM.115 FF | 100% |  |
|  | 3 | **Finishes** |  | 2026-03-11 | 2026-05-05 |  |  |  |
| P2.UTT.310 |  | Pedestrian Tunnel MEP Rough in Tunnel | 20d | 2026-03-11 | 2026-04-07 | P1.PED.180, P2.UTT.350 |  | 201d |
| P2.UTT.320 |  | Pedestrian Tunnel Interior Finishes, Pipe ID, Painting | 20d | 2026-04-08 | 2026-05-05 | P2.UTT.310 |  | 201d |
| P2.UTT.330 |  | Pedestrian Tunnel MEP Rough in PPG | 20d | 2026-04-08 | 2026-05-05 | P2.UTT.310 |  | 204d |
|  | 15 | **Phase 2 - Construction** |  | 2015-08-11 | 2028-09-05 |  |  |  |
|  | 2 | **PH 2 STRUCTURE** |  | 2024-06-27 | 2025-07-30 |  |  |  |
|  | 1 | **L2 - Columns, Walls, Decks (Working from L1)** |  | 2024-06-27 | 2025-07-22 |  |  |  |
|  | 1 | **Z1 - Placement # L2.1** |  | 2024-06-27 | 2024-11-04 |  |  |  |
| P2.2.03.840 |  | Demo Facade Brick, Glazing, and Precast - Z1 / L2 | 2d | 2024-06-27 A | 2024-08-09 A | P1.1.03.410 SS+1d | 100% |  |
| P2.2.03.110 |  | Columns & Walls - Z1 / Placement # L2.1 --- (**1st Phase 2 Activity**) | 5d | 2024-07-24 A | 2024-08-05 A | P1.1.03.310, P0.C.CRC.180, P2A.NIH.130 | 100% |  |
| P2.2.03.210 |  | Deck Slabs - Shore & Reinforce - Z1 / Placement # L2.1 | 7d | 2024-07-30 A | 2024-08-12 A | P0.C.CRC.230, P2.2.03.110 FF, P2.2.03.840 FF+2d, P2.2.03.000 SS | 100% |  |
| P2.2.03.000 |  | Structural Handoff - Phase 1 to Phase 2 | 0d | 2024-07-31 A | 2024-07-31 A | P1.1.03.410, BP4.030.2.140, P2.2.03.110 SS | 100% |  |
| P2.2.20.210 |  | Deck Slabs - MEP Penetrations & In-Slab Pathways - Z1 / L2.1 | 5d | 2024-08-01 A | 2024-08-07 A | P2.BIM.L2.40.120 SS, P2.BIM.L2.40.100, WEATHER.TIA1070, P2.2.03.210 SS+2d | 100% |  |
| P2.2.03.310 |  | Decks Slabs - Inspect & Place - Z1 / Placement # L2.1 | 2d | 2024-08-14 A | 2024-08-15 A | P2.2.20.210, P2.2.03.210, WEATHER.TIA1070 | 100% |  |
| P2.2.03.410 |  | Deck Slabs - **CURE** - Z1 / Placement # L2.1 | 28d | 2024-08-16 A | 2024-09-02 A | P2.2.03.310 | 100% |  |
| P2.2.03.510 |  | Deck Slabs - Strip & Reshore - Z1 / Placement # L2.1 | 5d | 2024-08-16 A | 2024-08-22 A | P2.2.03.310 | 100% |  |
| P2.2.03.1040 |  | Steel Column Bracing - Column-to-Slab Edge at interstial floor - Z1 / L2 | 5d | 2024-08-23 A | 2024-08-26 A | P2.2.03.310 | 100% |  |

| ID | WBS | Task | Duration | Start | Finish | Predecessors | Complete |
| --- | --- | --- | --- | --- | --- | --- | --- |
| P2.2.03.990 |  | Steel Column Bracing - Column-to-Column at interstial floor - Z1 / L2 | 5d | 2024-08-23 A | 2024-09-06 A | P2.2.03.110, P2.2.03.000 SS | 100% |
| P2.2.03.610 |  | Remove Reshores @ Concrete Decks Above (After #L2.1 100% Strength & #L4.1 Reshore) - Z1 / Placement # L2.1 | 2d | 2024-11-01 A | 2024-11-04 A | P2.2.03.410, P2.2.03.510, P2.4.03.510 SS+3d | 100% |
|  | 2 | **Z2 - Placement # L2.2** |  | 2024-08-05 | 2024-11-11 |  |  |
| P2.2.03.850 |  | Demo Facade Brick, Glazing, and Precast - Z2 / L2 | 2d | 2024-08-05 A | 2024-08-06 A | P1.1.03.420 SS+1d | 100% |
| P2.2.03.120 |  | Columns & Walls - Z2 / Placement # L2.2 | 5d | 2024-08-06 A | 2024-08-12 A | P1.1.03.320, P1.1.03.310, P2.2.03.110 | 100% |
| P2.2.03.220 |  | Deck Slabs - Shore & Reinforce - Z2 / Placement # L2.2 | 6d | 2024-08-09 A | 2024-08-16 A | P2.2.03.850 FF+2d, P2.2.03.120 SS+3d | 100% |
| P2.2.20.220 |  | Deck Slabs - MEP Penetrations & In-Slab Pathways - Z2 / L2.2 | 4d | 2024-08-13 A | 2024-08-16 A | P2.BIM.L2.40.120, P2.BIM.L2.40.100, P2.2.03.220 SS+2d | 100% |
| P2.2.03.320 |  | Decks Slabs - Inspect & Place - Z2 / Placement # L2.2 | 2d | 2024-08-19 A | 2024-08-20 A | P2.2.03.220, P2.2.20.220 | 100% |
| P2.2.03.420 |  | Deck Slabs - **CURE** - Z2 / Placement # L2.2 | 28d | 2024-08-21 A | 2024-09-11 A | P2.2.03.320 | 100% |
| P2.2.03.520 |  | Deck Slabs - Strip & Reshore - Z2 / Placement # L2.2 | 5d | 2024-08-21 A | 2024-08-27 A | P2.2.03.320 | 100% |
| P2.2.03.1000 |  | Steel Column Bracing - Column-to-Column at interstial floor - Z2 / L2 | 5d | 2024-08-23 A | 2024-09-12 A | P2.2.03.120 | 100% |
| P2.2.03.1030 |  | Steel Column Bracing - Column-to-Slab Edge at interstial floor - Z2 / L2 | 5d | 2024-08-26 A | 2024-08-26 A | P2.2.03.320 | 100% |
| P2.2.03.620 |  | Remove Reshores @ Concrete Decks Above (After #L2.2 100% Strength & #L4.2 Reshore) - Z2 / Placement # L2.2 | 2d | 2024-11-05 A | 2024-11-11 A | P2.2.03.610, P2.2.03.420, P2.2.03.520, P2.4.03.520 SS+3d | 100% |
|  | 3 | **Z3 - Placement # L2.3** |  | 2024-08-15 | 2025-07-22 |  |  |
| P2.2.03.860 |  | Demo Facade Brick, Glazing, and Precast - Z3 / L2 | 2d | 2024-08-15 A | 2024-08-16 A | P1.1.03.430 SS+1d | 100% |
| P2.2.03.130 |  | Columns & Walls - Z3 / Placement # L2.3 | 5d | 2024-08-16 A | 2024-08-22 A | P1.1.03.330, P2.2.03.120 | 100% |
| P2.2.03.230 |  | Deck Slabs - Shore & Reinforce - Z3 / Placement # L2.3 | 7d | 2024-08-21 A | 2024-08-26 A | P2.2.03.860 FF+2d, P2.2.03.130 SS+3d | 100% |
| P2.2.03.830 |  | Deck Slabs - MEP Penetrations & In-Slab Pathways - Z3 / L2.3 | 5d | 2024-08-23 A | 2024-09-11 A | P2.BIM.L2.40.120, P2.BIM.L2.40.100, P2.2.03.230 SS+2d | 100% |
| P2.2.03.330 |  | Decks Slabs - Inspect & Place - Z3 / Placement # L2.3 | 2d | 2024-08-26 A | 2024-09-12 A | P2.2.03.230, P2.2.03.830 FF | 100% |
| P2.2.03.1010 |  | Steel Column Bracing - Column-to-Column at interstial floor - Z3 / L2 | 5d | 2024-09-12 A | 2024-09-17 A | P2.2.03.130 | 100% |
| P2.2.03.430 |  | Deck Slabs - **CURE** - Z3 / Placement # L2.3 | 28d | 2024-09-12 A | 2024-10-11 A | P2.2.03.330 | 100% |
| P2.2.03.1020 |  | Steel Column Bracing - Column-to-Slab Edge at interstial floor - Z3 / L2 | 5d | 2024-09-17 A | 2024-09-20 A | P2.2.03.330 | 100% |
| P2.2.03.530 |  | Deck Slabs - Strip & Reshore - Z3 / Placement # L2.3 | 5d | 2024-10-01 A | 2024-10-04 A | P2.2.03.330 | 100% |
| P2.2.03.630 |  | Remove Reshores @ Concrete Decks Above (After #L2.3 100% Strength & #L4.3 Reshore) - Z3 / Placement # L2.3 | 3d | 2024-11-20 A | 2024-11-26 A | P2.2.I.03.010, P2.2.03.530, P2.2.03.430, P2.4.03.530 SS+3d | 100% |
| P2.2.03.730 |  | Erect - Stair 2-8 Steel (Working Off L1 Slab) / After #L2.3 100% Strength | 5d | 2025-07-14 A | 2025-07-22 A | P2.8.03.330 | 100% |
|  | 12 | **Level 2 - Interstitial** |  | 2024-11-13 | 2025-02-06 |  |  |
| P2.2.I.03.010 |  | Remove Reshores - L1 to L3 Slab @ Interst Areas (After #L3.1 100% Strength & #L5.1 Reshore) / Placement # L2.INT.1 | 3d | 2024-11-13 A | 2024-11-18 A | P2.5.03.420 SS+14d, P2.5.03.410 SS+14d | 100% |
| P2.2.I.03.020 |  | Remove Reshores - L1 to L3 Slab @ Interst Areas (After #L3.3 100% Strength & #L5.3 Reshore) / Placement # L2.INT.2 | 3d | 2024-11-19 A | 2024-11-21 A | P2.5.03.430 SS+14d | 100% |
| P2.2.I.05.110 |  | Erect - Interstitial Steel - Hangers (Working Off L1 Slab) / Placement # L2.INT.1 | 10d | 2024-11-20 A | 2024-12-20 A | P2.2.I.03.010, BP7.051.3.100 | 100% |
| P2.2.I.05.120 |  | Erect - Interstitial Steel - Hangers (Working Off L1 Slab) / Placement # L2.INT.2 | 10d | 2024-11-25 A | 2025-01-22 A | P2.2.I.03.020, P2.2.I.03.020 FF | 100% |
| P2.2.I.05.210 |  | Erect - Interstitial Steel - Framing and Decking/Detailing (Working Off L1 Slab) / Placement # L2.INT.1 | 20d | 2024-11-25 A | 2024-12-20 A | BP7.053.3.100, P2.2.I.05.110 SS+5d | 100% |
| P2.2.I.05.220 |  | Erect - Interstitial Steel - Framing and Decking/Detailing (Working Off L1 Slab) / Placement # L2.INT.2 | 20d | 2024-12-23 A | 2025-01-22 A | P2.2.I.05.120 SS | 100% |
| P2.2.I.20.210 |  | SOMD - MEP Penetrations & Block Outs / Placement # L2.INT.1 | 5d | 2025-01-02 A | 2025-01-09 A | P2.2.I.05.210 | 100% |
| P2.2.I.03.210 |  | SOMD - Prep & Reinforce / Placement # L2.INT.1 | 5d | 2025-01-10 A | 2025-01-15 A | P2.2.I.05.210 | 100% |
| P2.2.I.20.220 |  | SOMD - MEP Penetrations & Block Outs / Placement # L2.INT.2 | 5d | 2025-01-22 A | 2025-01-30 A | P2.2.I.05.220 | 100% |
| P2.2.I.03.310 |  | SOMD - Inspect & Place / Placement # L2.INT.1 | 2d | 2025-01-29 A | 2025-01-29 A | P2.2.I.03.210, P2.2.I.20.210 | 100% |
| P2.2.I.03.220 |  | SOMD - Prep & Reinforce / Placement # L2.INT.2 | 5d | 2025-02-03 A | 2025-02-05 A | P2.2.I.05.220 | 100% |
| P2.2.I.03.320 |  | SOMD - Inspect & Place / Placement # L2.INT.2 | 2d | 2025-02-05 A | 2025-02-06 A | P2.2.I.03.220, P2.2.I.20.220 | 100% |
|  | 5 | **L3 - Columns, Walls, Decks (Working from L2)** |  | 2024-08-19 | 2025-07-24 |  |  |
|  | 1 | **Z1 - Placement # L3.1** |  | 2024-08-19 | 2024-11-20 |  |  |
| P2.3.03.110 |  | Columns & Walls - Z1 / Placement # L3.1 | 5d | 2024-08-19 A | 2024-08-23 A | P2.2.03.310 | 100% |
| P2.3.03.210 |  | Deck Slabs - Shore & Reinforce - Z1 / Placement # L3.1 | 9d | 2024-08-21 A | 2024-09-17 A | P2.2.03.870 FF+2d, P2.3.03.110 SS+2d, P2.2.03.990 FF, P2.2.03.1040 FF | 100% |
| P2.2.03.870 |  | Demo Facade Brick, Glazing, and Precast - Z1 / L3 | 2d | 2024-08-22 A | 2024-08-23 A | P1.1.03.310 | 100% |
| P2.3.20.210 |  | Deck Slabs - MEP Penetrations & In-Slab Pathways - Z1 / L3.1 | 7d | 2024-08-23 A | 2024-09-16 A | P2.BIM.L3.40.120 FF, P2.BIM.L3.40.100, P2.3.03.210 SS+2d | 100% |
| P2.3.03.310 |  | Decks Slabs - Inspect & Place - Z1 / Placement # L3.1 | 2d | 2024-09-10 A | 2024-09-24 A | P2.3.03.210, P2.3.20.210 | 100% |
| P2.3.03.410 |  | Deck Slabs - **CURE** - Z1 / Placement # L3.1 | 28d | 2024-09-11 A | 2024-10-10 A | P2.3.03.310 | 100% |
| P2.3.03.510 |  | Deck Slabs - Strip & Reshore - Z1 / Placement # L3.1 | 7d | 2024-09-27 A | 2024-10-09 A | P2.3.03.310 | 100% |
| P2.3.03.610 |  | Remove Reshores @ Concrete Decks Above (After #L3.1 100% Strength & #L5.1 Reshore) - Z1 / Placement # L3.1 | 4d | 2024-11-14 A | 2024-11-19 A | P2.3.03.410, P2.3.03.510, P2.5.03.510 SS+3d | 100% |
| P2.3.03.630 |  | Remove Reshores @ Interst SOMD Area (After #L3.1 100% Strength & #L5.1 Reshore) - Z1 / Placement # L3.1 | 4d | 2024-11-14 A | 2024-11-20 A | P2.3.03.610, P2.5.03.510 SS+3d | 100% |
|  | 2 | **Z2 - Placement # L3.2** |  | 2024-08-22 | 2024-11-27 |  |  |
| P2.2.03.880 |  | Demo Facade Brick, Glazing, and Precast - Z2 / L3 | 2d | 2024-08-22 A | 2024-08-23 A | P1.1.03.320 | 100% |
| P2.3.03.120 |  | Columns & Walls - Z2 / Placement # L3.2 | 5d | 2024-08-28 A | 2024-09-23 A | P2.2.03.320, P2.3.03.110 | 100% |
| P2.3.03.220 |  | Deck Slabs - Shore & Reinforce - Z2 / Placement # L3.2 | 7d | 2024-09-05 A | 2024-09-17 A | P2.2.03.1030, P2.2.03.880 FF+2d, P2.2.03.1000 FF, P2.3.03.120 SS+3d | 100% |
| P2.3.20.220 |  | Deck Slabs - MEP Penetrations & In-Slab Pathways - Z2 / L3.2 | 5d | 2024-09-10 A | 2024-09-17 A | P2.BIM.L3.40.100, P2.BIM.L3.40.120, P2.3.03.220 SS+2d, WEATHER.TIA1080 | 100% |
| P2.3.03.320 |  | Decks Slabs - Inspect & Place - Z2 / Placement # L3.2 | 2d | 2024-09-19 A | 2024-09-26 A | P2.3.03.220, P2.3.20.220, WEATHER.TIA1080 | 100% |
| P2.3.03.420 |  | Deck Slabs - **CURE** - Z2 / Placement # L3.2 | 28d | 2024-09-19 A | 2024-10-17 A | P2.3.03.320 | 100% |
| P2.3.03.520 |  | Deck Slabs - Strip & Reshore - Z2 / Placement # L3.2 | 7d | 2024-09-27 A | 2024-10-09 A | P2.3.03.320 | 100% |
| P2.3.03.640 |  | Remove Reshores @ Interst SOMD Area (After #L3.2 100% Strength & #L5.2 Reshore) - Z2 / Placement # L3.2 | 3d | 2024-11-14 A | 2024-11-21 A | P2.3.03.660, P2.5.03.520 SS+3d | 100% |
| P2.3.03.660 |  | Remove Reshores@ Concrete Decks Above (After #L3.2 100% Strength & #L5.2 Reshore) - Z2 / Placement # L3.2 | 3d | 2024-11-14 A | 2024-11-27 A | P2.3.03.520, P2.3.03.420, P2.3.03.630, P2.5.03.520 SS+3d | 100% |
|  | 3 | **Z3 - Placement # L3.3** |  | 2024-08-22 | 2025-07-24 |  |  |
| P2.2.03.890 |  | Demo Facade Brick, Glazing, and Precast - Z3 / L3 | 2d | 2024-08-22 A | 2024-08-23 A | P1.1.03.430, P1.1.03.330 | 100% |
| P2.3.03.230 |  | Deck Slabs - Shore & Reinforce - Z3 / Placement # L3.3 | 9d | 2024-09-05 A | 2024-09-24 A | P2.2.03.890 FF+2d, P2.2.03.1020 FF+2d, P2.2.03.1010 FF, P2.3.03.130 SS+3d | 100% |
| P2.3.20.230 |  | Deck Slabs - MEP Penetrations & In-Slab Pathways - Z3 / L3.3 | 7d | 2024-09-10 A | 2024-09-23 A | P2.BIM.L3.40.100, P2.BIM.L3.40.120, P2.3.03.230 SS+2d | 100% |
| P2.3.03.130 |  | Columns & Walls - Z3 / Placement # L3.3 | 5d | 2024-09-23 A | 2024-10-01 A | P2.2.03.330, P2.3.03.120 | 100% |
| P2.3.03.330 |  | Decks Slabs - Inspect & Place - Z3 / Placement # L3.3 | 2d | 2024-09-25 A | 2024-10-10 A | P2.3.03.230, P2.3.20.230 | 100% |
| P2.3.03.430 |  | Deck Slabs - **CURE** - Z3 / Placement # L3.3 | 28d | 2024-09-26 A | 2024-10-10 A | P2.3.03.330 SS | 100% |
| P2.3.03.530 |  | Deck Slabs - Strip & Reshore - Z3 / Placement # L3.3 | 7d | 2024-10-15 A | 2024-10-22 A | P2.3.03.330 | 100% |
| P2.3.03.620 |  | Remove Reshores @ Concrete Decks Above (After #L3.3 100% Strength & #L5.3 Reshore) - Z3 / Placement # L3.3 | 3d | 2024-11-14 A | 2024-11-26 A | P2.3.03.530, P2.3.03.430, P2.3.03.640, P2.5.03.530 SS+3d | 100% |
| P2.3.03.650 |  | Remove Reshores @ Interst SOMD Area (After #L3.3 100% Strength & #L5.3 Reshore) - Z3 / Placement # L3.3 | 3d | 2024-11-14 A | 2024-11-21 A | P2.3.03.620, P2.5.03.530 SS+3d | 100% |
| P2.3.03.730 |  | Erect - Stair 2-8 Steel / After #L3.3 100% Strength | 5d | 2025-07-23 A | 2025-07-24 A | P2.2.03.730 | 100% |

| ID | WBS | Task | Duration | Start | Finish | Predecessors | Complete |
| --- | --- | --- | --- | --- | --- | --- | --- |
|  | 2 | **L4 - Columns, Walls, Decks (Working from L3)** |  | 2024-09-18 | 2025-07-25 |  |  |
|  | 1 | **Z1 - Placement # L4.1** |  | 2024-09-18 | 2024-12-06 |  |  |
| P2.4.03.110 |  | Columns & Walls - Z1 / Placement # L4.1 | 5d | 2024-09-18 A | 2024-09-30 A | P2.3.03.310 | 100% |
| P2.4.03.900 |  | Demo Facade Brick, Glazing, and Precast - Z1 / L4 | 2d | 2024-09-23 A | 2024-09-30 A | P2.3.03.310 | 100% |
| P2.4.03.210 |  | Deck Slabs - Shore & Reinforce - Z1 / Placement # L4.1 | 7d | 2024-09-24 A | 2024-10-14 A | P2.4.03.900 FF+2d, P2.4.03.110 SS+3d | 100% |
| P2.4.20.210 |  | Deck Slabs - MEP Penetrations & In-Slab Pathways - Z1 / L4.1 | 5d | 2024-10-01 A | 2024-10-14 A | P2.BIM.L4.40.120 FF, P2.BIM.L4.40.100, P2.4.03.210 FF | 100% |
| P2.4.03.310 |  | Decks Slabs - Inspect & Place - Z1 / Placement # L4.1 | 2d | 2024-10-07 A | 2024-10-15 A | P2.4.20.210, P2.4.03.210 | 100% |
| P2.4.03.410 |  | Deck Slabs - **CURE** - Z1 / Placement # L4.1 | 28d | 2024-10-15 A | 2024-11-12 A | P2.4.03.310 | 100% |
| P2.4.03.740 |  | Steel Column Bracing - Column-to-Column at Interstial Floor - Z1 / L4 | 5d | 2024-10-17 A | 2024-10-23 A | P2.4.03.110 | 100% |
| P2.4.03.750 |  | Steel Column Bracing - Column-to-Slab Edge at Interstial Floor - Z1 / L4 | 5d | 2024-10-17 A | 2024-10-23 A | P2.4.03.510 FF+1d | 100% |
| P2.4.03.510 |  | Deck Slabs - Strip & Reshore - Z1 / Placement # L4.1 | 5d | 2024-10-22 A | 2024-10-30 A | P2.4.03.310 FF+2d | 100% |
| P2.4.03.610 |  | Remove Reshores @ Concrete Decks Above (After #L4.1 100% Strength & #L6.1 Reshore) - Z1 / Placement # L4.1 | 4d | 2024-12-02 A | 2024-12-06 A | P2.4.03.510, P2.4.03.410, P2.6.03.510 SS+3d | 100% |
|  | 2 | **Z2 - Placement # L4.2** |  | 2024-09-24 | 2024-12-28 |  |  |
| P2.4.03.120 |  | Columns & Walls - Z2 / Placement # L4.2 | 5d | 2024-09-24 A | 2024-09-30 A | P2.3.03.320, P2.4.03.110 SS | 100% |
| P2.4.03.910 |  | Demo Facade Brick, Glazing, and Precast - Z2 / L4 | 2d | 2024-09-30 A | 2024-10-11 A | P2.3.03.320, WEATHER.TIA1090 | 100% |
| P2.4.03.220 |  | Deck Slabs - Shore & Reinforce - Z2 / Placement # L4.2 | 6d | 2024-10-01 A | 2024-10-14 A | P2.4.03.910 FF+2d, P2.4.03.120 SS+3d, WEATHER.TIA1090 | 100% |
| P2.4.20.220 |  | Deck Slabs - MEP Penetrations & In-Slab Pathways - Z2 / L4.2 | 4d | 2024-10-07 A | 2024-10-14 A | P2.BIM.L4.40.120 FF, P2.BIM.L4.40.100, P2.4.03.220 SS+2d, WEATHER.TIA1090 | 100% |
| P2.4.03.320 |  | Decks Slabs - Inspect & Place - Z2 / Placement # L4.2 | 2d | 2024-10-09 A | 2024-10-15 A | P2.4.03.220, P2.4.20.220, WEATHER.TIA1090 | 100% |
| P2.4.03.420 |  | Deck Slabs - **CURE** - Z2 / Placement # L4.2 | 28d | 2024-10-15 A | 2024-11-12 A | P2.4.03.320 | 100% |
| P2.4.03.760 |  | Steel Column Bracing - Column-to-Column at Interstial Floor - Z2 / L4 | 5d | 2024-10-17 A | 2024-10-23 A | P2.4.03.120 | 100% |
| P2.4.03.770 |  | Steel Column Bracing - Column-to-Slab Edge at Interstial Floor - Z2 / L4 | 5d | 2024-10-17 A | 2024-10-23 A | P2.4.03.320 | 100% |
| P2.4.03.520 |  | Deck Slabs - Strip & Reshore - Z2 / Placement # L4.2 | 5d | 2024-10-22 A | 2024-11-06 A | P2.4.03.320 | 100% |
| P2.4.03.620 |  | Remove Reshores @ Concrete Decks Above (After #L4.2 100% Strength & #L6.2 Reshore) - Z2 / Placement # L4.2 | 3d | 2024-12-23 A | 2024-12-28 A | P2.4.03.520, P2.4.03.420, P2.4.03.610, P2.6.03.520 SS+3d | 100% |
|  | 3 | **Z3 - Placement # L4.3** |  | 2024-09-24 | 2025-07-25 |  |  |
| P2.4.03.130 |  | Columns & Walls - Z3 / Placement # L4.3 | 5d | 2024-09-24 A | 2024-10-17 A | P2.3.03.330 SS, P2.4.03.120 SS | 100% |
| P2.4.03.920 |  | Demo Facade Brick, Glazing, and Precast - Z3 / L4 | 2d | 2024-09-30 A | 2024-10-11 A | P2.3.03.330 SS | 100% |
| P2.4.03.230 |  | Deck Slabs - Shore & Reinforce - Z3 / Placement # L4.3 | 7d | 2024-10-01 A | 2024-10-17 A | P2.4.03.920 FF+2d, P2.4.03.130 SS+3d | 100% |
| P2.4.20.230 |  | Deck Slabs - MEP Penetrations & In-Slab Pathways - Z3 / L4.3 | 5d | 2024-10-03 A | 2024-10-21 A | P2.BIM.L4.40.120 FF, P2.BIM.L4.40.100, P2.4.03.230 SS+2d | 100% |
| P2.4.03.330 |  | Decks Slabs - Inspect & Place - Z3 / Placement # L4.3 | 2d | 2024-10-14 A | 2024-10-22 A | P2.4.20.230, P2.4.03.230 | 100% |
| P2.4.03.430 |  | Deck Slabs - **CURE** - Z3 / Placement # L4.3 | 28d | 2024-10-22 A | 2024-11-19 A | P2.4.03.330 | 100% |
| P2.4.03.780 |  | Steel Column Bracing - Column-to-Column at Interstial Floor - Z3 / L4 | 5d | 2024-10-24 A | 2024-10-29 A | P2.4.03.130 | 100% |
| P2.4.03.790 |  | Steel Column Bracing - Column-to-Slab Edge at Interstial Floor - Z3 / L4 | 5d | 2024-10-24 A | 2024-10-29 A | P2.4.03.330 | 100% |
| P2.4.03.530 |  | Deck Slabs - Strip & Reshore - Z3 / Placement # L4.3 | 5d | 2024-10-30 A | 2024-11-12 A | P2.4.03.330 | 100% |
| P2.4.03.630 |  | Remove Reshores @ Concrete Decks Above (After #L4.3 100% Strength & #L6.3 Reshore) - Z3 / Placement # L4.3 | 3d | 2025-01-13 A | 2025-01-15 A | P2.4.03.430, P2.4.03.530, P2.6.03.530 SS+3d, P2.4.I.03.010 SS | 100% |
| P2.4.03.730 |  | Erect - Stair 2-8 Steel / After #L4.3 100% Strength | 5d | 2025-07-24 A | 2025-07-25 A | P2.3.03.730 | 100% |
|  | 4 | **Level 4 - Interstitial** |  | 2024-12-23 | 2025-03-05 |  |  |
| P2.4.I.03.010 |  | Remove Reshores - L3 to L5 Slab @ Interst Areas (After #L5.1 100% Strength & #L7.1 Reshore) / Placement # L4.INT.1 | 3d | 2024-12-23 A | 2025-01-14 A | P2.7.03.410 SS+14d, P2.7.03.420 SS+14d | 100% |
| P2.4.I.03.020 |  | Remove Reshores - L3 to L5 Slab @ Interst Areas (After #L5.3 100% Strength & #L7.3 Reshore) / Placement # L4.INT.2 | 3d | 2024-12-23 A | 2025-01-14 A | P2.7.03.430 SS+14d | 100% |
| P2.4.I.05.110 |  | Erect - Interstitial Steel - Hangers (Working Off L3 Slab) / Placement # L4.INT.1 | 10d | 2025-01-20 A | 2025-02-17 A | P2.4.I.03.010 | 100% |
| P2.4.I.05.120 |  | Erect - Interstitial Steel - Hangers (Working Off L3 Slab) / Placement # L4.INT.2 | 10d | 2025-01-20 A | 2025-02-17 A | P2.4.I.03.020 | 100% |
| P2.4.I.05.210 |  | Erect - Interstitial Steel - Framing and Decking/Detailing (Working Off L3 Slab) / Placement # L4.INT.1 | 20d | 2025-01-27 A | 2025-02-10 A | P2.4.I.05.110 SS+5d | 100% |
| P2.4.I.05.220 |  | Erect - Interstitial Steel - Framing and Decking/Detailing (Working Off L3 Slab) / Placement # L4.INT.2 | 20d | 2025-01-27 A | 2025-02-10 A | P2.4.I.05.120 | 100% |
| P2.4.I.20.210 |  | SOMD - MEP Penetrations & Block Outs / Placement # L4.INT.1 | 5d | 2025-02-18 A | 2025-02-25 A | P2.4.I.05.210 | 100% |
| P2.4.I.03.210 |  | SOMD - Prep & Reinforce / Placement # L4.INT.1 | 5d | 2025-02-19 A | 2025-02-26 A | P2.4.I.05.210 | 100% |
| P2.4.I.20.220 |  | SOMD - MEP Penetrations & Block Outs / Placement # L4.INT.2 | 5d | 2025-02-19 A | 2025-02-24 A | P2.4.I.05.220 | 100% |
| P2.4.I.03.220 |  | SOMD - Prep & Reinforce / Placement # L4.INT.2 | 5d | 2025-02-24 A | 2025-03-04 A | P2.4.I.05.220 | 100% |
| P2.4.I.03.310 |  | SOMD - Inspect & Place / Placement # L4.INT.1 | 2d | 2025-02-25 A | 2025-02-26 A | P2.4.I.20.210, P2.4.I.03.210 | 100% |
| P2.4.I.03.320 |  | SOMD - Inspect & Place / Placement # L4.INT.2 | 2d | 2025-03-05 A | 2025-03-05 A | P2.4.I.03.220, P2.4.I.20.220 | 100% |
|  | 6 | **L5 - Columns, Walls, Decks (Working from L4)** |  | 2024-09-23 | 2025-07-28 |  |  |
|  | 1 | **Z1 - Placement # L5.1** |  | 2024-09-23 | 2025-01-25 |  |  |
| P2.2.03.930 |  | Demo Facade Brick, Glazing, and Precast - Z1 / L5 | 2d | 2024-09-23 A | 2024-09-26 A | P2.3.03.310 | 100% |
| P2.5.20.210 |  | Deck Slabs - MEP Penetrations & In-Slab Pathways - Z1 / L5.1 | 7d | 2024-10-11 A | 2024-10-23 A | P2.BIM.L5.40.100, P2.5.03.210 SS+2d, P2.BIM.L5.40.120 SS | 100% |
| P2.5.03.210 |  | Deck Slabs - Shore & Reinforce - Z1 / Placement # L5.1 | 9d | 2024-10-16 A | 2024-10-28 A | P2.2.03.930 FF+2d, P2.5.03.110 FF+1d, P2.4.03.740 FF+3d, P2.4.03.750 FF+2d | 100% |
| P2.5.03.110 |  | Columns & Walls - Z1 / Placement # L5.1 | 5d | 2024-10-18 A | 2024-10-28 A | P2.4.03.310 | 100% |
| P2.5.03.310 |  | Decks Slabs - Inspect & Place - Z1 / Placement # L5.1 | 2d | 2024-10-22 A | 2024-10-29 A | P2.5.03.210, P2.5.20.210 | 100% |
| P2.5.03.410 |  | Deck Slabs - **CURE** - Z1 / Placement # L5.1 | 28d | 2024-10-29 A | 2024-11-26 A | P2.5.03.310 | 100% |
| P2.5.03.510 |  | Deck Slabs - Strip & Reshore - Z1 / Placement # L5.1 | 7d | 2024-11-06 A | 2024-11-12 A | P2.5.03.310 | 100% |
| P2.5.03.640 |  | Remove Reshores @ Interst SOMD Area (After #L5.1 100% Strength & #L7.1 Reshore) - Z1 / Placement # L5.1 | 4d | 2024-12-23 A | 2025-01-25 A | P2.5.03.610, P2.7.03.510 SS+3d | 100% |
| P2.5.03.610 |  | Remove Reshores @ Concrete Decks Above (After #L5.1 100% Strength & #L7.1 Reshore) - Z1 / Placement # L5.1 | 4d | 2025-01-02 A | 2025-01-08 A | P2.5.03.410, P2.5.03.510, P2.7.03.510 SS+3d | 100% |
|  | 2 | **Z2 - Placement # L5.2** |  | 2024-09-30 | 2025-01-29 |  |  |
| P2.2.03.940 |  | Demo Facade Brick, Glazing, and Precast - Z2 / L5 | 2d | 2024-09-30 A | 2024-10-21 A | P2.3.03.320 | 100% |
| P2.5.03.120 |  | Columns & Walls - Z2 / Placement # L5.2 | 5d | 2024-10-08 A | 2024-10-24 A | P2.3.03.320, P2.4.03.320 FF+1d | 100% |
| P2.5.03.220 |  | Deck Slabs - Shore & Reinforce - Z2 / Placement # L5.2 | 7d | 2024-10-23 A | 2024-11-04 A | P2.4.03.760, P2.2.03.940 FF+2d, P2.4.03.770 FF+2d, P2.5.03.120 SS+3d | 100% |
| P2.5.20.220 |  | Deck Slabs - MEP Penetrations & In-Slab Pathways - Z2 / L5.2 | 5d | 2024-10-29 A | 2024-11-06 A | P2.BIM.L5.40.120 SS, P2.BIM.L5.40.100, P2.5.03.220 SS+2d | 100% |
| P2.5.03.320 |  | Decks Slabs - Inspect & Place - Z2 / Placement # L5.2 | 2d | 2024-10-31 A | 2024-11-07 A | P2.5.03.220 FF, P2.5.20.220 FF+2d | 100% |
| P2.5.03.420 |  | Deck Slabs - **CURE** - Z2 / Placement # L5.2 | 28d | 2024-10-31 A | 2024-11-12 A | P2.5.03.320 SS+1d | 100% |
| P2.5.03.520 |  | Deck Slabs - Strip & Reshore - Z2 / Placement # L5.2 | 6d | 2024-11-06 A | 2024-11-14 A | P2.5.03.320 | 100% |
| P2.5.03.650 |  | Remove Reshores @ Interst SOMD Area (After #L5.2 100% Strength & #L7.2 Reshore) - Z2 / Placement # L5.2 | 4d | 2025-01-07 A | 2025-01-09 A | P2.5.03.620, P2.7.03.420 | 100% |
| P2.5.03.620 |  | Remove Reshores @ Concrete Decks Above (After #L5.2 100% Strength & #L7.2 Reshore) - Z2 / Placement # L5.2 | 3d | 2025-01-13 A | 2025-01-29 A | P2.5.03.420, P2.5.03.520, P2.5.03.640 | 100% |
|  | 3 | **Z3 - Placement # L5.3** |  | 2024-10-07 | 2025-07-28 |  |  |

| ID | WBS | Task | Duration | Start | Finish | Predecessors | Complete |
| --- | --- | --- | --- | --- | --- | --- | --- |
| P2.2.03.950 |  | Demo Facade Brick, Glazing, and Precast - Z3 / L5 | 2d | 2024-10-07 A | 2024-10-21 A | P2.3.03.330 SS | 100% |
| P2.5.03.130 |  | Columns & Walls - Z3 / Placement # L5.3 | 5d | 2024-10-18 A | 2024-10-31 A | P2.4.03.330, P2.5.03.120 | 100% |
| P2.5.03.230 |  | Deck Slabs - Shore & Reinforce - Z3 / Placement # L5.3 | 9d | 2024-10-31 A | 2024-11-12 A | P2.4.03.780, P2.2.03.950 FF+2d, P2.4.03.790 FF+2d, P2.5.03.130 SS+3d | 100% |
| P2.5.20.230 |  | Deck Slabs - MEP Penetrations & In-Slab Pathways - Z3 / L5.3 | 7d | 2024-11-01 A | 2024-11-13 A | P2.BIM.L5.40.120 FF, P2.BIM.L5.40.100, P2.5.03.230 SS+1d | 100% |
| P2.5.03.330 |  | Decks Slabs - Inspect & Place - Z3 / Placement # L5.3 | 2d | 2024-11-06 A | 2024-11-14 A | P2.5.03.230, P2.5.20.230 | 100% |
| P2.5.03.430 |  | Deck Slabs - **CURE** - Z3 / Placement # L5.3 | 28d | 2024-11-07 A | 2024-11-18 A | P2.5.03.330 | 100% |
| P2.5.03.530 |  | Deck Slabs - Strip & Reshore - Z3 / Placement # L5.3 | 7d | 2024-11-13 A | 2024-11-22 A | P2.5.03.330 | 100% |
| P2.5.03.660 |  | Remove Reshores @ Interst SOMD Area (After #L5.3 100% Strength & #L7.3 Reshore) - Z3 / Placement # L5.3 | 3d | 2025-01-13 A | 2025-01-29 A | P2.5.03.530, P2.5.03.430, P2.5.03.650, P2.7.03.430 | 100% |
| P2.5.03.630 |  | Remove Reshores @ Concrete Decks Above (After #L5.3 100% Strength & #L7.3 Reshore) - Z3 / Placement # L5.3 | 3d | 2025-01-14 A | 2025-02-28 A | P2.5.03.660 | 100% |
| P2.5.03.730 |  | Erect - Stair 2-8 Steel / After #L5.3 100% Strength | 5d | 2025-07-25 A | 2025-07-28 A | P2.4.03.730 | 100% |
|  | 3 | **L6 - Columns, Walls, Decks (Working from L5)** |  | 2024-10-28 | 2025-07-29 |  |  |
|  | 1 | **Z1 - Placement # L6.1** |  | 2024-10-28 | 2025-02-05 |  |  |
| P2.6.03.110 |  | Columns & Walls - Z1 / Placement # L6.1 | 5d | 2024-10-28 A | 2024-11-04 A | P2.5.03.310 FF+2d | 100% |
| P2.6.03.960 |  | Demo Facade Brick, Glazing, and Precast - Z1 / L6 | 2d | 2024-10-30 A | 2024-11-07 A | P2.5.03.310 | 100% |
| P2.6.03.210 |  | Deck Slabs - Shore & Reinforce - Z1 / Placement # L6.1 | 7d | 2024-11-04 A | 2024-11-12 A | P2.6.03.110 SS+3d, P2.6.03.960 SS+2d | 100% |
| P2.6.20.210 |  | Deck Slabs - MEP Penetrations & In-Slab Pathways - Z1 / L6.1 | 5d | 2024-11-11 A | 2024-11-19 A | P2.BIM.L6.40.120 FF, P2.BIM.L6.40.100, P2.6.03.210 SS+2d | 100% |
| P2.6.03.310 |  | Decks Slabs - Inspect & Place - Z1 / Placement # L6.1 | 2d | 2024-11-19 A | 2024-11-20 A | P2.6.03.210, P2.6.20.210 | 100% |
| P2.6.03.410 |  | Deck Slabs - **CURE** - Z1 / Placement # L6.1 | 28d | 2024-11-20 A | 2024-11-27 A | P2.6.03.310 | 100% |
| P2.6.03.740 |  | Steel Column Bracing - Column-to-Column at Interstial Floor - Z1 / L6 | 5d | 2024-11-22 A | 2024-11-27 A | P2.6.03.110 | 100% |
| P2.6.03.510 |  | Deck Slabs - Strip & Reshore - Z1 / Placement # L6.1 | 2d | 2024-11-25 A | 2024-12-20 A | P2.6.03.310 | 100% |
| P2.6.03.750 |  | Steel Column Bracing - Column-to-Slab Edge at Interstial Floor - Z1 / L6 | 5d | 2024-11-25 A | 2024-11-27 A | P2.6.03.510 SS | 100% |
| P2.6.03.610 |  | Remove Reshores @ All Areas (After #L6.1 100% Strength & #L8.1 Reshore) - Z1 / Placement # L6.1 | 4d | 2025-02-03 A | 2025-02-05 A | P2.6.03.410, P2.6.03.510, P2.8.03.510 SS+3d | 100% |
|  | 2 | **Z2 - Placement # L6.2** |  | 2024-11-06 | 2025-02-14 |  |  |
| P2.6.03.120 |  | Columns & Walls - Z2 / Placement # L6.2 | 5d | 2024-11-06 A | 2024-11-21 A | P2.5.03.320 FF+2d, P2.6.03.110 SS | 100% |
| P2.6.03.970 |  | Demo Facade Brick, Glazing, and Precast - Z2 / L6 | 2d | 2024-11-06 A | 2024-11-15 A | P2.5.03.320 SS+1d | 100% |
| P2.6.03.220 |  | Deck Slabs - Shore & Reinforce - Z2 / Placement # L6.2 | 7d | 2024-11-12 A | 2024-11-19 A | P2.6.03.970 FF+2d, P2.6.03.120 SS+3d | 100% |
| P2.6.20.220 |  | Deck Slabs - MEP Penetrations & In-Slab Pathways - Z2 / L6.2 | 5d | 2024-11-14 A | 2024-11-21 A | P2.BIM.L6.40.120 FF, P2.BIM.L6.40.100, P2.6.03.220 SS+2d | 100% |
| P2.6.03.320 |  | Decks Slabs - Inspect & Place - Z2 / Placement # L6.2 | 2d | 2024-11-21 A | 2024-11-26 A | P2.6.03.220, P2.6.20.220 | 100% |
| P2.6.03.420 |  | Deck Slabs - **CURE** - Z2 / Placement # L6.2 | 28d | 2024-11-22 A | 2024-12-02 A | P2.6.03.320 | 100% |
| P2.6.03.760 |  | Steel Column Bracing - Column-to-Column at Interstial Floor - Z2 / L6 | 5d | 2024-11-22 A | 2024-11-27 A | P2.6.03.120 | 100% |
| P2.6.03.770 |  | Steel Column Bracing - Column-to-Slab Edge at Interstial Floor - Z2 / L6 | 5d | 2024-11-22 A | 2024-11-27 A | P2.6.03.520 SS | 100% |
| P2.6.03.520 |  | Deck Slabs - Strip & Reshore - Z2 / Placement # L6.2 | 5d | 2024-11-29 A | 2024-12-20 A | P2.6.03.320 | 100% |
| P2.6.03.620 |  | Remove Reshores @ All Areas (After #L6.2 100% Strength & #L8.2 Reshore) - Z2 / Placement # L6.2 | 3d | 2025-02-10 A | 2025-02-14 A | P2.6.03.520, P2.6.03.420, P2.6.03.610, P2.8.03.520 SS+3d | 100% |
|  | 3 | **Z3 - Placement # L6.3** |  | 2024-11-13 | 2025-07-29 |  |  |
| P2.6.03.130 |  | Columns & Walls - Z3 / Placement # L6.3 | 5d | 2024-11-13 A | 2024-11-27 A | P2.5.03.330 FF+2d, P2.6.03.120 SS | 100% |
| P2.6.03.230 |  | Deck Slabs - Shore & Reinforce - Z3 / Placement # L6.3 | 7d | 2024-11-14 A | 2024-11-27 A | P2.6.03.980 FF+2d, P2.6.03.130 SS+3d | 100% |
| P2.6.03.980 |  | Demo Facade Brick, Glazing, and Precast - Z3 / L6 | 2d | 2024-11-18 A | 2024-11-22 A | P2.5.03.330 | 100% |
| P2.6.20.230 |  | Deck Slabs - Deck Slabs - MEP Penetrations & In-Slab Pathways - Z3 / L6.3 | 5d | 2024-11-20 A | 2024-12-04 A | P2.BIM.L6.40.120 FF, P2.BIM.L6.40.100, P2.6.03.230 SS+2d | 100% |
| P2.6.03.330 |  | Decks Slabs - Inspect & Place - Z3 / Placement # L6.3 | 3d | 2024-12-03 A | 2024-12-05 A | P2.6.03.230, P2.6.20.230 | 100% |
| P2.6.03.430 |  | Deck Slabs - **CURE** - Z3 / Placement # L6.3 | 28d | 2024-12-06 A | 2025-01-02 A | P2.6.03.330 | 100% |
| P2.6.03.780 |  | Steel Column Bracing - Column-to-Column at Interstial Floor - Z3 / L6 | 5d | 2024-12-09 A | 2024-12-12 A | P2.6.03.130 FF | 100% |
| P2.6.03.790 |  | Steel Column Bracing - Column-to-Slab Edge at Interstial Floor - Z3 / L6 | 5d | 2024-12-09 A | 2024-12-12 A | P2.6.03.530 SS+1d | 100% |
| P2.6.03.530 |  | Deck Slabs - Strip & Reshore - Z3 / Placement # L6.3 | 5d | 2024-12-11 A | 2024-12-18 A | P2.6.03.330 | 100% |
| P2.6.03.630 |  | Remove Reshores @ All Areas (After #L6.3 100% Strength & #L8.3 Reshore) - Z3 / Placement # L6.3 | 3d | 2025-02-12 A | 2025-02-28 A | P2.6.03.430, P2.6.03.530, P2.6.03.620, P2.8.03.530 SS+3d | 100% |
| P2.6.03.730 |  | Erect - Stair 2-8 Steel / After #L6.3 100% Strength | 5d | 2025-07-28 A | 2025-07-29 A | P2.5.03.730 | 100% |
|  | 4 | **Level 6 - Interstitial** |  | 2025-03-10 | 2025-04-24 |  |  |
| P2.6.I.03.010 |  | Remove Reshores - L5 to L7 Slab @ Interst Areas (After #L7.1 100% Strength & #MR/PS.1 Reshore) / Placement # L6.INT.1 | 10d | 2025-03-10 A | 2025-03-11 A | P2.MR/PS.03.420 SS+14d, P2.MR/PS.03.410 SS+14d | 100% |
| P2.6.I.05.210 |  | Erect - Interstitial Steel - Framing and Decking/Detailing (Working Off L5 Slab) / Placement # L6.INT.1 | 10d | 2025-03-13 A | 2025-03-28 A | P2.6.I.03.010 | 100% |
| P2.6.I.03.020 |  | Remove Reshores - L5 to L7 Slab @ Interst Areas (After #L7.3 100% Strength & #MR/PS.3 Reshore) / Placement # L6.INT.2 | 3d | 2025-03-24 A | 2025-03-31 A | P2.6.I.03.010 | 100% |
| P2.6.I.05.110 |  | Erect - Interstitial Steel - Hangers (Working Off L5 Slab) / Placement # L6.INT.1 | 8d | 2025-03-31 A | 2025-04-07 A | P2.6.I.05.210, P2.6.I.03.010 SS+5d | 100% |
| P2.6.I.05.220 |  | Erect - Interstitial Steel - Framing and Decking/Detailing (Working Off L5 Slab) / Placement # L6.INT.2 | 10d | 2025-03-31 A | 2025-04-15 A | P2.6.I.03.020 | 100% |
| P2.6.I.20.210 |  | SOMD - MEP Penetrations & Block Outs / Placement # L6.INT.1 | 5d | 2025-04-08 A | 2025-04-14 A | P2.6.I.05.210, P2.6.I.05.110 | 100% |
| P2.6.I.05.120 |  | Erect - Interstitial Steel - Hangers (Working Off L5 Slab) / Placement # L6.INT.2 | 10d | 2025-04-10 A | 2025-04-14 A | P2.6.I.05.220, P2.6.I.03.020 SS+5d | 100% |
| P2.6.I.20.220 |  | SOMD - MEP Penetrations & Block Outs / Placement # L6.INT.2 | 3d | 2025-04-15 A | 2025-04-16 A | P2.6.I.05.120 FF | 100% |
| P2.6.I.03.210 |  | SOMD - Prep & Reinforce / Placement # L6.INT.1 | 5d | 2025-04-16 A | 2025-04-21 A | P2.6.I.05.210, P2.6.I.20.210 | 100% |
| P2.6.I.03.310 |  | SOMD - Inspect & Place / Placement # L6.INT.1 | 2d | 2025-04-21 A | 2025-04-22 A | P2.6.I.03.210, P2.6.I.20.210 | 100% |
| P2.6.I.03.220 |  | SOMD - Prep & Reinforce / Placement # L6.INT.2 | 2d | 2025-04-22 A | 2025-04-23 A | P2.6.I.20.220 | 100% |
| P2.6.I.03.320 |  | SOMD - Inspect & Place / Placement # L6.INT.2 | 2d | 2025-04-23 A | 2025-04-24 A | P2.6.I.03.220 | 100% |
|  | 7 | **L7 - Columns, Walls, Decks (Working from L6)** |  | 2024-11-20 | 2025-07-30 |  |  |
|  | 1 | **Z1 - Placement # L7.1** |  | 2024-11-20 | 2025-03-11 |  |  |
| P2.7.03.110 |  | Columns & Walls - Z1 / Placement # L7.1 | 5d | 2024-11-20 A | 2024-11-27 A | P2.6.03.310 FF+2d | 100% |
| P2.7.03.210 |  | Deck Slabs - Shore & Reinforce - Z1 / Placement # L7.1 | 9d | 2024-11-21 A | 2024-12-06 A | P2.6.03.750, P2.6.03.740, P2.7.03.110 SS+3d | 100% |
| P2.7.20.210 |  | Deck Slabs - MEP Penetrations & In-Slab Pathways - Z1 / L7.1 | 7d | 2024-12-02 A | 2024-12-06 A | P2.BIM.L7.40.120 FF, P2.BIM.L7.40.100, P2.7.03.210 SS+2d | 100% |
| P2.7.03.310 |  | Decks Slabs - Inspect & Place - Z1 / Placement # L7.1 | 2d | 2024-12-10 A | 2024-12-11 A | P2.7.20.210 FF, P2.7.03.210, P2.FAD.FM.200 FF, WEATHER.TIA1110 | 100% |
| P2.7.03.410 |  | Deck Slabs - **CURE** - Z1 / Placement # L7.1 | 28d | 2024-12-11 A | 2025-01-07 A | P2.7.03.310 | 100% |
| P2.7.03.510 |  | Deck Slabs - Strip & Reshore - Z1 / Placement # L7.1 | 7d | 2025-01-22 A | 2025-01-30 A | P2.7.03.310 | 100% |
| P2.7.03.610 |  | Remove Reshores @ All Areas (After #L7.1 100% Strength & #MR/PS.1 Reshore) - Z1 / Placement # L7.1 | 4d | 2025-03-03 A | 2025-03-11 A | P2.7.03.510, P2.7.03.410, P2.MR/PS.03.510 SS | 100% |
|  | 2 | **Z2 - Placement # L7.2** |  | 2024-11-26 | 2025-03-20 |  |  |
| P2.7.03.120 |  | Columns & Walls - Z2 / Placement # L7.2 | 5d | 2024-11-26 A | 2024-12-05 A | P2.6.03.320, P2.7.03.110 | 100% |
| P2.7.03.220 |  | Deck Slabs - Shore & Reinforce - Z2 / Placement # L7.2 | 7d | 2024-12-02 A | 2024-12-16 A | P2.6.03.770 FF, P2.6.03.760, P2.7.03.120 SS+3d | 100% |

| ID | WBS | Task | Duration | Start | Finish | Predecessors | Complete |
| --- | --- | --- | --- | --- | --- | --- | --- |
| P2.7.20.220 |  | Deck Slabs - MEP Penetrations & In-Slab Pathways - Z2 / L7.2 | 5d | 2024-12-12 A | 2024-12-24 A | P2.BIM.L7.40.120 FF, P2.BIM.L7.40.100, P2.7.03.220 SS+2d | 100% |
| P2.7.03.320 |  | Decks Slabs - Inspect & Place - Z2 / Placement # L7.2 | 2d | 2024-12-17 A | 2024-12-26 A | P2.7.03.220, P2.7.20.220 | 100% |
| P2.7.03.420 |  | Deck Slabs - **CURE** - Z2 / Placement # L7.2 | 28d | 2024-12-27 A | 2025-01-25 A | P2.7.03.320 | 100% |
| P2.7.03.520 |  | Deck Slabs - Strip & Reshore - Z2 / Placement # L7.2 | 6d | 2025-02-10 A | 2025-02-25 A | P2.7.03.320 | 100% |
| P2.7.03.620 |  | Remove Reshores @ All Areas (After #L7.2 100% Strength & #MR/PS.2 Reshore) - Z2 / Placement # L7.2 | 3d | 2025-03-07 A | 2025-03-20 A | P2.7.03.520, P2.7.03.420, P2.7.03.610, P2.MR/PS.03.520 SS+3d | 100% |
|  | 3 | **Z3 - Placement # L7.3** |  | 2024-12-04 | 2025-07-30 |  |  |
| P2.7.03.130 |  | Columns & Walls - Z3 / Placement # L7.3 | 5d | 2024-12-04 A | 2024-12-19 A | P2.6.03.330 FF+2d, P2.7.03.120 SS | 100% |
| P2.7.03.230 |  | Deck Slabs - Shore & Reinforce - Z3 / Placement # L7.3 | 9d | 2024-12-10 A | 2024-12-24 A | P2.6.03.790 FF+2d, P2.7.03.130, P2.6.03.780, P1.DEMO.2.120 | 100% |
| P2.7.20.230 |  | Deck Slabs - MEP Penetrations & In-Slab Pathways - Z3 / L7.3 | 7d | 2024-12-17 A | 2024-12-30 A | P2.BIM.L7.40.120 FF, P2.BIM.L7.40.100, P2.7.03.230 SS+2d | 100% |
| P2.7.03.330 |  | Decks Slabs - Inspect & Place - Z3 / Placement # L7.3 | 2d | 2024-12-24 A | 2025-01-02 A | P2.7.20.230, P2.7.03.230 | 100% |
| P2.7.03.430 |  | Deck Slabs - **CURE** - Z3 / Placement # L7.3 | 28d | 2024-12-24 A | 2025-01-30 A | P2.7.03.330 SS | 100% |
| P2.7.03.530 |  | Deck Slabs - Strip & Reshore - Z3 / Placement # L7.3 | 7d | 2025-02-17 A | 2025-02-28 A | P2.7.03.330 | 100% |
| P2.7.03.630 |  | Remove Reshores @ All Areas (After #L7.3 100% Strength & #MR/PS.3 Reshore) - Z3 / Placement # L7.3 | 3d | 2025-03-19 A | 2025-03-28 A | P2.7.03.530, P2.7.03.620, P2.7.03.430, P2.MR/PS.03.530 SS+3d | 100% |
| P2.7.03.730 |  | Erect - Stair 2-8 Steel / After #L7.3 100% Strength | 5d | 2025-07-29 A | 2025-07-30 A | P2.6.03.730 | 100% |
|  | 4 | **L8 - Columns, Walls, Decks (Working from L7)** |  | 2024-12-12 | 2025-06-05 |  |  |
|  | 4 | **Z1 - Placement # L8.1** |  | 2024-12-12 | 2025-04-17 |  |  |
| P2.8.03.110 |  | Columns & Walls - Z1 / Placement # L8.1 | 5d | 2024-12-12 A | 2025-01-02 A | P2.7.03.310 FF+1d, WEATHER.TIA1120 | 100% |
| P2.8.03.210 |  | Deck Slabs - Shore & Reinforce - Z1 / Placement # L8.1 | 7d | 2024-12-23 A | 2025-01-09 A | P2.8.03.110 FF+2d | 100% |
| P2.8.20.210 |  | Deck Slabs - MEP Penetrations & In-Slab Pathways - Z1 / Placement # L8.1 | 5d | 2024-12-31 A | 2025-01-13 A | P2.BIM.L8.40.120 FF, P2.BIM.L8.40.100 FF, P2.8.03.210 SS+2d | 100% |
| P2.8.03.310 |  | Decks Slabs - Inspect & Place - Z1 / Placement # L8.1 | 2d | 2025-01-10 A | 2025-01-14 A | P2.8.20.210, P2.8.03.210 | 100% |
| P2.8.03.410 |  | Deck Slabs - **CURE** - Z1 / Placement # L8.1 | 28d | 2025-01-10 A | 2025-02-15 A | P2.8.03.310 SS+1d | 100% |
| P2.8.03.510 |  | Deck Slabs - Strip & Reshore - Z1 / Placement # L8.1 | 5d | 2025-01-27 A | 2025-02-17 A | P2.8.03.310 | 100% |
| P2.8.03.740 |  | Steel Column Bracing - Column-to-Column at Interstial Floor - Z1 / L8 | 5d | 2025-02-10 A | 2025-02-13 A | P2.8.03.110 | 100% |
| P2.8.03.750 |  | Steel Column Bracing - Column-to-Slab Edge at Interstial Floor - Z1 / L8 | 5d | 2025-02-10 A | 2025-02-13 A | P2.8.03.510 FF+1d | 100% |
| P2.8.03.610 |  | Remove Reshores @ All Areas (After #L8.1 100% Strength & #PR.1 Reshore) - Z1 / Placement # L8.1 | 3d | 2025-04-15 A | 2025-04-17 A | P2.8.03.410, P2.8.03.510, P2.PR.03.510 SS+1d, P2.PR.03.410 SS+21d | 100% |
|  | 5 | **Z2 - Placement # L8.2** |  | 2024-12-19 | 2025-04-03 |  |  |
| P2.8.03.120 |  | Columns & Walls - Z2 / Placement # L8.2 | 5d | 2024-12-19 A | 2025-01-10 A | P2.7.03.320 FF+2d, P2.8.03.110 SS | 100% |
| P2.8.03.220 |  | Deck Slabs - Shore & Reinforce - Z2 / Placement # L8.2 | 6d | 2024-12-31 A | 2025-01-16 A | P2.8.03.120 FF+4d, WEATHER.TIA1160 | 100% |
| P2.8.20.220 |  | Deck Slabs - MEP Penetrations & In-Slab Pathways - Z2 / Placement # L8.2 | 4d | 2025-01-14 A | 2025-01-23 A | P2.BIM.L8.40.100 FF, P2.BIM.L8.40.120 FF, P2.8.03.220 SS+2d | 100% |
| P2.8.03.320 |  | Decks Slabs - Inspect & Place - Z2 / Placement # L8.2 | 2d | 2025-01-16 A | 2025-01-27 A | P2.8.03.220, P2.8.20.220 | 100% |
| P2.8.03.420 |  | Deck Slabs - **CURE** - Z2 / Placement # L8.2 | 28d | 2025-01-17 A | 2025-02-21 A | P2.8.03.320 SS+1d | 100% |
| P2.8.03.520 |  | Deck Slabs - Strip & Reshore - Z2 / Placement # L8.2 | 5d | 2025-02-10 A | 2025-03-14 A | P2.8.03.320 | 100% |
| P2.8.03.760 |  | Steel Column Bracing - Column-to-Column at Interstial Floor - Z2 / L8 | 5d | 2025-02-10 A | 2025-02-13 A | P2.8.03.120, WEATHER.TIA1160 | 100% |
| P2.8.03.770 |  | Steel Column Bracing - Column-to-Slab Edge at Interstial Floor - Z2 / L8 | 5d | 2025-02-10 A | 2025-02-13 A | P2.8.03.520 SS | 100% |
| P2.8.03.620 |  | Remove Reshores @ All Areas (After #L8.2 100% Strength & #PR.2 Reshore) - Z2 / Placement # L8.2 | 3d | 2025-04-01 A | 2025-04-03 A | P2.8.03.520, P2.8.03.420, P2.PR.03.520 SS+3d, P2.8.03.610 SS+2d | 100% |
|  | 6 | **Z3 - Placement # L8.3** |  | 2024-12-26 | 2025-05-09 |  |  |
| P2.8.03.130 |  | Columns & Walls - Z3 / Placement # L8.3 | 5d | 2024-12-26 A | 2025-01-29 A | P2.7.03.330 FF+2d, P2.8.03.120 SS, WEATHER.TIA1160 | 100% |
| P2.8.03.230 |  | Deck Slabs - Shore & Reinforce - Z3 / Placement # L8.3 | 7d | 2025-01-15 A | 2025-01-27 A | P2.8.03.130 | 100% |
| P2.8.20.230 |  | Deck Slabs - MEP Penetrations & In-Slab Pathways - Z3 / Placement # L8.3 | 5d | 2025-01-28 A | 2025-01-31 A | P2.BIM.L8.40.100 FF, P2.BIM.L8.40.120 FF, P2.8.03.230 SS+2d | 100% |
| P2.8.03.330 |  | Decks Slabs - Inspect & Place - Z3 / Placement # L8.3 | 2d | 2025-01-30 A | 2025-02-04 A | P2.8.03.230, P2.8.20.230, WEATHER.TIA1190 | 100% |
| P2.8.03.430 |  | Deck Slabs - **CURE** - Z3 / Placement # L8.3 | 28d | 2025-01-31 A | 2025-02-28 A | P2.8.03.330 SS | 100% |
| P2.8.03.780 |  | Steel Column Bracing - Column-to-Column at Interstial Floor - Z3 / L8 | 5d | 2025-02-10 A | 2025-02-13 A | P2.8.03.130 | 100% |
| P2.8.03.790 |  | Steel Column Bracing - Column-to-Slab Edge at Interstial Floor - Z3 / L8 | 5d | 2025-02-10 A | 2025-02-13 A | P2.8.03.780 | 100% |
| P2.8.03.530 |  | Deck Slabs - Strip & Reshore - Z3 / Placement # L8.3 | 5d | 2025-02-12 A | 2025-03-28 A | P2.8.03.330, P2.8.03.790 | 100% |
| P2.8.03.730 |  | Erect - Stair 2-8 Steel / After #L8.3 100% Strength | 5d | 2025-02-17 A | 2025-02-24 A | P2.8.03.330 | 100% |
| P2.8.03.630 |  | Remove Reshores @ All Areas (After #L8.3 100% Strength & #PR.2 Reshore) - Z3 / Placement # L8.3 | 3d | 2025-05-01 A | 2025-05-09 A | P2.8.03.530, P2.8.03.430, P2.8.03.620, P2.PR.03.520 SS+3d | 100% |
|  | 1 | **Level 8 - Interstitial** |  | 2025-04-23 | 2025-06-05 |  |  |
| P2.8.I.03.010 |  | Remove Reshores - L7 to Main Roof @ Interst Areas (After #MR/PS.1 100% Strength & #PR.1 Reshore) / Placement # L8.INT.1 | 3d | 2025-04-23 A | 2025-04-30 A | P2.PR.03.410 | 100% |
| P2.8.I.03.020 |  | Remove Reshores - L7 to Main Roof @ Interst Areas (After #MR/PS.3 100% Strength & #PR.3 Reshore) / Placement # L8.INT.2 | 5d | 2025-05-01 A | 2025-05-02 A | P2.PR.03.420 | 100% |
| P2.8.I.05.210 |  | Erect - Interstitial Steel - Framing and Decking/Detailing (Working Off L7 Slab) / Placement # L8.INT.1 | 10d | 2025-05-01 A | 2025-05-12 A | P2.8.I.03.010 | 100% |
| P2.8.I.05.110 |  | Erect - Interstitial Steel - Hangers (Working Off L7 Slab) / Placement # L8.INT.1 | 8d | 2025-05-12 A | 2025-05-19 A | P2.8.I.03.010, P2.8.I.05.210 FF+5d | 100% |
| P2.8.I.05.220 |  | Erect - Interstitial Steel - Framing and Decking/Detailing (Working Off L7 Slab) / Placement # L8.INT.2 | 15d | 2025-05-13 A | 2025-05-16 A | P2.8.I.03.020 | 100% |
| P2.8.I.20.210 |  | SOMD - MEP Penetrations & Block Outs / Placement # L8.INT.1 | 3d | 2025-05-13 A | 2025-05-28 A | P2.8.I.05.110 FF+1d | 100% |
| P2.8.I.05.120 |  | Erect - Interstitial Steel - Hangers (Working Off L7 Slab) / Placement # L8.INT.2 | 7d | 2025-05-16 A | 2025-05-27 A | P2.8.I.05.220 FF+3d | 100% |
| P2.8.I.20.220 |  | SOMD - MEP Penetrations & Block Outs / Placement # L8.INT.2 | 3d | 2025-05-21 A | 2025-05-30 A | P2.8.I.05.120 FF+1d | 100% |
| P2.8.I.03.210 |  | SOMD - Prep & Reinforce / Placement # L8.INT.1 | 3d | 2025-05-27 A | 2025-05-28 A | P2.8.I.20.210 FF+1d | 100% |
| P2.8.I.03.310 |  | SOMD - Inspect & Place / Placement # L8.INT.1 | 2d | 2025-05-29 A | 2025-05-29 A | P2.8.I.03.210 | 100% |
| P2.8.I.03.220 |  | SOMD - Prep & Reinforce / Placement # L8.INT.2 | 3d | 2025-06-02 A | 2025-06-04 A | P2.8.I.20.220 FF+1d | 100% |
| P2.8.I.03.320 |  | SOMD - Inspect & Place / Placement # L8.INT.2 | 2d | 2025-06-04 A | 2025-06-05 A | P2.8.I.03.220 | 100% |
|  | 8 | **Main Roof / Penthouse Slab (MR/PS) - Columns, Walls, Decks (Working from L8)** |  | 2025-01-22 | 2025-04-28 |  |  |
|  | 1 | **Z1 - Placement # MR/PS.1** |  | 2025-01-22 | 2025-04-28 |  |  |
| P2.MR/PS.03.110 |  | Columns & Walls - Z1 / Placement # MR/PS.1 | 5d | 2025-01-22 A | 2025-02-13 A | P2.8.03.310 FF+2d | 100% |
| P2.MR/PS.03.210 |  | Deck Slabs - Shore & Reinforce - Z1 / Placement # MR/PS.1 | 9d | 2025-01-29 A | 2025-02-03 A | P2.8.03.750 FF, P2.MR/PS.03.110 FF+1d, P2.8.03.740 FF | 100% |
| P2.MR/PH.20.210 |  | Deck Slabs - MEP Penetrations & In-Slab Pathways - Z1 / MR/PS.1 | 7d | 2025-01-31 A | 2025-02-11 A | P2.BIM.MRPH.40.120 FF, P2.BIM.MRPH.40.100 FF, P2.MR/PS.03.210 FF | 100% |
| P2.MR/PS.03.310 |  | Decks Slabs - Inspect & Place - Z1 / Placement # MR/PS.1 | 2d | 2025-02-14 A | 2025-02-17 A | P2.MR/PH.20.210, P2.MR/PS.03.210 | 100% |
| P2.MR/PS.03.410 |  | Deck Slabs - **CURE** - Z1 / Placement # MR/PS.1 | 28d | 2025-02-14 A | 2025-03-15 A | P2.MR/PS.03.310 | 100% |
| P2.MR/PS.03.510 |  | Deck Slabs - Strip & Reshore - Z1 / Placement # MR/PS.1 | 7d | 2025-03-15 A | 2025-03-15 A | P2.MR/PS.03.310 | 100% |
| P2.MR/PS.03.610 |  | Remove Reshores - (After #PR.1 100% Strength) - Z1 / Placement # MR/PS.1 | 4d | 2025-04-16 A | 2025-04-28 A | P2.MR/PS.03.510, P2.PR.03.410 SS+14d | 100% |
|  | 2 | **Z2 - Placement # MR/PS.2** |  | 2025-01-30 | 2025-04-10 |  |  |
| P2.MR/PS.03.120 |  | Columns & Walls - Z2 / Placement # MR/PS.2 | 5d | 2025-01-30 A | 2025-02-20 A | P2.8.03.320 FF+2d, P2.MR/PS.03.110 SS+2d | 100% |

| ID | WBS | Task | Duration | Start | Finish | Predecessors | Complete | Total float |
| --- | --- | --- | --- | --- | --- | --- | --- | --- |
| P2.MR/PS.03.220 |  | Deck Slabs - Shore & Reinforce - Z2 / Placement # MR/PS.2 | 7d | 2025-02-04 A | 2025-02-25 A | P2.MR/PS.03.120 FF+1d, P2.8.03.760 FF+1d | 100% |  |
| P2.MR/PH.20.220 |  | Deck Slabs - MEP Penetrations & In-Slab Pathways - Z2 / MR/PS.2 | 5d | 2025-02-17 A | 2025-02-26 A | P2.BIM.MRPH.40.120 FF, P2.BIM.MRPH.40.100 FF, P2.MR/PS.03.220 SS+2d | 100% |  |
| P2.MR/PS.03.320 |  | Decks Slabs - Inspect & Place - Z2 / Placement # MR/PS.2 | 2d | 2025-02-21 A | 2025-02-27 A | P2.MR/PS.03.220, P2.MR/PH.20.220 | 100% |  |
| P2.MR/PS.03.420 |  | Deck Slabs - **CURE** - Z2 / Placement # MR/PS.2 | 28d | 2025-02-22 A | 2025-03-25 A | P2.MR/PS.03.320 | 100% |  |
| P2.MR/PS.03.520 |  | Deck Slabs - Strip & Reshore - Z2 / Placement # MR/PS.2 | 6d | 2025-03-03 A | 2025-03-28 A | P2.8.03.770, P2.MR/PS.03.320 | 100% |  |
| P2.MR/PS.03.620 |  | Remove Reshores - (After #PR.1 100% Strength) - Z2 / Placement # MR/PS.2 | 3d | 2025-04-02 A | 2025-04-10 A | P2.MR/PS.03.520, P2.MR/PS.03.610 | 100% |  |
|  | 3 | **Z3 - Placement # MR/PS.3** |  | 2025-02-03 | 2025-04-17 |  |  |  |
| P2.MR/PS.03.130 |  | Columns & Walls - Z3 / Placement # MR/PS.3 | 5d | 2025-02-03 A | 2025-02-27 A | P2.8.03.330 FF+2d, P2.MR/PS.03.120 SS+2d | 100% |  |
| P2.MR/PS.03.230 |  | Deck Slabs - Shore & Reinforce - Z3 / Placement # MR/PS.3 | 9d | 2025-02-20 A | 2025-02-28 A | P2.8.03.790 FF+2d, WEATHER.TIA1200, P2.MR/PS.03.130 FF+1d, P2.8.03.780 FF | 100% |  |
| P2.MR/PH.20.230 |  | Deck Slabs - MEP Penetrations & In-Slab Pathways - Z3 / MR/PS.3 | 7d | 2025-02-24 A | 2025-03-18 A | P2.MR/PS.03.230 FF, P2.BIM.MRPH.40.120 FF, P2.BIM.MRPH.40.100 FF, WEATHER.TIA1200 | 100% |  |
| P2.MR/PS.03.330 |  | Decks Slabs - Inspect & Place - Z3 / Placement # MR/PS.3 | 2d | 2025-02-26 A | 2025-03-19 A | P2.MR/PS.03.230, P2.MR/PH.20.230, WEATHER.TIA1200 | 100% |  |
| P2.MR/PS.03.430 |  | Deck Slabs - **CURE** - Z3 / Placement # MR/PS.3 | 28d | 2025-02-27 A | 2025-04-16 A | P2.MR/PS.03.330 SS | 100% |  |
| P2.MR/PS.03.530 |  | Deck Slabs - Strip & Reshore - Z3 / Placement # MR/PS.3 | 7d | 2025-03-19 A | 2025-03-19 A | P2.MR/PS.03.330 | 100% |  |
| P2.MR/PS.03.630 |  | Remove Reshores - (After #PR.2 100% Strength) - Z3 / Placement # MR/PS.3 | 3d | 2025-04-14 A | 2025-04-17 A | P2.MR/PS.03.530, P2.MR/PS.03.620, P2.MR/PS.03.430, P2.PR.03.420 SS+21d | 100% |  |
|  | 9 | **Penthouse Roof(PR) - Columns, Walls, Decks (Working from MR/PS)** |  | 2025-02-19 | 2025-05-05 |  |  |  |
|  | 4 | **Z1 - Placement # PR.1** |  | 2025-02-19 | 2025-04-28 |  |  |  |
| P2.PR.03.110 |  | Columns & Walls - Z1 / Placement # PR.1 | 5d | 2025-02-19 A | 2025-03-20 A | P2.MR/PS.03.310 FF | 100% |  |
| P2.PR.20.210 |  | Deck Slabs - MEP Penetrations & In-Slab Pathways - Z1 / PR.1 | 5d | 2025-03-06 A | 2025-03-31 A | P2.BIM.PHR.40.100 FF, P2.BIM.PHR.40.110 SS+2d, P2.PR.03.210 FF+1d | 100% |  |
| P2.PR.03.210 |  | Deck Slabs - Shore & Reinforce - Z1 / Placement # PR.1 | 7d | 2025-03-10 A | 2025-03-28 A | P2.PR.03.110 SS+2d | 100% |  |
| P2.PR.03.310 |  | Decks Slabs - Inspect & Place - Z1 / Placement # PR.1 | 6d | 2025-03-20 A | 2025-03-31 A | P2.PR.03.210, P2.PR.20.210 | 100% |  |
| P2.PR.03.510 |  | Deck Slabs - Strip & Reshore - Z1 / Placement # PR.1 | 5d | 2025-03-31 A | 2025-03-31 A | P2.PR.03.310 | 100% |  |
| P2.PR.03.410 |  | Deck Slabs - **CURE** - Z1 / Placement # PR.1 | 28d | 2025-03-31 A | 2025-04-28 A | P2.PR.03.310 | 100% |  |
| P2.PR.03.610 |  | Remove Reshores - (After #PR.1 100% Strength) - Z1 / Placement # PR.1 | 3d | 2025-04-23 A | 2025-04-25 A | P2.PR.03.410 SS+12d | 100% |  |
|  | 6 | **Z3 - Placement # PR.2** |  | 2025-02-27 | 2025-05-05 |  |  |  |
| P2.PR.03.120 |  | Columns & Walls - Z3 / Placement # PR.2 | 5d | 2025-02-27 A | 2025-03-31 A | P2.MR/PS.03.330 FF, P2.MR/PS.03.320, P2.PR.03.110 | 100% |  |
| P2.PR.03.220 |  | Deck Slabs - Shore & Reinforce - Z3 / Placement # PR.2 | 7d | 2025-03-13 A | 2025-04-01 A | P2.PR.03.120 FF+2d | 100% |  |
| P2.PR.03.320 |  | Decks Slabs - Inspect & Place - Z3 / Placement # PR.2 | 4d | 2025-04-01 A | 2025-04-08 A | P2.PR.20.220, P2.PR.03.220 | 100% |  |
| P2.PR.03.520 |  | Deck Slabs - Strip & Reshore - Z3 / Placement # PR.2 | 5d | 2025-04-01 A | 2025-04-03 A | P2.SUM.155, P2.PR.03.320 | 100% |  |
| P2.PR.20.220 |  | Deck Slabs - MEP Penetrations & In-Slab Pathways - Z3 / PR.2 | 3d | 2025-04-01 A | 2025-04-03 A | P2.BIM.PHR.40.110 FF, P2.BIM.PHR.40.100 FF, P2.PR.03.220 FF | 100% |  |
| P2.PR.03.420 |  | Deck Slabs - **CURE** - Z3 / Placement # PR.2 | 28d | 2025-04-09 A | 2025-04-23 A | P2.PR.03.320 SS+1d | 100% |  |
| P2.PR.03.620 |  | Remove Reshores - (After #PR.2 100% Strength) - Z3 / Placement # PR.2 | 4d | 2025-05-01 A | 2025-05-05 A | P2.PR.03.610, P2.PR.03.420 SS+15d | 100% |  |
|  | 10 | **Stair Roof / Elev Mach Rm (EMR) - Columns, Walls, Decks (Working from PR)** |  | 2025-03-27 | 2025-05-29 |  |  |  |
|  | 4 | **Z1 - Placement # EMR.1** |  | 2025-03-27 | 2025-05-29 |  |  |  |
| P2.EMR.03.110 |  | Columns & Walls - Z1 / Placement # EMR.1 | 4d | 2025-03-27 A | 2025-03-31 A | P2.PR.03.410 SS+2d | 100% |  |
| P2.EMR.03.210 |  | Deck Slabs - Shore & Reinforce - Z1 / Placement # EMR.1 | 4d | 2025-04-15 A | 2025-04-16 A | P2.EMR.03.110 FF+2d | 100% |  |
| P2.EMR.20.210 |  | Deck Slabs - MEP Penetrations & In-Slab Pathways - Z1 / EMR.1 | 2d | 2025-04-16 A | 2025-04-16 A | P2.BIM.PHR.40.100 FF, P2.BIM.PHR.40.110 FF, P2.EMR.03.210 FF | 100% |  |
| P2.EMR.03.310 |  | Decks Slabs - Inspect & Place - Z1 / Placement # EMR.1 | 2d | 2025-04-17 A | 2025-04-17 A | P2.EMR.03.210, P2.EMR.20.210 | 100% |  |
| P2.EMR.03.410 |  | Deck Slabs - **CURE** - Z1 / Placement # EMR.1 | 28d | 2025-04-17 A | 2025-05-15 A | P2.EMR.03.310 | 100% |  |
| P2.EMR.03.510 |  | Deck Slabs - Strip & Reshore - Z1 / Placement # EMR.1 | 2d | 2025-04-18 A | 2025-04-18 A | P2.EMR.03.410 SS+2d | 100% |  |
| P2.EMR.03.610 |  | Remove Reshores - (After #EMR.1 100% Strength) - Z1 / Placement # EMR.1 | 2d | 2025-05-28 A | 2025-05-29 A | P2.EMR.03.410 | 100% |  |
|  | 11 | **Elev Mach Rm Roof (EMRR) (Working from EMR)** |  | 2025-04-21 | 2025-05-30 |  |  |  |
|  | 4 | **Z1 - Placement # EMRR.1** |  | 2025-04-21 | 2025-05-30 |  |  |  |
| P2.EMRR.03.110 |  | Columns & Walls - Z1 / Placement # EMRR.1 | 4d | 2025-04-21 A | 2025-04-21 A | P2.EMR.03.410 SS+2d | 100% |  |
| P2.EMRR.03.210 |  | Deck Slabs - Shore & Reinforce - Z1 / Placement # EMRR.1 | 4d | 2025-04-21 A | 2025-04-22 A | P2.EMRR.03.110 | 100% |  |
| P2.EMRR.20.210 |  | Deck Slabs - MEP Penetrations & In-Slab Pathways - Z1 / EMRR.1 | 2d | 2025-04-23 A | 2025-04-23 A | P2.BIM.PHR.40.100 FF, P2.BIM.PHR.40.110 FF, P2.EMRR.03.210 SS | 100% |  |
| P2.EMRR.03.310 |  | Decks Slabs - Inspect & Place - Z1 / Placement # EMRR.1 | 2d | 2025-04-24 A | 2025-04-24 A | P2.EMRR.03.210, P2.EMRR.20.210 | 100% |  |
| P2.EMRR.03.410 |  | Deck Slabs - **CURE** - Z1 / Placement # EMRR.1 ---(***Last PH 2 Structure Activity***) | 28d | 2025-04-24 A | 2025-05-22 A | P2.EMRR.03.310 | 100% |  |
| P2.EMRR.03.510 |  | Deck Slabs - Strip & Reshore - Z1 / Placement # EMRR.1 | 2d | 2025-05-28 A | 2025-05-30 A | P2.EMRR.03.410 SS+2d | 100% |  |
| P2.EMRR.03.610 |  | Remove Reshores - (After #EMRR.1 CURE +10D) - Z1 / Placement # EMRR.1 | 2d | 2025-05-28 A | 2025-05-30 A | P2.EMRR.03.510, P2.EMRR.03.410 | 100% |  |
|  | 3 | **PH 2 BUILDING ENVELOPE** |  | 2024-07-29 | 2026-08-20 |  |  |  |
|  | 9 | **PH2 Facade by Sectors** |  | 2024-07-29 | 2026-08-20 |  |  |  |
|  | 5 | **Sector F** |  | 2025-02-19 | 2026-07-06 |  |  |  |
|  | 1 | **Substrate Prep Work - Sector F** |  | 2025-02-19 | 2025-10-30 |  |  |  |
| P2.FAC.1.F.230 |  | Exterior Framing - Level 3 / Sector F | 5d | 2025-02-19 A | 2025-02-25 A | P2.3.03.620 | 100% |  |
| P2.FAC.1.F.240 |  | Exterior Framing - Level 4 / Sector F | 5d | 2025-02-24 A | 2025-02-28 A | P2.4.03.630, P2.FAC.1.F.230 | 100% |  |
| P2.FAC.1.F.120 |  | Waterproofing (WP-01) at Foundation Wall / Sector F | 5d | 2025-03-03 A | 2025-03-14 A | P1.BG.BF.100 | 100% |  |
| P2.FAC.1.F.250 |  | Exterior Framing - Level 5 / Sector F | 5d | 2025-05-01 A | 2025-05-07 A | P2.5.03.630, P2.FAC.1.F.240, P2.5.03.660 | 100% |  |
| P2.FAC.1.F.260 |  | Exterior Framing - Level 6 / Sector F | 5d | 2025-05-08 A | 2025-05-14 A | P2.6.03.630, P2.FAC.1.F.250 | 100% |  |
| P2.FAC.1.F.180 |  | Exterior Framing - Level 7 / Sector F | 5d | 2025-05-15 A | 2025-05-21 A | P2.7.03.630, P2.FAC.1.F.260 | 100% |  |
| P2.FAC.1.F.190 |  | Exterior Framing - Level 8 / Sector F | 5d | 2025-07-01 A | 2025-08-07 A | P2.8.03.630, P2.FAC.1.F.180 | 100% |  |
| P2.FAC.1.F.200 |  | Exterior Framing - Main Roof / Sector F | 5d | 2025-07-09 A | 2025-08-12 A | P2.MR/PS.03.630, P2.FAC.1.F.190 | 100% |  |
| P2.FAC.1.F.220 |  | Sheathing - All Levels / Sector F | 20d | 2025-07-14 A | 2025-09-30 A | P2.FAC.1.F.210 FF | 100% |  |
| P2.FAC.1.F.210 |  | Exterior Framing - Pent House / Sector F | 5d | 2025-07-16 A | 2025-09-20 A | P2.EMR.03.610, P2.PR.03.620, P2.FAC.1.F.200 | 100% |  |
| P2.FAC.1.F.160 |  | Air_Vapor Barrier / Sector F | 10d | 2025-07-30 A | 2025-10-30 A | P2.FAC.1.F.220, P2.3-9.1070 | 100% |  |
|  | 6 | **Precast Panels - Sector F** |  | 2025-05-01 | 2025-05-07 |  |  |  |
| P2.FAC.2.Z1.170 |  | Precast - South East Elevation Between ZJ.5 & ZK.2 / Sector F | 5d | 2025-05-01 A | 2025-05-07 A | P2.FAC.2.Z1.110 | 100% |  |
|  | 3 | **Glass & Glazing - Sector F** |  | 2025-05-21 | 2026-05-29 |  |  |  |
| P2.FAC.3.F.110 |  | Curtainwall _ CW-02A (CL Z5.3 - Z6.1 @ ZJ.5) / Sector F | 15d | 2025-05-21 A | 2025-06-02 A | P2.FAD.GG.420, P2.FAC.2.Z1.170, P2.DES.PMU.300, P2.DES.VMU.650 | 100% |  |
| P2.FAC.3.F.120 |  | Curtainwall _ Storefront Door (CL Z5.3 - Z6.1 @ ZJ.5) / Sector F | 2d | 2026-05-15 | 2026-05-18 | P2.HZ.W.101 SS, P2.FAC.4.Z1.150, P2.FAD.GG.310 |  | 137d |
| P2.FAC.3.F.130 |  | Curtainwall _ Storefront Door (CL ZA.7 - ZB @ Z9.5) / Sector Z3 (Stair 2-8) | 2d | 2026-05-28 | 2026-05-29 | P2.FAC.3.Z3.260 |  | 137d |

| ID | WBS | Task | Duration | Start | Finish | Predecessors | Complete | Total float |
| --- | --- | --- | --- | --- | --- | --- | --- | --- |
|  | 4 | **Metal Panels & Louvers - Sector F** |  | 2025-10-22 | 2026-02-16 |  |  |  |
| P2.FAC.4.F.110 |  | Metal Panels @ SRLM/CRC Connection (CL Z9.1/ZF to Z5.8/ZG.5) / Sector F | 20d | 2025-10-22 A | 2026-01-12 | P2.FAD.MP.600, P2.FAD.MP.700, P2.FAC.1.F.160, P2.FAC.5.F.110 | 75% | 215d |
| P2.FAC.4.F.120 |  | Metal Panels @ SRLM/CRC Connection (CL Z5.8/ZG.5 to Z5.3/ZJ.5 and east face at Z6.3/ZJ.5 to ZH.8) / Sector F | 20d | 2026-01-13 | 2026-02-09 | P2.FAC.4.F.110 |  | 215d |
| P2.FAC.4.F.200 |  | C3 - Metal Panels @ Group 3 EMR / Sector F | 5d | 2026-02-10 | 2026-02-16 | P2.FAC.4.F.120 |  | 220d |
|  | 5 | **Facade Finish Work - Sector F** |  | 2025-06-30 | 2026-06-05 |  |  |  |
| P2.FAC.5.Z1.270 |  | Precast Caulk & Seal / Sector F | 5d | 2025-06-30 A | 2025-07-09 A | P2.FAC.2.Z1.170, P2.FAC.2.Z1.150 | 100% |  |
| P2.FAC.5.F.140 |  | Doors, Frames, Hardware / Sector F | 5d | 2025-07-01 A | 2025-07-08 A | P2.FAC.3.F.110 | 100% |  |
| P2.FAC.1.F.170 |  | Stone Cladding _ST-01 / Sector F | 10d | 2025-07-28 A | 2025-08-28 A | P2.FAD.ST.160, P2.FAC.1.F.120, P2.FAC.3.F.110 | 100% |  |
| P2.FAC.5.F.210 |  | Brick Tie-in at Existing Building (South-Tie In) / Sector F | 10d | 2025-12-01 | 2025-12-12 | P2.FAC.3.F.110 |  | 256d |
| P2.FAC.5.F.200 |  | Brick Tie-in at Existing Building (East - Level 2 Roof) / Sector F | 10d | 2025-12-15 | 2025-12-29 | P2.FAC.2.Z3.120, P2.FAC.5.F.210, P2.FAC.5.Z1.270 |  | 256d |
| P2.FAC.5.F.110 |  | Expansion Joint _ EJ-08 / Sector F | 5d | 2025-12-29 | 2026-01-05 | P2.FAC.1.F.160, P2.FAC.3.F.110, BP2.079.3.200, BP2.079.3.230 |  | 215d |
| P2.FAC.5.F.150 |  | Caulk & Seal / Sector F | 5d | 2026-02-10 | 2026-02-16 | P2.FAC.4.F.120, P2.FAC.5.F.110 |  | 215d |
| P2.FAC.5.F.130 |  | Exterior Receptacles & Lights / Sector F | 5d | 2026-02-17 | 2026-02-23 | P2.FAC.3.F.110, P2.FAC.5.F.150 |  | 215d |
| P2.FAC.5.F.120 |  | Exterior Signage / Sector F | 5d | 2026-06-01 | 2026-06-05 | P2.FAC.3.F.110, P2.FAC.5.Z1.270, P2.FAC.3.F.130 |  | 142d |
| P2.FAC.5.F.160 |  | Exterior LV Systems / Sector F | 5d | 2026-06-01 | 2026-06-05 | P2.FAC.5.F.140, P2.FAC.3.F.130 |  | 142d |
|  | 2 | **Quality Control Inspections - Sector F** |  | 2026-06-08 | 2026-07-06 |  |  |  |
| P2.FAC.F.9000 |  | Trades Inspect & Verify Work Completed to Specs - Sector F | 5d | 2026-06-08 | 2026-06-12 | P2.FAC.5.F.130, P2.FAC.5.F.150, P2.FAC.5.F.160, P2.FAC.4.F.200, P2.FAC.1.F.170, P2.FAC.5.F.120, P2.FAC.5.Z1.270 |  | 142d |
| P2.FAC.F.9010 |  | Inspect & Prepare Punchlist - Sector F | 5d | 2026-06-15 | 2026-06-19 | P2.FAC.F.9000 |  | 142d |
| P2.FAC.F.9020 |  | Correct Punchlist - Sector F | 5d | 2026-06-22 | 2026-06-26 | P2.FAC.F.9010 |  | 142d |
| P2.FAC.F.9030 |  | NIH Acceptance of Facade - Sector F | 5d | 2026-06-29 | 2026-07-06 | P2.FAC.F.9020, P2.DES.VMU.670 FF |  | 142d |
|  | 6 | **Sector Z1** |  | 2024-07-29 | 2026-08-20 |  |  |  |
|  | 1 | **Substrate Prep Work - Sector Z1** |  | 2024-07-29 | 2025-09-02 |  |  |  |
| P2.FAC.1.Z1.130 |  | Canopy Embeds to Precast Shop @ Stair Entrance / Sector Z1 | 5d | 2024-07-29 A | 2024-07-30 A | P2.FAD.PC.250, BP4.055.3.100 FF+30d | 100% |  |
| P2.FAC.1.Z1.120 |  | Waterproofing (WP-01) at Foundation Wall / Sector Z1 | 5d | 2025-02-17 A | 2025-02-28 A | P1.BG.BF.100, P1.BG.BF.160 | 100% |  |
| P2.FAC.1.Z1.200 |  | Canopy Supports / South - Mech Tower / Sector Z1 | 5d | 2025-02-24 A | 2025-03-07 A | P2.2.03.610, P2.2.I.05.120, BP4.055.1.100 | 100% |  |
| P2.FAC.1.Z1.140 |  | Structural Steel Posts for Precast & Glazing Parapets / Sector Z1 | 10d | 2025-03-10 A | 2025-03-20 A | P2.MR/PS.03.510, P2.PR.03.310 | 100% |  |
| P2.FAC.1.Z1.230 |  | Framing & Sheathing behind parapets (Penthouse Roof) / Sector Z1 | 5d | 2025-03-17 A | 2025-03-28 A | P2.FAC.1.Z1.140 | 100% |  |
| P2.FAC.1.Z1.260 |  | Air_Vapor Barrier - Inside Parapets / Sector Z1 | 5d | 2025-03-26 A | 2025-03-31 A | P2.FAC.1.Z1.230 | 100% |  |
| P2.FAC.1.Z1.240 |  | Framing & Sheathing behind parapets (High Roof) / Sector Z1 | 5d | 2025-05-01 A | 2025-05-07 A | P2.EMR.03.510 | 100% |  |
| P2.FAC.1.Z1.150 |  | Structural Steel Supports for Glass Cube Curtain Wall / Sector Z1 | 5d | 2025-05-27 A | 2025-05-30 A | P2.FAC.1.Z1.200 | 100% |  |
| P2.FAC.1.Z1.250 |  | CMU & AVB Above Curtain Wall ZH.5 to ZJ / Sector Z1 | 10d | 2025-05-27 A | 2025-07-09 A | P2.MR/PS.03.610 | 100% |  |
| P2.FAC.1.Z1.210 |  | Framing & Sheathing at Glass Cube / Sector Z1 | 10d | 2025-06-25 A | 2025-07-24 A | P2.FAC.1.Z1.150, P2.L8.S.1000 | 100% |  |
| P2.FAC.1.Z1.190 |  | Air_Vapor Barrier - Exterior Facade / Sector Z1 | 5d | 2025-07-21 A | 2025-08-04 A | P2.FAC.2.Z1.160, P2.FAC.1.Z1.210, P2.PR.S.2070 | 100% |  |
| P2.FAC.1.Z1.220 |  | Remaining Sheathing & Insulation behind parapets / Sector Z1 | 5d | 2025-07-22 A | 2025-08-21 A | P2.FAC.4.Z1.120, P2.FAC.4.Z1.130 | 100% |  |
| P2.FAC.1.Z1.270 |  | Air_Vapor Barrier - Patch Back / Sector Z1 | 5d | 2025-07-28 A | 2025-09-02 A | P2.FAC.1.Z1.220 | 100% |  |
|  | 2 | **Precast Panels - Sector Z1** |  | 2025-04-07 | 2025-07-11 |  |  |  |
| P2.FAC.2.Z1.110 |  | Precast - Inset Panels (PCP-02) @ South Mech Tower_ L1 / Sector Z1 | 5d | 2025-04-07 A | 2025-04-11 A | P1.1.03.640, P1.BG.BF.160, P2.EMR.03.510, P2.FAC.1.Z1.140 SS, P2.FAC.2.Z2.190, P2.8.03.520 | 100% |  |
| P2.FAC.2.Z1.180 |  | Precast - Elevations at Stair 5-9 & Electrical Room 5959 / Sector Z1 | 5d | 2025-04-21 A | 2025-04-30 A | P2.FAC.2.Z1.110 | 100% |  |
| P2.FAC.2.Z1.120 |  | Precast _ L2 / Sector Z1 | 5d | 2025-05-01 A | 2025-05-07 A | P2.4.03.610, P2.FAC.1.Z1.130, P2.FAC.2.Z1.110, P2.FAC.2.Z1.180, P2.FAC.1.Z1.200 | 100% |  |
| P2.FAC.2.Z1.130 |  | Precast _ L3 & L4 / Sector Z1 | 10d | 2025-05-01 A | 2025-05-23 A | DDD3260, DDD2810, P2.FAC.2.Z2.110 | 100% |  |
| P2.FAC.2.Z1.140 |  | Precast _ L5 & L6 / Sector Z1 | 9d | 2025-05-27 A | 2025-06-06 A | P2.6.03.610, P2.FAC.2.Z2.120 | 100% |  |
| P2.FAC.2.Z1.150 |  | Precast _ L7 & L8 / Sector Z1 | 10d | 2025-06-16 A | 2025-06-27 A | P2.8.03.610, P2.FAC.1.Z1.230, P2.FAC.1.Z1.250, P2.FAC.2.Z2.130 | 100% |  |
| P2.FAC.2.Z1.160 |  | Precast _ L9 & Penthouse / Sector Z1 | 5d | 2025-06-30 A | 2025-07-11 A | P2.PR.03.610, P2.FAC.2.Z1.180, P2.FAC.2.Z1.150 | 100% |  |
|  | 4 | **Metal Panels & Louvers - Sector Z1** |  | 2025-07-30 | 2025-12-12 |  |  |  |
| P2.FAC.3.Z1.140 |  | Louvers @ CL Z0.7/ / Sector Z1 | 10d | 2025-07-30 A | 2025-09-22 A | BP2.089.3.100, P2.FAC.4.Z1.110, P2.FAC.3.Z1.120 | 100% |  |
| P2.FAC.3.Z1.130 |  | Louvers @ CL Z5.3 / Sector Z1 | 10d | 2025-08-11 A | 2025-10-01 A | BP2.089.3.100, P2.FAD.MP.800, P2.FAC.3.Z1.110 | 100% |  |
| P2.FAC.3.Z1.110 |  | Metal Panels @ South Mech Tower (Z5.3/ZH.8 to CL Z.3) / Sector Z1 | 10d | 2025-09-11 A | 2025-10-27 A | P2.FAC.1.Z1.190, P2.FAC.5.Z1.110, P2.PR.S.9040 | 100% |  |
| P2.FAC.3.Z1.120 |  | Metal Panels @ South Mech Tower (CLZ.3 west to Z1/ZH.5 Stair 5.9 Tie In) / Sector Z1 | 10d | 2025-09-29 A | 2025-10-31 A | P2.FAC.1.Z1.250, P2.FAC.2.Z1.150 | 100% |  |
| P2.FAC.3.Z1.150 |  | Metal Panels behind parapets / Sector Z1 | 10d | 2025-12-01 | 2025-12-12 | P2.MR.5-8.200, P2.PR.EMRR.2.200, P2.PR.S.2000 |  | 264d |
|  | 3 | **Glass & Glazing - Sector Z1** |  | 2025-05-01 | 2026-05-20 |  |  |  |
| P2.FAC.4.Z1.130 |  | Curtainwall _ CW-01/GL-01 (West Glass Cube) (CL ZG.3/Z0.2 to ZF.2/Z1.5) / Sector Z1 | 20d | 2025-05-01 A | 2025-06-30 A | P2.FAC.1.Z1.150 FF | 100% |  |
| P2.FAC.4.Z1.150 |  | Storefronts - L1 - West Glass Cube / Sector Z1 | 10d | 2025-05-08 A | 2025-06-25 A | P2.FAC.4.Z1.110 | 100% |  |
| P2.FAC.4.Z1.110 |  | Storefronts - L1 - Main Entrance / Sector Z1 | 10d | 2025-05-22 A | 2025-07-10 A | P2.FAC.2.Z1.160 | 100% |  |
| P2.FAC.4.Z1.120 |  | Curtain Wall _ CW-02 (CL ZH.5 - ZJ) / Sector Z1 | 10d | 2025-07-24 A | 2025-08-13 A | P2.FAC.3.F.110, P2.FAC.2.Z1.180, P2.FAC.1.Z1.150 | 100% |  |
| P2.FAC.3.Z1.160 |  | Curtainwall _ Storefront Door (CL ZJ.5 - ZK @ Z0.5) / Sector Z1 (Vestibule 6900) | 2d | 2026-05-19 | 2026-05-20 | P2.FAC.3.F.120, P2.FAD.GG.310 |  | 137d |
|  | 5 | **Facade Finish Work - Sector Z1** |  | 2025-02-24 | 2026-07-16 |  |  |  |
| P2.FAC.5.Z1.200 |  | Canopy Structure @ South - Mech Tower / Sector Z1 | 5d | 2025-02-24 A | 2025-03-28 A | P2.FAC.1.Z1.200 | 100% |  |
| P2.FAC.5.Z1.220 |  | Precast Caulk & Seal / Sector Z1 | 20d | 2025-06-02 A | 2025-09-02 A | P2.FAC.2.Z1.180, P2.FAC.2.Z1.150 | 100% |  |
| P2.FAC.5.Z1.210 |  | Stone Cladding _ST-01 / Sector Z1 | 10d | 2025-08-01 A | 2025-09-02 A | P2.FAC.1.Z1.120, P2.FAC.1.F.170, P2.FAC.4.Z1.150 | 100% |  |
| P2.FAC.5.Z1.230 |  | Canopy Structure @ Entrance Stair / Sector Z1 | 5d | 2025-12-01 | 2025-12-05 | P2.FAC.1.Z1.130, P2.FAC.4.Z1.120 |  | 264d |
| P2.FAC.5.Z1.110 |  | Expansion Joints / Sector Z1 | 5d | 2025-12-29 | 2026-01-05 | P2.FAC.3.F.110, P2.FAC.2.Z1.160, BP2.079.3.200, BP2.079.3.230 |  | 30d |
| P2.FAC.5.Z1.190 |  | Caulk & Seal / Sector Z1 | 5d | 2026-01-06 | 2026-01-12 | P2.FAC.4.Z1.130, P2.FAC.3.Z1.130, P2.FAC.4.Z1.120, P2.FAC.3.Z1.140 |  | 30d |
| P2.FAC.5.Z1.120 |  | Soffit Framing / Sector Z1 | 5d | 2026-06-11 | 2026-06-17 | P2.FAC.4.Z1.150, P2.SITE.25 |  | 119d |
| P2.FAC.5.Z1.140 |  | Metal Panel Facade Columns / Sector Z1 | 5d | 2026-06-11 | 2026-06-17 | P2.SITE.25 |  | 114d |
| P2.FAC.5.Z1.170 |  | Canopy Glass @ South - Mech Tower / Sector Z1 | 5d | 2026-06-11 | 2026-06-17 | P2.FAC.3.F.130, BP2.088.3.100, P2.FAC.4.Z3.240, P2.SITE.25 |  | 129d |
| P2.FAC.5.Z1.150 |  | Soffit Finish Panels / Sector Z1 | 5d | 2026-06-18 | 2026-06-24 | P2.FAC.5.Z1.140 |  | 114d |
| P2.FAC.5.Z1.240 |  | Canopy Glass @ Entrance Stair / Sector Z1 | 5d | 2026-06-18 | 2026-06-24 | P2.FAC.5.Z1.170, P2.FAC.5.Z1.230 |  | 129d |
| P2.FAC.5.Z1.130 |  | R/I MEP @ Soffit / Sector Z1 | 5d | 2026-06-25 | 2026-07-01 | P2.FAC.5.Z1.120, P2.FAC.5.Z1.150 |  | 114d |
| P2.FAC.5.Z1.160 |  | Exterior Lights & Receptacles / Sector Z1 | 5d | 2026-07-02 | 2026-07-09 | P2.FAC.5.Z1.200, P2.FAC.5.Z1.150, P2.FAC.5.Z1.130 |  | 114d |
| P2.FAC.5.Z1.165 |  | Exterior LV Systems / Sector Z1 | 5d | 2026-07-02 | 2026-07-09 | P2.FAC.5.Z1.150, P2.FAC.5.Z1.130 |  | 119d |

| ID | WBS | Task | Duration | Start | Finish | Predecessors | Complete | Total float |
| --- | --- | --- | --- | --- | --- | --- | --- | --- |
| P2.FAC.5.Z1.180 |  | Exterior Signage / Sector Z1 | 5d | 2026-07-10 | 2026-07-16 | P2.FAC.5.Z1.160, P2.FAC.5.Z1.190 |  | 114d |
|  | 6 | **Quality Control Inspections - Sector Z1** |  | 2026-07-24 | 2026-08-20 |  |  |  |
| P2.FAC.Z1.9000 |  | Trades Inspect & Verify Work Completed to Specs / Sector Z1 | 5d | 2026-07-24 | 2026-07-30 | P2.FAC.5.Z1.180, P2.FAC.3.Z1.150, P2.FAC.5.Z1.240, P2.FAC.5.Z1.165, P2.FAC.5.Z1.190, P2.HZ.W.131, P2.FAC.5.Z1.220 |  | 109d |
| P2.FAC.Z1.9010 |  | Inspect & Prepare Punchlist / Sector Z1 | 5d | 2026-07-31 | 2026-08-06 | P2.FAC.Z1.9000 |  | 109d |
| P2.FAC.Z1.9020 |  | Correct Punchlist / Sector Z1 | 5d | 2026-08-07 | 2026-08-13 | P2.FAC.Z1.9010 |  | 109d |
| P2.FAC.Z1.9030 |  | NIH Acceptance of Facade / Sector Z1 | 5d | 2026-08-14 | 2026-08-20 | P2.SUM.165, P2.DES.VMU.670 FF, P2.FAC.Z1.9020 |  | 109d |
|  | 7 | **Sector Z2** |  | 2025-01-06 | 2026-05-22 |  |  |  |
|  | 1 | **Substrate Prep Work - Sector Z2** |  | 2025-01-06 | 2025-09-25 |  |  |  |
| P2.FAC.1.Z2.130 |  | Waterproofing (WP-01) at Foundation Wall / Sector Z2 | 5d | 2025-01-06 A | 2025-02-07 A | P1.BG.BF.130, P1.PED.240 | 100% |  |
| P2.FAC.1.Z2.180 |  | Structural Steel Supports at parapets for Precast & Curtainwall / Sector Z2 | 5d | 2025-02-24 A | 2025-03-20 A | P2.MR/PS.03.520 SS | 100% |  |
| P2.FAC.1.Z2.220 |  | Framing & Sheathing behind parapets / Sector Z2 | 5d | 2025-03-11 A | 2025-03-31 A | P2.FAC.1.Z1.150 | 100% |  |
| P2.FAC.1.Z2.240 |  | Air_Vapor Barrier (Behind Parapets) / Sector Z2 | 5d | 2025-03-18 A | 2025-03-31 A | P2.FAC.1.Z2.220 | 100% |  |
| P2.FAC.1.Z2.170 |  | Structural Steel Supports at parapets and Support for Clerestory for Curtain Wall / Sector Z2 | 10d | 2025-03-31 A | 2025-04-11 A | P2.FAC.1.Z2.180 | 100% |  |
| P2.FAC.1.Z2.200 |  | Framing & Sheathing at Clerestories / Sector Z2 | 5d | 2025-06-16 A | 2025-08-29 A | P2.FAC.1.Z2.170 | 100% |  |
| P2.FAC.1.Z2.120 |  | Air_Vapor Barrier / Sector Z2 | 5d | 2025-07-14 A | 2025-07-18 A | P2.PH.S.1050, P2.FAC.1.Z2.200, P2.PH.N.1050 | 100% |  |
| P2.FAC.1.Z2.230 |  | Remaining Sheathing & Insulation behind parapets / Sector Z2 | 5d | 2025-07-30 A | 2025-08-28 A | P2.FAC.4.Z2.140, P2.FAC.4.Z2.190 | 100% |  |
| P2.FAC.1.Z2.250 |  | Air_Vapor Barrier Patch Back / Sector Z2 | 5d | 2025-09-02 A | 2025-09-25 A | P2.FAC.1.Z2.230 | 100% |  |
|  | 2 | **Precast Panels - Sector Z2** |  | 2025-03-24 | 2025-07-10 |  |  |  |
| P2.FAC.2.Z2.190 |  | Precast _ Heavy Panel / Sector Z2 (Mobile Crane) | 10d | 2025-03-24 A | 2025-04-04 A | P2.7.03.620 | 100% |  |
| P2.FAC.2.Z2.110 |  | Precast _ L1 & L2 / Sector Z2 (West Crane) | 5d | 2025-04-21 A | 2025-04-30 A | P2.4.03.620, P2.FAC.2.Z1.180 | 100% |  |
| P2.FAC.2.Z2.150 |  | Precast _ L2 / Sector Z2 (East Crane) | 5d | 2025-05-05 A | 2025-05-09 A | P2.4.03.620, P2.FAC.1.Z2.180, P2.FAC.2.Z1.190, P2.FAD.PC.270 | 100% |  |
| P2.FAC.2.Z2.120 |  | Precast _ L3 & L4 / Sector Z2 (West Crane) | 5d | 2025-05-15 A | 2025-05-21 A | P2.FAC.2.Z1.130 | 100% |  |
| P2.FAC.2.Z2.160 |  | Precast _ L3 & L4 / Sector Z2 (East Crane) | 5d | 2025-05-19 A | 2025-05-23 A | P2.FAC.2.Z3.120 | 100% |  |
| P2.FAC.2.Z2.170 |  | Precast _ L5 & L6 / Sector Z2 (East Crane) | 5d | 2025-06-04 A | 2025-06-10 A | P2.6.03.620, P2.FAC.2.Z3.130 | 100% |  |
| P2.FAC.2.Z2.130 |  | Precast _ L5 & L6 / Sector Z2 (West Crane) | 5d | 2025-06-09 A | 2025-06-13 A | P2.6.03.620, P2.FAC.2.Z1.140 | 100% |  |
| P2.FAC.2.Z2.180 |  | Precast _ L7 & L8 / Sector Z2 (East Crane) | 5d | 2025-06-25 A | 2025-07-03 A | P2.8.03.620, P2.FAC.1.Z2.220, P2.FAC.2.Z3.140 | 100% |  |
| P2.FAC.2.Z2.140 |  | Precast _ L7 & L8 / Sector Z2 (West Crane) | 5d | 2025-06-30 A | 2025-07-10 A | P2.8.03.620, P2.FAC.2.Z1.160, P2.FAC.1.Z2.220, P2.FAC.2.Z1.150 | 100% |  |
|  | 4 | **Metal Panels & Louvers - Sector Z2** |  | 2025-11-17 | 2026-01-06 |  |  |  |
| P2.FAC.3.Z2.120 |  | Metal Panels Soffits @ Level 4 West & Center Hockey Sticks / Sector Z2 | 10d | 2025-11-17 A | 2025-12-02 | P2.FAC.4.Z2.190 | 80% | 66d |
| P2.FAC.3.Z2.140 |  | Metal Panels behind parapets / Sector Z2 | 5d | 2025-12-01 | 2025-12-05 | P2.FAC.1.Z2.250, P2.FAC.1.Z2.120 |  | 269d |
| P2.FAC.3.Z2.200 |  | Metal Roof @ Clerestories / Sector Z2 | 5d | 2025-12-15 | 2025-12-22 | BP2.070.3.100, P2.FAC.4.Z2.140 |  | 258.01d |
| P2.FAC.3.Z2.110 |  | Metal Panels @ West Clerestory / Sector Z2 | 5d | 2025-12-30 | 2026-01-06 | P2.FAC.1.Z2.120, P2.FAC.3.Z3.140, P2.FAC.4.Z3.210 |  | 37d |
|  | 3 | **Glass & Glazing - Sector Z2** |  | 2025-05-15 | 2026-05-22 |  |  |  |
| P2.FAC.4.Z2.110 |  | Storefront - L1 - West Tower / Sector Z2 | 10d | 2025-05-15 A | 2025-06-30 A | P2.FAC.4.Z1.150 | 100% |  |
| P2.FAC.4.Z2.120 |  | Curtainwall _ CW-01/GL-01 (West Hockey Stick) (CL Z2) / Sector Z2 | 10d | 2025-06-18 A | 2025-07-30 A | P2.FAC.4.Z1.120, P2.FAC.4.Z1.130 FF, P2.FAC.2.Z2.180 FF | 100% |  |
| P2.FAC.4.Z2.190 |  | Curtainwall _ CW-01/GL-01 (Center Hockey Stick) (CL Z4) / Sector Z2 | 10d | 2025-06-19 A | 2025-07-28 A | P2.FAC.4.Z2.120 | 100% |  |
| P2.FAC.4.Z2.170 |  | Storefront - L1 - Center Tower / Sector Z2 | 10d | 2025-06-25 A | 2025-07-17 A | P2.FAC.4.Z2.110 | 100% |  |
| P2.FAC.4.Z2.130 |  | Curtainwall _ CW-01/GL-01 (CL Z3.7) / Sector Z2 | 5d | 2025-07-16 A | 2025-08-04 A | P2.FAD.GG.300, P2.FAC.4.Z1.120 SS, P2.FAC.2.Z2.140 | 100% |  |
| P2.FAC.4.Z2.160 |  | Curtainwall _ CW-02/GL-02 (CL Z3.7-Z4) / Sector Z2 | 10d | 2025-07-23 A | 2025-08-18 A | P2.FAC.4.Z2.130 | 100% |  |
| P2.FAC.4.Z2.140 |  | Clerestory Glazing _ GL-02 (West Skylight) / Sector Z2 | 5d | 2025-08-01 A | 2025-08-14 A | P2.FAC.1.Z2.210, P2.MR.W.160, P2.FAC.1.Z3.200 | 100% |  |
| P2.FAC.4.Z2.200 |  | Glass-Glazing _ Stick-Built Windows/GL-02 (Level 8) / Sector Z2 | 15d | 2025-09-08 A | 2025-09-30 A | P2.FAC.2.Z2.180 | 100% |  |
| P2.FAC.3.Z2.210 |  | Curtainwall _ Storefront Door (CL ZD - ZE @ Z2) / Sector Z2 (Stair 2-10) | 2d | 2026-05-21 | 2026-05-22 | P2.FAC.3.Z1.160 |  | 137d |
|  | 5 | **Facade Finish Work - Sector Z2** |  | 2025-07-16 | 2026-04-17 |  |  |  |
| P2.FAC.5.Z2.210 |  | Precast Caulk & Seal / Sector Z2 | 20d | 2025-07-16 A | 2025-08-22 A | P2.FAC.2.Z2.180 FF, P2.FAC.2.Z2.140 | 100% |  |
| P2.FAC.1.Z2.160 |  | Stone Cladding _ST-01 / Sector Z2 | 10d | 2025-08-06 A | 2025-09-11 A | P2.FAC.5.Z1.210, P2.FAC.1.Z2.130, P2.FAC.4.Z2.110 | 100% |  |
| P2.FAC.5.Z2.220 |  | Caulk & Seal / Sector Z2 | 5d | 2026-01-07 | 2026-01-13 | P2.FAC.4.Z2.170, P2.FAC.3.Z2.110, P2.FAC.3.Z2.120 |  | 44d |
| P2.FAC.5.Z2.110 |  | Soffit Framing @ West Tower / Sector Z2 | 5d | 2026-03-09 | 2026-03-13 | P2.FAC.4.Z2.110, P2.SITE.20 |  | 176d |
| P2.FAC.5.Z2.120 |  | R/I MEP _ Soffit @ West Tower / Sector Z2 | 5d | 2026-03-16 | 2026-03-20 | P2.FAC.5.Z2.110 |  | 176d |
| P2.FAC.5.Z2.140 |  | Soffit Framing @ Center Tower / Sector Z2 | 5d | 2026-03-16 | 2026-03-20 | P2.FAC.5.Z2.110 |  | 176d |
| P2.FAC.5.Z2.130 |  | Metal Panel Facade Columns @ West Tower / Sector Z2 | 5d | 2026-03-23 | 2026-03-27 | P2.FAC.5.Z2.120, P2.SITE.20 |  | 176d |
| P2.FAC.5.Z2.160 |  | R/I MEP _ Soffit @ Center Tower / Sector Z2 | 5d | 2026-03-23 | 2026-03-27 | P2.FAC.5.Z2.140, P2.FAC.5.Z2.120 |  | 176d |
| P2.FAC.5.Z2.150 |  | Soffit Finish Panels @ West Tower / Sector Z2 | 5d | 2026-03-30 | 2026-04-03 | P2.FAC.5.Z2.130 |  | 176d |
| P2.FAC.5.Z2.170 |  | Metal Panel Facade Columns @ Center Tower / Sector Z2 | 5d | 2026-03-30 | 2026-04-03 | P2.FAC.5.Z2.160, P2.FAC.5.Z2.130, P2.SITE.20 |  | 176d |
| P2.FAC.5.Z2.180 |  | Soffit Finish Panels @ Center Tower / Sector Z2 | 5d | 2026-04-06 | 2026-04-10 | P2.FAC.5.Z2.150, P2.FAC.5.Z2.170 |  | 176d |
| P2.FAC.5.F.180 |  | Exterior LV Systems / Sector Z2 | 5d | 2026-04-13 | 2026-04-17 | P2.FAC.5.Z2.180, P2.FAC.5.Z2.150 |  | 176d |
| P2.FAC.5.Z2.190 |  | Exterior Lights& Receptacles / Sector Z2 | 5d | 2026-04-13 | 2026-04-17 | P2.FAC.5.Z2.180, P2.FAC.5.Z2.150 |  | 176d |
| P2.FAC.5.Z2.200 |  | Exterior Signage / Sector Z2 | 5d | 2026-04-13 | 2026-04-17 | P2.FAC.5.Z2.180, P2.FAC.5.Z2.220 |  | 176d |
|  | 6 | **Quality Control Inspections - Sector Z2** |  | 2026-04-20 | 2026-05-15 |  |  |  |
| P2.FAC.Z2.9000 |  | Trades Inspect & Verify Work Completed to Specs / Sector Z2 | 5d | 2026-04-20 | 2026-04-24 | P2.FAC.5.F.180, P2.FAC.5.Z2.220, P2.FAC.5.Z2.190, P2.FAC.1.Z2.160, P2.FAC.5.Z2.200, P2.FAC.3.Z2.140, P2.FAC.3.Z2.200, P2.HZ.E.111, P2.FAC.5.Z2.210 |  | 176d |
| P2.FAC.Z2.9010 |  | Inspect & Prepare Punchlist / Sector Z2 | 5d | 2026-04-27 | 2026-05-01 | P2.FAC.Z2.9000 |  | 176d |
| P2.FAC.Z2.9020 |  | Correct Punchlist / Sector Z2 | 5d | 2026-05-04 | 2026-05-08 | P2.FAC.Z2.9010 |  | 176d |
| P2.FAC.Z2.9030 |  | NIH Acceptance of Facade / Sector Z2 | 5d | 2026-05-11 | 2026-05-15 | P2.DES.VMU.670 FF, P2.FAC.Z2.9020 |  | 176d |
|  | 8 | **Sector Z3** |  | 2025-02-25 | 2026-05-27 |  |  |  |
|  | 1 | **Substrate Prep Work - Sector Z3** |  | 2025-02-25 | 2025-11-26 |  |  |  |
| P2.FAC.1.Z3.210 |  | Structural Steel Supports for LVL3 Quench Vents at Precast / Sector Z3 | 5d | 2025-02-25 A | 2025-03-11 A | P2.3.03.620 | 100% |  |
| P2.FAC.1.Z3.140 |  | Waterproofing (WP-01) at Foundation Wall / Sector Z3 | 5d | 2025-03-03 A | 2025-03-31 A | P1.BG.BF.170, P2.3.03.620, P2.3.03.650 | 100% |  |
| P2.FAC.1.Z3.170 |  | Structural Steel Supports for Curtain Wall / Sector Z3 | 5d | 2025-03-25 A | 2025-04-04 A | P2.FAC.1.Z3.180 SS | 100% |  |
| P2.FAC.1.Z3.180 |  | Structural Steel Supports for Precast Panels / Sector Z3 | 5d | 2025-03-25 A | 2025-04-01 A | P2.MR/PS.03.530 | 100% |  |
| P2.FAC.1.Z3.220 |  | Structural Steel Supports for LVL5 Quench Vents at Precast / Sector Z3 | 5d | 2025-04-21 A | 2025-04-25 A | P2.5.03.630 | 100% |  |
| P2.FAC.1.Z3.280 |  | Framing & Sheathing behind parapets (Level 7, Stair 2.8 Roof ) / Sector Z3 | 5d | 2025-05-07 A | 2025-05-13 A | P2.FAC.1.Z3.170, P2.PR.03.620 | 100% |  |

| ID | WBS | Task | Duration | Start | Finish | Predecessors | Complete | Total float |
| --- | --- | --- | --- | --- | --- | --- | --- | --- |
| P2.FAC.1.Z3.250 |  | Framing & Sheathing behind parapets (Penthouse Roof) / Sector Z3 | 5d | 2025-05-20 A | 2025-05-23 A | P2.PR.03.520 | 100% |  |
| P2.FAC.1.Z3.200 |  | Framing & Sheathing / Sector Z3 | 10d | 2025-05-26 A | 2025-07-09 A | P2.L8.N.1000 | 100% |  |
| P2.FAC.1.Z3.260 |  | Install Relief Angle L2 Roof / Sector Z3 | 5d | 2025-05-27 A | 2025-05-30 A | P2.LR.L2.120 | 100% |  |
| P2.FAC.1.Z2.210 |  | Steel - HSS Roof Framing @ All Clerestories / Sector Z3 | 5d | 2025-06-16 A | 2025-06-30 A | P2.PR.03.610, P2.2-8.03.11.130 | 100% |  |
| P2.2-8.03.11.130 |  | Steel - HSS Posts/Beams for Curtain Wall at Stair 2-8 _ All Levels Finalization / Sector Z3 | 5d | 2025-07-15 A | 2025-07-31 A | P2.7.03.730 FF, P2.8.03.730 | 100% |  |
| P2.FAC.1.Z3.120 |  | Air Vapor Barrier / Sector Z3 | 5d | 2025-07-23 A | 2025-10-30 A | P2.L8.EMT.1010, P2.FAC.1.Z3.200 | 100% |  |
| P2.FAC.1.Z3.230 |  | Remaining Sheathing behind parapets / Sector Z3 | 5d | 2025-07-30 A | 2025-08-21 A | P2.FAC.1.Z3.120 | 100% |  |
| P2.FAC.1.Z3.270 |  | Demo Remaining Facade below L2 Roof / Sector Z3 | 5d | 2025-07-31 A | 2025-09-27 A | P2.FAC.1.Z3.260 | 100% |  |
| P2.FAC.1.Z3.240 |  | Framing & Sheathing behind parapets (Main Roof) / Sector Z3 | 5d | 2025-08-01 A | 2025-08-21 A | P2.FAC.1.Z3.170, P2.2-8.03.11.130 | 100% |  |
| P2.FAC.1.Z3.300 |  | Air Vapor Barrier (behing Main Roof Parapets) / Sector Z3 | 5d | 2025-08-08 A | 2025-08-14 A | P2.FAC.1.Z3.240 | 100% |  |
| P2.FAC.1.Z3.310 |  | Air Vapor Barrier Patch Back / Sector Z3 | 5d | 2025-08-22 A | 2025-11-26 A | P2.FAC.1.Z3.230 | 100% |  |
| P2.FAC.1.Z3.190 |  | Fireproofing - Intumescent Paint - HSS Roof Framing @ All Clerestories / Sector Z3 | 5d | 2025-09-02 A | 2025-09-30 A | P2.PR.03.620, P2.FAC.1.Z2.210 | 100% |  |
| P2.FAC.1.Z3.290 |  | Air Vapor Barrier (Level 7 Roof Parapets) / Sector Z3 | 5d | 2025-09-02 A | 2025-09-15 A | P2.FAC.1.Z3.280 | 100% |  |
|  | 2 | **Precast Panels - Sector Z3** |  | 2025-04-21 | 2025-07-10 |  |  |  |
| P2.FAC.2.Z3.110 |  | Precast - Inset Panels (PCP-02) @ East Mech Tower_L1 / Sector Z3 | 10d | 2025-04-21 A | 2025-04-25 A | P2.7.03.630, P2.MR/PS.03.610 | 100% |  |
| P2.FAC.2.Z1.190 |  | Precast - Elevations at Electrical Room 2803 / Sector Z3 | 5d | 2025-04-28 A | 2025-05-07 A | P2.FAC.1.Z3.180, P2.L1.N.1090 | 100% |  |
| P2.FAC.2.Z3.120 |  | Precast _ L2 / Sector Z3 | 5d | 2025-05-08 A | 2025-05-20 A | DDD2610, P2.4.03.630, P2.FAC.2.Z2.150, P2.FAC.2.Z3.110, P2.LR.L2.100 | 100% |  |
| P2.FAC.2.Z3.130 |  | Precast _ L3 & L4 / Sector Z3 | 10d | 2025-05-15 A | 2025-07-02 A | P2.FAC.2.Z2.160, P2.FAC.1.Z3.210 | 100% |  |
| P2.FAC.2.Z3.140 |  | Precast _ L5 & L6 / Sector Z3 | 10d | 2025-06-16 A | 2025-07-10 A | P2.6.03.630, P2.FAC.2.Z2.170, P2.FAC.1.Z3.220 | 100% |  |
| P2.FAC.2.Z3.150 |  | Precast _ L7 & L8 & Elevator Tower / Sector Z3 | 10d | 2025-06-16 A | 2025-07-03 A | P2.8.03.630, P2.FAC.2.Z2.180, P2.FAC.1.Z3.180 | 100% |  |
|  | 4 | **Metal Panels & Louvers - Sector Z3** |  | 2025-07-22 | 2026-02-06 |  |  |  |
| P2.FAC.3.Z3.110 |  | Metal Louver Canopy & Supports / Sector Z3 | 6d | 2025-07-22 A | 2025-07-22 A | P2.FAC.3.Z3.230 | 100% |  |
| P2.FAC.3.Z3.180 |  | Louvers @ CL ZF / Sector Z3 | 10d | 2025-07-22 A | 2025-08-28 A | BP2.089.3.100, P2.FAC.3.Z3.110 | 100% |  |
| P2.FAC.3.Z3.230 |  | Quench Vent Louvers at Level 3 / Sector Z3 | 10d | 2025-07-22 A | 2025-07-28 A | P2.FAC.2.Z3.130 | 100% |  |
| P2.FAC.3.Z3.240 |  | Quench Vent Louvers at Level 5 / Sector Z3 | 10d | 2025-07-28 A | 2025-07-31 A | P2.FAC.2.Z3.140, P2.FAC.3.Z3.230 | 100% |  |
| P2.FAC.3.Z3.220 |  | Metal Roof @ Clerestories / Sector Z3 | 5d | 2025-10-06 A | 2025-11-21 A | BP2.070.3.100, P2.FAC.4.Z3.210 | 100% |  |
| P2.FAC.3.Z3.120 |  | Metal Panels @ East Mech Tower (Z10.2/ZD.5 to Z9.1/ZF ) / Sector Z3 | 10d | 2025-10-27 A | 2026-02-06 | P2.FAC.3.Z3.170, P2.FAC.5.Z3.130 |  | 256d |
| P2.FAC.3.Z3.170 |  | Metal Panels @ East Mech Tower (Z9/ZC to Z10.2/ZD.5) / Sector Z3 | 10d | 2025-11-12 A | 2025-12-05 | P2.FAC.1.Z3.120 | 50% | 64d |
| P2.FAC.3.Z3.130 |  | Metal Panels Soffits @ Level 4 East Hockey Sticks / Sector Z3 | 5d | 2025-11-19 A | 2025-12-03 | P2.FAC.3.Z2.120, P2.FAC.4.Z3.160 | 80% | 66d |
| P2.FAC.3.Z3.150 |  | Metal Panels @ North Penthouse Perimeter (Z4/ZF.3 to Z6/ZB.9) / Sector Z3 | 10d | 2025-12-01 | 2025-12-12 | P2.FAC.1.Z3.120 |  | 37d |
| P2.FAC.3.Z3.140 |  | Metal Panels @ North Penthouse Perimeter (Z6/ZB.9 to Z7.7/ZF.4) / Sector Z3 | 10d | 2025-12-15 | 2025-12-29 | P2.FAC.3.Z3.150 |  | 37d |
| P2.FAC.3.Z3.160 |  | Metal Panels @ Group 2 EMR / Sector Z3 | 10d | 2025-12-30 | 2026-01-13 | P2.FAC.3.Z3.140, P2.MR.EMT.9040 |  | 244d |
| P2.FAC.3.Z3.190 |  | Metal Panels @ Center & East Clerestories / Sector Z3 | 10d | 2026-01-07 | 2026-01-20 | P2.FAC.3.Z2.110 |  | 229d |
| P2.FAC.3.Z3.250 |  | Metal Panels behind parapet / Sector Z3 | 10d | 2026-01-21 | 2026-02-03 | P2.FAC.3.Z3.190, P2.FAC.1.Z3.310 |  | 229d |
|  | 3 | **Glass & Glazing - Sector Z3** |  | 2025-07-03 | 2026-05-27 |  |  |  |
| P2.FAC.4.Z3.160 |  | Curtainwall _ CW-01/GL-01 (East Hockey Stick) (CL Z6) / Sector Z3 | 10d | 2025-07-03 A | 2025-07-10 A | P2.FAC.4.Z2.190, P2.FAC.2.Z3.150, P2.FAC.1.Z3.170 | 100% |  |
| P2.FAC.4.Z3.110 |  | Storefronts - L1 - West Tower / Sector Z3 | 10d | 2025-07-10 A | 2025-07-14 A | P2.FAC.4.Z2.170 | 100% |  |
| P2.FAC.4.Z3.230 |  | Storefronts - L1 - Group 2 Elevator Tower / Sector Z3 | 10d | 2025-07-14 A | 2025-07-18 A | P2.FAC.4.Z3.110 | 100% |  |
| P2.FAC.4.Z3.170 |  | Curtainwall _ CW-01/GL-01 (CL Z7.7-ZA.7) / Sector Z3 | 5d | 2025-08-07 A | 2025-08-19 A | P2.FAC.4.Z3.200, P2.FAC.4.Z3.160 | 100% |  |
| P2.FAC.4.Z3.140 |  | Curtainwall _ CW-02/GL-02 (CL Z5.7-Z6) / Sector Z3 | 5d | 2025-08-08 A | 2025-08-14 A | P2.FAC.4.Z2.140 | 100% |  |
| P2.FAC.4.Z3.150 |  | Curtainwall _ CW-01/GL-01 (Corner @ CL Z5.7) / Sector Z3 | 5d | 2025-08-11 A | 2025-08-21 A | P2.FAC.4.Z3.160, P2.FAC.4.Z2.160 | 100% |  |
| P2.FAC.4.Z3.190 |  | Curtainwall _ CW-02/GL-02 (CL ZB.5-ZC) / Sector Z3 | 5d | 2025-08-18 A | 2025-08-21 A | P2.FAC.4.Z3.220, P2.FAC.4.Z3.180, P2.FAC.2.Z3.150 | 100% |  |
| P2.FAC.4.Z3.220 |  | Glass-Glazing _ Stick-Built Windows/GL-02 (Level 8) / Sector Z3 | 5d | 2025-09-22 A | 2025-09-30 A | P2.FAC.4.Z2.200, P2.FAC.2.Z3.150 | 100% |  |
| P2.FAC.4.Z3.200 |  | Clerestory Glazing _ GL-02 (Center Skylight) / Sector Z3 | 5d | 2025-10-06 A | 2025-10-09 A | P2.FAC.1.Z3.190, P2.MR.C.160, P2.FAC.4.Z2.140 | 100% |  |
| P2.FAC.4.Z3.210 |  | Clerestory Glazing _ GL-02 (East Skylight) / Sector Z3 | 5d | 2025-10-13 A | 2025-10-16 A | P2.MR.E.160, P2.FAC.4.Z3.200 | 100% |  |
| P2.FAC.4.Z3.180 |  | Curtainwall _ CW-02/GL-02 (Stair 2-8) (CL Z9.1-ZA.9) / Sector Z3 | 10d | 2025-10-27 A | 2025-11-06 A | P2.FAC.4.Z1.120, P2.FAC.2.Z1.190, P2.2-8.03.11.130 | 100% |  |
| P2.FAC.4.Z3.240 |  | Aluminum Folding Doors _ Levels 1 & 3 (CL ZB.5-ZC) / Sector Z3 | 10d | 2025-12-01 | 2025-12-12 | P2.FAC.4.Z3.190 |  | 254d |
| P2.FAC.3.Z3.260 |  | Curtainwall _ Storefront Door (CL ZA - ZA.7 @ Z7.7) / Sector Z3 (Stair 2-9) | 2d | 2026-05-26 | 2026-05-27 | P2.FAC.3.Z2.210 |  | 137d |
|  | 5 | **Facade Finish Work - Sector Z3** |  | 2025-06-09 | 2026-04-08 |  |  |  |
| P2.FAC.5.Z3.250 |  | Precast Caulk & Seal / Sector Z3 | 20d | 2025-06-09 A | 2025-08-28 A | P2.FAC.2.Z3.150 FF | 100% |  |
| P2.FAC.5.Z3.180 |  | Stone Cladding _ST-01 / Sector Z3 | 10d | 2025-08-25 A | 2025-11-06 A | P2.FAC.1.Z2.160, P2.FAC.1.Z3.140, P2.FAC.4.Z3.110 | 100% |  |
| P2.FAC.5.Z3.150 |  | Caulk & Seal / Sector Z3 | 5d | 2025-12-08 | 2025-12-12 | P2.FAC.3.Z3.180, P2.FAC.3.Z3.130, P2.FAC.3.Z3.240, P2.FAC.3.Z3.170, BP2.089.3.100 |  | 64d |
| P2.FAC.5.Z3.130 |  | Expansion Joints / Sector Z3 | 5d | 2026-01-19 | 2026-01-23 | P2.FAC.2.Z3.110, P2.FAC.1.Z3.120, P2.LR.L2.230, BP2.079.3.200, BP2.079.3.230 |  | 256d |
| P2.FAC.5.Z3.220 |  | Soffit Framing / Sector Z3 | 5d | 2026-03-05 | 2026-03-11 | P2.FAC.2.Z3.150, P2.SITE.15 |  | 183d |
| P2.FAC.5.Z3.230 |  | R/I MEP _ Soffit / Sector Z3 | 5d | 2026-03-12 | 2026-03-18 | P2.FAC.5.Z3.220 |  | 183d |
| P2.FAC.5.Z3.140 |  | Metal Panel Facade Columns / Sector Z3 | 5d | 2026-03-19 | 2026-03-25 | P2.FAC.5.Z3.230, P2.SITE.13 |  | 183d |
| P2.FAC.5.Z3.240 |  | Soffit Finish Panels / Sector Z3 | 5d | 2026-03-26 | 2026-04-01 | P2.FAC.5.Z3.140 |  | 183d |
| P2.FAC.5.F.190 |  | Exterior LV Systems / Sector Z3 | 5d | 2026-04-02 | 2026-04-08 | P2.FAC.5.Z3.240 |  | 183d |
| P2.FAC.5.Z3.110 |  | Exterior Signage / Sector Z3 | 5d | 2026-04-02 | 2026-04-08 | P2.FAC.5.Z3.240, P2.FAC.5.Z3.150 |  | 183d |
| P2.FAC.5.Z3.120 |  | Exterior Lights & Receptacles / Sector Z3 | 5d | 2026-04-02 | 2026-04-08 | P2.FAC.5.Z3.240 |  | 183d |
|  | 6 | **Quality Control Inspections - Sector Z3** |  | 2026-04-09 | 2026-05-06 |  |  |  |
| P2.FAC.Z3.9000 |  | Trades Inspect & Verify Work Completed to Specs / Sector Z3 | 5d | 2026-04-09 | 2026-04-15 | P2.FAC.3.Z3.160, P2.FAC.3.Z3.110, P2.FAC.5.F.190, P2.FAC.5.Z3.110, P2.FAC.5.Z3.120, P2.FAC.5.Z3.150, P2.FAC.5.Z3.180, P2.FAC.3.Z3.250, P2.FAC.3.Z3.220, P2.HZ.E.111, P2.FAC.5.Z3.250 |  | 183d |
| P2.FAC.Z3.9010 |  | Inspect & Prepare Punchlist / Sector Z3 | 5d | 2026-04-16 | 2026-04-22 | P2.FAC.Z3.9000 |  | 183d |
| P2.FAC.Z3.9020 |  | Correct Punchlist / Sector Z3 | 5d | 2026-04-23 | 2026-04-29 | P2.FAC.Z3.9010 |  | 183d |
| P2.FAC.Z3.9030 |  | NIH Acceptance of Facade / Sector Z3 | 5d | 2026-04-30 | 2026-05-06 | P2.DES.VMU.670 FF, P2.FAC.Z3.9020 |  | 183d |
|  | 4 | **PH 2 - Roofing** |  | 2025-03-11 | 2026-02-17 |  |  |  |
|  | 8 | **L2 - Low Roof / East Mech Tower Shaft** |  | 2025-04-16 | 2026-02-17 |  |  |  |
|  | 1 | **Weathertightness Prep** |  | 2025-04-16 | 2025-12-03 |  |  |  |
| P2.LR.L2.100 |  | Structural Steel at Level 2 Roof / Low Roof - L2 | 5d | 2025-04-16 A | 2025-04-23 A | P2.2.03.630 | 100% |  |
| P2.LR.L2.110 |  | Steel Inspection / Low Roof - L2 | 2d | 2025-04-24 A | 2025-04-25 A | P2.LR.L2.100 | 100% |  |

| ID | WBS | Task | Duration | Start | Finish | Predecessors | Complete | Total float |
| --- | --- | --- | --- | --- | --- | --- | --- | --- |
| P2.LR.L2.120 |  | Steel Decking at Level 2 Roof / Low Roof - L2 | 5d | 2025-04-28 A | 2025-05-24 A | P2.LR.L2.110 | 100% |  |
| P2.LR.L2.140 |  | Layout - All Trades / Low Roof - L2 | 2d | 2025-07-15 A | 2025-07-16 A | P2.8.03.530, P2.LR.L2.130 | 100% |  |
| P2.LR.L2.160 |  | Set & Connect Roof Drains / Low Roof - L2 | 2d | 2025-07-17 A | 2025-07-18 A | P2.LR.L2.140 | 100% |  |
| P2.LR.L2.130 |  | Roof Framing and Sheathing at Louver / Low Roof - L2 | 5d | 2025-07-21 A | 2025-07-31 A | P2.FAC.1.Z3.270, P2.LR.L2.120 | 100% |  |
| P2.LR.L2.150 |  | MEP - Penetrations, Sleeves, Supports & Pathways / Low Roof - L2 | 2d | 2025-07-28 A | 2025-07-31 A | P2.LR.L2.140 | 100% |  |
| P2.LR.L2.170 |  | Prefabricated Roof Hatch / Low Roof - L2 | 2d | 2025-09-08 A | 2025-09-09 A | BP2.076.3.100, P2.LR.L2.140 | 100% |  |
| P2.LR.L2.180 |  | Roofing - Temp Watertight Systems / Low Roof - L2 | 3d | 2025-12-01 | 2025-12-03 | BP2.073.3.100, P2.FAC.1.F.230, P2.LR.L2.150, P2.LR.L2.160, P2.LR.L2.170 |  | 72d |
|  | 3 | **Roofing Finishes** |  | 2025-12-30 | 2026-01-27 |  |  |  |
| P2.LR.L2.200 |  | Roofing - Permanent Systems / Low Roof - L2 | 5d | 2025-12-30 | 2026-01-06 | P2.FAC.5.F.200, P2.LR.L2.180 |  | 256d |
| P2.LR.L2.210 |  | Area Drain Flood Testing / Low Roof - L2 | 1d | 2026-01-07 | 2026-01-07 | P2.LR.L2.200 |  | 256d |
| P2.LR.L2.220 |  | Electronic Leak Detection Testing & Corrections / Low Roof - L2 | 2d | 2026-01-08 | 2026-01-09 | P2.LR.L2.210 |  | 256d |
| P2.LR.L2.230 |  | Metal Panels / Low Roof - L2 | 5d | 2026-01-12 | 2026-01-16 | P2.LR.L2.220 |  | 256d |
| P2.LR.L2.235 |  | Roof Ballasts, Copings, & Metal Trim / Low Roof - L2 | 5d | 2026-01-19 | 2026-01-23 | P2.LR.L2.230 |  | 264d |
| P2.LR.L2.240 |  | Roof Trim Out - All Trades / Low Roof - L2 | 2d | 2026-01-26 | 2026-01-27 | P2.LR.L2.235 |  | 264d |
|  | 4 | **Quality Control Inspections** |  | 2026-02-09 | 2026-02-17 |  |  |  |
| P2.LR.L2.9000 |  | Trades Inspect & Verify Work Completed to Specs / Low Roof - L2 | 2d | 2026-02-09 | 2026-02-10 | P2.FAC.3.Z3.120, P2.LR.L2.240 |  | 256d |
| P2.LR.L2.9010 |  | Inspect & Prepare Punchlist / Low Roof - L2 | 1d | 2026-02-11 | 2026-02-11 | P2.LR.L2.9000 |  | 256d |
| P2.LR.L2.9020 |  | Correct Punchlist / Low Roof - L2 | 2d | 2026-02-12 | 2026-02-13 | P2.LR.L2.9010 |  | 256d |
| P2.LR.L2.9030 |  | Final Inspection & Acceptance / Low Roof - L2 | 2d | 2026-02-16 | 2026-02-17 | P2.LR.L2.9020 |  | 256d |
|  | 14 | **L7 - Low Roof / @ Grid Z6/ZJ** |  | 2025-09-16 | 2025-12-23 |  |  |  |
|  | 1 | **Weathertightness Prep** |  | 2025-09-16 | 2025-10-14 |  |  |  |
| P2.LR.L7.100 |  | Layout - All Trades / Low Roof - L7 | 2d | 2025-09-16 A | 2025-09-17 A | P2.7.03.530, P2.PR.03.510, P2.FAC.4.Z3.180 | 100% |  |
| P2.LR.L7.140 |  | MEP - Penetrations, Sleeves, Supports & Pathways / Low Roof - L7 | 2d | 2025-09-18 A | 2025-09-19 A | P2.LR.L7.100 | 100% |  |
| P2.LR.L7.150 |  | Prefabricated Roof Hatch / Low Roof - L7 | 2d | 2025-09-18 A | 2025-09-19 A | P2.LR.L7.100 | 100% |  |
| P2.LR.L7.160 |  | Set & Connect Roof Drains / Low Roof - L7 | 2d | 2025-09-22 A | 2025-09-23 A | P2.LR.L7.140 | 100% |  |
| P2.LR.L7.170 |  | Roofing - Temp Watertight Systems / Low Roof - L7 | 2d | 2025-10-13 A | 2025-10-14 A | P2.FAC.1.Z3.290, P2.LR.L7.160, P2.LR.L7.150, P2.PR.S.1080 | 100% |  |
|  | 4 | **Roofing Finishes** |  | 2025-10-15 | 2025-12-12 |  |  |  |
| P2.LR.L7.200 |  | Roofing - Permanent Systems / Low Roof - L7 | 5d | 2025-10-15 A | 2025-10-17 A | P2.LR.L7.170 | 100% |  |
| P2.LR.L7.210 |  | Area Drain Flood Testing / Low Roof - L7 | 1d | 2025-12-01 | 2025-12-01 | P2.LR.L7.200 |  | 57d |
| P2.LR.L7.220 |  | Electronic Leak Detection Testing & Corrections / Low Roof - L7 | 2d | 2025-12-02 | 2025-12-03 | P2.LR.L7.210 |  | 57d |
| P2.LR.L7.230 |  | Metal Panels / Low Roof - L7 | 5d | 2025-12-04 | 2025-12-10 | P2.FAC.4.Z3.180, P2.LR.L7.220 |  | 57d |
| P2.LR.L7.240 |  | Roof Trim Out - All Trades / Low Roof - L7 | 2d | 2025-12-11 | 2025-12-12 | P2.LR.L7.230 |  | 57d |
|  | 6 | **Quality Control Inspections** |  | 2025-12-15 | 2025-12-23 |  |  |  |
| P2.LR.L7.9000 |  | Trades Inspect & Verify Work Completed to Specs / Low Roof - L7 | 2d | 2025-12-15 | 2025-12-16 | P2.LR.L7.240 |  | 57d |
| P2.LR.L7.9010 |  | Inspect & Prepare Punchlist / Low Roof - L7 | 1d | 2025-12-17 | 2025-12-17 | P2.LR.L7.9000 |  | 57d |
| P2.LR.L7.9020 |  | Correct Punchlist / Low Roof - L7 | 2d | 2025-12-18 | 2025-12-19 | P2.LR.L7.9010 |  | 57d |
| P2.LR.L7.9030 |  | Final Inspection & Acceptance / Low Roof - L7 | 2d | 2025-12-22 | 2025-12-23 | P2.LR.L7.9020 |  | 57d |
|  | 6 | **L9 - MAIN ROOF** |  | 2025-03-11 | 2026-02-05 |  |  |  |
|  | 1 | **Main Roof / West Tower** |  | 2025-03-11 | 2026-01-22 |  |  |  |
|  | 4 | **Weathertightness Prep** |  | 2025-03-24 | 2025-05-30 |  |  |  |
| P2.MR.W.100 |  | Layout - All Trades / Main Roof - West | 2d | 2025-03-24 A | 2025-03-28 A | P2.PR.03.510 | 100% |  |
| P2.MR.W.110 |  | MEP - Penetrations, Sleeves, Supports & Pathways / Main Roof - West | 5d | 2025-03-24 A | 2025-03-28 A | P2.MR.W.100 | 100% |  |
| P2.MR.W.120 |  | Set & Connect Roof Drains / Main Roof - West | 5d | 2025-03-24 A | 2025-03-28 A | P2.MR.W.100 | 100% |  |
| P2.MR.W.130 |  | Prefabricated Curbs and Flashing / Main Roof - West | 5d | 2025-03-24 A | 2025-03-28 A | P2.MR.W.100, P2.MR.W.120 | 100% |  |
| P2.MR.W.140 |  | Facade Maint Equip - R/I / Main Roof - West | 5d | 2025-03-24 A | 2025-03-28 A | P2.FAD.FM.230, P2.FAD.FM.240, P2.MR.W.100, P2.MR.W.130 | 100% |  |
| P2.MR.W.160 |  | Roofing - Watertight Systems (WP-05) / Main Roof - West | 5d | 2025-04-15 A | 2025-05-30 A | P2.MR/PS.03.420, P2.FAC.1.Z2.220, P2.FAC.1.Z2.240, P2.MR.W.140, P2.MR.W.110, P2.MR.W.120, P2.MR.W.130, P2.MR.W.150 SS | 100% |  |
| P2.MR.W.150 |  | Prefabricated Roof Hatch / Main Roof - West | 2d | 2025-04-28 A | 2025-05-28 A | P2.MR.W.140, P2.MR.W.100 | 100% |  |
|  | 1 | **Rooftop MEP** |  | 2025-03-11 | 2025-12-08 |  |  |  |
| P2.MR.W.170 |  | Support Frames - Rooftop Equip / Main Roof - West | 5d | 2025-03-11 A | 2025-03-28 A | P2.MR/PS.03.520 | 100% |  |
| P2.MR.W.9060 |  | HVAC Equip - Set and Connect / Main Roof - West | 5d | 2025-11-13 A | 2025-11-13 A | P2.MR.W.170 | 100% |  |
| P2.MR.W.190 |  | Elec Connections to MEP / Main Roof - West | 5d | 2025-11-25 A | 2025-12-08 | P2.MR.W.180 | 80% | 61d |
| P2.MR.W.180 |  | MEP - Piping & Equip Tie In / Main Roof - West | 5d | 2025-12-01 | 2025-12-05 | P2.MR.W.9060 |  | 32d |
|  | 2 | **Roofing Finishes** |  | 2025-06-23 | 2026-01-13 |  |  |  |
| P2.MR.W.200 |  | Roofing - Permanent Systems / Main Roof - West | 5d | 2025-06-23 A | 2025-07-17 A | P2.MR.W.180, P2.MR.W.160 | 100% |  |
| P2.MR.W.210 |  | Flood Test / Main Roof - West | 2d | 2025-07-08 A | 2025-07-09 A | P2.MR.W.200 | 100% |  |
| P2.MR.W.220 |  | Electronic Leak Detection Testing & Corrections / Main Roof - West | 3d | 2025-07-08 A | 2025-07-09 A | P2.MR.W.210 | 100% |  |
| P2.MR.W.230 |  | Roof Pavers (RS-01) / Main Roof - West | 10d | 2025-07-14 A | 2025-09-22 A | BP2.073.3.110, P2.MR.W.220, P1.BGS.190 SS | 100% |  |
| P2.MR.W.9050 |  | Roofing - Patch Back / Main Roof - West | 5d | 2025-09-23 A | 2025-11-06 A | P2.FAC.1.Z1.220, P2.FAC.1.Z2.230 | 100% |  |
| P2.MR.W.260 |  | Ladders & Stairs / Main Roof - West | 5d | 2025-11-03 A | 2025-11-06 A | P2.MR.W.240 | 100% |  |
| P2.MR.W.240 |  | Metal Panels / Main Roof - West | 5d | 2025-12-08 | 2025-12-12 | P2.MR.W.9050, P2.MR.W.230 |  | 52d |
| P2.MR.W.250 |  | Roof Trim Out - All Trades / Main Roof - West | 5d | 2025-12-15 | 2025-12-19 | P2.MR.W.240 |  | 52d |
| P2.MR.W.270 |  | Roofing - Standing Seam - Clerestory | 5d | 2026-01-07 | 2026-01-13 | P2.FAC.3.Z2.110 |  | 37d |
|  | 6 | **Quality Control Inspections** |  | 2026-01-14 | 2026-01-22 |  |  |  |
| P2.MR.W.9000 |  | Trades Inspect & Verify Work Completed to Specs / Main Roof - West | 2d | 2026-01-14 | 2026-01-15 | P2.MR.W.260, P2.MR.W.270, P2.MR.W.250, P2.MR.W.190 |  | 37d |
| P2.MR.W.9010 |  | Inspect & Prepare Punchlist / Main Roof - West | 1d | 2026-01-16 | 2026-01-16 | P2.MR.W.9000 |  | 37d |
| P2.MR.W.9020 |  | Correct Punchlist / Main Roof - West | 2d | 2026-01-19 | 2026-01-20 | P2.MR.W.9010 |  | 37d |
| P2.MR.W.9030 |  | Final Inspection & Acceptance / Main Roof - West | 2d | 2026-01-21 | 2026-01-22 | P2.MR.W.9020 |  | 37d |
|  | 2 | **Main Roof / Center Tower** |  | 2025-03-31 | 2026-02-05 |  |  |  |
|  | 4 | **Weathertightness Prep** |  | 2025-03-31 | 2025-05-30 |  |  |  |
| P2.MR.C.100 |  | Layout - All Trades / Main Roof - Center | 2d | 2025-03-31 A | 2025-04-01 A | P2.MR/PS.03.330 SS | 100% |  |

| ID | WBS | Task | Duration | Start | Finish | Predecessors | Complete | Total float |
| --- | --- | --- | --- | --- | --- | --- | --- | --- |
| P2.MR.C.110 |  | MEP - Penetrations, Sleeves, Supports & Pathways / Main Roof - Center | 5d | 2025-03-31 A | 2025-04-04 A | P2.MR.C.100 SS | 100% |  |
| P2.MR.C.120 |  | Set & Connect Roof Drains / Main Roof - Center | 5d | 2025-03-31 A | 2025-04-04 A | P2.MR.C.100 SS | 100% |  |
| P2.MR.C.130 |  | Prefabricated Curbs and Flashing / Main Roof - Center | 5d | 2025-03-31 A | 2025-04-04 A | P2.MR.C.120 SS, P2.MR.C.100 SS | 100% |  |
| P2.MR.C.140 |  | Facade Maint Equip - R/I / Main Roof - Center | 5d | 2025-03-31 A | 2025-04-04 A | P2.MR.C.130 SS, P2.MR.C.100 SS | 100% |  |
| P2.MR.C.150 |  | Prefabricated Roof Hatch / Main Roof - Center | 2d | 2025-04-28 A | 2025-05-29 A | P2.MR.C.140 SS, P2.MR.C.100 SS | 100% |  |
| P2.MR.C.160 |  | Roofing - Watertight Systems (WP-05) / Main Roof - Center | 5d | 2025-04-28 A | 2025-05-30 A | P2.MR/PS.03.430, P2.MR.C.110, P2.MR.C.120, P2.MR.C.130, P2.MR.W.160, P2.MR.C.140, P2.MR.C.150 | 100% |  |
|  | 2 | **Roofing Finishes** |  | 2025-06-25 | 2026-01-27 |  |  |  |
| P2.MR.C.200 |  | Roofing - Permanent Systems / Main Roof - Center | 5d | 2025-06-25 A | 2025-07-02 A | P2.MR.C.160 | 100% |  |
| P2.MR.C.210 |  | Flood Test / Main Roof - Center | 2d | 2025-07-07 A | 2025-07-09 A | P2.MR.C.200 | 100% |  |
| P2.MR.C.220 |  | Electronic Leak Detection Testing & Corrections / Main Roof - Center | 3d | 2025-07-07 A | 2025-07-09 A | P2.MR.C.210 | 100% |  |
| P2.MR.C.9040 |  | Roofing - Patch Back / Main Roof - Center | 5d | 2025-10-01 A | 2025-10-07 A | P2.FAC.1.Z2.230, P2.FAC.4.Z3.140, P2.FAC.4.Z3.150 | 100% |  |
| P2.MR.C.230 |  | Roof Pavers (RS-01) / Main Roof - Center | 10d | 2025-10-15 A | 2025-10-28 A | P2.MR.W.230, P2.MR.C.220, P1.BGS.190 SS, P1.BGS.280 SS | 100% |  |
| P2.MR.C.240 |  | Metal Panels / Main Roof - Center | 5d | 2025-10-29 A | 2025-12-09 | P2.MR.C.9040, P2.MR.C.230 | 60% | 292d |
| P2.MR.C.260 |  | Ladders & Stairs / Main Roof - Center | 5d | 2025-11-04 A | 2025-12-11 | P2.MR.C.240 | 60% | 295d |
| P2.MR.C.250 |  | Roof Trim Out - All Trades / Main Roof - Center | 5d | 2025-12-10 | 2025-12-16 | P2.MR.C.240 |  | 292d |
| P2.MR.C.270 |  | Roofing - Standing Seam - Clerestory | 5d | 2026-01-21 | 2026-01-27 | P2.FAC.3.Z3.190 |  | 264d |
|  | 6 | **Quality Control Inspections** |  | 2026-01-28 | 2026-02-05 |  |  |  |
| P2.MR.C.9000 |  | Trades Inspect & Verify Work Completed to Specs / Main Roof - Center | 2d | 2026-01-28 | 2026-01-29 | P2.MR.C.260, P2.MR.C.270, P2.MR.C.250 |  | 264d |
| P2.MR.C.9010 |  | Inspect & Prepare Punchlist / Main Roof - Center | 1d | 2026-01-30 | 2026-01-30 | P2.MR.C.9000 |  | 264d |
| P2.MR.C.9020 |  | Correct Punchlist / Main Roof - Center | 2d | 2026-02-02 | 2026-02-03 | P2.MR.C.9010 |  | 264d |
| P2.MR.C.9030 |  | Final Inspection & Acceptance / Main Roof - Center | 2d | 2026-02-04 | 2026-02-05 | P2.MR.C.9020 |  | 264d |
|  | 3 | **Main Roof / East Tower** |  | 2025-04-18 | 2025-12-23 |  |  |  |
|  | 4 | **Weathertightness Prep** |  | 2025-04-18 | 2025-05-30 |  |  |  |
| P2.MR.E.100 |  | Layout - All Trades / Main Roof - East | 2d | 2025-04-18 A | 2025-04-21 A | P2.PR.03.520 | 100% |  |
| P2.MR.E.110 |  | MEP - Penetrations, Sleeves, Supports & Pathways / Main Roof - East | 5d | 2025-04-21 A | 2025-04-28 A | P2.MR.E.100 | 100% |  |
| P2.MR.E.120 |  | Set & Connect Roof Drains / Main Roof - East | 5d | 2025-04-21 A | 2025-04-28 A | P2.MR.E.100 | 100% |  |
| P2.MR.E.130 |  | Prefabricated Curbs and Flashing / Main Roof - East | 5d | 2025-04-21 A | 2025-04-28 A | P2.MR.E.100, P2.MR.E.120 | 100% |  |
| P2.MR.E.140 |  | Facade Maint Equip - R/I / Main Roof - East | 5d | 2025-04-21 A | 2025-04-28 A | P2.MR.E.100, P2.MR.E.130 | 100% |  |
| P2.MR.E.150 |  | Prefabricated Roof Hatch / Main Roof - East | 2d | 2025-04-28 A | 2025-05-28 A | P2.MR.E.140, P2.MR.E.100 | 100% |  |
| P2.MR.E.160 |  | Roofing - Watertight Systems (WP-05) / Main Roof - East | 5d | 2025-04-28 A | 2025-05-30 A | P2.FAC.1.Z3.240, P2.MR.C.160, P2.MR.E.140, P2.MR.E.150, P2.MR.E.110, P2.MR.E.120, P2.MR.E.130 | 100% |  |
|  | 2 | **Roofing Finishes** |  | 2025-06-30 | 2025-12-12 |  |  |  |
| P2.MR.E.200 |  | Roofing - Permanent Systems / Main Roof - East | 5d | 2025-06-30 A | 2025-07-19 A | P2.MR.E.160 | 100% |  |
| P2.MR.E.210 |  | Flood Test / Main Roof - East | 2d | 2025-07-07 A | 2025-07-09 A | P2.MR.E.200 | 100% |  |
| P2.MR.E.220 |  | Electronic Leak Detection Testing & Corrections / Main Roof - East | 3d | 2025-07-07 A | 2025-07-09 A | P2.MR.E.210 | 100% |  |
| P2.MR.E.230 |  | Roof Pavers (RS-01) / Main Roof - East | 5d | 2025-09-15 A | 2025-09-23 A | BP2.073.3.110, P2.MR.E.220, P1.BGS.280 SS | 100% |  |
| P2.MR.E.9040 |  | Roofing - Patch Back / Main Roof - East | 5d | 2025-09-24 A | 2025-11-18 A | P2.FAC.4.Z3.170 FF, P2.FAC.4.Z3.160 | 100% |  |
| P2.MR.E.240 |  | Metal Panels / Main Roof - East | 5d | 2025-12-01 | 2025-12-05 | P2.MR.E.9040, P2.MR.E.230 |  | 294d |
| P2.MR.E.250 |  | Roof Trim Out - All Trades / Main Roof - East | 5d | 2025-12-08 | 2025-12-12 | P2.MR.E.240 |  | 294d |
| P2.MR.E.260 |  | Ladders & Stairs / Main Roof - East | 5d | 2025-12-08 | 2025-12-12 | P2.MR.E.240 |  | 294d |
|  | 8 | **Quality Control Inspections** |  | 2025-12-15 | 2025-12-23 |  |  |  |
| P2.MR.E.9000 |  | Trades Inspect & Verify Work Completed to Specs / Main Roof - East | 2d | 2025-12-15 | 2025-12-16 | P2.MR.E.260, P2.MR.E.250 |  | 294d |
| P2.MR.E.9010 |  | Inspect & Prepare Punchlist / Main Roof - East | 1d | 2025-12-17 | 2025-12-17 | P2.MR.E.9000 |  | 294d |
| P2.MR.E.9020 |  | Correct Punchlist / Main Roof - East | 2d | 2025-12-18 | 2025-12-19 | P2.MR.E.9010 |  | 294d |
| P2.MR.E.9030 |  | Final Inspection & Acceptance / Main Roof - East | 2d | 2025-12-22 | 2025-12-23 | P2.MR.E.9020 |  | 294d |
|  | 10 | **Main Roof / East Mechanical Tower** |  | 2025-03-24 | 2026-01-20 |  |  |  |
|  | 1 | **Weathertightness Prep** |  | 2025-04-15 | 2025-08-21 |  |  |  |
| P2.MR.EMT.1020 |  | Steel Equipment Supports / Main Roof - East Mech Tower | 5d | 2025-04-15 A | 2025-04-30 A | P2.MR.EMT.1000 | 100% |  |
| P2.MR.EMT.1000 |  | Layout - All Trades / Main Roof - East Mech Tower | 5d | 2025-04-18 A | 2025-04-24 A | P2.PR.03.520 | 100% |  |
| P2.MR.EMT.1010 |  | Prefabricated Curbs and Flashing / Main Roof - East Mech Tower | 5d | 2025-05-01 A | 2025-05-14 A | P2.MR.EMT.1000, P2.MR.EMT.1060 | 100% |  |
| P2.MR.EMT.1030 |  | Facade Maint Equip - R/I / Main Roof - East Mech Tower | 5d | 2025-05-01 A | 2025-05-07 A | P2.MR.EMT.1000, P2.MR.EMT.1020 | 100% |  |
| P2.MR.EMT.1040 |  | Fall Protection Anchors / Main Roof - East Mech Tower | 5d | 2025-05-01 A | 2025-05-14 A | P2.MR.EMT.1030 | 100% |  |
| P2.MR.EMT.1050 |  | MEP - Penetrations, Sleeves, Supports & Pathways / Main Roof - East Mech Tower | 5d | 2025-05-01 A | 2025-05-14 A | P2.MR.EMT.1000, P2.MR.EMT.1030 | 100% |  |
| P2.MR.EMT.1060 |  | Set & Connect Roof Drains / Main Roof - East Mech Tower | 5d | 2025-05-01 A | 2025-05-14 A | P2.MR.EMT.1000, P2.MR.EMT.1050 | 100% |  |
| P2.MR.EMT.1070 |  | Prefabricated Roof Hatch / Main Roof - East Mech Tower | 2d | 2025-05-28 A | 2025-05-30 A | P2.MR.EMT.1010, P2.MR.EMT.1000 | 100% |  |
| P2.MR.EMT.1080 |  | Roofing - Watertight Systems (WP-05 & Green Roof) / Main Roof - East | 5d | 2025-08-04 A | 2025-08-21 A | P2.FAC.1.Z3.300, P2.MR.E.160, P2.MR.EMT.1010, P2.MR.EMT.1070, P2.MR.EMT.1040, P2.MR.EMT.1050, P2.MR.EMT.1060 | 100% |  |
|  | 3 | **Rooftop MEP** |  | 2025-03-24 | 2025-12-24 |  |  |  |
| P2.MR.EMT.1090 |  | Support Frames - Rooftop Duct / Main Roof - East Mech Tower | 5d | 2025-03-24 A | 2025-05-14 A | P2.MR/PS.03.520 | 100% |  |
| P2.MR.EMT.1100 |  | Support Frames - Rooftop Stacks / Main Roof - East Mech Tower | 5d | 2025-05-01 A | 2025-05-14 A | P2.MR.EMT.1080, P2.MR.EMT.1020 | 100% |  |
| P2.MR.EMT.1140 |  | HVAC Duct - Stack R/I / Main Roof - East Mech Tower | 5d | 2025-09-18 A | 2025-09-25 A | P2.MR.EMT.1100 | 100% |  |
| P2.MR.EMT.1110 |  | HVAC Equip - Set and Connect / Main Roof - East Mech Tower | 5d | 2025-09-22 A | 2025-11-13 A | P2.MR.EMT.1080, P1.BGS.280 | 100% |  |
| P2.MR.EMT.1120 |  | VFD's - Set and Connect / Main Roof - East Mech Tower | 5d | 2025-09-22 A | 2025-10-07 A | P2.MR.EMT.1110 | 100% |  |
| P2.MR.EMT.1130 |  | HVAC Duct - R/I / Main Roof - East Mech Tower | 10d | 2025-11-12 A | 2025-12-10 | P2.MR.EMT.1090, P2.MR.EMT.1080 | 20% | 24d |
| P2.MR.EMT.1150 |  | MEP - Piping & Equip Tie In / Main Roof - East Mech Tower | 5d | 2025-12-11 | 2025-12-17 | P2.MR.EMT.1130, P2.MR.EMT.1140, P2.MR.EMT.1120 |  | 24d |
| P2.MR.EMT.1160 |  | Elect Connections to MEP / Main Roof - East Mech Tower | 5d | 2025-12-18 | 2025-12-24 | P2.MR.EMT.1150 |  | 34d |
|  | 4 | **Roofing Finishes** |  | 2025-07-07 | 2026-01-09 |  |  |  |
| P2.MR.EMT.2000 |  | Roofing - Permanent Systems / Main Roof - East Mech Tower | 10d | 2025-07-07 A | 2025-07-24 A | P2.MR.EMT.1150 FF, P2.MR.E.160 | 100% |  |
| P2.MR.EMT.2070 |  | Exterior Framing and Sheathing at Roof Penthouse Main Roof / EMMR-GRP2 Roof | 5d | 2025-07-14 A | 2025-07-18 A | P2.PH.N.1050 | 100% |  |
| P2.MR.EMT.2010 |  | Flood Test / Main Roof - East Mech Tower | 2d | 2025-10-01 A | 2025-10-02 A | P2.MR.EMT.2000 | 100% |  |
| P2.MR.EMT.9050 |  | Roofing - Patch Back / Main Roof - East Mech Tower | 10d | 2025-10-06 A | 2025-10-07 A | P2.FAC.4.Z3.180 FF, P2.MR.EMT.1150 | 100% |  |
| P2.MR.EMT.2020 |  | Electronic Leak Detection Testing & Corrections / Main Roof - East Mech Tower | 3d | 2025-10-08 A | 2025-10-09 A | P2.MR.EMT.2010 | 100% |  |

| ID | WBS | Task | Duration | Start | Finish | Predecessors | Complete | Total float |
| --- | --- | --- | --- | --- | --- | --- | --- | --- |
| P2.MR.EMT.9040 |  | Roofing - Standing Seam around Group 2 Elevator Tower Main Roof / EMMR-GRP2 Roof | 5d | 2025-10-13 A | 2025-11-27 A | P2.MR.EMT.2070 | 100% |  |
| P2.MR.EMT.2060 |  | Ladders & Stairs / Main Roof - East Mech Tower | 5d | 2025-11-04 A | 2025-11-20 A | P2.MR.EMT.2050 | 100% |  |
| P2.MR.EMT.2030 |  | Roof Pavers (RS-01) / Main Roof - East Mech Tower | 10d | 2025-12-18 | 2026-01-02 | P2.MR.C.230, P2.MR.EMT.2020 |  | 24d |
| P2.MR.EMT.2050 |  | Roof Trim Out - All Trades / Main Roof - East Mech Tower | 5d | 2026-01-05 | 2026-01-09 | P2.MR.EMT.2030, P2.MR.EMT.9050 |  | 24d |
|  | 5 | **Quality Control Inspections** |  | 2026-01-12 | 2026-01-20 |  |  |  |
| P2.MR.EMT.9000 |  | Trades Inspect & Verify Work Completed to Specs / Main Roof - East Mech Tower | 2d | 2026-01-12 | 2026-01-13 | P2.MR.EMT.2060, P2.MR.EMT.1160 |  | 24d |
| P2.MR.EMT.9010 |  | Inspect & Prepare Punchlist / Main Roof - East Mech Tower | 1d | 2026-01-14 | 2026-01-14 | P2.MR.EMT.9000 |  | 24d |
| P2.MR.EMT.9020 |  | Correct Punchlist / Main Roof - East Mech Tower | 2d | 2026-01-15 | 2026-01-16 | P2.MR.EMT.9010 |  | 24d |
| P2.MR.EMT.9030 |  | Final Inspection & Acceptance / Main Roof - East Mech Tower | 2d | 2026-01-19 | 2026-01-20 | P2.MR.EMT.9020 |  | 24d |
|  | 11 | **Main Roof / Stair 5-8** |  | 2025-07-16 | 2025-12-23 |  |  |  |
|  | 4 | **Weathertightness Prep** |  | 2025-07-16 | 2025-10-17 |  |  |  |
| P2.MR.5-8.100 |  | Layout - All Trades / Main Roof - Stair 5-8 | 2d | 2025-07-16 A | 2025-07-17 A | P2.FAC.1.F.200 | 100% |  |
| P2.MR.5-8.110 |  | MEP - Penetrations, Sleeves, Supports & Pathways / Main Roof - Stair 5-8 | 2d | 2025-07-18 A | 2025-07-21 A | P2.MR.5-8.100 | 100% |  |
| P2.MR.5-8.120 |  | Set & Connect Roof Drains / Main Roof - Stair 5-8 | 2d | 2025-07-18 A | 2025-07-21 A | P2.MR.5-8.100 | 100% |  |
| P2.MR.5-8.130 |  | Prefabricated Roof Hatch / Main Roof - Stair 5-8 | 2d | 2025-07-22 A | 2025-07-23 A | P2.MR.5-8.100, P2.MR.5-8.120 | 100% |  |
| P2.MR.5-8.150 |  | Framing & Sheathing of Parapets / Main Roof - Stair 5-8 | 5d | 2025-07-24 A | 2025-07-30 A | P2.MR.5-8.130, P2.MR.5-8.100 | 100% |  |
| P2.MR.5-8.140 |  | Roofing - Temp Watertight Systems / Main Roof - Stair 5-8 | 2d | 2025-10-16 A | 2025-10-17 A | P2.MR.5-8.130, P2.MR.5-8.150, P2.MR.5-8.110, P2.MR.5-8.120, P2.L11.5-9.140 | 100% |  |
|  | 2 | **Roofing Finishes** |  | 2025-10-18 | 2025-12-12 |  |  |  |
| P2.MR.5-8.200 |  | Roofing - Permanent Systems / Main Roof - Stair 5-8 | 5d | 2025-10-18 A | 2025-10-22 A | P2.MR.5-8.140 | 100% |  |
| P2.MR.5-8.210 |  | Flood Test / Main Roof - Stair 5-8 | 1d | 2025-12-01 | 2025-12-01 | P2.MR.5-8.200 |  | 57d |
| P2.MR.5-8.220 |  | Electronic Leak Detection Testing & Corrections / Main Roof - Stair 5-8 | 2d | 2025-12-02 | 2025-12-03 | P2.MR.5-8.210 |  | 57d |
| P2.MR.5-8.230 |  | Metal Panels / Main Roof - Stair 5-8 | 5d | 2025-12-04 | 2025-12-10 | P2.MR.5-8.220 |  | 57d |
| P2.MR.5-8.240 |  | Roof Trim Out - All Trades / Main Roof - Stair 5-8 | 2d | 2025-12-11 | 2025-12-12 | P2.MR.5-8.230 |  | 57d |
|  | 6 | **Quality Control Inspections** |  | 2025-12-15 | 2025-12-23 |  |  |  |
| P2.MR.5-8.9000 |  | Trades Inspect & Verify Work Completed to Specs / Main Roof - Stair 5-8 | 2d | 2025-12-15 | 2025-12-16 | P2.MR.5-8.240 |  | 57d |
| P2.MR.5-8.9010 |  | Inspect & Prepare Punchlist / Main Roof - Stair 5-8 | 1d | 2025-12-17 | 2025-12-17 | P2.MR.5-8.9000 |  | 57d |
| P2.MR.5-8.9020 |  | Correct Punchlist / Main Roof - Stair 5-8 | 2d | 2025-12-18 | 2025-12-19 | P2.MR.5-8.9010 |  | 57d |
| P2.MR.5-8.9030 |  | Final Inspection & Acceptance / Main Roof - Stair 5-8 | 2d | 2025-12-22 | 2025-12-23 | P2.MR.5-8.9020 |  | 57d |
|  | 7 | **Main Roof / Stair 2-8** |  | 2025-03-25 | 2025-12-23 |  |  |  |
|  | 4 | **Weathertightness Prep** |  | 2025-03-25 | 2025-11-18 |  |  |  |
| P2.MR.2-8.100 |  | Layout - All Trades / Main Roof - Stair 2-8 | 2d | 2025-03-25 A | 2025-03-26 A | P2.MR/PS.03.530 | 100% |  |
| P2.MR.2-8.110 |  | MEP - Penetrations, Sleeves, Supports & Pathways / Main Roof - Stair 2-8 | 2d | 2025-03-27 A | 2025-03-28 A | P2.MR.2-8.100 | 100% |  |
| P2.MR.2-8.120 |  | Set & Connect Roof Drains / Main Roof - Stair 2-8 | 2d | 2025-03-27 A | 2025-03-28 A | P2.MR.2-8.100, P2.MR.2-8.110 | 100% |  |
| P2.MR.2-8.130 |  | Prefabricated Roof Hatch / Main Roof - Stair 2-8 | 2d | 2025-07-21 A | 2025-07-22 A | P2.MR.2-8.100, P2.MR.2-8.120 | 100% |  |
| P2.MR.2-8.140 |  | Roofing - Temp Watertight Systems / Main Roof - Stair 2-8 | 2d | 2025-11-17 A | 2025-11-18 A | P2.MR/PS.03.430, P2.FAC.1.Z3.240, P2.MR.2-8.110, P2.MR.2-8.120, P2.MR.2-8.130 | 100% |  |
|  | 2 | **Roofing Finishes** |  | 2025-11-19 | 2025-12-12 |  |  |  |
| P2.MR.2-8.200 |  | Roofing - Permanent Systems / Main Roof - Stair 2-8 | 5d | 2025-11-19 A | 2025-11-21 A | P2.MR.2-8.140, P2.FAC.4.Z3.180 | 100% |  |
| P2.MR.2-8.210 |  | Flood Test / Main Roof - Stair 2-8 | 1d | 2025-12-01 | 2025-12-01 | P2.MR.2-8.200 |  | 57d |
| P2.MR.2-8.220 |  | Electronic Leak Detection Testing & Corrections / Main Roof - Stair 2-8 | 2d | 2025-12-02 | 2025-12-03 | P2.MR.2-8.210 |  | 57d |
| P2.MR.2-8.230 |  | Metal Panels / Main Roof - Stair 2-8 | 5d | 2025-12-04 | 2025-12-10 | P2.MR.2-8.220 |  | 57d |
| P2.MR.2-8.240 |  | Roof Trim Out - All Trades / Main Roof - Stair 2-8 | 2d | 2025-12-11 | 2025-12-12 | P2.MR.2-8.230 |  | 57d |
|  | 6 | **Quality Control Inspections** |  | 2025-12-15 | 2025-12-23 |  |  |  |
| P2.MR.2-8.9000 |  | Trades Inspect & Verify Work Completed to Specs / Main Roof - Stair 2-8 | 2d | 2025-12-15 | 2025-12-16 | P2.MR.2-8.240 |  | 57d |
| P2.MR.2-8.9010 |  | Inspect & Prepare Punchlist / Main Roof - Stair 2-8 | 1d | 2025-12-17 | 2025-12-17 | P2.MR.2-8.9000 |  | 57d |
| P2.MR.2-8.9020 |  | Correct Punchlist / Main Roof - Stair 2-8 | 2d | 2025-12-18 | 2025-12-19 | P2.MR.2-8.9010 |  | 57d |
| P2.MR.2-8.9030 |  | Final Inspection & Acceptance / Main Roof - Stair 2-8 | 2d | 2025-12-22 | 2025-12-23 | P2.MR.2-8.9020 |  | 57d |
|  | 4 | **L10 - PENTHOUSE ROOF** |  | 2025-04-15 | 2026-01-22 |  |  |  |
|  | 1 | **Penthouse Roof - South Side** |  | 2025-04-15 | 2026-01-22 |  |  |  |
|  | 4 | **Weathertightness Prep** |  | 2025-05-01 | 2025-10-31 |  |  |  |
| P2.PR.S.1000 |  | Layout - All Trades / Penthouse Roof - South Side | 5d | 2025-05-01 A | 2025-05-07 A | P2.PR.03.410, P2.BIM.SUM.100 | 100% |  |
| P2.PR.S.1020 |  | Steel Supports for Equipment / Penthouse Roof - South Side | 10d | 2025-05-08 A | 2025-05-14 A | P2.PR.S.1000 | 100% |  |
| P2.PR.S.1030 |  | Facade Maint Equip - R/I / Penthouse Roof - South Side | 5d | 2025-05-08 A | 2025-05-14 A | P2.PR.S.1000 | 100% |  |
| P2.PR.S.1040 |  | Fall Protection Anchors / Penthouse Roof - South Side | 5d | 2025-05-15 A | 2025-05-21 A | P2.PR.S.1000, P2.PR.S.1030 | 100% |  |
| P2.PR.S.1050 |  | MEP - Penetrations, Sleeves, Supports & Pathways / Penthouse Roof - South Side | 5d | 2025-05-22 A | 2025-05-29 A | P2.PR.S.1000, P2.PR.S.1040 | 100% |  |
| P2.PR.S.1060 |  | Set & Connect Roof Drains / Penthouse Roof - South Side | 5d | 2025-05-22 A | 2025-05-29 A | P2.PR.S.1050 SS, P2.PR.S.1000 | 100% |  |
| P2.PR.S.1010 |  | Prefabricated Curbs and Flashing / Penthouse Roof - South Side | 10d | 2025-05-30 A | 2025-07-30 A | P2.PR.S.1000, P2.PR.S.1060 | 100% |  |
| P2.PR.S.1070 |  | Prefabricated Roof Hatch / Penthouse Roof - South Side | 2d | 2025-07-21 A | 2025-07-23 A | P2.PR.S.1000, P2.PR.S.1010 | 100% |  |
| P2.PR.S.1080 |  | Roofing - Temp Watertight Systems / Penthouse Roof - South Side | 20d | 2025-08-25 A | 2025-10-31 A | P2.PR.S.1070 SS+2d, P2.FAC.1.Z1.260, P2.FAC.1.Z1.230, P2.PR.S.1010 FF, P2.PR.S.1050, P2.PR.S.1060, P2.PR.S.1020, P2.PR.S.1030, P2.PR.S.1040, P2.PR.S.1100, P2.PR.S.1090 | 100% |  |
|  | 1 | **Rooftop MEP** |  | 2025-04-15 | 2026-01-20 |  |  |  |
| P2.PR.S.1090 |  | Support Frames - Rooftop Duct / Penthouse Roof - South Side | 5d | 2025-04-15 A | 2025-05-30 A | P2.PR.03.510 | 100% |  |
| P2.PR.S.1100 |  | Support Frames - Rooftop Stacks / Penthouse Roof - South Side | 5d | 2025-04-17 A | 2025-07-30 A | P2.PR.03.520 | 100% |  |
| P2.PR.S.1120 |  | VFD's - Set and Connect / Penthouse Roof - South Side | 5d | 2025-09-22 A | 2025-10-07 A | P2.PR.N.1110, P1.BGS.280, P1.BGS.190 | 100% |  |
| P2.PR.S.1110 |  | HVAC Equip - Set and Connect / Penthouse Roof - South Side | 15d | 2025-10-01 A | 2025-11-13 A | P1.BGS.190 FF, P2.PR.S.1080 FF, P1.BGS.280 | 100% |  |
| P2.PR.S.1130 |  | HVAC Duct - R/I / Penthouse Roof - South Side | 20d | 2025-10-15 A | 2025-12-12 | P2.PR.N.1120, P2.PR.S.1090 | 50% | 72d |
| P2.PR.S.1140 |  | HVAC Duct - Stack R/I / Penthouse Roof - South Side | 5d | 2025-11-03 A | 2025-11-06 A | P2.PR.N.1130, P2.PR.S.1100 | 100% |  |
| P2.PR.S.1150 |  | MEP - Piping & Equip Tie In / Penthouse Roof - South Side | 5d | 2026-01-14 | 2026-01-20 | P2.PR.S.1140 |  | 72d |
|  | 2 | **Roofing Finishes** |  | 2025-07-22 | 2026-01-13 |  |  |  |
| P2.PR.S.2070 |  | Roofing - Standing Seam on Mech-Tower / South Mech Tower - East Side | 5d | 2025-07-22 A | 2025-08-28 A | P2.PH.S.1050 | 100% |  |
| P2.PR.S.9040 |  | Roofing - Standing Seam on Mech-Tower / South Mech Tower - West Side | 5d | 2025-07-28 A | 2025-08-25 A | P2.PR.S.2070 | 100% |  |
| P2.PR.S.2000 |  | Roofing - Permanent Systems / Penthouse Roof - South Side | 15d | 2025-08-06 A | 2025-08-28 A | P2.PR.S.1080 | 100% |  |

| ID | WBS | Task | Duration | Start | Finish | Predecessors | Complete | Total float |
| --- | --- | --- | --- | --- | --- | --- | --- | --- |
| P2.PR.S.2010 |  | Flood Test / Penthouse Roof - South Side | 2d | 2025-09-29 A | 2025-09-30 A | P2.PR.S.2000 | 100% |  |
| P2.PR.S.2020 |  | Electronic Leak Detection Testing & Corrections / Penthouse Roof - South Side | 3d | 2025-09-29 A | 2025-09-30 A | P2.PR.S.2010 | 100% |  |
| P2.PR.S.2060 |  | Ladders & Stairs / Penthouse Roof - South Side | 5d | 2025-11-11 A | 2025-11-11 A | P2.PR.S.2050 | 100% |  |
| P2.PR.S.2030 |  | Roof Pavers (RS-01) / Penthouse Roof - South Side | 20d | 2025-12-01 | 2025-12-29 | P2.PR.S.2020 |  | 274d |
| P2.PR.S.2040 |  | Metal Panels / Penthouse Roof - South Side | 5d | 2025-12-30 | 2026-01-06 | P2.PR.S.2030 |  | 274d |
| P2.PR.S.2050 |  | Roof Trim Out - All Trades / Penthouse Roof - South Side | 5d | 2026-01-07 | 2026-01-13 | P2.PR.S.2040 |  | 274d |
|  | 6 | **Quality Control Inspections** |  | 2026-01-14 | 2026-01-22 |  |  |  |
| P2.PR.S.9000 |  | Trades Inspect & Verify Work Completed to Specs / Penthouse Roof - South Side | 2d | 2026-01-14 | 2026-01-15 | P2.PR.S.2060 |  | 274d |
| P2.PR.S.9010 |  | Inspect & Prepare Punchlist / Penthouse Roof - South Side | 1d | 2026-01-16 | 2026-01-16 | P2.PR.S.9000 |  | 274d |
| P2.PR.S.9020 |  | Correct Punchlist / Penthouse Roof - South Side | 2d | 2026-01-19 | 2026-01-20 | P2.PR.S.9010 |  | 274d |
| P2.PR.S.9030 |  | Final Inspection & Acceptance / Penthouse Roof - South Side | 2d | 2026-01-21 | 2026-01-22 | P2.PR.S.9020 |  | 274d |
|  | 3 | **Penthouse Roof - North Side** |  | 2025-04-18 | 2026-01-20 |  |  |  |
|  | 4 | **Weathertightness Prep** |  | 2025-05-01 | 2025-08-25 |  |  |  |
| P2.PR.N.1000 |  | Layout - All Trades / Penthouse Roof - North Side | 5d | 2025-05-01 A | 2025-05-07 A | P2.PR.03.420 | 100% |  |
| P2.PR.N.1020 |  | Steel for Mech Equipment / Penthouse Roof - North Side | 10d | 2025-05-08 A | 2025-05-21 A | P2.PR.N.1000 | 100% |  |
| P2.PR.N.1030 |  | Facade Maint Equip - R/I / Penthouse Roof - North Side | 5d | 2025-05-08 A | 2025-05-14 A | P2.PR.N.1000 | 100% |  |
| P2.PR.N.1040 |  | Fall Protection Anchors / Penthouse Roof - North Side | 5d | 2025-05-15 A | 2025-05-21 A | P2.PR.N.1030, P2.PR.N.1000 | 100% |  |
| P2.PR.N.1050 |  | MEP - Penetrations, Sleeves, Supports & Pathways / Penthouse Roof - North Side | 5d | 2025-05-22 A | 2025-05-29 A | P2.PR.N.1040, P2.PR.N.1000 | 100% |  |
| P2.PR.N.1060 |  | Set & Connect Roof Drains / Penthouse Roof - North Side | 5d | 2025-05-22 A | 2025-05-29 A | P2.PR.N.1050 SS, P2.PR.N.1000 | 100% |  |
| P2.PR.N.1010 |  | Prefabricated Curbs and Flashing / Penthouse Roof - North Side | 10d | 2025-05-30 A | 2025-07-25 A | P2.PR.N.1000, P2.PR.N.1060 | 100% |  |
| P2.PR.N.1070 |  | Prefabricated Roof Hatch / Penthouse Roof - North Side | 5d | 2025-07-22 A | 2025-07-23 A | P2.PR.N.1010, P2.PR.N.1000 | 100% |  |
| P2.PR.N.1080 |  | Roofing - Temp Watertight Systems / Penthouse Roof - North Side | 20d | 2025-07-28 A | 2025-08-25 A | P2.PR.N.1010 FF, P2.PR.N.1070 SS+2d, P2.FAC.1.Z3.250, P2.PR.N.1020, P2.PR.N.1030, P2.PR.N.1040, P2.PR.S.1080 FF+10d, P2.PR.N.1090, P2.PR.N.1100, P2.PR.N.1010, P2.PR.N.1050, P2.PR.N.1060 | 100% |  |
|  | 1 | **Rooftop MEP** |  | 2025-04-18 | 2026-01-20 |  |  |  |
| P2.PR.N.1090 |  | Support Frames - Rooftop Duct / Penthouse Roof - North Side | 5d | 2025-04-18 A | 2025-05-05 A | P2.PR.03.520 | 100% |  |
| P2.PR.N.1100 |  | Support Frames - Rooftop Stacks / Penthouse Roof - North Side | 5d | 2025-04-25 A | 2025-05-27 A | P2.PR.03.510, P2.PR.N.1090 | 100% |  |
| P2.PR.N.1110 |  | HVAC Equip - Set and Connect / Penthouse Roof - North Side | 15d | 2025-09-22 A | 2025-09-22 A | P2.PR.N.1080 FF, P2.PR.S.1110, P1.BGS.280 | 100% |  |
| P2.PR.N.1120 |  | VFD's - Set and Connect / Penthouse Roof - North Side | 5d | 2025-09-30 A | 2025-10-07 A | P2.PR.S.1120, P1.BGS.280 | 100% |  |
| P2.PR.N.1140 |  | HVAC Duct - Stack R/I / Penthouse Roof - North Side | 0d | 2025-11-12 A | 2025-11-13 A | P2.PR.N.1100, P2.PR.S.1140 | 100% |  |
| P2.PR.N.1130 |  | HVAC Duct - R/I / Penthouse Roof - North Side | 20d | 2025-12-15 | 2026-01-13 | P2.PR.N.1090, P2.PR.S.1130 |  | 72d |
| P2.PR.N.1150 |  | MEP - Piping & Equip Tie In / Penthouse Roof - North Side | 5d | 2026-01-14 | 2026-01-20 | P2.PR.N.1140 |  | 116d |
|  | 2 | **Roofing Finishes** |  | 2025-09-02 | 2026-01-05 |  |  |  |
| P2.PR.N.2010 |  | Flood Test / Penthouse Roof - North Side | 2d | 2025-09-02 A | 2025-09-02 A | P2.PR.N.2000 | 100% |  |
| P2.PR.N.2020 |  | Electronic Leak Detection Testing & Corrections / Penthouse Roof - North Side | 3d | 2025-09-02 A | 2025-09-02 A | P2.PR.N.2010 | 100% |  |
| P2.PR.N.2000 |  | Roofing - Permanent Systems / Penthouse Roof - North Side | 15d | 2025-09-10 A | 2025-09-25 A | P2.PR.N.1080, P2.PR.S.2010 | 100% |  |
| P2.PR.N.2030 |  | Roof Pavers (RS-01) / Penthouse Roof - North Side | 20d | 2025-09-12 A | 2025-12-11 | P2.PR.N.2020 | 55% | 280d |
| P2.PR.N.2040 |  | Metal Panels / Penthouse Roof - North Side | 5d | 2025-12-12 | 2025-12-18 | P2.PR.N.2030 |  | 280d |
| P2.PR.N.2050 |  | Roof Trim Out - All Trades / Penthouse Roof - North Side | 5d | 2025-12-19 | 2025-12-26 | P2.PR.N.2040 |  | 280d |
| P2.PR.N.2060 |  | Ladders & Stairs / Penthouse Roof - North Side | 5d | 2025-12-29 | 2026-01-05 | P2.PR.N.2050 |  | 280d |
|  | 6 | **Quality Control Inspections** |  | 2026-01-06 | 2026-01-14 |  |  |  |
| P2.PR.N.9000 |  | Trades Inspect & Verify Work Completed to Specs / Penthouse Roof - North Side | 2d | 2026-01-06 | 2026-01-07 | P2.PR.N.2060 |  | 280d |
| P2.PR.N.9010 |  | Inspect & Prepare Punchlist / Penthouse Roof - North Side | 1d | 2026-01-08 | 2026-01-08 | P2.PR.N.9000 |  | 280d |
| P2.PR.N.9020 |  | Correct Punchlist / Penthouse Roof - North Side | 2d | 2026-01-09 | 2026-01-12 | P2.PR.N.9010 |  | 280d |
| P2.PR.N.9030 |  | Final Inspection & Acceptance / Penthouse Roof - North Side | 2d | 2026-01-13 | 2026-01-14 | P2.PR.N.9020 |  | 280d |
|  | 5 | **L10 - ELEVATOR MACHINE ROOM ROOF (EMMR) - GROUP 2** |  | 2025-07-21 | 2025-12-23 |  |  |  |
|  | 4 | **Weathertightness Prep** |  | 2025-07-21 | 2025-07-31 |  |  |  |
| P2.PR.EMRR.2.100 |  | Layout - All Trades / Upper Penthouse Roof - Group 2 EMR | 2d | 2025-07-21 A | 2025-07-22 A | P2.PR.03.420, P2.EMRR.03.510, P2.MR.EMT.2070 | 100% |  |
| P2.PR.EMRR.2.150 |  | Framing & Sheathing of Parapets / Upper Penthouse Roof - Group 2 EMR | 5d | 2025-07-22 A | 2025-07-24 A | P2.PR.EMRR.2.130, P2.PR.EMRR.2.100 | 100% |  |
| P2.PR.EMRR.2.110 |  | MEP - Penetrations, Sleeves, Supports & Pathways / Upper Penthouse Roof - Group 2 EMR | 2d | 2025-07-23 A | 2025-07-24 A | P2.PR.EMRR.2.100 | 100% |  |
| P2.PR.EMRR.2.120 |  | Set & Connect Roof Drains / Upper Penthouse Roof - Group 2 EMR | 2d | 2025-07-23 A | 2025-07-24 A | P2.PR.EMRR.2.100 | 100% |  |
| P2.PR.EMRR.2.130 |  | Prefabricated Roof Hatch / Upper Penthouse Roof - Group 2 EMR | 2d | 2025-07-25 A | 2025-07-28 A | P2.PR.EMRR.2.120, P2.PR.EMRR.2.100 | 100% |  |
| P2.PR.EMRR.2.140 |  | Roofing - Temp Watertight Systems / Upper Penthouse Roof - Group 2 EMR | 2d | 2025-07-25 A | 2025-07-31 A | P2.EMRR.03.410, P2.PR.EMRR.2.120, P2.PR.EMRR.2.130, P2.PR.EMRR.2.150, P2.PR.EMRR.2.110 | 100% |  |
|  | 2 | **Roofing Finishes** |  | 2025-10-01 | 2025-12-12 |  |  |  |
| P2.PR.EMRR.2.200 |  | Roofing - Permanent Systems / Upper Penthouse Roof - Group 2 EMR | 5d | 2025-10-01 A | 2025-10-07 A | P2.EMRR.03.610, P2.PR.EMRR.2.140 | 100% |  |
| P2.PR.EMRR.2.210 |  | Flood Test / Upper Penthouse Roof - Group 2 EMR | 1d | 2025-12-01 | 2025-12-01 | P2.PR.EMRR.2.200 |  | 57d |
| P2.PR.EMRR.2.220 |  | Electronic Leak Detection Testing & Corrections / Upper Penthouse Roof - Group 2 EMR | 2d | 2025-12-02 | 2025-12-03 | P2.PR.EMRR.2.210 |  | 57d |
| P2.PR.EMRR.2.230 |  | Metal Panels / Upper Penthouse Roof - Group 2 EMR | 5d | 2025-12-04 | 2025-12-10 | P2.PR.EMRR.2.220 FF, P2.PR.EMRR.2.220 |  | 57d |
| P2.PR.EMRR.2.240 |  | Roof Trim Out - All Trades / Upper Penthouse Roof - Group 2 EMR | 2d | 2025-12-11 | 2025-12-12 | P2.PR.EMRR.2.230 |  | 57d |
|  | 6 | **Quality Control Inspections** |  | 2025-12-15 | 2025-12-23 |  |  |  |
| P2.PR.EMMR.2.9000 |  | Trades Inspect & Verify Work Completed to Specs / Upper Penthouse Roof - Group 2 EMR | 2d | 2025-12-15 | 2025-12-16 | P2.PR.EMRR.2.240 |  | 57d |
| P2.PR.EMMR.2.9010 |  | Inspect & Prepare Punchlist / Upper Penthouse Roof - Group 2 EMR | 1d | 2025-12-17 | 2025-12-17 | P2.PR.EMMR.2.9000 |  | 57d |
| P2.PR.EMMR.2.9020 |  | Correct Punchlist / Upper Penthouse Roof - Group 2 EMR | 2d | 2025-12-18 | 2025-12-19 | P2.PR.EMMR.2.9010 |  | 57d |
| P2.PR.EMMR.2.9030 |  | Final Inspection & Acceptance / Upper Penthouse Roof - Group 2 EMR | 2d | 2025-12-22 | 2025-12-23 | P2.PR.EMMR.2.9020 |  | 57d |
|  | 9 | **L11 - HIGH ROOF / Stair 5-9** |  | 2025-05-29 | 2025-12-22 |  |  |  |
|  | 4 | **Weathertightness Prep** |  | 2025-05-29 | 2025-07-30 |  |  |  |
| P2.L11.5-9.100 |  | Layout - All Trades / High Roof - Stair 5-9 | 2d | 2025-05-29 A | 2025-07-01 A | P2.EMRR.03.410 | 100% |  |
| P2.L11.5-9.150 |  | Framing and Sheathing of Parapets / High Roof - Stair 5-9 | 5d | 2025-07-01 A | 2025-07-22 A | P2.L11.5-9.130, P2.L11.5-9.100 | 100% |  |
| P2.L11.5-9.110 |  | MEP - Penetrations, Sleeves, Supports & Pathways / High Roof - Stair 5-9 | 2d | 2025-07-02 A | 2025-07-03 A | P2.L11.5-9.100 | 100% |  |
| P2.L11.5-9.120 |  | Set & Connect Roof Drains / High Roof - Stair 5-9 | 2d | 2025-07-02 A | 2025-07-03 A | P2.L11.5-9.100 | 100% |  |
| P2.L11.5-9.130 |  | Prefabricated Roof Hatch / High Roof - Stair 5-9 | 2d | 2025-07-22 A | 2025-07-23 A | P2.L11.5-9.100, P2.L11.5-9.120 | 100% |  |
| P2.L11.5-9.140 |  | Roofing - Temp Watertight Systems / High Roof - Stair 5-9 | 2d | 2025-07-24 A | 2025-07-30 A | P2.FAC.1.Z1.240, P2.L11.EMMR.3.140, P2.L11.5-9.130, P2.L11.5-9.150, P2.L11.5-9.110, P2.L11.5-9.120 | 100% |  |

| ID | WBS | Task | Duration | Start | Finish | Predecessors | Complete | Total float |
| --- | --- | --- | --- | --- | --- | --- | --- | --- |
|  | 2 | **Roofing Finishes** |  | 2025-10-01 | 2025-12-11 |  |  |  |
| P2.L11.5-9.200 |  | Roofing - Permanent Systems / High Roof - Stair 5-9 | 5d | 2025-10-01 A | 2025-10-08 A | P2.FAC.2.Z1.160, P2.L11.5-9.140 | 100% |  |
| P2.L11.5-9.210 |  | Flood Test / High Roof - Stair 5-9 | 1d | 2025-10-10 A | 2025-10-10 A | P2.L11.5-9.200 | 100% |  |
| P2.L11.5-9.220 |  | Electronic Leak Detection Testing & Corrections / High Roof - Stair 5-9 | 2d | 2025-12-01 | 2025-12-02 | P2.L11.5-9.210 |  | 58d |
| P2.L11.5-9.230 |  | Metal Panels / High Roof - Stair 5-9 | 5d | 2025-12-03 | 2025-12-09 | P2.FAC.1.Z1.270, P2.L11.5-9.220 |  | 58d |
| P2.L11.5-9.240 |  | Roof Trim Out - All Trades / High Roof - Stair 5-9 | 2d | 2025-12-10 | 2025-12-11 | P2.L11.5-9.230 |  | 58d |
|  | 6 | **Quality Control Inspections** |  | 2025-12-12 | 2025-12-22 |  |  |  |
| P2.L11.5-9.9000 |  | Trades Inspect & Verify Work Completed to Specs / High Roof - Stair 5-9 | 2d | 2025-12-12 | 2025-12-15 | P2.L11.5-9.240 |  | 58d |
| P2.L11.5-9.9010 |  | Inspect & Prepare Punchlist / High Roof - Stair 5-9 | 1d | 2025-12-16 | 2025-12-16 | P2.L11.5-9.9000 |  | 58d |
| P2.L11.5-9.9020 |  | Correct Punchlist / High Roof - Stair 5-9 | 2d | 2025-12-17 | 2025-12-18 | P2.L11.5-9.9010 |  | 58d |
| P2.L11.5-9.9030 |  | Final Inspection & Acceptance / High Roof - Stair 5-9 | 2d | 2025-12-19 | 2025-12-22 | P2.L11.5-9.9020 |  | 58d |
|  | 13 | **L12 - ELEVATOR MACHINE ROOM ROOF (EMMR) - GROUP 3** |  | 2025-05-29 | 2025-12-22 |  |  |  |
|  | 4 | **Weathertightness Prep** |  | 2025-05-29 | 2025-10-02 |  |  |  |
| P2.L11.EMMR.3.100 |  | Layout - All Trades / High Roof - Group 3 EMR | 2d | 2025-05-29 A | 2025-06-05 A | P2.EMRR.03.410 | 100% |  |
| P2.L11.EMMR.3.110 |  | MEP - Penetrations, Sleeves, Supports & Pathways / High Roof - Group 3 EMR | 2d | 2025-07-02 A | 2025-07-03 A | P2.L11.EMMR.3.100 | 100% |  |
| P2.L11.EMMR.3.120 |  | Set & Connect Roof Drains / High Roof - Group 3 EMR | 2d | 2025-07-07 A | 2025-07-08 A | P2.L11.EMMR.3.100, P2.L11.EMMR.3.110 | 100% |  |
| P2.L11.EMMR.3.130 |  | Prefabricated Roof Hatch / High Roof - Group 3 EMR | 2d | 2025-07-22 A | 2025-07-23 A | P2.L11.EMMR.3.100, P2.L11.EMMR.3.120 | 100% |  |
| P2.L11.EMMR.3.150 |  | Framing & Sheathing of Parapets / High Roof - Group 3 EMR | 5d | 2025-07-24 A | 2025-07-31 A | P2.L11.EMMR.3.100, P2.L11.EMMR.3.130 | 100% |  |
| P2.L11.EMMR.3.140 |  | Roofing - Temp Watertight Systems / High Roof - Group 3 EMR | 2d | 2025-10-01 A | 2025-10-02 A | P2.PR.EMRR.2.140, P2.L11.EMMR.3.150, P2.L11.EMMR.3.110, P2.L11.EMMR.3.120, P2.L11.EMMR.3.130 | 100% |  |
|  | 2 | **Roofing Finishes** |  | 2025-10-03 | 2025-12-11 |  |  |  |
| P2.L11.EMMR.3.200 |  | Roofing - Permanent Systems / High Roof - Group 3 EMR | 5d | 2025-10-03 A | 2025-10-09 A | P2.L11.EMMR.3.140 | 100% |  |
| P2.L11.EMMR.3.210 |  | Flood Test / High Roof - Group 3 EMR | 1d | 2025-10-10 A | 2025-10-10 A | P2.L11.EMMR.3.200 | 100% |  |
| P2.L11.EMMR.3.220 |  | Electronic Leak Detection Testing & Corrections / High Roof - Group 3 EMR | 2d | 2025-12-01 | 2025-12-02 | P2.L11.EMMR.3.210 |  | 35d |
| P2.L11.EMMR.3.230 |  | Metal Panels / High Roof - Group 3 EMR | 5d | 2025-12-03 | 2025-12-09 | P2.L11.EMMR.3.220 |  | 35d |
| P2.L11.EMMR.3.240 |  | Roof Trim Out - All Trades / High Roof - Group 3 EMR | 2d | 2025-12-10 | 2025-12-11 | P2.L11.EMMR.3.230 |  | 35d |
|  | 6 | **Quality Control Inspections** |  | 2025-12-12 | 2025-12-22 |  |  |  |
| P2.L11.EMMR.3.9000 |  | Trades Inspect & Verify Work Completed to Specs / High Roof - Group 3 EMR | 2d | 2025-12-12 | 2025-12-15 | P2.L11.EMMR.3.240 |  | 58d |
| P2.L11.EMMR.3.9010 |  | Inspect & Prepare Punchlist / High Roof - Group 3 EMR | 1d | 2025-12-16 | 2025-12-16 | P2.L11.EMMR.3.9000 |  | 58d |
| P2.L11.EMMR.3.9020 |  | Correct Punchlist / High Roof - Group 3 EMR | 2d | 2025-12-17 | 2025-12-18 | P2.L11.EMMR.3.9010 |  | 58d |
| P2.L11.EMMR.3.9030 |  | Final Inspection & Acceptance / High Roof - Group 3 EMR | 2d | 2025-12-19 | 2025-12-22 | P2.L11.EMMR.3.9020 |  | 58d |
|  | 1 | **PH 2 - Hoist & Zipper** |  | 2024-10-07 | 2026-07-23 |  |  |  |
|  | 1 | **East** |  | 2024-10-28 | 2026-01-06 |  |  |  |
| P2.HZ.E.11 |  | Erect East Material Hoist | 5d | 2024-10-28 A | 2024-11-20 A | P2.2.03.520, P2.2.03.530, BP9.111.3.120 | 100% |  |
| P2.HZ.E.21 |  | East Material Hoist Onsite | 285d | 2024-11-20 A | 2025-10-07 A | P2.HZ.E.11 | 100% |  |
| P2.HZ.E.51 |  | Remove Hoist | 5d | 2025-10-03 A | 2025-10-07 A | P2.HZ.E.21 FF, P2.L8.N.1190 FF | 100% |  |
| P2.HZ.E.61 |  | Precast Infill @ Material Hoist | 10d | 2025-10-13 A | 2025-10-17 A | P2.HZ.E.121 | 100% |  |
| P2.HZ.E.71 |  | Precast Caulking | 10d | 2025-10-20 A | 2025-10-24 A | P2.HZ.E.61 FF+2d | 100% |  |
| P2.HZ.E.101 |  | Parapet Metal Framing & Sheathing & Air Barrier | 5d | 2025-11-10 A | 2025-11-13 A | P2.HZ.E.71 | 100% |  |
| P2.HZ.E.91 |  | Tie In Roofing | 8d | 2025-11-24 A | 2025-12-17 | P2.HZ.E.101 |  | 256d |
| P2.HZ.E.121 |  | FRP L1 Slab at Hoist | 5d | 2025-12-01 | 2025-12-05 | P2.HZ.E.51 |  | 153d |
| P2.HZ.E.131 |  | Waterproof at Hoist | 5d | 2025-12-08 | 2025-12-12 | P2.HZ.E.121 |  | 153d |
| P2.HZ.E.81 |  | Interior Finishes L1 to 8 | 20d | 2025-12-08 | 2026-01-06 | P2.HZ.E.71 |  | 266d |
| P2.HZ.E.141 |  | Backfill at Hoist | 5d | 2025-12-15 | 2025-12-19 | P2.HZ.E.131 |  | 153d |
| P2.HZ.E.111 |  | Install Metal Panels @ Parapet | 5d | 2025-12-18 | 2025-12-24 | P2.HZ.E.91 |  | 256d |
|  | 2 | **West** |  | 2024-10-07 | 2026-07-23 |  |  |  |
| P2.HZ.W.01 |  | Install Material Hoist Foundation | 5d | 2024-10-07 A | 2024-10-10 A | P1.BG.WP.100 | 100% |  |
| P2.HZ.W.31 |  | Erect West Material Hoist | 5d | 2024-11-26 A | 2025-02-26 A | P2.HZ.W.01, P2.HZ.E.11 | 100% |  |
| P2.HZ.W.41 |  | West Material Hoist Onsite | 165d | 2025-02-26 A | 2026-04-30 | P2.HZ.W.31 | 35% | 109d |
| P2.HZ.W.91 |  | Remove Hoist | 8d | 2026-05-01 | 2026-05-12 | P2.HZ.W.41, P2.GP2.14.1210, P2.L9.F.1000 |  | 109d |
| P2.HZ.W.101 |  | Curtainwall @ Material Hoist | 20d | 2026-05-13 | 2026-06-10 | P2.HZ.W.91 |  | 109d |
| P2.HZ.W.111 |  | Curtainwall Caulking | 20d | 2026-05-20 | 2026-06-17 | P2.HZ.W.101 FF+5d |  | 109d |
| P2.HZ.W.121 |  | Interior Finishes L1 to 8 | 20d | 2026-06-18 | 2026-07-16 | P2.HZ.W.111 |  | 109d |
| P2.HZ.W.131 |  | Tie In Standing Seam Roofing | 5d | 2026-07-17 | 2026-07-23 | P2.HZ.W.121 |  | 109d |
|  | 4 | **PH 2 VERTICAL SYSTEMS** |  | 2024-11-07 | 2026-07-13 |  |  |  |
|  | 1.Elev | **ELEVATORS** |  | 2025-07-07 | 2026-07-13 |  |  |  |
|  | 1 | **Group 1 - Elevators 90 & 91** |  | 2025-07-14 | 2026-02-03 |  |  |  |
| P2.GP1.14.120 |  | Hoistway / EMR Ready for Elevator Mobilization (Dry In / Shaft Complete / Power) / Group 1 | 0d | 2025-07-14 A | 2025-07-14 A | BP1.142.3.200 FF, P2.GP1.14.170 | 100% |  |
| P2.GP1.14.150 |  | HVAC Equipment / Group 1 | 5d | 2025-07-16 A | 2025-07-16 A | P2.GP1.14.130 | 100% |  |
| P2.GP1.14.110 |  | Rails & Brackets / Group 1 | 5d | 2025-07-23 A | 2025-08-14 A | P2.GP1.14.120, BP1.142.3.200 | 100% |  |
| P2.GP1.14.210 |  | Pit Equipment - Buffer Channels - Buffers / Group 1 | 5d | 2025-07-23 A | 2025-08-28 A | BP1.220.3.120, P2.GP1.14.110 | 100% |  |
| P2.GP1.14.130 |  | Paint Prime & 1st Coat - EMR / Group 1 | 5d | 2025-08-14 A | 2025-08-15 A | P2.FAC.2.Z1.150 | 100% |  |
| P2.GP1.14.310 |  | EMR Equipment / Group 1 | 5d | 2025-08-18 A | 2025-08-29 A | P2.GP1.14.210, BP1.142.3.400 | 100% |  |
| P2.GP1.14.140 |  | Electrical Disconnects and Equipment / Group 1 | 5d | 2025-08-25 A | 2025-08-29 A | P2.GP1.14.130 | 100% |  |
| P2.GP1.14.510 |  | Platforms and Counterweight / Group 1 | 5d | 2025-09-22 A | 2025-09-25 A | P2.GP1.14.410 | 100% |  |
| P2.GP1.14.610 |  | Hoists & Cables / Group 1 | 5d | 2025-09-29 A | 2025-09-30 A | P2.GP1.14.510 | 100% |  |
| P2.GP1.14.170 |  | Energize Electrical Disconnects for Elevator Usage / Group 1 | 5d | 2025-11-17 A | 2025-11-21 A | P2.GP1.14.140, P2.PH.S.1610 | 100% |  |
| P2.GP1.14.410 |  | Trim out/ Energize EMR Equipment / Group 1 | 5d | 2025-11-25 A | 2025-11-26 A | P2.GP1.14.310, P2.GP1.14.150 | 100% |  |
| P2.GP1.14.910 |  | Cabs - Wiring - Door Operators / Group 1 | 5d | 2025-12-01 | 2025-12-05 | P2.GP1.14.610, BP1.142.3.300 |  | 271d |
| P2.GP1.14.810 |  | Hoistway Equipment - Pipe - Wire / Group 1 | 5d | 2025-12-08 | 2025-12-12 | P2.GP1.14.910 |  | 271d |
| P2.GP1.14.710 |  | Entrances - Doors - Fixtures - Facia / Group 1 | 5d | 2025-12-15 | 2025-12-19 | P2.GP1.14.810, BP1.142.3.100 |  | 271d |

| ID | WBS | Task | Duration | Start | Finish | Predecessors | Complete | Total float |
| --- | --- | --- | --- | --- | --- | --- | --- | --- |
| P2.GP1.14.160 |  | Frame and Hang Gyp - Elevator Shaft / Group 1 | 5d | 2025-12-22 | 2025-12-29 | P2.FAC.2.Z1.160, P2.PR.S.1080, P2.GP1.14.710 |  | 271d |
| P2.GP1.14.1110 |  | Punchlist & Inspections / Group 1 | 5d | 2025-12-30 | 2026-01-06 | P2.GP1.14.710, P2.GP1.14.160 |  | 271d |
| P2.GP1.14.1010 |  | Adjust & Test - Internal / Group 1 | 5d | 2026-01-07 | 2026-01-13 | P2.GP1.14.1110 |  | 271d |
| P2.GP1.14.1510 |  | Third Party Testing / Group 1 | 5d | 2026-01-14 | 2026-01-20 | P2.GP1.14.1010 |  | 271d |
| P2.GP1.14.1610 |  | Final Testing and Inspection / Group 1 | 5d | 2026-01-21 | 2026-01-27 | P2.GP1.14.1510 |  | 271d |
| P2.GP1.14.1710 |  | Elevator Acceptance - NIH AHJ / Group 1 | 5d | 2026-01-28 | 2026-02-03 | P2.SUM.255 FF, P2.GP1.14.1610 |  | 309d |
|  | 2 | **Group 2 - Elevators 92 & 93** |  | 2025-08-18 | 2026-07-13 |  |  |  |
| P2.GP2.14.110 |  | Rails & Brackets / Group 2 | 5d | 2025-08-18 A | 2025-08-28 A | P2.GP1.14.130 | 100% |  |
| P2.G2.14.0010 |  | Paint Prime & 1st Coat - EMR / Group 2 | 5d | 2025-08-25 A | 2025-08-29 A | P2.EMRR.03.610, P2.PH.N.1110 | 100% |  |
| P2.GP2.14.310 |  | EMR Equipment / Group 2 | 5d | 2025-09-02 A | 2025-09-03 A | P2.GP2.14.110 | 100% |  |
| P2.GP2.14.210 |  | Pit Equipment - Buffer Channels - Buffers / Group 2 | 5d | 2025-09-08 A | 2025-09-09 A | P2.GP2.14.110, P2.GP2.14.310 | 100% |  |
| P2.G2.14.0030 |  | Electrical Disconnects and Equipment / Group 2 | 5d | 2025-09-09 A | 2025-09-11 A | P2.G2.14.0010 | 100% |  |
| P2.G2.14.0040 |  | HVAC Equipment / Group 2 | 5d | 2025-09-09 A | 2025-09-09 A | P2.G2.14.0010 | 100% |  |
| P2.GP2.14.510 |  | Platforms and Counterweight / Group 2 | 5d | 2025-09-09 A | 2025-09-15 A | P2.GP2.14.410, P2.GP2.14.210 | 100% |  |
| P2.GP2.14.610 |  | Hoists & Cables / Group 2 | 5d | 2025-09-22 A | 2025-09-23 A | P2.GP2.14.510 | 100% |  |
| P2.G2.14.0050 |  | Energize Electrical Disconnects for Elevator Usage / Group 2 | 5d | 2025-09-24 A | 2025-09-24 A | P2.G2.14.0030, P2.PH.N.1650 | 100% |  |
| P2.GP2.14.410 |  | Trim out/ Energize EMR Equipment / Group 2 | 5d | 2025-09-24 A | 2025-09-24 A | P2.G2.14.0040, P2.GP2.14.310, P2.GP2.14.210 | 100% |  |
| P2.GP2.14.710 |  | Entrances - Doors - Fixtures - Facia / Group 2 | 5d | 2025-10-06 A | 2025-10-24 A | P2.GP2.14.810 | 100% |  |
| P2.G2.14.0020 |  | Frame and Hang Gyp - Elevator Shaft / Group 2 | 5d | 2025-10-10 A | 2025-10-11 A | P2.PR.EMRR.2.140, P2.FAC.2.Z3.150, P2.GP2.14.710 | 100% |  |
| P2.G2.14.0060 |  | Hoistway / EMR Ready for Elevator Mobilization (Dry In / Shaft Complete / Power) / Group 2 | 0d | 2025-10-14 A | 2025-10-14 A | P2.PR.EMRR.2.220 FF, P2.G2.14.0050 | 100% |  |
| P2.GP2.14.810 |  | Hoistway Equipment - Pipe - Wire / Group 2 | 5d | 2025-10-17 A | 2025-10-31 A | P2.GP2.14.910 | 100% |  |
| P2.GP2.14.910 |  | Cabs - Wiring - Door Operators / Group 2 | 5d | 2025-10-27 A | 2025-11-06 A | P2.GP2.14.610, P2.G2.14.0060 | 100% |  |
| P2.GP2.14.1110 |  | Punchlist & Inspections / Group 2 | 5d | 2025-11-10 A | 2025-11-13 A | P2.GP2.14.710, P2.G2.14.0020 | 100% |  |
| P2.GP2.14.1010 |  | Adjust & Test - Internal / Group 2 | 5d | 2025-11-24 A | 2025-11-26 A | P2.GP2.14.1110 | 100% |  |
| P2.GP2.14.1210 |  | Elevator Approved for Construction Use / Group 2 | 5d | 2025-11-24 A | 2025-11-24 A | P2.HZ.W.41, P2.GP2.14.1110, P2.GP2.14.1010 | 100% |  |
| P2.GP2.14.1310 |  | Temporary Construction Use / Group 2 | 107d | 2025-11-24 A | 2026-06-12 | P2.GP2.14.1210 |  | 197d |
| P2.GP2.14.1410 |  | Return to "Like New" Condition / Group 2 | 5d | 2026-06-15 | 2026-06-22 | P2.PIA.110 FF-20d, P2.GP2.14.1310 |  | 197d |
| P2.GP2.14.1510 |  | Third Party Testing / Group 2 | 5d | 2026-06-22 | 2026-06-26 | P2.GP2.14.1010, P2.GP2.14.1410 |  | 197d |
| P2.GP2.14.1610 |  | Final Testing and Inspection / Group 2 | 5d | 2026-06-29 | 2026-07-06 | P2.GP2.14.1510 |  | 197d |
| P2.GP2.14.1710 |  | Elevator Acceptance - NIH AHJ / Group 2 | 5d | 2026-07-07 | 2026-07-13 | P2.SUM.255 FF, P2.GP2.14.1610 |  | 197d |
|  | 3 | **Group 3 - Elevators 94 & 95** |  | 2025-10-01 | 2026-03-03 |  |  |  |
| P2.GP3.14.110 |  | Rails & Brackets / Group 3 | 22d | 2025-10-01 A | 2025-10-30 A | P2.G3.14.0060 | 100% |  |
| P2.GP3.14.210 |  | Pit Equipment - Buffer Channels - Buffers / Group 3 | 5d | 2025-10-06 A | 2025-10-31 A | P2.GP3.14.110 | 100% |  |
| P2.G3.14.0030 |  | HVAC Equipment / Group 3 | 5d | 2025-10-24 A | 2025-10-31 A | P2.G3.14.0010 | 100% |  |
| P2.G3.14.0020 |  | Electrical Disconnects and Equipment / Group 3 | 5d | 2025-10-31 A | 2025-10-31 A | P2.G3.14.0010 | 100% |  |
| P2.G3.14.0010 |  | Paint Prime & 1st Coat - EMR / Group 3 | 5d | 2025-11-07 A | 2025-11-07 A | P2.L11.EMMR.3.220, P2.G3.14.0050 | 100% |  |
| P2.GP3.14.310 |  | EMR Equipment / Group 3 | 5d | 2025-11-17 A | 2025-11-26 A | P2.GP3.14.210 | 100% |  |
| P2.G3.14.0050 |  | Frame and Hang Gyp - Elevator Shaft / Group 3 | 5d | 2025-12-01 | 2025-12-05 | P2.L11.EMMR.3.140, P2.FAC.1.F.160, P2.FAC.1.F.210 |  | 251d |
| P2.G3.14.0040 |  | Energize Electrical Disconnects for Elevator Usage / Group 3 | 5d | 2025-12-08 | 2025-12-12 | P2.G3.14.0020, P2.PH.S.1610 |  | 251d |
| P2.G3.14.0060 |  | Hoistway / EMR Ready for Elevator Mobilization (Dry In / Shaft Complete / Power) / Group 3 | 0d | 2025-12-12 | 2025-12-12 | P2.L11.EMMR.3.220 FF, P2.G3.14.0040, P2.G3.14.0050 |  | 251d |
| P2.GP3.14.410 |  | Trim out/ Energize EMR Equipment / Group 3 | 5d | 2025-12-15 | 2025-12-19 | P2.G3.14.0030, P2.GP3.14.310 |  | 251d |
| P2.GP3.14.510 |  | Platforms and Counterweight / Group 3 | 5d | 2025-12-22 | 2025-12-29 | P2.GP3.14.410 |  | 251d |
| P2.GP3.14.610 |  | Hoists & Cables / Group 3 | 5d | 2025-12-30 | 2026-01-06 | P2.GP3.14.510 |  | 251d |
| P2.GP3.14.910 |  | Cabs - Wiring - Door Operators / Group 3 | 5d | 2026-01-07 | 2026-01-13 | P2.GP3.14.610 |  | 251d |
| P2.GP3.14.810 |  | Hoistway Equipment - Pipe - Wire / Group 3 | 5d | 2026-01-14 | 2026-01-20 | P2.GP3.14.910 |  | 251d |
| P2.GP3.14.710 |  | Entrances - Doors - Fixtures - Facia / Group 3 | 5d | 2026-01-21 | 2026-01-27 | P2.GP3.14.810 |  | 251d |
| P2.GP3.14.1110 |  | Punchlist & Inspections / Group 3 | 5d | 2026-01-28 | 2026-02-03 | P2.GP3.14.710 |  | 251d |
| P2.GP3.14.1010 |  | Adjust & Test - Internal / Group 3 | 5d | 2026-02-04 | 2026-02-10 | P2.GP3.14.1110 |  | 251d |
| P2.GP3.14.1510 |  | Third Party Testing / Group 3 | 5d | 2026-02-11 | 2026-02-17 | P2.GP3.14.1010 |  | 251d |
| P2.GP3.14.1610 |  | Final Testing and Inspection / Group 3 | 5d | 2026-02-18 | 2026-02-24 | P2.GP3.14.1510 |  | 251d |
| P2.GP3.14.1710 |  | Elevator Acceptance - NIH AHJ / Group 3 | 5d | 2026-02-25 | 2026-03-03 | P2.SUM.255 FF, P2.GP3.14.1610 |  | 289d |
|  | 4 | **Group 4 - Elevators 96 & 97** |  | 2025-07-07 | 2026-03-17 |  |  |  |
| P2.G4.14.00110 |  | Frame and Hang Gyp - Elevator Shaft / Group 4 | 5d | 2025-07-07 A | 2025-07-11 A | P2.L4.N.1140, P2.L2.INT.N.1040, P2.FAC.2.Z2.180 | 100% |  |
| P2.G4.14.0070 |  | Paint Prime & 1st Coat - EMR / Group 4 | 5d | 2025-07-28 A | 2025-07-31 A | P2.L4.N.1140, P2.G4.14.00110 | 100% |  |
| P2.G4.14.0090 |  | HVAC Equipment / Group 4 | 5d | 2025-09-02 A | 2025-09-03 A | P2.G4.14.0070 | 100% |  |
| P2.GP4.14.210 |  | Pit Equipment - Buffer Channels - Buffers / Group 4 | 5d | 2025-11-03 A | 2025-11-06 A | P2.GP4.14.110 | 100% |  |
| P2.GP4.14.110 |  | Rails & Brackets / Group 4 | 5d | 2025-11-10 A | 2025-12-19 | P2.G4.14.00120 |  | 241d |
| P2.G4.14.0080 |  | Electrical Disconnects and Equipment / Group 4 | 5d | 2025-12-01 | 2025-12-05 | P2.G4.14.0070 |  | 241d |
| P2.G4.14.00100 |  | Energize Electrical Disconnects for Elevator Usage / Group 4 | 5d | 2025-12-08 | 2025-12-12 | P2.G4.14.0080, P2.L3.EMT.1260 |  | 241d |
| P2.G4.14.00120 |  | Hoistway / EMR Ready for Elevator Mobilization (Dry In / Shaft Complete / Power) / Group 4 | 0d | 2025-12-12 | 2025-12-12 | P2.G4.14.00100, P2.G4.14.00110 |  | 241d |
| P2.GP4.14.310 |  | EMR Equipment / Group 4 | 5d | 2025-12-22 | 2025-12-29 | P2.GP4.14.210 |  | 241d |
| P2.GP4.14.410 |  | Trim out/ Energize EMR Equipment / Group 4 | 5d | 2025-12-30 | 2026-01-06 | P2.GP4.14.310, P2.G4.14.0090 |  | 241d |
| P2.GP4.14.510 |  | Platforms and Counterweight / Group 4 | 5d | 2026-01-07 | 2026-01-13 | P2.GP4.14.410 |  | 241d |
| P2.GP4.14.610 |  | Hoists & Cables / Group 4 | 5d | 2026-01-14 | 2026-01-20 | P2.GP4.14.510 |  | 241d |
| P2.GP4.14.910 |  | Cabs - Wiring - Door Operators / Group 4 | 5d | 2026-01-21 | 2026-01-27 | P2.GP4.14.610 |  | 241d |
| P2.GP4.14.810 |  | Hoistway Equipment - Pipe - Wire / Group 4 | 5d | 2026-01-28 | 2026-02-03 | P2.GP4.14.910 |  | 241d |
| P2.GP4.14.710 |  | Entrances - Doors - Fixtures - Facia / Group 4 | 5d | 2026-02-04 | 2026-02-10 | P2.GP4.14.810 |  | 241d |
| P2.GP4.14.1110 |  | Punchlist & Inspections / Group 4 | 5d | 2026-02-11 | 2026-02-17 | P2.GP4.14.710 |  | 241d |
| P2.GP4.14.1010 |  | Adjust & Test - Internal / Group 4 | 5d | 2026-02-18 | 2026-02-24 | P2.GP4.14.1110 |  | 241d |
| P2.GP4.14.1510 |  | Third Party Testing / Group 4 | 5d | 2026-02-25 | 2026-03-03 | P2.GP4.14.1010 |  | 241d |

| ID | WBS | Task | Duration | Start | Finish | Predecessors | Complete | Total float |
| --- | --- | --- | --- | --- | --- | --- | --- | --- |
| P2.GP4.14.1610 |  | Final Testing and Inspection / Group 4 | 5d | 2026-03-04 | 2026-03-10 | P2.GP4.14.1510 |  | 241d |
| P2.GP4.14.1710 |  | Elevator Acceptance - NIH AHJ / Group 4 | 5d | 2026-03-11 | 2026-03-17 | P2.SUM.255 FF, P2.GP4.14.1610 |  | 279d |
|  | 1.Stairs | **STAIRS** |  | 2024-11-07 | 2026-04-15 |  |  |  |
|  | 2.9 | **Stair 2-9** |  | 2025-12-01 | 2026-02-05 |  |  |  |
| P2.2-9.1000 |  | Framing and Blocking - Interior Walls / Stair 2-9 | 5d | 2025-12-01 | 2025-12-05 | P2.FAC.4.Z3.170 |  | 269d |
| P2.2-9.1010 |  | MEP Rough In / Stair 2-9 | 5d | 2025-12-08 | 2025-12-12 | P2.2-9.1000 |  | 269d |
| P2.2-9.1020 |  | Drywall / Stair 2-9 | 5d | 2025-12-15 | 2025-12-19 | P2.2-9.1010 |  | 269d |
| P2.2-9.1030 |  | Metal Railings & Handrails / Stair 2-9 | 5d | 2025-12-22 | 2025-12-29 | P2.2-9.1020 |  | 269d |
| P2.2-9.1040 |  | Prime & Paint Walls / Stair 2-9 | 5d | 2025-12-30 | 2026-01-06 | P2.2-9.1030 |  | 269d |
| P2.2-9.1050 |  | Trim MEPF & Fixtures / Stair 2-9 | 5d | 2026-01-07 | 2026-01-13 | BP1.233.3.410, P2.2-9.1040 |  | 269d |
| P2.2-9.1060 |  | Flooring / Stair 2-9 | 5d | 2026-01-14 | 2026-01-20 | P2.2-9.1050 |  | 269d |
| P2.2-9.1070 |  | Doors & Hardware / Stair 2-9 | 5d | 2026-01-21 | 2026-01-27 | P2.2-9.1060 |  | 269d |
|  | 6 | **Quality Control Inspections - Stair 2-9** |  | 2026-01-28 | 2026-02-05 |  |  |  |
| P2.2-9.9000 |  | Trades Inspect & Verify Work Completed to Specs / Stair 2-9 | 2d | 2026-01-28 | 2026-01-29 | P2.2-9.1070 |  | 269d |
| P2.2-9.9010 |  | Inspect & Prepare Punchlist / Stair 2-9 | 1d | 2026-01-30 | 2026-01-30 | P2.2-9.9000 |  | 307d |
| P2.2-9.9020 |  | Correct Punchlist / Stair 2-9 | 2d | 2026-02-02 | 2026-02-03 | P2.2-9.9010 |  | 307d |
| P2.2-9.9030 |  | Final Inspection & Acceptance / Stair 2-9 | 2d | 2026-02-04 | 2026-02-05 | P2.SUM.255 FF, P2.2-9.9020 |  | 307d |
|  | 5.9 | **Stair 5-9** |  | 2025-07-17 | 2026-01-29 |  |  |  |
| P2.5-9.1010 |  | MEP Rough In / Stair 5-9 | 5d | 2025-07-17 A | 2025-07-30 A | P2.5-9.1000 | 100% |  |
| P2.5-9.1000 |  | Framing and Blocking - Interior Walls / Stair 5-9 | 5d | 2025-12-01 | 2025-12-05 | P2.FAC.2.Z1.160, P2.L7.EMT.1000 |  | 274d |
| P2.5-9.1020 |  | Drywall / Stair 5-9 | 5d | 2025-12-08 | 2025-12-12 | P2.5-9.1010 |  | 274d |
| P2.5-9.1030 |  | Metal Railings & Handrails / Stair 5-9 | 5d | 2025-12-15 | 2025-12-19 | BP4.055.3.150, BP4.055.3.110, BP4.055.3.120, P2.5-9.1020 |  | 274d |
| P2.5-9.1040 |  | Prime & Paint Walls / Stair 5-9 | 5d | 2025-12-22 | 2025-12-29 | P2.5-9.1030 |  | 274d |
| P2.5-9.1050 |  | Trim MEPF & Fixtures / Stair 5-9 | 5d | 2025-12-30 | 2026-01-06 | BP1.233.3.410, P2.5-9.1040 |  | 274d |
| P2.5-9.1060 |  | Flooring / Stair 5-9 | 5d | 2026-01-07 | 2026-01-13 | P2.5-9.1050 |  | 274d |
| P2.5-9.1070 |  | Doors & Hardware / Stair 5-9 | 5d | 2026-01-14 | 2026-01-20 | P2.5-9.1060 |  | 274d |
|  | 6 | **Quality Control Inspections - Stair 5-9** |  | 2026-01-21 | 2026-01-29 |  |  |  |
| P2.5-9.9000 |  | Trades Inspect & Verify Work Completed to Specs / Stair 5-9 | 2d | 2026-01-21 | 2026-01-22 | P2.5-9.1070 |  | 274d |
| P2.5-9.9010 |  | Inspect & Prepare Punchlist / Stair 5-9 | 1d | 2026-01-23 | 2026-01-23 | P2.5-9.9000 |  | 312d |
| P2.5-9.9020 |  | Correct Punchlist / Stair 5-9 | 2d | 2026-01-26 | 2026-01-27 | P2.5-9.9010 |  | 312d |
| P2.5-9.9030 |  | Final Inspection & Acceptance / Stair 5-9 | 2d | 2026-01-28 | 2026-01-29 | P2.SUM.255 FF, P2.5-9.9020 |  | 312d |
|  | 2.8 | **Stair 2-8** |  | 2025-10-06 | 2026-02-26 |  |  |  |
| P2.2-8.1030 |  | Metal Railings & Handrails / Stair 2-8 | 5d | 2025-10-06 A | 2025-10-17 A | P2.2-8.1020 | 100% |  |
| P2.2-8.1000 |  | Framing and Blocking - Interior Walls / Stair 2-8 | 5d | 2025-12-30 | 2026-01-06 | P2.MR.2-8.200, P2.FAC.4.Z3.180, DDD2200 |  | 254d |
| P2.2-8.1010 |  | MEP Rough In / Stair 2-8 | 5d | 2026-01-07 | 2026-01-13 | P2.2-8.1000 |  | 254d |
| P2.2-8.1020 |  | Drywall / Stair 2-8 | 5d | 2026-01-14 | 2026-01-20 | P2.2-8.1010 |  | 254d |
| P2.2-8.1040 |  | Prime & Paint Walls / Stair 2-8 | 5d | 2026-01-21 | 2026-01-27 | P2.2-8.1030 |  | 254d |
| P2.2-8.1050 |  | Trim MEPF & Fixtures / Stair 2-8 | 5d | 2026-01-28 | 2026-02-03 | BP1.233.3.410, P2.2-8.1040 |  | 254d |
| P2.2-8.1060 |  | Flooring / Stair 2-8 | 5d | 2026-02-04 | 2026-02-10 | P2.2-8.1050 |  | 254d |
| P2.2-8.1070 |  | Doors & Hardware / Stair 2-8 | 5d | 2026-02-11 | 2026-02-17 | P2.2-8.1060 |  | 254d |
|  | 6 | **Quality Control Inspections - Stair 2-8** |  | 2026-02-18 | 2026-02-26 |  |  |  |
| P2.2-8.9000 |  | Trades Inspect & Verify Work Completed to Specs / Stair 2-8 | 2d | 2026-02-18 | 2026-02-19 | P2.2-8.1070 |  | 254d |
| P2.2-8.9010 |  | Inspect & Prepare Punchlist / Stair 2-8 | 1d | 2026-02-20 | 2026-02-20 | P2.2-8.9000 |  | 292d |
| P2.2-8.9020 |  | Correct Punchlist / Stair 2-8 | 2d | 2026-02-23 | 2026-02-24 | P2.2-8.9010 |  | 292d |
| P2.2-8.9030 |  | Final Inspection & Acceptance / Stair 2-8 | 2d | 2026-02-25 | 2026-02-26 | P2.SUM.255 FF, P2.2-8.9020 |  | 292d |
|  | 2.10 | **Stair 2-10** |  | 2025-09-08 | 2026-01-29 |  |  |  |
| P2.2-10.1030 |  | Metal Railings & Handrails / Stair 2-10 | 5d | 2025-09-08 A | 2025-10-31 A | BP4.055.3.150, P2.2-10.1020 | 100% |  |
| P2.2-10.1000 |  | Framing and Blocking - Interior Walls / Stair 2-10 | 5d | 2025-12-01 | 2025-12-05 | P2.FAC.2.Z2.130, P2.L7.EMT.1000 |  | 274d |
| P2.2-10.1010 |  | MEP Rough In / Stair 2-10 | 5d | 2025-12-08 | 2025-12-12 | DDD2150, P2.2-10.1000 |  | 274d |
| P2.2-10.1020 |  | Drywall / Stair 2-10 | 5d | 2025-12-15 | 2025-12-19 | P2.2-10.1010 |  | 274d |
| P2.2-10.1040 |  | Prime & Paint Walls / Stair 2-10 | 5d | 2025-12-22 | 2025-12-29 | P2.2-10.1030 |  | 274d |
| P2.2-10.1050 |  | Trim MEPF & Fixtures / Stair 2-10 | 5d | 2025-12-30 | 2026-01-06 | BP1.233.3.410, P2.2-10.1040 |  | 274d |
| P2.2-10.1060 |  | Flooring / Stair 2-10 | 5d | 2026-01-07 | 2026-01-13 | P2.2-10.1050 |  | 274d |
| P2.2-10.1070 |  | Doors & Hardware / Stair 2-10 | 5d | 2026-01-14 | 2026-01-20 | P2.2-10.1060 |  | 274d |
|  | 6 | **Quality Control Inspections - Stair 2-10** |  | 2026-01-21 | 2026-01-29 |  |  |  |
| P2.2-10.9000 |  | Trades Inspect & Verify Work Completed to Specs / Stair 2-10 | 2d | 2026-01-21 | 2026-01-22 | P2.2-10.1070 |  | 274d |
| P2.2-10.9010 |  | Inspect & Prepare Punchlist / Stair 2-10 | 1d | 2026-01-23 | 2026-01-23 | P2.2-10.9000 |  | 312d |
| P2.2-10.9020 |  | Correct Punchlist / Stair 2-10 | 2d | 2026-01-26 | 2026-01-27 | P2.2-10.9010 |  | 312d |
| P2.2-10.9030 |  | Final Inspection & Acceptance / Stair 2-10 | 2d | 2026-01-28 | 2026-01-29 | P2.SUM.255 FF, P2.2-10.9020 |  | 312d |
|  | 3.9 | **Stair 3-9** |  | 2024-11-07 | 2026-02-19 |  |  |  |
| P2.3-9.9040 |  | Demo Existing CRC Roof and Temp Protect | 10d | 2024-11-07 A | 2024-11-15 A | P2.5.03.310 | 100% |  |
| P2.3-9.1020 |  | Pour Perimeter Beams and tie into existing parapets | 10d | 2024-11-25 A | 2024-12-10 A | P2.3-9.9040 | 100% |  |
| P2.3-9.1030 |  | Steel - HSS Posts/Beams _ All Levels / Stair 3-9 (East Crane) | 5d | 2025-04-21 A | 2025-04-25 A | P2.3-9.1020, BP4.055.3.400, BP7.051.3.110, P2.PR.03.520 | 100% |  |
| P2.3-9.1040 |  | Erect Stringers & Platforms / Stair 3-9 (East Crane) | 5d | 2025-06-23 A | 2025-10-07 A | P2.3-9.1030 | 100% |  |
| P2.3-9.1070 |  | Exterior Sheathing of Stair Walls / Stair 3-9 | 5d | 2025-09-22 A | 2025-09-26 A | P2.3-9.1030 | 100% |  |
| P2.3-9.1050 |  | Pour & Finish Stairs / Stair 3-9 | 5d | 2025-12-01 | 2025-12-05 | P2.3-9.1040 |  | 259d |
| P2.3-9.1060 |  | CURE Stairs / Stair 3-9 | 7d | 2025-12-06 | 2025-12-12 | P2.3-9.1050 |  | 374d |
| P2.3-9.1080 |  | Framing and Blocking - Interior Walls / Stair 3-9 | 5d | 2025-12-15 | 2025-12-19 | P2.3-9.1070, P2.3-9.1060 |  | 259d |
| P2.3-9.1090 |  | MEP Rough In / Stair 3-9 | 5d | 2025-12-22 | 2025-12-29 | P2.3-9.1080 |  | 259d |
| P2.3-9.1100 |  | Drywall / Stair 3-9 | 5d | 2025-12-30 | 2026-01-06 | P2.PR.S.2000, P2.3-9.1090 |  | 259d |

| ID | WBS | Task | Duration | Start | Finish | Predecessors | Complete | Total float |
| --- | --- | --- | --- | --- | --- | --- | --- | --- |
| P2.3-9.1110 |  | Metal Railings & Handrails / Stair 3-9 | 5d | 2026-01-07 | 2026-01-13 | P2.3-9.1100 |  | 259d |
| P2.3-9.1120 |  | Prime & Paint Walls / Stair 3-9 | 5d | 2026-01-14 | 2026-01-20 | P2.3-9.1110 |  | 259d |
| P2.3-9.1130 |  | Trim MEPF & Fixtures / Stair 3-9 | 5d | 2026-01-21 | 2026-01-27 | BP1.233.3.410, P2.3-9.1120 |  | 259d |
| P2.3-9.1140 |  | Flooring / Stair 3-9 | 5d | 2026-01-28 | 2026-02-03 | P2.3-9.1130 |  | 259d |
| P2.3-9.1150 |  | Doors & Hardware / Stair 3-9 | 5d | 2026-02-04 | 2026-02-10 | P2.3-9.1140 |  | 259d |
|  | 6 | **Quality Control Inspections - Stair 3-9** |  | 2026-02-11 | 2026-02-19 |  |  |  |
| P2.3-9.9000 |  | Trades Inspect & Verify Work Completed to Specs / Stair 3-9 | 2d | 2026-02-11 | 2026-02-12 | P2.3-9.1150 |  | 259d |
| P2.3-9.9010 |  | Inspect & Prepare Punchlist / Stair 3-9 | 1d | 2026-02-13 | 2026-02-13 | P2.3-9.9000 |  | 297d |
| P2.3-9.9020 |  | Correct Punchlist / Stair 3-9 | 2d | 2026-02-16 | 2026-02-17 | P2.3-9.9010 |  | 297d |
| P2.3-9.9030 |  | Final Inspection & Acceptance / Stair 3-9 | 2d | 2026-02-18 | 2026-02-19 | P2.3-9.9020, P2.SUM.255 FF |  | 297d |
|  | 3.10 | **Stair 3-10** |  | 2025-07-23 | 2026-01-29 |  |  |  |
| P2.3-10.1030 |  | Metal Railings & Handrails / Stair 3-10 | 5d | 2025-07-23 A | 2025-08-08 A | P2.3-10.1020, BP4.055.3.150 | 100% |  |
| P2.3-10.1000 |  | Framing and Blocking - Interior Walls / Stair 3-10 | 5d | 2025-12-01 | 2025-12-05 | P2.FAC.2.Z1.140 |  | 274d |
| P2.3-10.1010 |  | MEP Rough In / Stair 3-10 | 5d | 2025-12-08 | 2025-12-12 | P2.3-10.1000 |  | 274d |
| P2.3-10.1020 |  | Drywall / Stair 3-10 | 5d | 2025-12-15 | 2025-12-19 | P2.3-10.1010 |  | 274d |
| P2.3-10.1040 |  | Prime & Paint Walls / Stair 3-10 | 5d | 2025-12-22 | 2025-12-29 | P2.3-10.1030 |  | 274d |
| P2.3-10.1050 |  | Trim MEPF & Fixtures / Stair 3-10 | 5d | 2025-12-30 | 2026-01-06 | BP1.233.3.410, P2.3-10.1040 |  | 274d |
| P2.3-10.1060 |  | Flooring / Stair 3-10 | 5d | 2026-01-07 | 2026-01-13 | P2.3-10.1050 |  | 274d |
| P2.3-10.1070 |  | Doors & Hardware / Stair 3-10 | 5d | 2026-01-14 | 2026-01-20 | P2.3-10.1060 |  | 274d |
|  | 6 | **Quality Control Inspections - Stair 3-10** |  | 2026-01-21 | 2026-01-29 |  |  |  |
| P2.3-10.9000 |  | Trades Inspect & Verify Work Completed to Specs / Stair 3-10 | 2d | 2026-01-21 | 2026-01-22 | P2.3-10.1070 |  | 274d |
| P2.3-10.9010 |  | Inspect & Prepare Punchlist / Stair 3-10 | 1d | 2026-01-23 | 2026-01-23 | P2.3-10.9000 |  | 312d |
| P2.3-10.9020 |  | Correct Punchlist / Stair 3-10 | 2d | 2026-01-26 | 2026-01-27 | P2.3-10.9010 |  | 312d |
| P2.3-10.9030 |  | Final Inspection & Acceptance / Stair 3-10 | 2d | 2026-01-28 | 2026-01-29 | P2.3-10.9020, P2.SUM.255 FF |  | 312d |
|  | 5.8 | **Stair 5-8** |  | 2026-02-10 | 2026-04-15 |  |  |  |
| P2.5-8.1000 |  | Framing and Blocking - Interior Walls / Stair 5-8 | 5d | 2026-02-10 | 2026-02-16 | P2.FAC.4.F.120 |  | 220d |
| P2.5-8.1010 |  | MEP Rough In / Stair 5-8 | 5d | 2026-02-17 | 2026-02-23 | P2.5-8.1000 |  | 220d |
| P2.5-8.1020 |  | Drywall / Stair 5-8 | 5d | 2026-02-24 | 2026-03-02 | P2.5-8.1010 |  | 220d |
| P2.5-8.1030 |  | Metal Railings & Handrails / Stair 5-8 | 5d | 2026-03-03 | 2026-03-09 | P2.5-8.1020, BP4.055.3.150 |  | 220d |
| P2.5-8.1040 |  | Prime & Paint Walls / Stair 5-8 | 5d | 2026-03-10 | 2026-03-16 | P2.5-8.1030 |  | 220d |
| P2.5-8.1050 |  | Trim MEPF & Fixtures / Stair 5-8 | 5d | 2026-03-17 | 2026-03-23 | P2.5-8.1040, BP1.233.3.410 |  | 220d |
| P2.5-8.1060 |  | Flooring / Stair 5-8 | 5d | 2026-03-24 | 2026-03-30 | P2.5-8.1050 |  | 220d |
| P2.5-8.1070 |  | Doors & Hardware / Stair 5-8 | 5d | 2026-03-31 | 2026-04-06 | P2.5-8.1060 |  | 220d |
|  | 6 | **Quality Control Inspections - Stair 5-8** |  | 2026-04-07 | 2026-04-15 |  |  |  |
| P2.5-8.9000 |  | Trades Inspect & Verify Work Completed to Specs / Stair 5-8 | 2d | 2026-04-07 | 2026-04-08 | P2.5-8.1070 |  | 220d |
| P2.5-8.9010 |  | Inspect & Prepare Punchlist / Stair 5-8 | 1d | 2026-04-09 | 2026-04-09 | P2.5-8.9000 |  | 258d |
| P2.5-8.9020 |  | Correct Punchlist / Stair 5-8 | 2d | 2026-04-10 | 2026-04-13 | P2.5-8.9010 |  | 258d |
| P2.5-8.9030 |  | Final Inspection & Acceptance / Stair 5-8 | 2d | 2026-04-14 | 2026-04-15 | P2.5-8.9020, P2.SUM.255 FF |  | 258d |
|  | 5.10 | **Stair 5-10** |  | 2025-08-11 | 2026-02-05 |  |  |  |
| P2.5-10.1000 |  | Erect Stringers & Platforms / Stair 5-10 | 5d | 2025-08-11 A | 2025-08-29 A | P2.PR.03.610 | 100% |  |
| P2.5-9.9040 |  | Framing and Blocking - Interior Walls / Stair 5-10 | 5d | 2025-12-01 | 2025-12-05 | P2.5-10.1000, P2.PR.EMRR.2.200 |  | 269d |
| P2.5-9.9050 |  | MEP Rough In / Stair 5-10 | 5d | 2025-12-08 | 2025-12-12 | P2.5-9.9040 |  | 269d |
| P2.5-9.9060 |  | Drywall / Stair 5-10 | 5d | 2025-12-15 | 2025-12-19 | P2.5-9.9050 |  | 269d |
| P2.5-9.9070 |  | Metal Railings & Handrails / Stair 5-10 | 5d | 2025-12-22 | 2025-12-29 | P2.5-9.9060 |  | 269d |
| P2.5-9.9080 |  | Prime & Paint Walls / Stair 5-10 | 5d | 2025-12-30 | 2026-01-06 | P2.5-9.9070 |  | 269d |
| P2.5-9.9090 |  | Trim MEPF & Fixtures / Stair 5-10 | 5d | 2026-01-07 | 2026-01-13 | BP1.233.3.410, P2.5-9.9080 |  | 269d |
| P2.5-9.9100 |  | Flooring / Stair 5-10 | 5d | 2026-01-14 | 2026-01-20 | P2.5-9.9090 |  | 269d |
| P2.5-9.9110 |  | Doors & Hardware / Stair 5-10 | 5d | 2026-01-21 | 2026-01-27 | P2.5-9.9100 |  | 269d |
|  | 6 | **Quality Control Inspections - Stair 5-10** |  | 2026-01-28 | 2026-02-05 |  |  |  |
| P2.5-10.9000 |  | Trades Inspect & Verify Work Completed to Specs / Stair 5-10 | 2d | 2026-01-28 | 2026-01-29 | P2.5-9.9110 |  | 269d |
| P2.5-10.9010 |  | Inspect & Prepare Punchlist / Stair 5-10 | 1d | 2026-01-30 | 2026-01-30 | P2.5-10.9000 |  | 307d |
| P2.5-10.9020 |  | Correct Punchlist / Stair 5-10 | 2d | 2026-02-02 | 2026-02-03 | P2.5-10.9010 |  | 307d |
| P2.5-10.9030 |  | Final Inspection & Acceptance / Stair 5-10 | 2d | 2026-02-04 | 2026-02-05 | P2.5-10.9020, P2.SUM.255 FF |  | 307d |
|  | 6.9 | **Stair 6-9** |  | 2025-08-11 | 2026-02-09 |  |  |  |
| P2.6-9.1000 |  | Framing and Blocking - Interior Walls / Stair 6-9 | 5d | 2025-08-11 A | 2025-12-09 | P2.B2.S.1420 | 60% | 267d |
| P2.6-9.1010 |  | MEP Rough In / Stair 6-9 | 5d | 2025-12-10 | 2025-12-16 | P2.6-9.1000 |  | 267d |
| P2.6-9.1020 |  | Drywall / Stair 6-9 | 5d | 2025-12-17 | 2025-12-23 | P2.6-9.1010 |  | 267d |
| P2.6-9.1030 |  | Metal Railings & Handrails / Stair 6-9 | 5d | 2025-12-24 | 2025-12-31 | P2.6-9.1020, BP4.055.3.150 |  | 267d |
| P2.6-9.1040 |  | Prime & Paint Walls / Stair 6-9 | 5d | 2026-01-02 | 2026-01-08 | P2.6-9.1030 |  | 267d |
| P2.6-9.1050 |  | Trim MEPF & Fixtures / Stair 6-9 | 5d | 2026-01-09 | 2026-01-15 | BP1.233.3.410, P2.6-9.1040 |  | 267d |
| P2.6-9.1060 |  | Flooring / Stair 6-9 | 5d | 2026-01-16 | 2026-01-22 | P2.6-9.1050 |  | 267d |
| P2.6-9.1070 |  | Doors & Hardware / Stair 6-9 | 5d | 2026-01-23 | 2026-01-29 | P2.6-9.1060 |  | 267d |
|  | 6 | **Quality Control Inspections - Stair 6-9** |  | 2026-01-30 | 2026-02-09 |  |  |  |
| P2.6-9.9000 |  | Trades Inspect & Verify Work Completed to Specs / Stair 6-9 | 2d | 2026-01-30 | 2026-02-02 | P2.6-9.1070 |  | 267d |
| P2.6-9.9010 |  | Inspect & Prepare Punchlist / Stair 6-9 | 1d | 2026-02-03 | 2026-02-03 | P2.6-9.9000 |  | 305d |
| P2.6-9.9020 |  | Correct Punchlist / Stair 6-9 | 2d | 2026-02-04 | 2026-02-05 | P2.6-9.9010 |  | 305d |
| P2.6-9.9030 |  | Final Inspection & Acceptance / Stair 6-9 | 2d | 2026-02-06 | 2026-02-09 | P2.6-9.9020, P2.SUM.255 FF |  | 305d |
|  | 4 | **SHAFTS** |  | 2024-11-26 | 2026-02-17 |  |  |  |
|  | 10 | **MEP Shafts - Z1** |  | 2024-11-26 | 2026-02-17 |  |  |  |
|  | 13 | **Mechanical Shaft - 2860** |  | 2025-02-10 | 2025-02-28 |  |  |  |

| ID | WBS | Task | Duration | Start | Finish | Predecessors | Complete | Total float |
| --- | --- | --- | --- | --- | --- | --- | --- | --- |
| DDD3160 |  | MEP Systems Install - Risers L7-PH / Shaft - 2860 | 5d | 2025-02-10 A | 2025-02-13 A | P2.MR/PS.03.510, P2.BIM.MEPR.40.110 | 100% |  |
| DDD3180 |  | Test Systems - Risers / Shaft - 2860 | 2d | 2025-02-14 A | 2025-02-17 A | DDD3160 | 100% |  |
| DDD3170 |  | Insulate - Risers / Shaft - 2860 | 3d | 2025-02-18 A | 2025-02-19 A | DDD3180 | 100% |  |
| DDD3190 |  | Inspections - Close In / Shaft - 2860 | 5d | 2025-02-20 A | 2025-02-24 A | DDD3170 | 100% |  |
| DDD3200 |  | Gypsum Shaft Walls / Shaft - 2860 | 5d | 2025-02-25 A | 2025-02-28 A | DDD3190 | 100% |  |
|  | 2 | **Mechanical Shaft - 2950** |  | 2025-04-10 | 2025-12-19 |  |  |  |
| DDD3110 |  | MEP Systems Install - Risers B2-L4 / Shaft - 2950 | 7d | 2025-04-10 A | 2025-04-16 A | P2.4.03.510, P2.BIM.MEPR.40.110, P2.2.I.03.320 | 100% |  |
| DDD3290 |  | MEP Systems Install - Risers L4-L7 / Shaft - 2950 | 5d | 2025-08-19 A | 2025-08-22 A | DDD3110, P2.7.03.510 | 100% |  |
| DDD3300 |  | MEP Systems Install - Risers L7-PH / Shaft - 2950 | 5d | 2025-08-19 A | 2025-08-22 A | DDD3290, P2.MR/PS.03.510, P2.MR/PS.03.610 | 100% |  |
| DDD3130 |  | Test Systems - Risers / Shaft - 2950 | 5d | 2025-10-29 A | 2025-11-24 A | DDD3300, DDD3110 | 100% |  |
| DDD3140 |  | Inspections - Close In / Shaft - 2950 | 5d | 2025-12-01 | 2025-12-05 | DDD3130 |  | 84d |
| DDD3150 |  | Gypsum Shaft Walls / Shaft - 2950 | 10d | 2025-12-08 | 2025-12-19 | DDD3140 |  | 84d |
|  | 12 | **Mechanical Shaft - 3830** |  | 2025-12-01 | 2026-02-17 |  |  |  |
| DDD3060 |  | MEP Systems Install - Risers B2-L4 / Shaft - 3830 | 5d | 2025-12-01 | 2025-12-05 | P2.4.03.510, P2.BIM.MEPR.40.110, P2.4.I.03.320 |  | 44d |
| DDD3310 |  | MEP Systems Install - Risers L4-L7 / Shaft - 3830 | 5d | 2025-12-08 | 2025-12-12 | DDD3060, P2.7.03.510 |  | 44d |
| DDD3320 |  | MEP Systems Install - Risers L7-PH / Shaft - 3830 | 5d | 2025-12-15 | 2025-12-19 | DDD3310, P2.MR/PS.03.510, P2.MR/PS.03.610 |  | 44d |
| DDD3080 |  | Test Systems - Risers / Shaft - 3830 | 5d | 2025-12-22 | 2025-12-29 | DDD3320 |  | 44d |
| FRG.ROF.7.1000 |  | Insulate B2-L2 / ROF7 - FRAGNET | 5d | 2025-12-30 | 2026-01-06 | DDD3080 |  | 44d |
| FRG.ROF.7.1010 |  | Insulate L3-L4 / ROF7 - FRAGNET | 5d | 2026-01-07 | 2026-01-13 | FRG.ROF.7.1000 |  | 44d |
| FRG.ROF.7.1020 |  | Insulate L5-L6 / ROF7 - FRAGNET | 5d | 2026-01-14 | 2026-01-20 | FRG.ROF.7.1010 |  | 44d |
| DDD3070 |  | Insulate - Risers / Shaft - 3830 | 5d | 2026-01-21 | 2026-01-27 | DDD3080, FRG.ROF.7.1030 FF |  | 44d |
| FRG.ROF.7.1030 |  | Insulate L7-PH / ROF7 - FRAGNET | 5d | 2026-01-21 | 2026-01-27 | FRG.ROF.7.1020 |  | 44d |
| DDD3090 |  | Inspections - Close In / Shaft - 3830 | 5d | 2026-01-28 | 2026-02-03 | DDD3070, FRG.ROF.7.1030 |  | 44d |
| DDD3100 |  | Gypsum Shaft Walls / Shaft - 3830 | 10d | 2026-02-04 | 2026-02-17 | DDD3090 |  | 44d |
|  | 8 | **Mechanical Shaft - 3902** |  | 2025-05-08 | 2025-12-19 |  |  |  |
| DDD3010 |  | MEP Systems Install - Risers B2-L4 / Shaft - 3902 | 7d | 2025-05-08 A | 2025-05-19 A | P2.4.03.510, P2.BIM.MEPR.40.110, P2.4.I.03.310 | 100% |  |
| DDD3330 |  | MEP Systems Install - Risers L4-L7 / Shaft - 3902 | 5d | 2025-05-19 A | 2025-05-23 A | DDD3010, P2.6.03.510, P2.7.03.510 | 100% |  |
| DDD3340 |  | MEP Systems Install - Risers L7-PH / Shaft - 3902 | 5d | 2025-08-27 A | 2025-10-27 A | DDD3330, P2.MR/PS.03.510, P2.MR/PS.03.610 | 100% |  |
| FRG.P2.ROG.5.1040 |  | Install Fill-in Pieces & Branches / ROG5 - FRAGNET | 15d | 2025-09-24 A | 2025-10-27 A | DDD3340 FF, FRG.RED.0.1060 | 100% |  |
| DDD3030 |  | Test Systems - Risers / Shaft - 3902 | 5d | 2025-10-31 A | 2025-11-21 A | DDD3340, FRG.P2.ROG.5.1040 | 100% |  |
| DDD3040 |  | Inspections - Close In / Shaft - 3902 | 5d | 2025-12-01 | 2025-12-05 | FRG.P2.ROG.5.1040, DDD3030 |  | 84d |
| DDD3050 |  | Gypsum Shaft Walls / Shaft - 3902 | 10d | 2025-12-08 | 2025-12-19 | DDD3040 |  | 84d |
|  | 11 | **Mechanical Shaft - 3940** |  | 2024-12-17 | 2025-12-19 |  |  |  |
| DDD2960 |  | MEP Systems Install - Risers L2-L6 / Shaft - 3940 | 5d | 2024-12-17 A | 2024-12-19 A | P2.6.03.510, P2.BIM.MEPR.40.110 | 100% |  |
| DDD2980 |  | Test Systems - Risers / Shaft - 3940 | 5d | 2025-06-02 A | 2025-06-06 A | DDD2960, DDD2930 | 100% |  |
| DDD2970 |  | Insulate - Risers / Shaft - 3940 | 5d | 2025-08-18 A | 2025-08-22 A | DDD2980 | 100% |  |
| DDD2990 |  | Inspections - Close In / Shaft - 3940 | 5d | 2025-12-01 | 2025-12-05 | DDD2970 |  | 84d |
| DDD3000 |  | Gypsum Shaft Walls / Shaft - 3940 | 10d | 2025-12-08 | 2025-12-19 | DDD2990 |  | 84d |
|  | 9 | **Mechanical Shaft - 3959** |  | 2025-01-28 | 2025-12-19 |  |  |  |
| DDD2910 |  | MEP Systems Install - Risers B2-L4 / Shaft - 3959 | 5d | 2025-01-28 A | 2025-01-30 A | P2.4.03.510, P2.BIM.MEPR.40.110 | 100% |  |
| DDD3350 |  | MEP Systems Install - Risers L4-L7 / Shaft - 3959 | 5d | 2025-01-28 A | 2025-01-30 A | DDD2910, P2.7.03.510 | 100% |  |
| DDD3360 |  | MEP Systems Install - Risers L7-PH / Shaft - 3959 | 5d | 2025-01-28 A | 2025-01-30 A | DDD3350 | 100% |  |
| DDD2930 |  | Test Systems - Risers / Shaft - 3959 | 5d | 2025-06-02 A | 2025-06-06 A | DDD3360 | 100% |  |
| DDD2920 |  | Insulate - Risers / Shaft - 3959 | 5d | 2025-08-18 A | 2025-09-29 A | DDD2930 | 100% |  |
| DDD2940 |  | Inspections - Close In / Shaft - 3959 | 5d | 2025-12-01 | 2025-12-05 | DDD2920 |  | 84d |
| DDD2950 |  | Gypsum Shaft Walls / Shaft - 3959 | 10d | 2025-12-08 | 2025-12-19 | DDD2940 |  | 84d |
|  | 4 | **Mechanical Shaft - 5970** |  | 2024-12-03 | 2026-01-06 |  |  |  |
| DDD2860 |  | MEP Systems Install - Risers B2-L4 / Shaft - 5970 | 5d | 2024-12-03 A | 2024-12-05 A | P2.4.03.510, P2.BIM.MEPR.40.110 | 100% |  |
| DDD3370 |  | MEP Systems Install - Risers L4- L7 / Shaft - 5970 | 5d | 2025-02-03 A | 2025-02-03 A | DDD2860, P2.7.03.510 | 100% |  |
| DDD3380 |  | MEP Systems Install - Risers L7-PH / Shaft - 5970 | 5d | 2025-06-18 A | 2025-07-11 A | DDD3370, P2.MR/PS.03.510, P2.MR/PS.03.610 | 100% |  |
| FRG.P2.RSJ.6.1000 |  | Install Fill-in Pieces & Branches / RSJ6 - FRAGNET | 15d | 2025-09-02 A | 2025-09-22 A | DDD3380 | 100% |  |
| DDD2880 |  | Test Systems - Risers / Shaft - 5970 | 5d | 2025-09-26 A | 2025-11-07 A | DDD3380, FRG.P2.RSJ.6.1000 | 100% |  |
| FRG.P2.RSJ.6.1010 |  | Prep/Test Riser / RSJ6 - FRAGNET | 4d | 2025-09-26 A | 2025-10-23 A | FRG.P2.RSJ.6.1000 | 100% |  |
| FRG.P2.RSJ.6.1100 |  | Install Clamps B2-L2 / RSJ6 - FRAGNET | 5d | 2025-10-07 A | 2025-10-15 A | DDD2880 | 100% |  |
| FRG.P2.RSJ.6.1020 |  | Insulate B2-L2 / RSJ6 - FRAGNET | 5d | 2025-10-09 A | 2025-11-14 A | FRG.P2.RSJ.6.1010, FRG.P2.RSJ.6.1110 | 100% |  |
| FRG.P2.RSJ.6.1030 |  | Insulate L3-L4 / RSJ6 - FRAGNET | 5d | 2025-10-15 A | 2025-11-24 A | FRG.P2.RSJ.6.1020 | 100% |  |
| FRG.P2.RSJ.6.1110 |  | Install Clamps L3-L4 / RSJ6 - FRAGNET | 5d | 2025-10-15 A | 2025-10-23 A | FRG.P2.RSJ.6.1100 SS | 100% |  |
| FRG.P2.RSJ.6.1120 |  | Install Clamps L5-L6 / RSJ6 - FRAGNET | 10d | 2025-10-24 A | 2025-10-24 A | FRG.P2.RSJ.6.1110 | 100% |  |
| FRG.P2.RSJ.6.1130 |  | Install Clamps L7-PH / RSJ6 - FRAGNET | 10d | 2025-11-10 A | 2025-12-12 | FRG.P2.RSJ.6.1120 SS |  | 79d |
| FRG.P2.RSJ.6.1040 |  | Insulate L5-L6 / RSJ6 - FRAGNET | 5d | 2025-12-01 | 2025-12-05 | FRG.P2.RSJ.6.1030 |  | 79d |
| FRG.P2.RSJ.6.1050 |  | Insulate L7-PH / RSJ6 - FRAGNET | 5d | 2025-12-08 | 2025-12-12 | FRG.P2.RSJ.6.1040 |  | 79d |
| DDD2890 |  | Inspections - Close In / Shaft - 5970 | 5d | 2025-12-15 | 2025-12-19 | FRG.P2.RSJ.6.1130, FRG.P2.RSJ.6.1050, DDD2880 |  | 79d |
| DDD2900 |  | CMU Shaft Walls / Shaft - 5970 | 10d | 2025-12-22 | 2026-01-06 | DDD2890, BP4.040.3.100 |  | 79d |
|  | 1 | **Mechanical Shaft - 5971** |  | 2025-04-01 | 2025-12-19 |  |  |  |
| DDD3260 |  | Steel Grating / Shaft - 5971 | 5d | 2025-04-01 A | 2025-04-17 A | P2.PR.03.510 | 100% |  |
| DDD2840 |  | Inspections - Close In / Shaft - 5971 | 5d | 2025-12-01 | 2025-12-05 | P2.L2.SMT.1000 |  | 89d |
| DDD2850 |  | Gypsum Shaft Walls / Shaft - 5971 | 10d | 2025-12-08 | 2025-12-19 | DDD2840 |  | 89d |
|  | 3 | **Mechanical Shaft - 5972** |  | 2024-12-20 | 2025-12-12 |  |  |  |
| DDD2760 |  | MEP Systems Install - Risers B2-L4 / Shaft - 5972 | 5d | 2024-12-20 A | 2024-12-20 A | P2.4.03.510, P2.BIM.MEPR.40.110 | 100% |  |
| DDD3390 |  | MEP Systems Install - Risers L4-L7 / Shaft - 5972 | 5d | 2025-01-31 A | 2025-01-31 A | DDD2760, P2.7.03.510 | 100% |  |

| ID | WBS | Task | Duration | Start | Finish | Predecessors | Complete | Total float |
| --- | --- | --- | --- | --- | --- | --- | --- | --- |
| DDD3400 |  | MEP Systems Install - Risers L7-PH / Shaft - 5972 | 5d | 2025-05-20 A | 2025-06-18 A | DDD3390, P2.MR/PS.03.510, P2.PR.03.510, P2.MR/PS.03.610 | 100% |  |
| DDD2780 |  | Test Systems - Risers / Shaft - 5972 | 5d | 2025-08-25 A | 2025-08-30 A | DDD3400 | 100% |  |
| DDD2770 |  | Insulate - Risers / Shaft - 5972 | 5d | 2025-09-23 A | 2025-09-30 A | DDD2780 | 100% |  |
| DDD2790 |  | Inspections - Close In / Shaft - 5972 | 5d | 2025-11-17 A | 2025-11-24 A | DDD2770 | 100% |  |
| DDD2800 |  | CMU Shaft Walls / Shaft - 5972 | 10d | 2025-12-01 | 2025-12-12 | DDD2790 |  | 89d |
|  | 5 | **Mechanical Shaft - 5973** |  | 2024-11-26 | 2025-12-19 |  |  |  |
| DDD2710 |  | MEP Systems Install - Risers L1-L4 / Shaft - 5973 | 5d | 2024-11-26 A | 2024-11-26 A | P2.4.03.510, P2.BIM.MEPR.40.110 | 100% |  |
| DDD3410 |  | MEP Systems Install - Risers L4-L7 / Shaft - 5973 | 5d | 2024-11-26 A | 2024-11-26 A | DDD2710, P2.7.03.310 | 100% |  |
| DDD3420 |  | MEP Systems Install - Risers L7-PH / Shaft - 5973 | 5d | 2025-08-11 A | 2025-09-30 A | DDD3410, P2.MR/PS.03.510, P2.PR.03.510, P2.MR/PS.03.610 | 100% |  |
| DDD2720 |  | Insulate - Risers / Shaft - 5973 | 5d | 2025-10-07 A | 2025-10-24 A | DDD2730 | 100% |  |
| DDD2730 |  | Test Systems - Risers / Shaft - 5973 | 5d | 2025-10-07 A | 2025-11-07 A | DDD3420 | 100% |  |
| DDD2740 |  | Inspections - Close In / Shaft - 5973 | 5d | 2025-11-10 A | 2025-12-05 | DDD2720 |  | 89d |
| DDD2750 |  | CMU Shaft Walls / Shaft - 5973 | 10d | 2025-12-08 | 2025-12-19 | DDD2740 |  | 89d |
|  | 6 | **Mechanical Shaft - 5975** |  | 2024-11-26 | 2026-01-06 |  |  |  |
| DDD2660 |  | MEP Systems Install - Risers B2-L4 / Shaft - 5975 | 5d | 2024-11-26 A | 2024-11-26 A | P2.4.03.510, P2.BIM.MEPR.40.110 | 100% |  |
| DDD3430 |  | MEP Systems Install - Risers L4-L7 / Shaft - 5975 | 5d | 2024-11-26 A | 2024-11-26 A | DDD2660, P2.7.03.310 | 100% |  |
| DDD3440 |  | MEP Systems Install - Risers L7-PH / Shaft - 5975 | 5d | 2025-07-28 A | 2025-09-30 A | DDD3430, P2.MR/PS.03.510, P2.PR.03.510, P2.MR/PS.03.610, FRG.P2.RSJ.1.1000 FF | 100% |  |
| FRG.P2.RSJ.1.1000 |  | Install Fill-in Pieces & Branches / RSJ1 - FRAGNET | 20d | 2025-09-02 A | 2025-09-26 A | DDD3430 | 100% |  |
| DDD2680 |  | Test Systems - Risers / Shaft - 5975 | 5d | 2025-09-29 A | 2025-10-01 A | DDD3440, FRG.P2.RSJ.1.1010 FF | 100% |  |
| FRG.P2.RSJ.1.1010 |  | Prep/Test Riser / RSJ1 - FRAGNET | 4d | 2025-09-29 A | 2025-10-01 A | FRG.P2.RSJ.1.1000 | 100% |  |
| FRG.P2.RSJ.1.1060 |  | Install Clamps B2-L2 / RSJ1 - FRAGNET | 5d | 2025-10-06 A | 2025-10-10 A | DDD3440 | 100% |  |
| FRG.P2.RSJ.1.1020 |  | Insulate B2-L2 / RSJ1 - FRAGNET | 5d | 2025-10-08 A | 2025-11-07 A | FRG.P2.RSJ.1.1010, FRG.P2.RSJ.1.1070 | 100% |  |
| FRG.P2.RSJ.1.1070 |  | Install Clamps L3-L4 / RSJ1 - FRAGNET | 5d | 2025-10-13 A | 2025-10-17 A | FRG.P2.RSJ.1.1060 SS | 100% |  |
| FRG.P2.RSJ.1.1080 |  | Install Clamps L5-L6 / RSJ1 - FRAGNET | 5d | 2025-10-20 A | 2025-10-27 A | FRG.P2.RSJ.1.1070 | 100% |  |
| FRG.P2.RSJ.1.1090 |  | Install Clamps L7-PH / RSJ1 - FRAGNET | 5d | 2025-10-20 A | 2025-10-27 A | FRG.P2.RSJ.1.1080 SS | 100% |  |
| FRG.P2.RSJ.1.1030 |  | Insulate L3-L4 / RSJ1 - FRAGNET | 5d | 2025-11-10 A | 2025-11-21 A | FRG.P2.RSJ.1.1020 | 100% |  |
| FRG.P2.RSJ.1.1040 |  | Insulate L5-L6 / RSJ1 - FRAGNET | 5d | 2025-12-01 | 2025-12-05 | FRG.P2.RSJ.1.1030, FRG.P2.RSJ.1.1090 |  | 79d |
| FRG.P2.RSJ.1.1050 |  | Insulate L7-PH / RSJ1 - FRAGNET | 5d | 2025-12-08 | 2025-12-12 | FRG.P2.RSJ.1.1040 |  | 79d |
| DDD2690 |  | Inspections - Close In / Shaft - 5975 | 5d | 2025-12-15 | 2025-12-19 | FRG.P2.RSJ.1.1090, FRG.P2.RSJ.1.1050, DDD2680 |  | 79d |
| DDD2700 |  | CMU Shaft Walls / Shaft - 5975 | 10d | 2025-12-22 | 2026-01-06 | DDD2690 |  | 79d |
|  | 7 | **Mechanical Shaft - 5976** |  | 2025-04-01 | 2025-12-19 |  |  |  |
| DDD2810 |  | Steel Grating / Shaft - 5976 | 5d | 2025-04-01 A | 2025-04-17 A | P2.PR.03.510 | 100% |  |
| FRG.P2.RSJ.4.1000 |  | Install Fill-in Pieces & Branches / RSJ4 - FRAGNET | 20d | 2025-08-11 A | 2025-09-08 A | DDD2810 | 100% |  |
| FRG.P2.RSJ.4.1010 |  | Prep/Test Riser / RSJ4 - FRAGNET | 4d | 2025-09-18 A | 2025-09-23 A | FRG.P2.RSJ.4.1000 | 100% |  |
| FRG.P2.RSJ.4.1060 |  | Install Clamps B2-L2 / RSJ4 - FRAGNET | 5d | 2025-09-29 A | 2025-10-17 A | FRG.P2.RSJ.4.1010 | 100% |  |
| FRG.P2.RSJ.4.1070 |  | Install Clamps L3-L4 / RSJ4 - FRAGNET | 5d | 2025-10-01 A | 2025-10-07 A | FRG.P2.RSJ.4.1060 SS | 100% |  |
| FRG.P2.RSJ.4.1020 |  | Insulate B2-L2 / RSJ4 - FRAGNET | 5d | 2025-10-15 A | 2025-11-18 A | FRG.P2.RSJ.4.1010, FRG.P2.RSJ.4.1070 | 100% |  |
| FRG.P2.RSJ.4.1080 |  | Install Clamps L5-L6 / RSJ4 - FRAGNET | 5d | 2025-10-15 A | 2025-10-24 A | FRG.P2.RSJ.4.1070 | 100% |  |
| FRG.P2.RSJ.4.1030 |  | Insulate L3-L4 / RSJ4 - FRAGNET | 5d | 2025-10-16 A | 2025-11-26 A | FRG.P2.RSJ.4.1020 | 100% |  |
| FRG.P2.RSJ.4.1040 |  | Insulate L5-L6 / RSJ4 - FRAGNET | 5d | 2025-10-17 A | 2025-12-01 A | FRG.P2.RSJ.4.1030 | 100% |  |
| FRG.P2.RSJ.4.1090 |  | Install Clamps L7-PH / RSJ4 - FRAGNET | 5d | 2025-10-27 A | 2025-10-31 A | FRG.P2.RSJ.4.1080 SS | 100% |  |
| FRG.P2.RSJ.4.1050 |  | Insulate L7-PH / RSJ4 - FRAGNET | 5d | 2025-11-24 A | 2025-12-01 A | FRG.P2.RSJ.4.1040 | 100% |  |
| DDD2640 |  | Inspections - Close In / Shaft - 5976 | 5d | 2025-12-01 | 2025-12-05 | DDD2810, P2.L2.SMT.1000, FRG.P2.RSJ.4.1050, FRG.P2.RSJ.4.1090 |  | 74d |
| DDD2650 |  | Gypsum Shaft Walls / Shaft - 5976 | 10d | 2025-12-08 | 2025-12-19 | DDD2640 |  | 74d |
|  | 10 | **Mechanical Shaft - 3901** |  | 2025-12-01 | 2026-02-10 |  |  |  |
| DDD2560 |  | MEP Systems Install - Risers B2-L4 / Shaft - 3901 | 5d | 2025-12-01 | 2025-12-05 | P2.4.03.510, P2.BIM.MEPR.40.110 |  | 49d |
| DDD3450 |  | MEP Systems Install - Risers L4-L7 / Shaft - 3901 | 5d | 2025-12-08 | 2025-12-12 | DDD2560, P2.7.03.510 |  | 49d |
| DDD3460 |  | MEP Systems Install - Risers L7-PH / Shaft - 3901 | 5d | 2025-12-15 | 2025-12-19 | DDD3450, P2.MR/PS.03.510, P2.MR/PS.03.610 |  | 49d |
| DDD2580 |  | Test Systems - Risers / Shaft - 3901 | 5d | 2025-12-22 | 2025-12-29 | DDD3460 |  | 59d |
| FRG.RSH.5.1000 |  | Insulate B2-L2 / RSH5 - FRAGNET | 5d | 2025-12-22 | 2025-12-29 | DDD3460 |  | 49d |
| FRG.RSH.5.1010 |  | Insulate L3-L4 / RSH5 - FRAGNET | 5d | 2025-12-30 | 2026-01-06 | FRG.RSH.5.1000 |  | 49d |
| FRG.RSH.5.1020 |  | Insulate L5-L6 / RSH5 - FRAGNET | 5d | 2026-01-07 | 2026-01-13 | FRG.RSH.5.1010 |  | 49d |
| DDD2570 |  | Insulate - Risers / Shaft - 3901 | 5d | 2026-01-14 | 2026-01-20 | DDD2580, FRG.RSH.5.1030 FF |  | 49d |
| FRG.RSH.5.1030 |  | Insulate L7-PH / RSH5 - FRAGNET | 5d | 2026-01-14 | 2026-01-20 | FRG.RSH.5.1020 |  | 49d |
| DDD2590 |  | Inspections - Close In / Shaft - 3901 | 5d | 2026-01-21 | 2026-01-27 | DDD2570, FRG.RSH.5.1030 |  | 49d |
| DDD2600 |  | Gypsum Shaft Walls / Shaft - 3901 | 10d | 2026-01-28 | 2026-02-10 | DDD2590 |  | 49d |
|  | 11 | **MEP Shafts - Z2** |  | 2025-02-14 | 2025-12-05 |  |  |  |
|  | 1 | **Mechanical Shaft - 2948** |  | 2025-02-14 | 2025-12-05 |  |  |  |
| DDD2110 |  | MEP Systems Install - Risers L1-L4 / Shaft - 2948 | 5d | 2025-02-14 A | 2025-02-19 A | P2.4.03.520, P2.BIM.MEPR.40.110 | 100% |  |
| DDD3470 |  | MEP Systems Install - Risers L4-L7 / Shaft - 2948 | 5d | 2025-04-07 A | 2025-04-11 A | DDD2110, P2.7.03.520 | 100% |  |
| DDD3480 |  | MEP Systems Install - Risers L7-PH / Shaft - 2948 | 5d | 2025-06-02 A | 2025-06-06 A | DDD3470, P2.MR/PS.03.520, P2.MR/PS.03.620 | 100% |  |
| DDD2130 |  | Test Systems - Risers / Shaft - 2948 | 5d | 2025-06-09 A | 2025-06-13 A | DDD3480 | 100% |  |
| DDD2120 |  | Insulate - Risers / Shaft - 2948 | 5d | 2025-08-18 A | 2025-09-26 A | DDD2130, FRG.ROF.4.1030 FF | 100% |  |
| FRG.ROF.4.1040 |  | Install L1-L2 Stainless / ROF4 - FRAGNET | 12d | 2025-08-21 A | 2025-09-05 A | DDD2130 | 100% |  |
| FRG.ROF.4.1000 |  | Insulate L1-L2 / ROF4 - FRAGNET | 5d | 2025-09-02 A | 2025-09-08 A | FRG.ROF.4.1040 | 100% |  |
| FRG.ROF.4.1070 |  | Install L5-PH Galvanized / ROF4 - FRAGNET | 10d | 2025-09-02 A | 2025-09-15 A | FRG.ROF.4.1050 | 100% |  |
| FRG.ROF.4.1010 |  | Insulate L3-L4 / ROF4 - FRAGNET | 5d | 2025-09-09 A | 2025-09-15 A | FRG.ROF.4.1000, FRG.ROF.4.1050 | 100% |  |
| FRG.ROF.4.1050 |  | Install L3-L4 Stainless / ROF4 - FRAGNET | 12d | 2025-09-11 A | 2025-09-26 A | FRG.ROF.4.1040 | 100% |  |
| FRG.ROF.4.1020 |  | Insulate L5-L6 / ROF4 - FRAGNET | 5d | 2025-09-16 A | 2025-09-22 A | FRG.ROF.4.1010 | 100% |  |
| FRG.ROF.4.1030 |  | Insulate L7-PH / ROF4 - FRAGNET | 5d | 2025-09-23 A | 2025-09-29 A | FRG.ROF.4.1020 | 100% |  |

| ID | WBS | Task | Duration | Start | Finish | Predecessors | Complete | Total float |
| --- | --- | --- | --- | --- | --- | --- | --- | --- |
| FRG.ROF.4.1060 |  | Install L5-PH Stainless / ROF4 - FRAGNET | 15d | 2025-09-29 A | 2025-09-29 A | FRG.ROF.4.1050 | 100% |  |
| DDD2140 |  | Inspections - Close In / Shaft - 2948 | 5d | 2025-10-15 A | 2025-10-15 A | DDD2120, FRG.ROF.4.1030, FRG.ROF.4.1060, FRG.ROF.4.1070 | 100% |  |
| DDD2150 |  | Gypsum Shaft Walls / Shaft - 2948 | 10d | 2025-11-03 A | 2025-12-05 | DDD2140 | 50% | 94d |
|  | 12 | **MEP Shafts - Z3** |  | 2024-12-13 | 2026-01-23 |  |  |  |
|  | 7 | **Mechanical Shaft - 2800** |  | 2025-02-03 | 2025-12-29 |  |  |  |
| DDD2160 |  | MEP Systems Install - Risers B2-L4 / Shaft - 2800 | 5d | 2025-02-03 A | 2025-02-07 A | P2.4.03.530, P2.BIM.MEPR.40.110 | 100% |  |
| DDD3490 |  | MEP Systems Install - Risers L4-L7 / Shaft - 2800 | 5d | 2025-04-07 A | 2025-04-11 A | DDD2160, P2.7.03.530 | 100% |  |
| DDD3500 |  | MEP Systems Install - Risers L7-PH / Shaft - 2800 | 5d | 2025-05-05 A | 2025-06-03 A | DDD3490, P2.MR/PS.03.530, P2.MR/PS.03.630 | 100% |  |
| DDD2180 |  | Test Systems - Risers / Shaft - 2800 | 5d | 2025-07-07 A | 2025-09-05 A | DDD3500 | 100% |  |
| DDD2170 |  | Insulate - Risers / Shaft - 2800 | 5d | 2025-12-01 | 2025-12-05 | DDD2180 |  | 79d |
| DDD2190 |  | Inspections - Close In / Shaft - 2800 | 5d | 2025-12-08 | 2025-12-12 | DDD2170 |  | 79d |
| DDD2200 |  | Gypsum Shaft Walls / Shaft - 2800 | 10d | 2025-12-15 | 2025-12-29 | DDD2190 |  | 79d |
|  | 1 | **Mechanical Shaft - 2801** |  | 2025-04-01 | 2025-12-12 |  |  |  |
| DDD2610 |  | Steel Grating / Shaft - 2801 | 5d | 2025-04-01 A | 2025-04-17 A | P2.8.03.530 | 100% |  |
| DDD2240 |  | Inspections - Close In / Shaft - 2801 | 5d | 2025-10-01 A | 2025-10-07 A | DDD2610, P2.L2.EMT.1000 FF | 100% |  |
| DDD2250 |  | CMU Shaft Walls / Shaft - 2801 | 10d | 2025-12-01 | 2025-12-12 | DDD2240, BP4.040.3.100 |  | 164d |
|  | 6 | **Mechanical Shaft - 2802** |  | 2025-02-03 | 2025-11-19 |  |  |  |
| DDD2260 |  | MEP Systems Install - Risers B2-L4 / Shaft - 2802 | 5d | 2025-02-03 A | 2025-02-07 A | P2.4.03.530, P2.BIM.MEPR.40.110 | 100% |  |
| DDD3510 |  | MEP Systems Install - Risers L4-L7 / Shaft - 2802 | 5d | 2025-04-21 A | 2025-04-25 A | DDD2260, P2.7.03.530 | 100% |  |
| DDD3520 |  | MEP Systems Install - Risers L7-PH / Shaft - 2802 | 5d | 2025-05-01 A | 2025-05-07 A | DDD3510, P2.MR/PS.03.530, P2.MR/PS.03.630 | 100% |  |
| DDD2280 |  | Test Systems - Risers / Shaft - 2802 | 5d | 2025-06-02 A | 2025-06-06 A | DDD3520 | 100% |  |
| DDD2270 |  | Insulate - Risers / Shaft - 2802 | 5d | 2025-08-27 A | 2025-09-26 A | DDD2280, FRG.RED.0.1070 FF | 100% |  |
| FRG.RED.0.1060 |  | Insulate L1-L2 / RED0 - FRAGNET | 5d | 2025-09-08 A | 2025-09-12 A | DDD2280 | 100% |  |
| FRG.RED.0.1070 |  | Insulate L3-L4 / RED0- FRAGNET | 5d | 2025-09-15 A | 2025-09-19 A | FRG.RED.0.1060 | 100% |  |
| DDD2290 |  | Inspections - Close In / Shaft - 2802 | 5d | 2025-11-14 A | 2025-11-14 A | DDD2270, FRG.RED.0.1070 | 100% |  |
| DDD2300 |  | CMU Shaft Walls / Shaft - 2802 | 10d | 2025-11-17 A | 2025-11-19 A | DDD2290 | 100% |  |
|  | 5 | **Mechanical Shaft - 2803** |  | 2025-02-18 | 2026-01-23 |  |  |  |
| DDD3530 |  | MEP Systems Install - Risers L4-L7 / Shaft - 2803 | 5d | 2025-02-18 A | 2025-02-18 A | P2.7.03.530, P2.BIM.MEPR.40.110, P2.4.03.530 | 100% |  |
| DDD2310 |  | MEP Systems Install - Risers B2-L4 / Shaft - 2803 | 5d | 2025-04-07 A | 2025-04-11 A | P2.4.03.530, P2.BIM.MEPR.40.110 | 100% |  |
| DDD3540 |  | MEP Systems Install - Risers L7-PH / Shaft - 2803 | 5d | 2025-06-30 A | 2025-10-02 A | DDD3530, P2.MR/PS.03.530, DDD2310, P2.MR/PS.03.630 | 100% |  |
| FRG.REC.0.1040 |  | Install L1-L4 / REC0 - FRAGNET | 10d | 2025-10-29 A | 2025-12-03 | FRG.ROF.4.1060 | 70% | 60d |
| FRG.REC.0.1050 |  | Install L5-PH / REC0- FRAGNET | 10d | 2025-11-10 A | 2025-12-11 | FRG.REC.0.1040 | 40% | 60d |
| FRG.REC.0.1000 |  | Insulate L1-L2 / REC0 - FRAGNET | 5d | 2025-12-04 | 2025-12-10 | FRG.REC.0.1040 |  | 61d |
| FRG.REC.0.1010 |  | Insulate L3-L4 / REC0- FRAGNET | 5d | 2025-12-11 | 2025-12-17 | FRG.REC.0.1000 |  | 61d |
| DDD2330 |  | Test Systems - Risers / Shaft - 2803 | 5d | 2025-12-12 | 2025-12-18 | DDD3540, FRG.REC.0.1050 |  | 60d |
| FRG.REC.0.1020 |  | Insulate L5-L6 / REC0- FRAGNET | 5d | 2025-12-18 | 2025-12-24 | FRG.REC.0.1010, FRG.REC.0.1050 |  | 61d |
| DDD2320 |  | Insulate - Risers / Shaft - 2803 | 5d | 2025-12-26 | 2026-01-02 | DDD2330, FRG.REC.0.1030 FF |  | 61d |
| FRG.REC.0.1030 |  | Insulate L7-PH / REC0- FRAGNET | 5d | 2025-12-26 | 2026-01-02 | FRG.REC.0.1020 |  | 61d |
| DDD2340 |  | Inspections - Close In / Shaft - 2803 | 5d | 2026-01-05 | 2026-01-09 | DDD2320, FRG.REC.0.1030 |  | 61d |
| DDD2350 |  | CMU Shaft Walls / Shaft - 2803 | 10d | 2026-01-12 | 2026-01-23 | DDD2340 |  | 61d |
|  | 3 | **Mechanical Shaft - 2805** |  | 2025-04-07 | 2025-12-19 |  |  |  |
| DDD2360 |  | MEP Systems Install - Risers B2-L4 / Shaft - 2805 | 5d | 2025-04-07 A | 2025-04-11 A | P2.4.03.530, P2.BIM.MEPR.40.110 | 100% |  |
| DDD3550 |  | MEP Systems Install - Risers L4-L7 / Shaft - 2805 | 5d | 2025-04-14 A | 2025-04-18 A | DDD2360, P2.7.03.530 | 100% |  |
| DDD3560 |  | MEP Systems Install - Risers L7-PH / Shaft - 2805 | 5d | 2025-05-15 A | 2025-08-22 A | DDD3550, P2.MR/PS.03.530, P2.MR/PS.03.630 | 100% |  |
| DDD2370 |  | Insulate - Risers / Shaft - 2805 | 5d | 2025-08-18 A | 2025-08-22 A | DDD2380 | 100% |  |
| DDD2380 |  | Test Systems - Risers / Shaft - 2805 | 5d | 2025-08-18 A | 2025-08-22 A | DDD3560 | 100% |  |
| DDD2390 |  | Inspections - Close In / Shaft - 2805 | 5d | 2025-12-01 | 2025-12-05 | DDD3560, DDD2180, DDD2370 |  | 89d |
| DDD2400 |  | CMU Shaft Walls / Shaft - 2805 | 10d | 2025-12-08 | 2025-12-19 | DDD2390 |  | 89d |
|  | 4 | **Mechanical Shaft - 2806** |  | 2024-12-13 | 2026-01-20 |  |  |  |
| DDD2410 |  | MEP Systems Install - Risers B2-L4 / Shaft - 2806 | 5d | 2024-12-13 A | 2024-12-13 A | P2.4.03.530, P2.BIM.MEPR.40.110 | 100% |  |
| DDD3570 |  | MEP Systems Install - Risers L4-L7 / Shaft - 2806 | 15d | 2025-02-10 A | 2025-02-10 A | DDD2410, P2.7.03.530 | 100% |  |
| DDD3580 |  | MEP Systems Install - Risers L7-PH / Shaft - 2806 | 15d | 2025-08-11 A | 2025-10-10 A | DDD3570, P2.MR/PS.03.530, P2.MR/PS.03.630 | 100% |  |
| FRG.REE.9.1090 |  | Install Fill-in Pieces & Branches / REE9 - FRAGNET | 15d | 2025-09-22 A | 2025-10-16 A | FRG.P2.RSJ.1.1000, FRG.P2.RSJ.4.1000 | 100% |  |
| DDD2430 |  | Test Systems - Risers / Shaft - 2806 | 5d | 2025-10-27 A | 2025-10-31 A | DDD3580, FRG.REE.9.1100 FF | 100% |  |
| FRG.REE.9.1100 |  | Prep/Test Riser / REE9 - FRAGNET | 5d | 2025-10-27 A | 2025-10-31 A | FRG.REE.9.1090 | 100% |  |
| FRG.REE.9.1050 |  | Install Clamps B2-L2 / REE9 - FRAGNET | 5d | 2025-11-03 A | 2025-11-07 A | FRG.REE.9.1100 | 100% |  |
| FRG.REE.9.1060 |  | Install Clamps L3-L4 / REE9 - FRAGNET | 5d | 2025-11-03 A | 2025-11-07 A | FRG.REE.9.1050 SS | 100% |  |
| FRG.REE.9.1070 |  | Install Clamps L5-L6 / REE9 - FRAGNET | 10d | 2025-11-10 A | 2025-11-21 A | FRG.REE.9.1060 | 100% |  |
| FRG.REE.9.1080 |  | Install Clamps L7-PH / REE9 - FRAGNET | 10d | 2025-11-10 A | 2025-11-21 A | FRG.REE.9.1070 SS | 100% |  |
| FRG.REE.9.1010 |  | Insulate B2-L2 / REE9 - FRAGNET | 5d | 2025-12-01 | 2025-12-05 | FRG.REE.9.1100, FRG.REE.9.1060 |  | 64d |
| FRG.REE.9.1020 |  | Insulate L3-L4 / REE9 - FRAGNET | 5d | 2025-12-08 | 2025-12-12 | FRG.REE.9.1010 |  | 64d |
| FRG.REE.9.1030 |  | Insulate L5-L6 / REE9 - FRAGNET | 5d | 2025-12-15 | 2025-12-19 | FRG.REE.9.1020 |  | 64d |
| FRG.REE.9.1040 |  | Insulate L7-PH / REE9 - FRAGNET | 5d | 2025-12-22 | 2025-12-29 | FRG.REE.9.1030 |  | 64d |
| DDD2440 |  | Inspections - Close In / Shaft - 2806 | 5d | 2025-12-30 | 2026-01-06 | FRG.REE.9.1040, FRG.REE.9.1080, DDD2430 |  | 64d |
| DDD2450 |  | CMU Shaft Walls / Shaft - 2806 | 10d | 2026-01-07 | 2026-01-20 | DDD2440 |  | 64d |
|  | 2 | **Mechanical Shaft - 2807** |  | 2024-12-13 | 2026-01-22 |  |  |  |
| DDD2460 |  | MEP Systems Install - Risers B2-L4 / Shaft - 2807 | 5d | 2024-12-13 A | 2025-01-10 A | P2.4.03.530, P2.BIM.MEPR.40.110 | 100% |  |
| DDD3590 |  | MEP Systems Install - Risers L4-L7 / Shaft - 2807 | 15d | 2025-02-10 A | 2025-02-10 A | DDD2460, P2.7.03.530 | 100% |  |
| DDD3600 |  | MEP Systems Install - Risers L7-PH / Shaft - 2807 | 15d | 2025-08-11 A | 2025-09-26 A | DDD3590, P2.MR/PS.03.530, P2.MR/PS.03.630, FRG.REF.9.1000 FF | 100% |  |
| FRG.REF.9.1000 |  | Install Fill-in Pieces & Branches / REF9 - FRAGNET | 20d | 2025-09-08 A | 2025-09-26 A | FRG.P2.RSJ.6.1000, FRG.P2.RSJ.4.1000 | 100% |  |

| ID | WBS | Task | Duration | Start | Finish | Predecessors | Complete | Total float |
| --- | --- | --- | --- | --- | --- | --- | --- | --- |
| FRG.REF.9.1060 |  | Install Clamps B2-L2 / REF9 - FRAGNET | 5d | 2025-11-10 A | 2025-11-14 A | FRG.REF.9.1010 | 100% |  |
| FRG.REF.9.1070 |  | Install Clamps L3-L4 / REF9 - FRAGNET | 5d | 2025-11-10 A | 2025-12-09 | FRG.REF.9.1060 SS | 60% | 137d |
| FRG.REF.9.1080 |  | Install Clamps L5-L6 / REF9 - FRAGNET | 5d | 2025-11-17 A | 2025-11-21 A | FRG.REF.9.1070 | 100% |  |
| DDD2480 |  | Test Systems - Risers / Shaft - 2807 | 5d | 2025-12-01 | 2025-12-05 | DDD3600, FRG.REF.9.1010 FF |  | 64d |
| FRG.REF.9.1010 |  | Prep/Test Riser / REF9 - FRAGNET | 5d | 2025-12-01 | 2025-12-05 | FRG.REF.9.1000 |  | 64d |
| FRG.REF.9.1020 |  | Insulate B2-L2 / REF9 - FRAGNET | 5d | 2025-12-10 | 2025-12-16 | FRG.REF.9.1010, FRG.REF.9.1070 |  | 137d |
| FRG.REF.9.1090 |  | Install Clamps L7-PH / REF9 - FRAGNET | 5d | 2025-12-10 | 2025-12-16 | FRG.REF.9.1080 |  | 147d |
| FRG.REF.9.1030 |  | Insulate L3-L4 / REF9 - FRAGNET | 5d | 2025-12-17 | 2025-12-23 | FRG.REF.9.1020 |  | 137d |
| FRG.REF.9.1040 |  | Insulate L5-L6 / REF9 - FRAGNET | 5d | 2025-12-24 | 2025-12-31 | FRG.REF.9.1030 |  | 137d |
| FRG.REF.9.1050 |  | Insulate L7-PH / REF9 - FRAGNET | 5d | 2025-12-24 | 2025-12-31 | FRG.REF.9.1040 SS |  | 137d |
| DDD2490 |  | Inspections - Close In / Shaft - 2807 | 5d | 2026-01-02 | 2026-01-08 | FRG.REF.9.1090, FRG.REF.9.1050 FF, DDD2480, FRG.REF.9.1050 |  | 137d |
| DDD2500 |  | CMU Shaft Walls / Shaft - 2807 | 10d | 2026-01-09 | 2026-01-22 | DDD2490 |  | 137d |
|  | 9 | **Mechanical Shaft - 2809** |  | 2025-04-07 | 2025-12-19 |  |  |  |
| DDD3210 |  | MEP Systems Install - Risers B2-L4 / Shaft - 2809 | 5d | 2025-04-07 A | 2025-04-11 A | P2.4.03.530, P2.BIM.MEPR.40.110 | 100% |  |
| DDD3620 |  | MEP Systems Install - Risers L4-L7 / Shaft - 2809 | 5d | 2025-04-14 A | 2025-04-18 A | DDD3210, P2.7.03.530 | 100% |  |
| DDD3630 |  | MEP Systems Install - Risers L7-PH / Shaft - 2809 | 5d | 2025-09-02 A | 2025-09-15 A | DDD3620, P2.MR/PS.03.530, P2.MR/PS.03.630 | 100% |  |
| DDD3230 |  | Test Systems - Risers / Shaft - 2809 | 5d | 2025-09-24 A | 2025-09-30 A | DDD3630 | 100% |  |
| DDD3220 |  | Insulate - Risers / Shaft - 2809 | 5d | 2025-09-29 A | 2025-09-30 A | DDD3230 | 100% |  |
| DDD3240 |  | Inspections - Close In / Shaft - 2809 | 5d | 2025-12-01 | 2025-12-05 | DDD3220 |  | 59d |
| DDD3250 |  | CMU Shaft Walls / Shaft - 2809 | 10d | 2025-12-08 | 2025-12-19 | DDD3240 |  | 59d |
|  | 8 | **Mechanical Shaft - 2810** |  | 2025-01-27 | 2026-01-20 |  |  |  |
| DDD2510 |  | MEP Systems Install - Risers B2-L4 / Shaft - 2810 | 5d | 2025-01-27 A | 2025-01-27 A | P2.4.03.530, P2.BIM.MEPR.40.110 | 100% |  |
| DDD3640 |  | MEP Systems Install - Risers L4-L7 / Shaft - 2810 | 15d | 2025-02-17 A | 2025-02-17 A | DDD2510, P2.7.03.530 | 100% |  |
| DDD3650 |  | MEP Systems Install - Risers L7-PH / Shaft - 2810 | 15d | 2025-02-17 A | 2025-02-17 A | DDD3640, P2.MR/PS.03.530 | 100% |  |
| FRG.RNA.7.1000 |  | Install Fill-in Pieces & Branches / RNA7 - FRAGNET | 20d | 2025-09-08 A | 2025-09-30 A | FRG.P2.RSJ.1.1000 | 100% |  |
| DDD2530 |  | Test Systems - Risers / Shaft - 2810 | 5d | 2025-10-24 A | 2025-10-31 A | DDD3650, FRG.RNA.7.1010 FF | 100% |  |
| FRG.RNA.7.1010 |  | Prep/Test Riser / RNA7 - FRAGNET | 6d | 2025-10-24 A | 2025-10-31 A | FRG.RNA.7.1000 | 100% |  |
| FRG.RNA.7.1060 |  | Install Clamps B2-L2 / RNA7 - FRAGNET | 5d | 2025-11-03 A | 2025-11-07 A | FRG.RNA.7.1010 | 100% |  |
| FRG.RNA.7.1070 |  | Install Clamps L3-L4 / RNA7 - FRAGNET | 5d | 2025-11-03 A | 2025-11-07 A | FRG.RNA.7.1060 SS | 100% |  |
| FRG.RNA.7.1080 |  | Install Clamps L5-L6 / RNA7 - FRAGNET | 5d | 2025-11-10 A | 2025-11-14 A | FRG.RNA.7.1070 | 100% |  |
| FRG.RNA.7.1090 |  | Install Clamps L7-PH / RNA7 - FRAGNET | 5d | 2025-11-17 A | 2025-11-21 A | FRG.RNA.7.1080 | 100% |  |
| FRG.RNA.7.1020 |  | Insulate B2-L2 / RNA7 - FRAGNET | 5d | 2025-12-01 | 2025-12-05 | FRG.RNA.7.1010, FRG.RNA.7.1070 |  | 64d |
| FRG.RNA.7.1030 |  | Insulate L3-L4 / RNA7 - FRAGNET | 5d | 2025-12-08 | 2025-12-12 | FRG.RNA.7.1020 |  | 64d |
| FRG.RNA.7.1040 |  | Insulate L5-L6 / RNA7 - FRAGNET | 5d | 2025-12-15 | 2025-12-19 | FRG.RNA.7.1030 |  | 64d |
| FRG.RNA.7.1050 |  | Insulate L7-PH / RNA7 - FRAGNET | 5d | 2025-12-22 | 2025-12-29 | FRG.RNA.7.1040 |  | 64d |
| DDD2540 |  | Inspections - Close In / Shaft - 2810 | 5d | 2025-12-30 | 2026-01-06 | FRG.RNA.7.1090, DDD2530, FRG.RNA.7.1050 |  | 64d |
| DDD2550 |  | Gypsum Shaft Walls / Shaft - 2810 | 10d | 2026-01-07 | 2026-01-20 | DDD2540 |  | 64d |
|  | 1 | **PH 2 MATERIAL MOVEMENT SYSTEMS** |  | 2024-11-08 | 2028-09-05 |  |  |  |
|  | 1 | **PNUEMATIC TUBE - P2** |  | 2024-11-08 | 2026-08-05 |  |  |  |
| P2.PT.1000 |  | Install Hangars at B1 | 5d | 2024-11-08 A | 2025-01-06 A | P2.B2.N.1000 SS | 100% |  |
| P2.PT.1010 |  | Install Hangars at B2 | 5d | 2024-11-08 A | 2025-01-06 A | P2.PT.1000 FF | 100% |  |
| P2.PT.1060 |  | Install B1 P-Tube System between L1 & B2 / Z3 | 5d | 2025-01-09 A | 2025-01-29 A | P2.PT.1010 | 100% |  |
| P2.PT.1030 |  | Install Hangars at Level 1 | 5d | 2025-03-10 A | 2025-03-21 A | P2.L1.LC.1000, P2.PT.1060 | 100% |  |
| P2.PT.2070 |  | Install Hangars at Level 3 | 5d | 2025-03-10 A | 2025-03-28 A | P2.L3.LC.1000 | 100% |  |
| P2.PT.2080 |  | Install Hangars at Level 4 | 5d | 2025-03-10 A | 2025-03-28 A | P2.4.I.03.310 | 100% |  |
| P2.PT.2030 |  | Install Hangars at Level 2 (South) | 5d | 2025-03-17 A | 2025-03-21 A | P2.L2.INT.S.1000, P2.L1.LC.1000, P2.PT.1030 | 100% |  |
| P2.PT.2040 |  | Install Hangars at Level 2 (North) | 5d | 2025-03-17 A | 2025-03-21 A | P2.PT.2030, P2.L2.INT.N.1000 | 100% |  |
| P2.PT.1130 |  | Install L3 P-Tube System & Station R/I / Z2 | 5d | 2025-03-31 A | 2025-04-07 A | P2.PT.1140 SS | 100% |  |
| P2.PT.1140 |  | Install L3 P-Tube System & Station R/I / Z1 | 5d | 2025-03-31 A | 2025-04-07 A | P2.PT.2070 | 100% |  |
| P2.PT.1110 |  | Install L2 P-Tube System / L2 Interstitial | 5d | 2025-08-18 A | 2025-08-29 A | P2.PT.2040, P2.PT.1080 | 100% |  |
| P2.PT.1070 |  | Install B2 P-Tube System / B2-2830A | 5d | 2025-09-22 A | 2025-09-28 A | P2.PT.1120, P2.PT.1060, P2.B2.LC.1080 | 100% |  |
| P2.PT.1090 |  | Install L1 P-Tube System / Z3 | 5d | 2025-09-22 A | 2025-09-29 A | P2.PT.1060, P2.L1.LC.1190 | 100% |  |
| P2.PT.1120 |  | Install Shaft 3902 P-Tube System / B2-L6 | 10d | 2025-09-29 A | 2026-02-16 | P2.PT.1190, DDD3010 FF | 10% | 260d |
| P2.PT.1180 |  | Install L5 P-Tube Stations / Z1 | 5d | 2025-12-01 | 2025-12-05 | P2.L5.LC.1140 |  | 309d |
| P2.PT.1080 |  | Install B1 P-Tube System up to Level 1 from existing building / Z1 | 5d | 2025-12-30 | 2026-01-06 | P2.PT.1020, P2.B2.WC.1530 |  | 260d |
| P2.PT.1150 |  | Install L4 P-Tube System for L3 Station / L4 Interstitial | 5d | 2026-01-07 | 2026-01-13 | P2.PT.2080, P2.PT.1110 |  | 260d |
| P2.PT.1160 |  | Install L4 P-Tube System - Transfer 311 to existing building / L4 Interstitial | 5d | 2026-01-14 | 2026-01-20 | P2.PT.1150 |  | 260d |
| P2.PT.1190 |  | Install L6 P-Tube Blowers & Transfer Units / L6 Interstitial | 10d | 2026-01-21 | 2026-02-03 | P2.PT.1160, P2.L6.INT.S.1040 |  | 260d |
| P2.PT.2000 |  | Tie-In Permanent Power to P-Tube System | 5d | 2026-02-04 | 2026-02-10 | P2.PT.1190, CX.B2.SWGR.1010, CX.B2.MVEE.1010 |  | 269d |
| P2.PT.1100 |  | Install L1 P-Tube Station Trim-Out / Z2 | 2d | 2026-03-13 | 2026-03-16 | P2.L1.F.LC.2190 FF |  | 245d |
| P2.PT.2050 |  | Install L1 P-Tube Station Trim-Out / Z3 | 2d | 2026-03-13 | 2026-03-16 | P2.PT.1090, P2.L1.F.LC.2190 FF |  | 245d |
| P2.PT.2090 |  | Install L5 P-Tube Stations Trim-Out / Z1 | 5d | 2026-07-15 | 2026-07-21 | P2.PT.1180, P2.L5.F.LC.2190 FF |  | 156d |
| P2.PT.2020 |  | Install B2 P-Tube Station TrimOut / B2-2830A | 5d | 2026-07-20 | 2026-07-24 | P2.PT.1070, P2.B2.F.LC.2450 FF, P2.B2.F.LC.1190 FF |  | 153d |
| P2.PT.2060 |  | Install L3 P-Tube Station Trim-Out / Z1 & Z2 | 2d | 2026-07-28 | 2026-07-29 | P2.PT.1130, P2.L3.F.LC.2190 FF |  | 150d |
| P2.PT.2010 |  | Test Systems -Full System / All Levels | 5d | 2026-07-30 | 2026-08-05 | P2.PT.2050, P2.PT.2060, P2.PT.2000, P2.PT.2020, P2.PT.1100, P2.PT.2090 |  | 150d |
|  | 1 | **PNUEMATIC TUBE - P5 (Needed for P2)** |  | 2025-12-01 | 2025-12-29 |  |  |  |
| P2.PT.1020 |  | Install B1 P-Tube System in existing building / F-Wing B1 | 20d | 2025-12-01 | 2025-12-29 | P2.PT.1060 |  | 260d |
|  | 3 | **PNUEMATIC TUBE - P5** |  | 2028-07-03 | 2028-09-05 |  |  |  |
| P5.PT.1010 |  | Install L2 P-Tube System in existing building - Transfer 212 to Level 1 / F-Wing L2 intersitial | 10d | 2028-07-03 | 2028-07-17 | P5.CRC.160 |  | 80d |
| P5.PT.1000 |  | Install L1 P-Tube System & Station in existing building / F-Wing L1 - 1-3835 to 1-3823B | 5d | 2028-07-18 | 2028-07-24 | P5.PT.1010 |  | 80d |

| ID | WBS | Task | Duration | Start | Finish | Predecessors | Complete | Total float |
| --- | --- | --- | --- | --- | --- | --- | --- | --- |
| P5.PT.1030 |  | Install L4 P-Tube System in existing building / F-Wing L4 intersitial | 10d | 2028-07-25 | 2028-08-07 | P5.PT.1000 |  | 80d |
| P5.PT.1020 |  | Install L3 P-Tube System & Stations (3) in existing building / F-Wing L3 future clinical space | 10d | 2028-08-08 | 2028-08-21 | P5.PT.1030 |  | 80d |
| P5.PT.1040 |  | Test System - Phase 5 (All Levels) / F-Wing | 10d | 2028-08-22 | 2028-09-05 | P5.PT.1020 |  | 80d |
|  | 2 | **ELECTRIC TRACK VEHICLE (ETV) - P2** |  | 2024-12-03 | 2026-03-17 |  |  |  |
| P2.ETV.1000 |  | Install Hangers at B1 | 5d | 2024-12-03 A | 2024-12-30 A | BP1.125.3.110, P2.B2.M.2801.1040 | 100% |  |
| P2.ETV.1010 |  | Install Hangers at B2 | 5d | 2024-12-09 A | 2024-12-30 A | BP1.125.3.110, P2.B2.N.1000 | 100% |  |
| P2.ETV.1020 |  | Install Track at B1 | 5d | 2025-01-02 A | 2025-02-28 A | P2.ETV.1000, BP1.125.3.100 | 100% |  |
| P2.ETV.1050 |  | ETV Supports and Track Risers (L1-6) / Shaft - 2808 | 10d | 2025-03-03 A | 2025-03-31 A | P2.6.03.630 | 100% |  |
| P2.ETV.1030 |  | Install Hangers at L5 | 5d | 2025-05-01 A | 2025-05-07 A | BP1.125.3.110, P2.L5.S.1000, P2.6.I.03.310 | 100% |  |
| P2.ETV.1040 |  | Install Track at L5 | 5d | 2025-12-01 | 2025-12-05 | P2.ETV.1030 |  | 304d |
| P2.ETV.1060 |  | Test Systems - Risers (L1-6) / Shaft - 2808 | 5d | 2025-12-01 | 2025-12-05 | P2.ETV.1050 |  | 9d |
| P2.ETV.1090 |  | Install Hangars at L6 | 5d | 2025-12-01 | 2025-12-05 | BP1.125.3.110, P2.L6.INT.S.1000 |  | 294d |
| P2.ETV.1070 |  | Inspections - Close In / Shaft - 2808 | 5d | 2025-12-08 | 2025-12-12 | P2.ETV.1060 |  | 9d |
| P2.ETV.1100 |  | Install Track at L6 | 10d | 2025-12-08 | 2025-12-19 | P2.ETV.1090 |  | 294d |
| P2.ETV.1080 |  | Gypsum Shaft Walls & Acess Doors / Shaft - 2808 | 10d | 2025-12-15 | 2025-12-29 | P2.ETV.1070 |  | 9d |
| P2.ETV.1120 |  | Install Trolley System | 5d | 2026-02-25 | 2026-03-03 | P2.ETV.1020, P5.ETV.1110, P2.ETV.1100, P2.ETV.1040 |  | 249d |
| P2.ETV.1130 |  | Tie-In Permanent Power to ETV | 5d | 2026-03-04 | 2026-03-10 | P2.ETV.1120, CX.B2.SWGR.1010, CX.B2.MVEE.1010 |  | 249d |
| P2.ETV.1140 |  | Test Systems -Full System / All Levels | 5d | 2026-03-11 | 2026-03-17 | P2.ETV.1130 |  | 249d |
|  | 1 | **ELECTRIC TRACK VEHICLE (ETV) - P5 (Needed for P2)** |  | 2026-02-18 | 2026-02-24 |  |  |  |
| P5.ETV.1110 |  | Install Track at B2 & make existing buliding connection | 5d | 2026-02-18 | 2026-02-24 | P2.ETV.1010, P2.B2.M.2803.1340, P2.B2.EXBR.1070 |  | 249d |
|  | 5 | **PH 2 - CORE & SUPPORT / LAB & CLINICAL / INTERSTITIAL SPACES** |  | 2015-08-11 | 2026-12-29 |  |  |  |
|  | B3 | **B3 BUILDOUT (7K SF)** |  | 2024-09-02 | 2026-04-21 |  |  |  |
|  | B3 | **ROUGH IN / Mechanical B3-5970** |  | 2024-09-02 | 2026-03-03 |  |  |  |
| P2.B3.1000 |  | Layout - All Trades / Mech B3-5970 | 5d | 2024-09-02 A | 2024-09-06 A | P2.2.03.310 | 100% |  |
| P2.B3.1010 |  | OH - MEPF - Hangers & Supports / Mech B3-5970 | 10d | 2024-09-09 A | 2024-09-18 A | P2.B3.1000, P2.BIM.B3.40.140, BP1.210.3.100 | 100% |  |
| P2.B3.1100 |  | OH - Plumbing Piping / Mech B3-5970 | 10d | 2024-09-09 A | 2024-09-18 A | P2.B3.1010 | 100% |  |
| P2.B3.1090 |  | OH - Fire Suppression / Mech B3-5970 | 10d | 2024-09-24 A | 2024-10-01 A | P2.B3.1010 | 100% |  |
| P2.B3.1110 |  | OH - Electrical - 480/277v Distribution / Mech B3-5970 | 5d | 2024-10-08 A | 2024-10-18 A | P2.B3.1010 | 100% |  |
| P2.B3.2100 |  | CMU - Drill Dowels and Lay Block (ACRF Separation Wall) / Mech B3-5970 | 5d | 2024-10-14 A | 2024-11-01 A | P2.B3.1000 | 100% |  |
| P2.B3.1040 |  | In Wall - Electrical - CMU / Mech B3-5970 | 5d | 2024-11-11 A | 2024-11-18 A | P2.B3.2100 | 100% |  |
| P2.B3.1190 |  | OH - Plumbing - Test / Mech B3-5970 | 5d | 2024-11-18 A | 2024-11-19 A | P2.B3.1100, P2C.DES.235 SS | 100% |  |
| P2.B3.1140 |  | OH - Hang Duct - LP Branch / Mech B3-5970 | 5d | 2025-01-02 A | 2025-01-08 A | P2.B3.1090 | 100% |  |
| P2.B3.1180 |  | OH - Insulate LP Duct / Mech B3-5970 | 5d | 2025-01-09 A | 2025-01-14 A | P2.B3.1140 | 100% |  |
| P2.B3.1130 |  | OH - HVAC Piping (Steam Condensate) / Mech B3-5970 | 20d | 2025-01-23 A | 2025-03-26 A | P2.B3.1090 | 100% |  |
| P2.B3.2080 |  | OH - HVAC Piping (Reheat) / Mech B3-5970 | 20d | 2025-01-23 A | 2025-03-19 A | P2.B3.1130 FF | 100% |  |
| P2.B3.1150 |  | OH - Electrical - 208/120v Branch / Mech B3-5970 | 10d | 2025-02-05 A | 2025-04-02 A | P2.B3.1110, P2.B3.1020 | 100% |  |
| P2.B3.2120 |  | CMU - Point & Patch / Mech B3-5970 | 2d | 2025-06-02 A | 2025-06-03 A | P2.B3.2100, P2.B3.1020 SS | 100% |  |
| P2.B3.1030 |  | CMU - Lay Block ***After Equipment Skids*** / Mech B3-5970 | 5d | 2025-06-10 A | 2025-06-18 A | BP5.081.3.400 FF, P2.B3.1020 | 100% |  |
| P2.B3.1060 |  | CMU - Point & Patch / Mech B3-5970 | 2d | 2025-06-18 A | 2025-06-19 A | P2.B3.1040, P2.B3.1050 | 100% |  |
| P2.B3.1020 |  | Set and Connect Expansion Tanks and Pump Skids / Mech B3-5970 | 5d | 2025-06-23 A | 2025-06-30 A | BP1.224.3.960, P2.B3.1010 | 100% |  |
| P2.B3.1270 |  | OH - Conduit - Low Volt - BAS/Controls / Mech B3-5970 | 5d | 2025-09-02 A | 2025-09-08 A | P2.B3.1180 | 100% |  |
| P2.B3.1280 |  | OH - Conduit - Low Volt - Fire Alarm / Mech B3-5970 | 5d | 2025-09-02 A | 2025-09-08 A | BP1.283.3.100, P2.B3.1180 | 100% |  |
| P2.B3.1290 |  | OH - Conduit - Low Volt - Telecom / Mech B3-5970 | 5d | 2025-09-02 A | 2025-09-02 A | BP1.270.3.100, P2.B3.1180 | 100% |  |
| P2.B3.1300 |  | OH - Conduit - Low Volt - Security / Mech B3-5970 | 5d | 2025-09-02 A | 2025-09-02 A | BP1.280.3.100, P2.B3.1180 | 100% |  |
| P2.B3.1050 |  | Paint - CMU Block Fill / Mech B3-5970 | 2d | 2025-10-01 A | 2025-10-02 A | P2.B3.1030, BP7.099.3.100 | 100% |  |
| P2.B3.1120 |  | Electrical Tie in to Equipment / Mech B3-5970 | 5d | 2025-11-03 A | 2025-11-07 A | P2.B3.1110, P2.B3.1020 | 100% |  |
| P2.B3.1160 |  | Pull Wire - Electrical - 480/277v Distribution / Mech B3-5970 | 10d | 2025-11-03 A | 2025-11-14 A | P2.B3.1110 | 100% |  |
| P2.B3.1230 |  | Pull Wire - Electrical - 208/120v Branch & Equip / Mech B3-5970 | 5d | 2025-11-03 A | 2025-11-07 A | P2.B3.1150 | 100% |  |
| P2.B3.1310 |  | Pull Wire - Low Volt - BAS/Controls / Mech B3-5970 | 5d | 2025-11-03 A | 2025-11-07 A | P2.B3.1270 | 100% |  |
| P2.B3.1070 |  | Spray/Seal/Firestop - Head of Wall / Mech B3-5970 | 2d | 2025-11-05 A | 2025-11-06 A | P2.B3.1080 SS | 100% |  |
| P2.B3.1170 |  | BAS Equipment Install / Mech B3-5970 | 10d | 2025-11-10 A | 2025-11-21 A | P2.B3.1120, P2.B3.1270 | 100% |  |
| P2.B3.1200 |  | Control Wiring to Equipment / Mech B3-5970 | 5d | 2025-12-01 | 2025-12-05 | P2.B3.1170, P2.B3.1270 |  | 74d |
| P2.B3.1210 |  | OH - HVAC Piping - Test / Mech B3-5970 | 5d | 2025-12-01 | 2025-12-05 | P2.B3.2080 |  | 54d |
| P2.B3.1220 |  | OH - Insulate Plumbing / Mech B3-5970 | 5d | 2025-12-01 | 2025-12-05 | P2.B3.1190 |  | 69d |
| P2.B3.1320 |  | Pull Wire - Low Volt - Fire Alarm / Mech B3-5970 | 5d | 2025-12-01 | 2025-12-05 | P2.B3.1280 |  | 74d |
| P2.B3.1330 |  | Pull Wire - Low Volt - Telecom / Mech B3-5970 | 5d | 2025-12-01 | 2025-12-05 | P2.B3.1290 |  | 74d |
| P2.B3.1340 |  | Pull Wire - Low Volt - Security / Mech B3-5970 | 5d | 2025-12-01 | 2025-12-05 | P2.B3.1300 |  | 74d |
| P2.B3.2110 |  | Paint - CMU Block Fill / Mech B3-5970 | 2d | 2025-12-01 | 2025-12-02 | P2.B3.2120 |  | 77d |
| P2.B3.1080 |  | Paint Prime & 1st Coat / Mech B3-5970 | 2d | 2025-12-03 | 2025-12-04 | P2.B3.2110, P2.B3.1060 |  | 77d |
| P2.B3.1240 |  | Firestop - Thru Wall / Mech B3-5970 | 5d | 2025-12-08 | 2025-12-12 | P2.B3.1220 |  | 69d |
| P2.B3.1250 |  | OH - HVAC Piping - Equip Tie In / Mech B3-5970 | 10d | 2026-01-28 | 2026-02-10 | P2.B3.1210, P2.B3.1020, CX.B2.HYDR.1000 |  | 19d |
| P2.B3.1260 |  | OH - Insulate HVAC Pipe / Mech B3-5970 | 10d | 2026-02-11 | 2026-02-24 | P2.B3.1250 |  | 19d |
| P2.B3.1350 |  | Trades Inspect & Verify R/I Work Completed to Specs / Mech B3-5970 | 5d | 2026-02-25 | 2026-03-03 | P2.B3.1070, P2.B3.1240, P2.B3.1200, P2.B3.1160, P2.B3.1230, P2.B3.1310, P2.B3.1320, P2.B3.1330, P2.B3.1340, P2.B3.1260 |  | 19d |
|  | 5 | **FINISHES / Mechanical B3-5970** |  | 2026-03-04 | 2026-04-21 |  |  |  |
| P2.B3.2000 |  | Paint - Finish Coat / Mech B3-5970 | 2d | 2026-03-04 | 2026-03-05 | P2.B3.1350 |  | 221d |
| P2.B3.2010 |  | Trim All MEPF Finishes / Mech B3-5970 | 2d | 2026-03-06 | 2026-03-09 | BP1.233.3.410, P2.B3.2000 |  | 224d |
| P2.B3.2090 |  | Flooring Prep - Epoxy Floors / Mech B3-5970 & B3-6901 | 5d | 2026-03-06 | 2026-03-12 | P2.B3.2000, BP7.096.3.200 |  | 221d |
| P2.B3.2020 |  | Flooring - Epoxy Floors / Mech B3-5970 & B3-6901 | 2d | 2026-03-13 | 2026-03-16 | P2.B3.2090, P2.B3.2010, BP7.096.3.200 |  | 221d |
| P2.B3.2030 |  | Doors & Hardware / Mech B3-5970 | 2d | 2026-03-31 | 2026-04-01 | P2.B3.2020, BP5.081.3.300 |  | 211d |
| P2.B3.2040 |  | Work Completion List / Mech B3-5970 | 5d | 2026-04-02 | 2026-04-08 | P2.B3.2030 |  | 211d |

| ID | WBS | Task | Duration | Start | Finish | Predecessors | Complete | Total float |
| --- | --- | --- | --- | --- | --- | --- | --- | --- |
| P2.B3.2050 |  | Rough Clean / Mech B3-5970 | 2d | 2026-04-09 | 2026-04-10 | P2.B3.2040 |  | 211d |
| P2.B3.2060 |  | Punchlist / Mech B3-5970 | 5d | 2026-04-13 | 2026-04-17 | P2.B3.2050 |  | 211d |
| P2.B3.2070 |  | Final Clean / Mech B3-5970 | 2d | 2026-04-20 | 2026-04-21 | P2.B3.2060 |  | 211d |
|  | B2 | **B2/B1 BUILDOUT** |  | 2015-08-11 | 2026-12-02 |  |  |  |
|  | B2 | **CORE & SUPPORT SPACES / LEVEL B2/B1** |  | 2015-08-11 | 2026-11-30 |  |  |  |
|  | 2 | **ROUGH IN - Core & Support Spaces / Level B2/B1** |  | 2015-08-11 | 2026-07-27 |  |  |  |
|  | 2 | **South Corridor (5900-5930)** |  | 2024-09-25 | 2025-12-17 |  |  |  |
| P2.B2.SC.1000 |  | Layout - All Trades / B2 / South Corridor | 5d | 2024-09-25 A | 2024-10-01 A | P1.1.03.610 SS | 100% |  |
| P2.B2.SC.1030 |  | OH - MEPF & Ceiling Grid - Hangers & Supports / B2 / South Corridor | 10d | 2024-09-30 A | 2024-10-07 A | P2.BIM.B2.40.140 SS, P2.B2.SC.1000 SS | 100% |  |
| P2.B2.SC.1020 |  | OH - Structural Supports (All Trades) / B2 / South Corridor | 5d | 2024-10-01 A | 2024-10-08 A | P2.B2.SC.1000 SS | 100% |  |
| P2.B2.SC.1050 |  | Install Doors Frames / B2 / South Corridor | 5d | 2024-10-04 A | 2024-12-10 A | P2.B2.SC.1000 SS | 100% |  |
| P2.B2.SC.1010 |  | Framing - Top Track / B2 / South Corridor | 5d | 2024-10-14 A | 2024-10-22 A | P2.B2.SC.1000 SS | 100% |  |
| P2.B2.SC.1090 |  | OH Fire Suppression Main / B2 / South Corridor | 5d | 2024-10-15 A | 2024-10-21 A | BP1.210.3.100, P2.B2.SC.1080 SS | 100% |  |
| P2.B2.SC.1110 |  | OH High Electrical Crossings / B2 / South Corridor | 5d | 2024-10-16 A | 2024-11-11 A | P2.B2.SC.1090 SS, P2.B2.SC.1030 SS | 100% |  |
| P2.B2.SC.1140 |  | Paint OH Fire Suppression / B2 / South Corridor | 2d | 2024-10-16 A | 2024-10-18 A | P2.B2.SC.1090 SS | 100% |  |
| P2.B2.SC.1060 |  | Frame Upper Partitions / B2 / South Corridor | 5d | 2024-10-17 A | 2024-10-24 A | P2.B2.SC.1010 | 100% |  |
| P2.B2.SC.1080 |  | Hang-Tape-Finish Upper Partitions (Tier 1) / B2 / South Corridor | 5d | 2024-10-29 A | 2024-11-21 A | P2.B2.SC.1060 SS, P2.B2.SC.1020 SS | 100% |  |
| P2.B2.SC.1040 |  | CMU - Drill_Epoxy Masonry Dowels / B2 / South Corridor | 5d | 2024-11-01 A | 2024-11-07 A | P2.B2.SC.1000, BP4.040.3.100 | 100% |  |
| P2.B2.SC.1070 |  | CMU - Lay Block / B2 / South Corridor | 10d | 2024-11-01 A | 2024-11-07 A | P2.B2.SC.1060 | 100% |  |
| P2.B2.SC.1180 |  | Hang-Tape-Finish Upper Partitions (Tier 2) / B2 / South Corridor | 5d | 2024-11-25 A | 2024-12-30 A | P2.B2.SC.1110, P2.B2.SC.1170 SS | 100% |  |
| P2.B2.SC.1150 |  | OH High Mechanical Install / B2 / South Corridor | 10d | 2024-11-29 A | 2024-12-03 A | P2.B2.SC.1140 | 100% |  |
| P2.B2.SC.1160 |  | Testing & Inspection - High Mechanical Duct / B2 / South Corridor | 5d | 2024-12-02 A | 2024-12-03 A | P2.B2.SC.1150 SS | 100% |  |
| P2.B2.SC.1170 |  | Insulate High Duct / B2 / South Corridor | 5d | 2024-12-04 A | 2025-02-10 A | P2.B2.SC.1160 SS | 100% |  |
| P2.B2.SC.1190 |  | OH Low Duct Install / B2 / South Corridor | 5d | 2025-01-08 A | 2025-04-01 A | P2.B2.SC.1180 | 100% |  |
| P2.B2.SC.1200 |  | OH Piping Install / B2 / South Corridor | 10d | 2025-01-08 A | 2025-01-17 A | P2.B2.SC.1180 | 100% |  |
| P2.B2.SC.1230 |  | Insulate Mid-Tier Mechanical / B2 / South Corridor | 5d | 2025-01-08 A | 2025-02-18 A | P2.B2.SC.1220 | 100% |  |
| P2.B2.SC.1100 |  | In Wall MEPF Rough In / B2 / South Corridor | 5d | 2025-01-23 A | 2025-02-10 A | P2.B2.SC.1070 FF, P2.B2.SC.1030 | 100% |  |
| P2.B2.SC.1210 |  | OH Mid Plumbing Install / B2 / South Corridor | 5d | 2025-01-23 A | 2025-02-10 A | P2.B2.SC.1200 FF | 100% |  |
| P2.B2.SC.1220 |  | Testing & Inspection - Mechanical / B2 / South Corridor | 5d | 2025-02-06 A | 2025-02-18 A | P2.B2.SC.1210 | 100% |  |
| P2.B2.SC.1130 |  | In Wall Inspection / B2 / South Corridor | 5d | 2025-02-10 A | 2025-02-20 A | P2.B2.SC.1100 | 100% |  |
| P2.B2.SC.1240 |  | Hang-Tape-Finish Upper Partitions (Tier 3) / B2 / South Corridor | 5d | 2025-02-26 A | 2025-03-13 A | P2.B2.SC.1230 | 100% |  |
| P2.B2.SC.1270 |  | Hang-Tape-Finish / B2 / South Corridor | 5d | 2025-02-26 A | 2025-03-13 A | P2.B2.SC.1130 | 100% |  |
| P2.B2.SC.1280 |  | Fire Caulk MEPF Penetrations / B2 / South Corridor | 5d | 2025-04-21 A | 2025-05-15 A | P2.B2.SC.1270, P2.B2.SC.1260 | 100% |  |
| P2.B2.SC.1260 |  | OH Low Plumbing Install / B2 / South Corridor | 10d | 2025-05-05 A | 2025-07-02 A | P2.B2.SC.1240 | 100% |  |
| P2.B2.SC.1250 |  | OH Electrical (Bus/Branch/Tray) / B2 / South Corridor | 10d | 2025-06-02 A | 2025-12-10 | P2.B2.SC.1240, P2.B2.SC.1050, P2.LR.L2.180 | 50% | 91d |
| P2.B2.SC.1120 |  | Testing & Inspection - Fire Suppression / B2 / South Corridor | 5d | 2025-07-02 A | 2025-07-18 A | P2C.NIH.110, P2.B2.SC.1090, P2.B2.SC.1140, P2C.DES.210 | 100% |  |
| P2.B2.SC.1290 |  | Trades Inspect & Verify R/I Work Completed to Specs / B2 / South Corridor | 5d | 2025-12-11 | 2025-12-17 | P2.B2.SC.1220, P2.B2.SC.1280, P2.B2.SC.1260, P2.B2.SC.1120, P2.B2.SC.1160, P2.B2.SC.1190, P2.B2.SC.1200, P2.B2.SC.1210, P2.B2.SC.1250 |  | 91d |
|  | 6 | **West Corridor (3900, 2910, 2810, 2800)** |  | 2024-10-07 | 2025-12-12 |  |  |  |
| P2.B2.WC.1000 |  | Layout - All Trades / B2 / West Corridor | 5d | 2024-10-07 A | 2024-10-18 A | P1.1.03.620, P2.B2.SC.1000 SS | 100% |  |
| P2.B2.WC.1020 |  | OH - Structural Supports (All Trades) / B2 / West Corridor | 5d | 2024-10-07 A | 2024-11-07 A | P2.B2.WC.1000 SS | 100% |  |
| P2.B2.WC.1030 |  | OH - MEPF & Ceiling Grid - Hangers & Supports / B2 / West Corridor | 5d | 2024-10-07 A | 2024-11-07 A | P2.BIM.B2.40.140 SS, P2.B2.WC.1000 SS | 100% |  |
| P2.B2.WC.1090 |  | OH Fire Suppression Main / B2 / West Corridor | 5d | 2024-10-07 A | 2024-10-14 A | P2.B2.SC.1090 SS | 100% |  |
| P2.B2.WC.1010 |  | Framing - Top Track / B2 / West Corridor | 5d | 2024-10-14 A | 2024-10-21 A | P2.B2.WC.1000 SS, P2.B2.SC.1010 SS | 100% |  |
| P2.B2.WC.1140 |  | Paint OH Fire Suppression / B2 / West Corridor | 3d | 2024-10-14 A | 2024-10-24 A | P2.B2.WC.1090 SS | 100% |  |
| P2.B2.WC.1040 |  | CMU - Drill_Epoxy Masonry Dowels / B2 / West Corridor | 5d | 2024-10-16 A | 2025-02-05 A | P2.B2.SC.1040, P2.B2.WC.1000 | 100% |  |
| P2.B2.WC.1150 |  | OH High Plumbing Install / B2 / West Corridor | 20d | 2024-10-21 A | 2025-04-30 A | P2.B2.WC.1470 FF, P2.B2.WC.1140 SS | 100% |  |
| P2.B2.WC.1110 |  | OH High Electrical/FA Crossings / B2 / West Corridor | 5d | 2024-11-11 A | 2025-03-06 A | P2.B2.WC.1080 FF, P2.B2.SC.1110, P2.B2.WC.1090, P2.B2.WC.1030 | 100% |  |
| P2.B2.WC.1170 |  | Insulate High Plumbing / B2 / West Corridor | 5d | 2024-11-11 A | 2025-04-30 A | P2.B2.WC.1730 FF, P2.B2.WC.1160 SS, P2.B2.WC.1150 FF | 100% |  |
| P2.B2.WC.1190 |  | OH High Duct Install / B2 / West Corridor | 10d | 2024-11-11 A | 2025-04-30 A | P2.B2.WC.1180 FF, P2.B2.WC.1080 FF, P2.B2.SC.1150 FF | 100% |  |
| P2.B2.WC.1160 |  | Testing & Inspection - High Plumbing / B2 / West Corridor | 5d | 2024-11-20 A | 2025-04-30 A | P2.B2.WC.1150 SS | 100% |  |
| P2.B2.WC.1060 |  | Frame Upper Partitions / B2 / West Corridor | 5d | 2024-11-25 A | 2024-12-13 A | P2.B2.WC.1010 | 100% |  |
| P2.B2.WC.1070 |  | CMU - Lay Block / B2 / West Corridor | 10d | 2024-12-16 A | 2025-02-11 A | P2.B2.SC.1070, P2.B2.WC.1040 SS | 100% |  |
| P2.B2.WC.1080 |  | Hang-Tape-Finish Upper Partitions (Tier 1) / B2 / West Corridor | 10d | 2024-12-17 A | 2024-12-26 A | P2.B2.WC.1090, P2.B2.WC.1060, P2.B2.WC.1020 | 100% |  |
| P2.B2.WC.1180 |  | Hang-Tape-Finish Upper Partitions (Tier 2) / B2 / West Corridor | 5d | 2024-12-17 A | 2024-12-31 A | P2.B2.WC.1110 SS, P2.B2.WC.1170 SS | 100% |  |
| P2.B2.WC.1050 |  | Install Doors Frames / B2 / West Corridor | 5d | 2025-01-20 A | 2025-04-01 A | P2.B2.WC.1000 | 100% |  |
| P2.B2.WC.1100 |  | In Wall MEPF Rough In / B2 / West Corridor | 5d | 2025-02-05 A | 2025-04-01 A | P2.B2.WC.1070 FF, P2.B2.WC.1030 | 100% |  |
| P2.B2.WC.1130 |  | In Wall Inspection / B2 / West Corridor | 5d | 2025-02-12 A | 2025-04-10 A | P2.B2.WC.1100 FF+4d | 100% |  |
| P2.B2.WC.1200 |  | Testing & Inspection - Mechanical / B2 / West Corridor | 5d | 2025-02-17 A | 2025-06-27 A | P2.B2.WC.1190 FF+4d | 100% |  |
| P2.B2.WC.1210 |  | Insulate Mechanical / B2 / West Corridor | 5d | 2025-02-24 A | 2025-06-11 A | P2.B2.WC.1200 FF+4d | 100% |  |
| P2.B2.WC.1220 |  | Hang-Tape-Finish Upper Partitions (Tier 3) / B2 / West Corridor | 5d | 2025-03-19 A | 2025-03-25 A | P2.B2.WC.1180 | 100% |  |
| P2.B2.WC.1240 |  | OH Low Piping Install / B2 / West Corridor | 20d | 2025-04-01 A | 2025-04-22 A | P2.B2.WC.1220 | 100% |  |
| P2.B2.WC.1270 |  | Fire Caulk MEPF Penetrations / B2 / West Corridor | 5d | 2025-05-05 A | 2025-05-12 A | P2.B2.WC.1260 | 100% |  |
| P2.B2.WC.1230 |  | OH Electrical (Branch) / B2 / West Corridor | 5d | 2025-05-08 A | 2025-07-07 A | P2.B2.WC.1220, P2.B2.WC.1210 | 100% |  |
| P2.B2.WC.1260 |  | Hang-Tape-Finish / B2 / West Corridor | 5d | 2025-05-20 A | 2025-07-28 A | P2.B2.WC.1130, P2.B2.WC.1250, P2.B2.WC.1050, P2.B2.WC.1210 | 100% |  |
| P2.B2.WC.1120 |  | Testing & Inspection - Fire Suppression / B2 / West Corridor | 4d | 2025-07-18 A | 2025-10-24 A | P2C.NIH.110, P2.B2.WC.1090, P2.B2.WC.1140 | 100% |  |
| P2.B2.WC.1250 |  | OH Low Electrical (Bus/Tray) / B2 / West Corridor | 5d | 2025-08-14 A | 2025-12-05 | P2.B2.WC.1240, P2.LR.L2.180 | 60% | 72d |
| P2.B2.WC.1280 |  | Trades Inspect & Verify R/I Work Completed to Specs / B2 / West Corridor | 5d | 2025-12-08 | 2025-12-12 | P2.B2.WC.1090, P2.B2.WC.1190, P2.B2.WC.1110, P2.B2.WC.1150, P2.B2.WC.1020, P2.B2.WC.1030, P2.B2.WC.1250, P2.B2.WC.1200, P2.B2.WC.1270, P2.B2.WC.1230, P2.B2.WC.1240, P2.B2.WC.1120, P2.B2.WC.1160, P2.B2.WC.1140 |  | 94d |
|  | 7 | **East Corridor (3910, 2900, 2810, 2830)** |  | 2024-10-14 | 2026-04-01 |  |  |  |
| P2.B2.WC.1360 |  | Layout - All Trades / B2 / East Corridor | 5d | 2024-10-14 A | 2024-10-18 A | P1.1.03.630, P2.B2.WC.1000 SS | 100% |  |
| P2.B2.WC.1370 |  | Framing - Top Track / B2 / East Corridor | 5d | 2024-10-21 A | 2024-10-31 A | P2.B2.WC.1010, BP5.054.3.100, P2.B2.WC.1360 SS | 100% |  |

| ID | WBS | Task | Duration | Start | Finish | Predecessors | Complete | Total float |
| --- | --- | --- | --- | --- | --- | --- | --- | --- |
| P2.B2.WC.1450 |  | OH Fire Suppression Main / B2 / East Corridor | 5d | 2024-10-28 A | 2024-11-01 A | P2.B2.WC.1090, P2.B2.WC.1440 SS | 100% |  |
| P2.B2.WC.1440 |  | Hang-Tape-Finish Upper Partitions (Tier 1) / B2 / East Corridor | 5d | 2024-10-29 A | 2024-11-14 A | P2.B2.WC.1420 FF, P2.B2.WC.1380 SS | 100% |  |
| P2.B2.WC.1380 |  | OH - Structural Supports (All Trades) / B2 / East Corridor | 5d | 2024-10-30 A | 2025-02-06 A | P2.B2.WC.1360, BP1.149.3.110 SS | 100% |  |
| P2.B2.WC.1390 |  | OH - MEPF & Ceiling Grid - Hangers & Supports / B2 / East Corridor | 5d | 2024-10-30 A | 2025-01-15 A | P2.B2.WC.1360, P2.BIM.B2.40.140, BP1.149.3.110 SS | 100% |  |
| P2.B2.WC.1420 |  | Frame Upper Partitions / B2 / East Corridor | 5d | 2024-11-01 A | 2024-11-11 A | P2.B2.WC.1370 | 100% |  |
| P2.B2.WC.1500 |  | Paint OH Fire Suppression / B2 / East Corridor | 2d | 2024-11-11 A | 2024-11-20 A | P2.B2.WC.1450 | 100% |  |
| P2.B2.WC.1540 |  | Hang-Tape-Finish Upper Partitions (Tier 2) / B2 / East Corridor | 5d | 2024-11-25 A | 2024-12-05 A | P2.B2.WC.1440 | 100% |  |
| P2.B2.WC.1470 |  | OH High Plumbing Install / B2 / East Corridor | 10d | 2025-01-23 A | 2025-02-07 A | P2.B2.WC.1450, P2.B2.WC.1390 | 100% |  |
| P2.B2.WC.1510 |  | OH Chilled Water and Steam Install / B2 / East Corridor | 15d | 2025-01-23 A | 2025-03-21 A | P2.B2.WC.1540 | 100% |  |
| P2.B2.WC.1720 |  | Testing & Inspection - High Plumbing / B2 / East Corridor | 5d | 2025-02-10 A | 2025-02-17 A | P2.B2.WC.1500, P2.B2.WC.1470 | 100% |  |
| P2.B2.WC.1400 |  | CMU - Drill_Epoxy Masonry Dowels / B2 / East Corridor | 5d | 2025-03-03 A | 2025-03-07 A | P2.B2.WC.1040 FF, P2.B2.WC.1360 | 100% |  |
| P2.B2.WC.1730 |  | Insulate High Plumbing / B2 / East Corridor | 5d | 2025-03-03 A | 2025-03-07 A | P2.B2.WC.1720 | 100% |  |
| P2.B2.WC.1430 |  | CMU - Lay Block / B2 / East Corridor | 10d | 2025-03-10 A | 2025-03-21 A | P2.B2.WC.1070, P2.B2.WC.1400 | 100% |  |
| P2.B2.WC.1530 |  | Insulate Chilled Water & Steam / B2 / East Corridor | 5d | 2025-03-12 A | 2025-04-30 A | P2.L2.INT.S.1140 SS | 100% |  |
| P2.B2.WC.1550 |  | OH Condensate, Steam, & HW Install / B2 / East Corridor | 15d | 2025-04-09 A | 2025-08-29 A | P2.B2.WC.1530 | 100% |  |
| P2.B2.WC.1520 |  | Testing & Inspection - OH Chilled Water and Steam / B2 / East Corridor | 5d | 2025-04-10 A | 2025-04-11 A | P2.B2.WC.1510, P2.B2.WC.1530 FF | 100% |  |
| P2.B2.WC.1460 |  | In Wall MEPF Rough In / B2 / East Corridor | 10d | 2025-05-01 A | 2025-05-14 A | P2.B2.WC.1430 FF, P2.B2.WC.1390, P2.B2.IT.2806.100 SS | 100% |  |
| P2.B2.WC.1490 |  | In Wall Inspection / B2 / East Corridor | 5d | 2025-05-15 A | 2025-05-21 A | P2.B2.WC.1460, P2.B2.WC.1410 | 100% |  |
| P2.B2.WC.1560 |  | Testing & Inspection - OH Condensate, Steam, & HW / B2 / East Corridor | 5d | 2025-06-17 A | 2025-06-30 A | P2.B2.WC.1550 | 100% |  |
| P2.B2.WC.1410 |  | Install Doors Frames / B2 / East Corridor | 5d | 2025-06-23 A | 2025-09-05 A | P2.B2.WC.1360 | 100% |  |
| P2.B2.WC.1480 |  | Testing & Inspection - Fire Suppression / B2 / East Corridor | 5d | 2025-07-18 A | 2025-09-30 A | P2C.NIH.110, P2.B2.WC.1500, P2.B2.WC.1450 | 100% |  |
| P2.B2.WC.1740 |  | OH Med-Gas & Domestic Piping Install / B2 / East Corridor | 20d | 2025-07-24 A | 2025-09-29 A | P2.B2.WC.1570 | 100% |  |
| P2.B2.WC.1750 |  | Testing & Inspection - Med-Gas & Domestic Piping / B2 / East Corridor | 5d | 2025-08-21 A | 2025-09-30 A | P2.B2.WC.1740 | 100% |  |
| P2.B2.WC.1570 |  | Insulate OH Condensate, Steam, & HW / B2 / East Corridor | 5d | 2025-09-03 A | 2025-09-10 A | P2.B2.WC.1560 | 100% |  |
| P2.B2.WC.1760 |  | Insulate Med-Gas & Domestic Piping / B2 / East Corridor | 5d | 2025-09-03 A | 2025-09-10 A | P2.B2.WC.1750 | 100% |  |
| P2.B2.WC.1580 |  | Hang-Tape-Finish Upper Partitions (Tier 3) / B2 / East Corridor | 5d | 2025-10-01 A | 2025-10-07 A | P2.B2.WC.1760 | 100% |  |
| P2.B2.WC.1590 |  | OH Electrical (Bus/Tray/Branch) / B2 / East Corridor | 5d | 2025-10-13 A | 2025-12-09 | P2.B2.WC.1580, P2.B2.WC.1250 | 60% | 72d |
| P2.B2.WC.1620 |  | Hang-Tape-Finish / B2 / East Corridor | 15d | 2026-02-26 | 2026-03-18 | P2.B2.WC.1590, P2.B2.WC.1490, P2.L7.S.1470, P2.L7.N.1470 |  | 18d |
| P2.B2.WC.1630 |  | Fire Caulk MEPF Penetrations / B2 / East Corridor | 5d | 2026-03-19 | 2026-03-25 | P2.B2.WC.1620 |  | 18d |
| P2.B2.WC.1640 |  | Trades Inspect & Verify R/I Work Completed to Specs / B2 / East Corridor | 5d | 2026-03-26 | 2026-04-01 | P2.B2.WC.1550, P2.B2.WC.1590, P2.B2.WC.1480, P2.B2.WC.1520, P2.B2.WC.1450, P2.B2.WC.1470, P2.B2.WC.1510, P2.B2.WC.1380, P2.B2.WC.1390, P2.B2.WC.1750, P2.B2.WC.1720, P2.B2.WC.1740, P2.B2.WC.1500, P2.B2.WC.1560, P2.B2.WC.1630 |  | 18d |
|  | Z1 | **South (20K SF) / Level B2/B1** |  | 2024-09-25 | 2026-04-15 |  |  |  |
| P2.B2.S.1000 |  | Layout - All Trades / B2 / South | 4d | 2024-09-25 A | 2024-10-10 A | P1.1.03.610 SS | 100% |  |
| P2.B2.S.1010 |  | Framing - Top Track / B2 / South | 10d | 2024-10-14 A | 2024-10-31 A | P2.B2.WC.1370 | 100% |  |
| P2.B2.S.1030 |  | OH - MEPF - Hangers & Supports / B2 / South | 5d | 2024-10-15 A | 2025-01-10 A | BP1.233.3.100, P2.BIM.B2.40.140 SS, P2.B2.S.1000 SS | 100% |  |
| P2.B2.S.1180 |  | OH - Plumbing Piping / B2 / South | 20d | 2024-10-15 A | 2025-02-07 A | P2.B2.S.1030 SS, P1.B1.05.110 SS | 100% |  |
| P2.B2.S.1020 |  | OH - Structural Supports (All Trades) / B2 / South | 5d | 2024-10-17 A | 2025-01-23 A | P2.B2.S.1000 SS | 100% |  |
| P2.B2.S.1170 |  | OH - Fire Suppression / B2 / South | 5d | 2024-10-21 A | 2024-10-21 A | P2.B2.S.1030 SS, P2.B2.WC.1450 SS | 100% |  |
| P2.B2.S.1570 |  | Paint - OH Fire Suppression / B2 / South | 5d | 2024-10-21 A | 2024-10-28 A | P2.B2.S.1170 SS | 100% |  |
| P2.B2.S.1210 |  | OH - Hang Duct - HP Mains / B2 / South | 20d | 2024-10-24 A | 2025-04-16 A | P2.B2.S.1030 | 100% |  |
| P1.B1.05.110 |  | Erect - Catwalk - Hangers | 5d | 2024-10-30 A | 2024-11-07 A | P2.B2.S.1000 SS, P2.B2.S.1020 SS, BP4.055.3.200 | 100% |  |
| P1.B1.05.210 |  | Erect - Catwalk - Stringers / Bracing / Grating | 10d | 2024-10-30 A | 2025-04-07 A | BP4.055.3.300 FF, P1.B1.05.110 FF+1d | 100% |  |
| P2.B2.S.1090 |  | Framing - Priority Walls & Door Frames / B2 / South | 10d | 2024-11-05 A | 2024-11-22 A | BP5.081.3.400, P2.B2.S.1010 | 100% |  |
| P2.B2.S.1130 |  | Framing - Priority Walls - AHJ Inspections / B2 / South | 5d | 2024-11-24 A | 2024-11-26 A | P2.B2.S.1090 | 100% |  |
| P2.B2.S.1040 |  | CMU - Drill_Epoxy Masonry Dowels / B2 / South | 5d | 2024-12-02 A | 2024-12-02 A | BP4.040.3.100 FF | 100% |  |
| P2.B2.S.1050 |  | CMU - Lay Block / B2 / South | 5d | 2024-12-02 A | 2024-12-13 A | BP4.040.3.100 FF, P2.B2.S.1130, P2.B2.S.1040 | 100% |  |
| P2.B2.S.1580 |  | In Wall - Priority Walls - Backing/Blocking/Supports / B2 / South | 5d | 2024-12-02 A | 2024-12-04 A | P2.B2.S.1090 | 100% |  |
| P2.B2.S.1140 |  | Hang/Tape/Finish - Priority Walls / B2 / South | 5d | 2025-01-06 A | 2025-02-28 A | BP5.134.3.200, P2.B2.S.1020, P2.B2.S.1070 | 100% |  |
| P2.B2.S.1220 |  | OH - HVAC Piping / B2 / South | 20d | 2025-01-23 A | 2025-04-21 A | P2.B2.S.1030 | 100% |  |
| P2.B2.S.1060 |  | In Wall - Electrical - CMU / B2 / South | 20d | 2025-02-03 A | 2025-02-28 A | P2.B2.S.1050 SS | 100% |  |
| P2.B2.S.1240 |  | OH - Plumbing - Test / B2 / South | 5d | 2025-02-10 A | 2025-02-14 A | P2.B2.S.1180 | 100% |  |
| P2.B2.S.1160 |  | Spray/Seal/Firestop - Head of Wall - Priority Walls / B2 / South | 5d | 2025-02-28 A | 2025-03-03 A | P2.B2.S.1140 | 100% |  |
| P2.B2.S.1070 |  | In Wall - Plumbing - CMU / B2 / South | 20d | 2025-03-03 A | 2025-03-28 A | P2.B2.S.1060 | 100% |  |
| P2.B2.S.1270 |  | OH - HVAC Piping - Test / B2 / South | 5d | 2025-03-10 A | 2025-06-27 A | P2.B2.S.1220 FF+3d | 100% |  |
| P2.B2.S.1280 |  | OH - Insulate Plumbing / B2 / South | 5d | 2025-03-10 A | 2025-04-21 A | P2.B2.S.1240 | 100% |  |
| P2.B2.S.1100 |  | Paint - CMU Block Fill / B2 / South | 5d | 2025-04-01 A | 2025-04-25 A | P2.B2.S.1140 | 100% |  |
| P2.B2.S.1110 |  | CMU - Point & Patch / B2 / South | 5d | 2025-04-01 A | 2025-04-25 A | P2.B2.S.1160, P2.B2.S.1100 | 100% |  |
| P2.B2.S.1120 |  | Paint Prime & 1st Coat - CMU / B2 / South | 5d | 2025-04-01 A | 2025-04-07 A | P2.B2.S.1110 SS | 100% |  |
| P2.B2.S.1150 |  | Paint Prime & 1st Coat - Priority Walls / B2 / South | 5d | 2025-04-01 A | 2025-04-07 A | P2.B2.S.1160 SS | 100% |  |
| P2.B2.S.1200 |  | Firestop - Thru Wall - Priority Walls / B2 / South | 5d | 2025-04-16 A | 2025-05-02 A | P2.B2.S.1180, P2.B2.S.1150, P1.B1.05.210, P2.B2.S.1210 | 100% |  |
| P2.B2.S.1190 |  | OH - Electrical - 480/277v Distribution / B2 / South | 5d | 2025-05-01 A | 2025-05-07 A | BP1.260.3.200, P2.B2.WC.1110, P2.B3.1110, P2.B2.S.1210, P2.B2.S.1030 | 100% |  |
| P2.B2.S.1260 |  | OH - DALT - HP Mains / B2 / South | 5d | 2025-05-01 A | 2025-05-07 A | P2.B2.S.1210 | 100% |  |
| P2.B2.S.1230 |  | OH - Electrical - 208/120v Branch / B2 / South | 5d | 2025-05-08 A | 2025-07-03 A | P2.B2.S.1190 | 100% |  |
| P2.B2.S.1290 |  | OH - Insulate HP Duct / B2 / South | 5d | 2025-05-08 A | 2025-06-06 A | P2.B2.S.1260 | 100% |  |
| P2.B2.S.1300 |  | OH - Hang Duct - LP Branch / B2 / South | 20d | 2025-06-02 A | 2025-06-27 A | P2.B2.S.1260 | 100% |  |
| P2.B2.S.1250 |  | Pull Wire - Electrical - 480/277v Distribution / B2 / South | 10d | 2025-06-09 A | 2025-06-20 A | P2.B2.S.1190, P2.B2.HE.5995.1010, P2.B2.HE.5920.1010 | 100% |  |
| P2.B2.S.1310 |  | OH - Set & Connect Mech Equipment / B2 / South | 10d | 2025-06-17 A | 2025-06-30 A | BP1.238.3.100, BP1.233.3.300, P2.B2.S.1260 | 100% |  |
| P2.B2.S.1400 |  | OH - Conduit - Low Volt - Security / B2 / South | 10d | 2025-06-23 A | 2025-07-22 A | P2.B2.S.1340 | 100% |  |
| P2.B2.S.1350 |  | OH - Insulate LP Duct / B2 / South | 10d | 2025-06-30 A | 2025-07-14 A | P2.B2.S.1300 | 100% |  |
| P2.B2.S.1340 |  | OH - Insulate HVAC Pipe / B2 / South | 10d | 2025-07-01 A | 2025-07-15 A | P2.B2.S.1270, P2.B2.S.1290 | 100% |  |
| P2.B2.S.1380 |  | OH - Conduit - Low Volt - Fire Alarm / B2 / South | 10d | 2025-07-15 A | 2025-07-28 A | P2.B2.S.1350, P2.B2.S.1310 | 100% |  |

| ID | WBS | Task | Duration | Start | Finish | Predecessors | Complete | Total float |
| --- | --- | --- | --- | --- | --- | --- | --- | --- |
| P2.B2.S.1420 |  | Framing - Balance of Framing & Door Frames / B2 / South | 10d | 2025-07-30 A | 2025-08-22 A | P2.B2.S.1280, P2.B2.S.1380, P2.B2.S.1390, P2.B2.S.1400, P2.B2.S.1410, P2.B2.S.1370 | 100% |  |
| P2.B2.S.1390 |  | OH - Conduit - Low Volt - Telecom / B2 / South | 10d | 2025-08-01 A | 2025-09-08 A | P2.B2.S.1350 | 100% |  |
| P2.B2.S.1430 |  | In Wall - Plumbing - Framing / B2 / South | 20d | 2025-08-01 A | 2025-08-29 A | P2.B2.S.1420 | 100% |  |
| P2.B2.S.1440 |  | In Wall - Electrical - Framing / B2 / South | 20d | 2025-08-01 A | 2025-08-29 A | P2.B2.S.1230, P2.B2.S.1420 | 100% |  |
| P2.B2.S.1450 |  | In Wall - Backing/Blocking/Supports / B2 / South | 5d | 2025-08-01 A | 2025-08-29 A | P2.B2.S.1420 | 100% |  |
| P2.B2.S.1320 |  | OH - Electrical - Equip Tie In / B2 / South | 5d | 2025-08-08 A | 2025-09-30 A | P2.B2.S.1250, P2.B2.S.1310 | 100% |  |
| P2.B2.S.1560 |  | Test - OH Fire Suppression / B2 / South | 5d | 2025-08-27 A | 2025-09-19 A | P2.B2.S.1170, P2.B2.S.1570, P2C.NIH.110 SS | 100% |  |
| P2.B2.S.1460 |  | AHJ Inspections - Wall Close In / B2 / South | 5d | 2025-09-17 A | 2025-12-12 | P2.B2.S.1440, P2.B2.S.1450, P2.B2.S.1430, P2.B2.S.1580, P2.B2.S.1200 |  | 59d |
| P2.B2.S.1370 |  | OH - Conduit - Low Volt - BAS/Controls / B2 / South | 10d | 2025-10-01 A | 2025-12-05 | P2.B2.S.1340, P2.B2.S.1310 | 50% | 59d |
| P2.B2.S.1410 |  | OH - Conduit - Low Volt - Medical Services/Nurse Call (?) / B2 / South | 10d | 2025-10-01 A | 2025-10-14 A | P2.B2.S.1350 | 100% |  |
| P2.B2.S.1360 |  | Pull Wire - Electrical - 208/120v Branch & Equip / B2 / South | 10d | 2025-12-08 | 2025-12-19 | P2.B2.S.1320, P2.B2.S.1230, P2.B2.S.1440 |  | 84d |
| P2.B2.S.1330 |  | OH - HVAC Piping - Equip Tie In / B2 / South | 10d | 2026-01-28 | 2026-02-10 | P2.B2.S.1270, P2.B2.S.1310, CX.B2.HYDR.1000 |  | 49d |
| P2.B2.S.1470 |  | Hang-Tape-Finish - Walls and Hard Lid Ceilings / B2 / South | 15d | 2026-02-26 | 2026-03-18 | P2.B2.S.1460, P2.L7.S.1470, P2.L7.N.1470 |  | 8d |
| P2.B2.S.1480 |  | Spray/Seal/Firestop - Head of Wall / B2 / South | 10d | 2026-03-19 | 2026-04-01 | P2.B2.S.1470, P2.B2.S.1120 |  | 13d |
| P2.B2.S.1490 |  | Firestop - Thru Wall / B2 / South | 10d | 2026-03-19 | 2026-04-01 | P2.B2.S.1470 |  | 13d |
| P2.B2.S.1500 |  | Pull Wire - Low Volt - BAS/Controls / B2 / South | 10d | 2026-03-19 | 2026-04-01 | P2.B2.S.1470 |  | 13d |
| P2.B2.S.1510 |  | Pull Wire - Low Volt - Fire Alarm / B2 / South | 10d | 2026-03-19 | 2026-04-01 | P2.B2.S.1470 |  | 13d |
| P2.B2.S.1520 |  | Pull Wire - Low Volt - Telecom / B2 / South | 10d | 2026-03-19 | 2026-04-01 | P2.B2.S.1470 |  | 13d |
| P2.B2.S.1530 |  | Pull Wire - Low Volt - Security / B2 / South | 10d | 2026-03-19 | 2026-04-01 | P2.B2.S.1470 |  | 13d |
| P2.B2.S.1540 |  | Pull Wire - Low Volt - Medical Services/Nurse Call (?) / B2 / South | 10d | 2026-03-19 | 2026-04-01 | P2.B2.S.1470 |  | 13d |
| P2.B2.S.1550 |  | Trades Inspect & Verify R/I Work Completed to Specs / B2 / South | 5d | 2026-04-09 | 2026-04-15 | P2.B2.S.1490, P2.B2.S.1480, P2.B2.S.1530, P2.B2.S.1540, P2.B2.S.1360, P2.B2.S.1500, P2.B2.S.1510, P2.B2.S.1520, P2.B2.M.5970.1420, P2.B2.M.5970, P2.B2.S.1330 |  | 8d |
|  | Z2-3 | **North (17K SF) / Level B2/B1** |  | 2024-10-15 | 2026-04-08 |  |  |  |
| P2.B2.N.1630 |  | Paint - OH Fire Suppression / B2 / North | 5d | 2024-10-15 A | 2025-04-01 A | P2.B2.S.1570 SS | 100% |  |
| P2.B2.N.1000 |  | Layout - All Trades / B2 / North | 5d | 2024-10-16 A | 2024-11-22 A | P1.1.03.630, P2.B2.S.1000 SS | 100% |  |
| P2.B2.N.1010 |  | Framing - Top Track / B2 / North | 10d | 2024-10-28 A | 2024-11-25 A | P2.B2.N.1000 SS, P2.B2.S.1010 | 100% |  |
| P2.B2.N.1030 |  | OH - MEPF - Hangers & Supports / B2 / North | 10d | 2024-10-29 A | 2025-01-10 A | P2.BIM.B2.40.140 SS, P2.B2.N.1000 SS | 100% |  |
| P2.B2.N.1170 |  | OH - Fire Suppression / B2 / North | 10d | 2024-10-29 A | 2025-01-02 A | P2.B2.N.1030 SS, P2.B2.S.1170 SS | 100% |  |
| P2.B2.N.1020 |  | OH - Structural Supports (All Trades) / B2 / North | 5d | 2024-10-30 A | 2024-11-07 A | P2.B2.N.1000 SS | 100% |  |
| P2.B2.N.1090 |  | Framing - Priority Walls & Door Frames / B2 / North | 10d | 2024-11-18 A | 2024-12-09 A | P2.B2.N.1030 SS, P2.B2.S.1090, P2.B2.N.1010 | 100% |  |
| P2.B2.N.1640 |  | In Wall - Priority Walls - Backing/Blocking/Supports / B2 / North | 5d | 2024-11-18 A | 2024-12-06 A | P2.B2.N.1090 SS | 100% |  |
| P2.B2.N.1130 |  | Framing - Priority Walls - AHJ Inspections / B2 / North | 5d | 2024-11-20 A | 2025-02-26 A | P2.B2.N.1640 SS, P2.B2.N.1090 SS | 100% |  |
| P2.B2.N.1140 |  | Hang/Tape/Finish - Priority Walls / B2 / North | 10d | 2024-11-21 A | 2025-02-19 A | P2.B2.N.1130 SS, P2.B2.N.1020 | 100% |  |
| P2.B2.N.1040 |  | CMU - Drill_Epoxy Masonry Dowels / B2 / North | 10d | 2024-11-25 A | 2024-12-16 A | P2.B2.S.1040 FF, P2.B2.N.1000 | 100% |  |
| P2.B2.N.1050 |  | CMU - Lay Block / B2 / North | 10d | 2024-11-25 A | 2024-12-16 A | P2.B2.S.1050 FF, P2.B2.N.1040 FF | 100% |  |
| P2.B2.N.1060 |  | In Wall - Electrical - CMU / B2 / North | 20d | 2025-01-03 A | 2025-02-17 A | P2.B2.N.1050 SS, P2.B2.S.1060 | 100% |  |
| P2.B2.N.1070 |  | In Wall - Plumbing - CMU / B2 / North | 20d | 2025-01-03 A | 2025-02-17 A | P2.B2.N.1050 SS, P2.B2.S.1070 | 100% |  |
| P2.B2.N.1180 |  | OH - Plumbing Piping / B2 / North | 20d | 2025-01-16 A | 2025-04-10 A | P2.B2.N.1030, P2.B2.S.1180 SS | 100% |  |
| P2.B2.N.1280 |  | OH - Insulate Plumbing / B2 / North | 10d | 2025-01-16 A | 2025-04-10 A | P2.B2.S.1280 SS, P2.B2.N.1180 SS | 100% |  |
| P2.B2.N.1100 |  | Paint - CMU Block Fill / B2 / North | 10d | 2025-02-03 A | 2025-04-07 A | P2.B2.N.1050 | 100% |  |
| P2.B2.N.1160 |  | Spray/Seal/Firestop - Head of Wall - Priority Walls / B2 / North | 5d | 2025-02-19 A | 2025-03-03 A | P2.B2.N.1140 | 100% |  |
| P2.B2.N.1150 |  | Paint Prime & 1st Coat - Priority Walls / B2 / North | 10d | 2025-03-11 A | 2025-04-07 A | P2.B2.N.1160 SS | 100% |  |
| P2.B2.N.1220 |  | OH - HVAC Piping / B2 / North | 20d | 2025-04-10 A | 2025-06-06 A | P2.B2.N.1030, P2.B2.N.1170 | 100% |  |
| P2.B2.N.1120 |  | Paint Prime & 1st Coat - CMU / B2 / North | 10d | 2025-05-01 A | 2025-05-14 A | P2.B2.N.1110 SS | 100% |  |
| P2.B2.N.1200 |  | Firestop - Thru Wall - Priority Walls / B2 / North | 1d | 2025-05-01 A | 2025-05-02 A | P2.B2.N.1150 SS+3d | 100% |  |
| P2.B2.N.1190 |  | OH - Electrical - 480/277v Distribution / B2 / North | 5d | 2025-05-08 A | 2025-05-14 A | P2.B2.S.1190, P2.B2.N.1030 | 100% |  |
| P2.B2.N.1110 |  | CMU - Point & Patch / B2 / North | 10d | 2025-05-14 A | 2025-05-30 A | P2.B2.N.1060, P2.B2.N.1100, P2.B2.N.1070 | 100% |  |
| P2.B2.N.1210 |  | OH - Hang Duct - HP Mains / B2 / North | 15d | 2025-05-14 A | 2025-06-13 A | P2.B2.S.1210, P2.B2.N.1030, P2.B2.N.1200 | 100% |  |
| P2.B2.N.1270 |  | OH - HVAC Piping - Test / B2 / North | 5d | 2025-06-09 A | 2025-06-30 A | P2.B2.N.1220, P2.B2.N.1620, P2.B2.N.1240 | 100% |  |
| P2.B2.N.1260 |  | OH - DALT - HP Mains / B2 / North | 5d | 2025-06-16 A | 2025-06-20 A | P2.B2.N.1210 | 100% |  |
| P2.B2.N.1290 |  | OH - Insulate HP Duct / B2 / North | 10d | 2025-06-23 A | 2025-07-08 A | P2.B2.N.1260 | 100% |  |
| P2.B2.N.1300 |  | OH - Hang Duct - LP Branch / B2 / North | 10d | 2025-06-23 A | 2025-07-08 A | P2.B2.N.1260 | 100% |  |
| P2.B2.N.1310 |  | OH - Set & Connect Mech Equipment / B2 / North | 10d | 2025-06-23 A | 2025-06-23 A | P2.B2.N.1260 | 100% |  |
| P2.B2.N.1400 |  | OH - Conduit - Low Volt - Security / B2 / North | 10d | 2025-06-23 A | 2025-07-29 A | P2.B2.N.1340 | 100% |  |
| P2.B2.N.1230 |  | OH - Electrical - 208/120v Branch / B2 / North | 10d | 2025-06-30 A | 2025-07-14 A | P2.B2.N.1190 | 100% |  |
| P2.B2.N.1240 |  | OH - Plumbing - Test / B2 / North | 5d | 2025-07-01 A | 2025-07-08 A | P2.B2.N.1180, P2.B2.BR.2000 SS, P2.B2.N.1280 FF+5d | 100% |  |
| P2.B2.N.1250 |  | Pull Wire - Electrical - 480/277v Distribution / B2 / North | 10d | 2025-07-09 A | 2025-07-22 A | P2.B2.N.1190, P2.B2.HE.5995.1010, P2.B2.HE.5920.1010 | 100% |  |
| P2.B2.N.1340 |  | OH - Insulate HVAC Pipe / B2 / North | 10d | 2025-07-09 A | 2025-07-22 A | P2.B2.N.1270, P2.B2.N.1290 | 100% |  |
| P2.B2.N.1350 |  | OH - Insulate LP Duct / B2 / North | 10d | 2025-07-09 A | 2025-07-22 A | P2.B2.N.1300 | 100% |  |
| P2.B2.N.1620 |  | Test - OH Fire Suppression / B2 / North | 5d | 2025-07-18 A | 2025-10-24 A | P2.B2.N.1170, P2.B2.N.1630 | 100% |  |
| P2.B2.N.1320 |  | OH - Electrical - Equip Tie In / B2 / North | 10d | 2025-07-23 A | 2025-12-05 | P2.B2.N.1250, P2.B2.N.1310 | 50% | 84d |
| P2.B2.N.1380 |  | OH - Conduit - Low Volt - Fire Alarm / B2 / North | 10d | 2025-07-23 A | 2025-07-31 A | P2.B2.N.1350, P2.B2.N.1310 | 100% |  |
| P2.B2.N.1370 |  | OH - Conduit - Low Volt - BAS/Controls / B2 / North | 10d | 2025-09-05 A | 2025-10-10 A | P2.B2.N.1340, P2.B2.N.1310 | 100% |  |
| P2.B2.N.1420 |  | Framing - Balance of Framing & Door Frames / B2 / North | 10d | 2025-10-01 A | 2025-10-10 A | P2.L3.LC.1410, P2.L3.S.1420, P2.L3.N.1420 | 100% |  |
| P2.B2.N.1430 |  | In Wall - Plumbing - Framing / B2 / North | 20d | 2025-10-01 A | 2025-10-20 A | P2.B2.S.1430, P2.B2.N.1420 | 100% |  |
| P2.B2.N.1440 |  | In Wall - Electrical - Framing / B2 / North | 20d | 2025-10-01 A | 2025-10-20 A | P2.B2.S.1440, P2.B2.N.1230, P2.B2.N.1420 | 100% |  |
| P2.B2.N.1390 |  | OH - Conduit - Low Volt - Telecom / B2 / North | 10d | 2025-12-01 | 2025-12-12 | P2.B2.N.1350 |  | 79d |
| P2.B2.N.1410 |  | OH - Conduit - Low Volt - Medical Services/Nurse Call (?) / B2 / North | 10d | 2025-12-01 | 2025-12-12 | P2.B2.N.1350 |  | 79d |
| P2.B2.N.1360 |  | Pull Wire - Electrical - 208/120v Branch & Equip / B2 / North | 10d | 2025-12-30 | 2026-01-13 | P2.B2.N.1230, P2.B2.N.1320, P2.B2.N.1440 |  | 69d |
| P2.B2.N.1450 |  | In Wall - Backing/Blocking/Supports / B2 / North | 5d | 2025-12-30 | 2026-01-06 | P2.B2.N.1420 |  | 44d |
| P2.B2.N.1460 |  | AHJ Inspections - Wall Close In / B2 / North | 5d | 2026-01-07 | 2026-01-13 | P2.B2.N.1440, P2.B2.N.1450, P2.B2.N.1430 |  | 44d |

| ID | WBS | Task | Duration | Start | Finish | Predecessors | Complete | Total float |
| --- | --- | --- | --- | --- | --- | --- | --- | --- |
| P2.B2.N.1330 |  | OH - HVAC Piping - Equip Tie In / B2 / North | 10d | 2026-01-28 | 2026-02-10 | P2.B2.N.1270, P2.B2.N.1310, CX.B2.HYDR.1000 |  | 49d |
| P2.B2.N.1470 |  | Hang-Tape-Finish - Walls and Hard Lid Ceilings / B2 / North | 15d | 2026-02-26 | 2026-03-18 | P2.B2.N.1460, P2.L7.S.1470, P2.L7.N.1470 |  | 13d |
| P2.B2.N.1480 |  | Spray/Seal/Firestop - Head of Wall / B2 / North | 10d | 2026-03-19 | 2026-04-01 | P2.B2.N.1120, P2.B2.N.1470 |  | 13d |
| P2.B2.N.1490 |  | Firestop - Thru Wall / B2 / North | 10d | 2026-03-19 | 2026-04-01 | P2.B2.N.1470 |  | 13d |
| P2.B2.N.1500 |  | Pull Wire - Low Volt - BAS/Controls / B2 / North | 10d | 2026-03-19 | 2026-04-01 | P2.B2.N.1470, P2.B2.N.1370 |  | 13d |
| P2.B2.N.1510 |  | Pull Wire - Low Volt - Fire Alarm / B2 / North | 10d | 2026-03-19 | 2026-04-01 | P2.B2.N.1470, P2.B2.N.1380 |  | 13d |
| P2.B2.N.1520 |  | Pull Wire - Low Volt - Telecom / B2 / North | 10d | 2026-03-19 | 2026-04-01 | P2.B2.N.1470, P2.B2.N.1390 |  | 13d |
| P2.B2.N.1530 |  | Pull Wire - Low Volt - Security / B2 / North | 10d | 2026-03-19 | 2026-04-01 | P2.B2.N.1470, P2.B2.N.1400 |  | 13d |
| P2.B2.N.1540 |  | Pull Wire - Low Volt - Medical Services/Nurse Call (?) / B2 / North | 10d | 2026-03-19 | 2026-04-01 | P2.B2.N.1470, P2.B2.N.1410 |  | 13d |
| P2.B2.N.1550 |  | Trades Inspect & Verify R/I Work Completed to Specs / B2 / North | 5d | 2026-04-02 | 2026-04-08 | P2.B2.N.1490, P2.B2.N.1480, P2.B2.N.1540, P2.B2.N.1500, P2.B2.N.1510, P2.B2.N.1520, P2.B2.N.1530, P2.B2.N.1360, P2.B2.N.1330 |  | 13d |
|  | 8 | **Existing F-Wing Bathroom Relocation** |  | 2023-10-09 | 2026-07-27 |  |  |  |
| P2.B2.EXBR.1360 |  | PCO Notification of B2 F-Wing Bathroom Notification | 1d | 2023-10-09 A | 2023-10-09 A | P2A.DES.455 | 100% |  |
| P2.B2.EXBR.1370 |  | Scoping Letter Transmitted to NIH for RFP | 30d | 2023-10-10 A | 2024-03-06 A | P2.B2.EXBR.1360 | 100% |  |
| P2.B2.EXBR.1380 |  | NIH RFP Issuance to Hensel Phelps | 30d | 2024-03-07 A | 2024-03-08 A | P2.B2.EXBR.1370 | 100% |  |
| P2.B2.EXBR.1000 |  | Work-Plan Investigation of Existing Bathrooms B2-105 & B2-109 (B2 BR 1800 & 1802) | 20d | 2024-06-20 A | 2025-04-01 A | P2.B2.EXBR.1380 SS | 100% |  |
| P2.B2.EXBR.1010 |  | Work-Plan Development for Relocating Existing F-Wing Bathrooms | 20d | 2024-06-20 A | 2025-04-01 A | P2.B2.EXBR.1000 SS | 100% |  |
| P2.B2.EXBR.1020 |  | NIH Notification - Review and Approval of Relocating Existing F-Wing Bathrooms | 20d | 2025-11-20 A | 2025-12-29 | P2.B2.EXBR.1010 |  | 144d |
| P2.B2.EXBR.1030 |  | NIH Vacate B2-B109 Janitor Closet | 5d | 2025-12-30 | 2026-01-06 | P2.B2.EXBR.1020 |  | 144d |
| P2.B2.EXBR.1040 |  | Temp Partitions around Janitor Closet, Doors, & Inspections / B2 / BR 1800 & 1802 | 10d | 2026-01-07 | 2026-01-20 | P1.B2.03.460, P1.B2.03.430, P2.B2.EXBR.1030 |  | 144d |
| P2.B2.EXBR.1050 |  | Shut Down Existing Janitor Closet Utilities / B2 / BR 1800 & 1802 | 5d | 2026-01-21 | 2026-01-27 | P2.B2.EXBR.1040 |  | 144d |
| P2.B2.EXBR.1060 |  | Demo Janitor Closet / B2 / BR 1800 & 1802 | 10d | 2026-01-28 | 2026-02-10 | P2.B2.EXBR.1050 |  | 144d |
| P2.B2.EXBR.1070 |  | Demo Existing Building Wall North for ETV Shaft / B2 / BR 1800 & 1802 | 5d | 2026-02-11 | 2026-02-17 | P2.B2.EXBR.1060 |  | 144d |
| P2.B2.EXBR.1080 |  | Layout - All Trades / B2 / BR 1800 & 1802 | 2d | 2026-02-18 | 2026-02-19 | P2.B2.EXBR.1070 |  | 144d |
| P2.B2.EXBR.1090 |  | Plumbing - Set Pipe Carriers / B2 / North / BR 1800 & 1802 | 5d | 2026-02-20 | 2026-02-26 | P2.B2.EXBR.1080, P2.B2.BR.2000 SS |  | 144d |
| P2.B2.EXBR.1100 |  | Framing & Blocking - Walls and Hard Lid Ceilings / B2 / North / BR 1800 & 1802 | 2d | 2026-02-27 | 2026-03-02 | P2.B2.EXBR.1090 |  | 144d |
| P2.B2.EXBR.1110 |  | Plumbing - Test Pipe / B2 / North / BR 1800 & 1802 | 2d | 2026-02-27 | 2026-03-02 | P2.B2.EXBR.1090 |  | 144d |
| P2.B2.EXBR.1120 |  | R/I - Electrical _ Hard Lids / B2 / North / BR 1800 & 1802 | 2d | 2026-03-03 | 2026-03-04 | P2.B2.EXBR.1100 |  | 144d |
| P2.B2.EXBR.1130 |  | Trim Sprinkler Drops _ Hard Lids / B2 / North / BR 1800 & 1802 | 2d | 2026-03-03 | 2026-03-04 | P2.B2.EXBR.1100 |  | 144d |
| P2.B2.EXBR.1140 |  | Duct Drops _ Hard Lids / B2 / North / BR 1800 & 1802 | 2d | 2026-03-03 | 2026-03-04 | P2.B2.EXBR.1100 |  | 144d |
| P2.B2.EXBR.1150 |  | R/I - Fire Alarm _ Hard Lids / B2 / North / BR 1800 & 1802 | 2d | 2026-03-03 | 2026-03-04 | P2.B2.EXBR.1100 |  | 144d |
| P2.B2.EXBR.1160 |  | In Wall - Insulate Plumbing / B2 / North / BR 1800 & 1802 | 2d | 2026-03-03 | 2026-03-04 | P2.B2.EXBR.1110 |  | 144d |
| P2.B2.EXBR.1170 |  | Inspection - Close In - Walls and Hard Lid Ceilings / B2 / North / BR 1800 & 1802 | 3d | 2026-03-05 | 2026-03-09 | P2.B2.EXBR.1150, P2.B2.EXBR.1130, P2.B2.EXBR.1140, P2.B2.EXBR.1120, P2.B2.EXBR.1160 |  | 144d |
| P2.B2.EXBR.1180 |  | Hang-Tape-Finish _ Walls and Hard Lids Ceilings / B2 / North / BR 1800 & 1802 | 5d | 2026-03-10 | 2026-03-16 | P2.B2.EXBR.1170 |  | 144d |
| P2.B2.EXBR.1190 |  | Paint Prime & Final Coat _ Walls & Hard Lid Ceilings / B2 / North / BR 1800 & 1802 | 2d | 2026-03-17 | 2026-03-18 | P2.B2.EXBR.1180 |  | 144d |
| P2.B2.EXBR.1200 |  | Pull Wire & Trim Devices - Fire Alarm / B2 / North / BR 1800 & 1802 | 2d | 2026-03-19 | 2026-03-20 | P2.B2.EXBR.1190 |  | 153d |
| P2.B2.EXBR.1210 |  | Pull Wire & Trim Devices - Electrical / B2 / North / BR 1800 & 1802 | 2d | 2026-03-19 | 2026-03-20 | P2.B2.EXBR.1190 |  | 144d |
| P2.B2.EXBR.1220 |  | Lights - Set & Terminate / B2 / North / BR 1800 & 1802 | 2d | 2026-03-19 | 2026-03-20 | P2.B2.EXBR.1210 SS |  | 144d |
| P2.B2.EXBR.1230 |  | Trim - HVAC G/R/D's / B2 / North / BR 1800 & 1802 | 2d | 2026-03-19 | 2026-03-20 | P2.B2.EXBR.1190 |  | 144d |
| P2.B2.EXBR.1240 |  | Flooring & Wall Tile / B2 / North / BR 1800 & 1802 | 5d | 2026-03-23 | 2026-03-27 | P2.B2.EXBR.1230, P2.B2.EXBR.1220 |  | 144d |
| P2.B2.EXBR.1250 |  | Doors & Hardware / B2 / North / BR 1800 & 1802 | 2d | 2026-03-30 | 2026-03-31 | P2.B2.EXBR.1240 |  | 146d |
| P2.B2.EXBR.1260 |  | Plumbing Fixtures / Sinks / Showers / B2 / North / BR 1800 & 1802 | 2d | 2026-03-30 | 2026-03-31 | P2.B2.EXBR.1240 |  | 144d |
| P2.B2.EXBR.1270 |  | Bathroom Accessories / B2 / North / BR 1800 & 1802 | 2d | 2026-04-01 | 2026-04-02 | P2.B2.EXBR.1260 |  | 144d |
| P2.B2.EXBR.1280 |  | Work Completion List - Finishes / B2 / North / BR 1800 & 1802 | 5d | 2026-04-03 | 2026-04-09 | P2.B2.EXBR.1250, P2.B2.EXBR.1270, P2.B2.EXBR.1200 |  | 144d |
| P2.B2.EXBR.1340 |  | NIH Notification to Vacate existing bathrooms | 20d | 2026-04-10 | 2026-05-07 | P2.B2.EXBR.1280 |  | 144d |
| P2.B2.EXBR.1290 |  | NIH Vacate Bathrooms B2-105 & B2-109 | 5d | 2026-05-08 | 2026-05-14 | P2.B2.EXBR.1340 |  | 144d |
| P2.B2.EXBR.1300 |  | Temp Partitions, Doors, & Inspections around existing bathroom / B2 / BR 1800 & 1802 | 10d | 2026-05-15 | 2026-05-29 | P2.B2.EXBR.1290 |  | 144d |
| P2.B2.EXBR.1310 |  | Shut Down Existing Bathroom Utilities / B2 / BR 1800 & 1802 | 5d | 2026-06-01 | 2026-06-05 | P2.B2.EXBR.1300 |  | 144d |
| P2.B2.EXBR.1320 |  | Demo Existing Bathroom / B2 / BR 1800 & 1802 | 10d | 2026-06-08 | 2026-06-19 | P2.B2.EXBR.1310 |  | 144d |
| P2.B2.EXBR.1330 |  | Demo Existing Building Wall South to Connect SRLM to CRC at B2 / B2 / BR 1800 & 1802 | 5d | 2026-06-22 | 2026-06-26 | P2.B2.EXBR.1320 |  | 144d |
| P2.B2.EXBR.1350 |  | Final Finishes in B2 Corridor at CRC Connection / B2 / BR 1800 & 1802 | 20d | 2026-06-29 | 2026-07-27 | P2.B2.EXBR.1330 |  | 144d |
|  | 3 | **B2 / MAIN ELECTRICAL ROOMS** |  | 2015-08-11 | 2025-12-29 |  |  |  |
|  | 1 | **Electrical Switchgear Room A - B2-3970A** |  | 2024-10-24 | 2025-12-12 |  |  |  |
| P2.B2.ES.A.1180 |  | OH Conduit (EF) Install / B2 / South / 3970A | 20d | 2024-10-24 A | 2025-03-17 A | P2.B2.ES.A.1020 | 100% |  |
| P2.B2.ES.A.1000 |  | Layout - All Trades / B2 / South / 3970A | 1d | 2024-10-25 A | 2024-10-28 A | P1.1.03.620, P2B.DES.825 SS, P2C.DES.235 SS | 100% |  |
| P2.B2.ES.A.1010 |  | OH Structural Supports / B2 / South / 3970A | 5d | 2024-10-29 A | 2024-11-05 A | P2.B2.ES.A.1000, P2.BIM.B2.40.140 | 100% |  |
| P2.B2.ES.A.1050 |  | Frame Partitions / B2 / South / 3970A | 5d | 2024-12-10 A | 2025-02-27 A | P2.B2.ES.A.1040 | 100% |  |
| P2.B2.ES.A.1030 |  | CMU Dowels / B2 / South / 3970A | 5d | 2025-01-07 A | 2025-01-13 A | P2.B2.ES.A.1010, P2.B2.WC.1040 SS | 100% |  |
| P2.B2.ES.A.1040 |  | CMU Walls / B2 / South / 3970A | 5d | 2025-01-14 A | 2025-01-20 A | P2.B2.ES.A.1030 | 100% |  |
| P2.B2.ES.A.1080 |  | In Wall Inspection / B2 / South / 3970A | 5d | 2025-02-09 A | 2025-02-09 A | P2.B2.ES.A.1060 | 100% |  |
| P2.B2.ES.A.1060 |  | In Wall MEPF Rough In / B2 / South / 3970A | 5d | 2025-02-09 A | 2025-02-15 A | P2.B2.ES.A.1050 | 100% |  |
| P2.B2.ES.A.1100 |  | Fire Stop Top of Wall / B2 / South / 3970A | 5d | 2025-02-10 A | 2025-02-15 A | P2.B2.ES.A.1090 FF | 100% |  |
| P2.B2.ES.A.1090 |  | Hang-Tape-Finish / B2 / South / 3970A | 5d | 2025-02-11 A | 2025-02-20 A | P2.B2.ES.A.1080 | 100% |  |
| P2.B2.ES.A.1020 |  | OH Mechanical Install / B2 / South / 3970A | 5d | 2025-03-10 A | 2025-03-14 A | P2.B2.ES.A.1100 | 100% |  |
| P2.B2.ES.A.1190 |  | Install Horizontal Bus Duct / B2 / South / 3970A | 10d | 2025-03-14 A | 2025-04-02 A | P2.B2.ES.A.1180 | 100% |  |
| P2.B2.ES.A.1170 |  | Set SWGR B2-3970A / B2 / South / 3970A | 5d | 2025-03-28 A | 2025-04-11 A | P1.B2.03.290, BP1.261.3.110, P2.B2.ES.A.1190, BP1.261.3.120 SS, P2.B2.ES.A.1020 | 100% |  |
| P2.B2.ES.A.1290 |  | OH Conduit and Busduct tie into SWGR / B2 / South / 3970A | 10d | 2025-05-09 A | 2025-05-22 A | P2.B2.ES.A.1170 | 100% |  |
| P2.B2.ES.A.1220 |  | Pull Medium Voltage Feeders / B2 / South / 3970A | 5d | 2025-05-19 A | 2025-05-22 A | BP1.260.3.140, P2.B2.ES.A.1200 | 100% |  |
| P2.B2.ES.A.1280 |  | Mechanical Ductwork Install / B2 / South / 3970A | 5d | 2025-05-20 A | 2025-05-30 A | P2.B2.ES.A.1210 | 100% |  |
| P2.B2.ES.A.1200 |  | Pull Feeders / B2 / South / 3970A | 20d | 2025-05-22 A | 2025-06-06 A | BP1.260.3.110, P2.B2.ES.A.1290 | 100% |  |
| P2.B2.ES.A.1260 |  | Frame Leave-Out Partitions / B2 / South / 3970A | 5d | 2025-05-30 A | 2025-06-06 A | P2.B2.ES.A.1170 | 100% |  |

| ID | WBS | Task | Duration | Start | Finish | Predecessors | Complete | Total float |
| --- | --- | --- | --- | --- | --- | --- | --- | --- |
| P2.B2.ES.A.1270 |  | Hang-Tape-Finish Leave Out Walls / B2 / South / 3970A | 5d | 2025-05-30 A | 2025-07-08 A | P2.B2.ES.A.1260 | 100% |  |
| P2.B2.ES.A.1230 |  | Termination of Feeders at Gear / B2 / South / 3970A | 15d | 2025-06-17 A | 2025-08-29 A | P2.B2.ES.A.1220 | 100% |  |
| P2.B2.ES.A.1210 |  | Install Doors & Hardware / B2 / South / 3970A | 5d | 2025-07-09 A | 2025-07-15 A | P2.B2.ES.A.1270 | 100% |  |
| P2.B2.ES.A.1070 |  | Fire Caulk MEPF Penetrations / B2 / South / 3970A | 5d | 2025-07-16 A | 2025-08-29 A | P2.B2.ES.A.1280 | 100% |  |
| P2.B2.ES.A.1240 |  | Testing & Inspection / B2 / South / 3970A | 10d | 2025-07-21 A | 2025-08-05 A | BP1.261.3.150, BP1.261.3.170, P2.B2.ES.A.1230 | 100% |  |
| P2.B2.ES.A.1110 |  | Paint Walls / B2 / South / 3970A | 5d | 2025-07-23 A | 2025-08-22 A | P2.B2.ES.A.1070 | 100% |  |
| P2.B2.ES.A.1130 |  | Lighting Install / B2 / South / 3970A | 5d | 2025-08-01 A | 2025-08-08 A | P2.B2.ES.A.1240, P2.B2.ES.A.1120 | 100% |  |
| P2.B2.ES.A.1140 |  | Fire Alarm/Ceiling Device Install / B2 / South / 3970A | 5d | 2025-08-22 A | 2025-08-28 A | P2.B2.ES.A.1130 | 100% |  |
| P2.B2.ES.A.1120 |  | HVAC - GRD's / B2 / South / 3970A | 5d | 2025-10-27 A | 2025-10-31 A | P2.B2.ES.A.1110 | 100% |  |
| P2.B2.ES.A.1150 |  | Prep Floor for Flooring / B2 / South / 3970A | 5d | 2025-11-03 A | 2025-11-07 A | P2.B2.ES.A.1140 FF | 100% |  |
| P2.B2.ES.A.1160 |  | Flooring / B2 / South / 3970A | 5d | 2025-12-01 | 2025-12-05 | P2.B2.ES.A.1150 |  | 29d |
| P2.B2.ES.A.1250 |  | Energize SWGR B2-3970A / B2 / South / 3970A | 5d | 2025-12-08 | 2025-12-12 | P2.B2.ES.A.1160 |  | 29d |
|  | 2 | **Emergency Switchgear Room A - B2-3970B** |  | 2024-10-14 | 2025-12-19 |  |  |  |
| P2.B2.EMS.A.1180 |  | OH Conduit (EF) Install / B2 / South / 3970B | 20d | 2024-10-14 A | 2025-03-17 A | P2.B2.EMS.A.1020 | 100% |  |
| P2.B2.EMS.A.1000 |  | Layout - All Trades / B2 / South / 3970B | 1d | 2024-11-01 A | 2024-11-01 A | P2.B2.ES.A.1000 | 100% |  |
| P2.B2.EMS.A.1010 |  | OH Structural Supports / B2 / South / 3970B | 5d | 2024-11-02 A | 2024-11-08 A | P2.BIM.B2.40.140, P2.B2.EMS.A.1000 | 100% |  |
| P2.B2.EMS.A.1030 |  | CMU Dowels / B2 / South / 3970B | 5d | 2025-01-09 A | 2025-01-15 A | P2.B2.ES.A.1030 FF, P2.B2.EMS.A.1010 | 100% |  |
| P2.B2.EMS.A.1090 |  | Hang-Tape-Finish / B2 / South / 3970B | 5d | 2025-01-09 A | 2025-02-27 A | P2.B2.EMS.A.1080 | 100% |  |
| P2.B2.EMS.A.1040 |  | CMU Walls / B2 / South / 3970B | 5d | 2025-01-16 A | 2025-01-22 A | P2.B2.EMS.A.1030 | 100% |  |
| P2.B2.EMS.A.1260 |  | Mechanical Ductwork Install / B2 / South / 3970B | 5d | 2025-02-03 A | 2025-05-01 A | P2.B2.EMS.A.1190 | 100% |  |
| P2.B2.EMS.A.1050 |  | Frame Partitions / B2 / South / 3970B | 5d | 2025-02-10 A | 2025-02-14 A | P2.B2.ES.A.1050, P2.B2.EMS.A.1040 | 100% |  |
| P2.B2.EMS.A.1060 |  | In Wall MEPF Rough In / B2 / South / 3970B | 5d | 2025-02-17 A | 2025-02-21 A | P2.B2.EMS.A.1050 | 100% |  |
| P2.B2.EMS.A.1100 |  | Fire Stop Top of Wall / B2 / South / 3970B | 5d | 2025-02-19 A | 2025-03-03 A | P2.B2.EMS.A.1090 FF | 100% |  |
| P2.B2.EMS.A.1080 |  | In Wall Inspection / B2 / South / 3970B | 5d | 2025-02-24 A | 2025-02-28 A | P2.B2.EMS.A.1060 | 100% |  |
| P2.B2.EMS.A.1200 |  | Install Horizontal Bus Duct / B2 / South / 3970B | 10d | 2025-03-14 A | 2025-04-04 A | P2.B2.EMS.A.1180 | 100% |  |
| P2.B2.EMS.A.1020 |  | OH Mechanical Install / B2 / South / 3970B | 5d | 2025-03-17 A | 2025-03-21 A | P2.B2.EMS.A.1100 | 100% |  |
| P2.B2.EMS.A.1170 |  | Set Emergency SWGR B2-3970B / B2 / South / 3970B | 5d | 2025-03-28 A | 2025-04-08 A | P1.B2.03.290, P2.B2.ES.A.1170, P2.B2.EMS.A.1200, P2.B2.EMS.A.1020 | 100% |  |
| P2.B2.EMS.A.1290 |  | OH Conduit & Busduct tie into to SWGR / B2 / South / 3970B | 10d | 2025-04-29 A | 2025-05-01 A | P2.B2.EMS.A.1170 | 100% |  |
| P2.B2.EMS.A.1210 |  | Pull Feeders / B2 / South / 3970B | 20d | 2025-05-22 A | 2025-06-06 A | P2.B2.EMS.A.1290 | 100% |  |
| P2.B2.EMS.A.1270 |  | Frame Leave Out Partitions / B2 / South / 3970B | 5d | 2025-05-30 A | 2025-06-18 A | P2.B2.EMS.A.1170 | 100% |  |
| P2.B2.EMS.A.1280 |  | Hang-Tape-Finish Leave Out Walls / B2 / South / 3970B | 5d | 2025-05-30 A | 2025-06-06 A | P2.B2.EMS.A.1270 | 100% |  |
| P2.B2.EMS.A.1220 |  | Pull Medium Voltage Feeders / B2 / South / 3970B | 5d | 2025-06-09 A | 2025-06-14 A | P2.B2.EMS.A.1210 | 100% |  |
| P2.B2.EMS.A.1230 |  | Termination of Feeders at Gear / B2 / South / 3970B | 15d | 2025-07-01 A | 2025-07-22 A | P2.B2.EMS.A.1220 | 100% |  |
| P2.B2.EMS.A.1190 |  | Install Doors & Hardware / B2 / South / 3970B | 5d | 2025-07-09 A | 2025-07-15 A | P2.B2.EMS.A.1280 | 100% |  |
| P2.B2.EMS.A.1240 |  | Testing & Inspection / B2 / South / 3970B | 9d | 2025-07-21 A | 2025-08-05 A | P2.B2.EMS.A.1230 | 100% |  |
| P2.B2.EMS.A.1110 |  | Paint Walls / B2 / South / 3970B | 5d | 2025-07-23 A | 2025-07-29 A | P2.B2.EMS.A.1070 | 100% |  |
| P2.B2.EMS.A.1070 |  | Fire Caulk MEPF Penetrations / B2 / South / 3970B | 5d | 2025-08-01 A | 2025-08-07 A | P2.B2.EMS.A.1260 | 100% |  |
| P2.B2.EMS.A.1130 |  | Lighting Install / B2 / South / 3970B | 5d | 2025-08-01 A | 2025-08-08 A | P2.B2.EMS.A.1240, P2.B2.EMS.A.1120 | 100% |  |
| P2.B2.EMS.A.1140 |  | Fire Alarm/Ceiling Device Install / B2 / South / 3970B | 5d | 2025-08-22 A | 2025-08-28 A | P2.B2.EMS.A.1130 | 100% |  |
| P2.B2.EMS.A.1120 |  | HVAC - GRD's / B2 / South / 3970B | 5d | 2025-10-27 A | 2025-10-31 A | P2.B2.EMS.A.1110 | 100% |  |
| P2.B2.EMS.A.1150 |  | Prep Floor for Flooring / B2 / South / 3970B | 5d | 2025-11-10 A | 2025-11-14 A | P2.B2.EMS.A.1140 | 100% |  |
| P2.B2.EMS.A.1160 |  | Flooring / B2 / South / 3970B | 5d | 2025-12-01 | 2025-12-05 | P2.B2.EMS.A.1150 |  | 34d |
| P2.B2.EMS.A.1250 |  | Energize SWGR B2-3970B / B2 / South / 3970B | 5d | 2025-12-15 | 2025-12-19 | P2.B2.ES.A.1250, P2.B2.EMS.A.1160 |  | 29d |
|  | 3 | **Electrical Emergency Room A - B2-3980** |  | 2024-10-14 | 2025-12-29 |  |  |  |
| P2.B2.EE.A.1180 |  | OH Conduit Install (EF) / B2 / South / 3980 | 20d | 2024-10-14 A | 2025-03-14 A | P2.B2.EE.A.1020 | 100% |  |
| P2.B2.EE.A.1000 |  | Layout - All Trades / B2 / South / 3980 | 1d | 2024-11-04 A | 2024-11-04 A | P2.B2.EMS.A.1000 | 100% |  |
| P2.B2.EE.A.1010 |  | OH Structural Supports / B2 / South / 3980 | 5d | 2024-11-05 A | 2024-11-11 A | P2.BIM.B2.40.140, P2.B2.EE.A.1000 | 100% |  |
| P2.B2.EE.A.1090 |  | Hang-Tape-Finish / B2 / South / 3980 | 5d | 2025-01-09 A | 2025-02-14 A | P2.B2.EE.A.1080 | 100% |  |
| P2.B2.EE.A.1030 |  | CMU Dowels / B2 / South / 3980 | 5d | 2025-01-16 A | 2025-01-22 A | P2.B2.EMS.A.1030, P2.B2.EE.A.1010 | 100% |  |
| P2.B2.EE.A.1040 |  | CMU Walls / B2 / South / 3980 | 5d | 2025-01-23 A | 2025-01-29 A | P2.B2.EE.A.1030 | 100% |  |
| P2.B2.EE.A.1080 |  | In Wall Inspection / B2 / South / 3980 | 5d | 2025-02-03 A | 2025-02-07 A | P2.B2.EE.A.1060 FF, P2.B2.EE.A.1060 | 100% |  |
| P2.B2.EE.A.1100 |  | Fire Stop Top of Wall / B2 / South / 3980 | 5d | 2025-02-14 A | 2025-02-15 A | P2.B2.EE.A.1090 FF | 100% |  |
| P2.B2.EE.A.1050 |  | Frame Partitions / B2 / South / 3980 | 5d | 2025-02-17 A | 2025-02-21 A | P2.B2.EE.A.1040, P2.B2.EMS.A.1050 | 100% |  |
| P2.B2.EE.A.1060 |  | In Wall MEPF Rough In / B2 / South / 3980 | 5d | 2025-02-24 A | 2025-02-28 A | P2.B2.EE.A.1050 | 100% |  |
| P2.B2.EE.A.1190 |  | Install Horizontal Bus Duct / B2 / South / 3980 | 10d | 2025-03-14 A | 2025-04-04 A | P2.B2.EE.A.1180 | 100% |  |
| P2.B2.EE.A.1020 |  | OH Mechanical Install / B2 / South / 3980 | 5d | 2025-03-24 A | 2025-03-28 A | P2.B2.EE.A.1100 | 100% |  |
| P2.B2.EE.A.1170 |  | Set Emergency SWGR B2-3980 / B2 / South / 3980 | 5d | 2025-05-12 A | 2025-05-27 A | P1.B2.03.290, P2.B2.EMS.A.1170, P2.B2.EE.A.1190, P2.B2.EE.A.1020 | 100% |  |
| P2.B2.EE.A.1210 |  | Pull Feeders / B2 / South / 3980 | 20d | 2025-06-02 A | 2025-06-30 A | P2.B2.EE.A.1290 | 100% |  |
| P2.B2.EE.A.1290 |  | OH Conduit and Busduct tie-in to SWGR / B2 / South / 3980 | 10d | 2025-06-02 A | 2025-06-13 A | P2.B2.EE.A.1170 | 100% |  |
| P2.B2.EE.A.1260 |  | Frame Leave Out Partitions / B2 / South / 3980 | 5d | 2025-06-09 A | 2025-06-13 A | P2.B2.EE.A.1170 | 100% |  |
| P2.B2.EE.A.1220 |  | Pull Medium Voltage Feeders / B2 / South / 3980 | 10d | 2025-06-16 A | 2025-06-30 A | P2.B2.EE.A.1210 | 100% |  |
| P2.B2.EE.A.1230 |  | Termination of Feeders at Gear / B2 / South / 3980 | 15d | 2025-06-16 A | 2025-06-30 A | P2.B2.EE.A.1220 | 100% |  |
| P2.B2.EE.A.1270 |  | Hang-Tape-Finish Leave Out Walls / B2 / South / 3980 | 5d | 2025-07-01 A | 2025-07-08 A | P2.B2.EE.A.1260 | 100% |  |
| P2.B2.EE.A.1200 |  | Install Doors & Hardware / B2 / South / 3980 | 5d | 2025-07-09 A | 2025-07-15 A | P2.B2.EE.A.1270 | 100% |  |
| P2.B2.EE.A.1280 |  | Mechanical Ductwork Install / B2 / South / 3980 | 5d | 2025-07-16 A | 2025-07-22 A | P2.B2.EE.A.1200 | 100% |  |
| P2.B2.EE.A.1110 |  | Paint Walls / B2 / South / 3980 | 5d | 2025-07-21 A | 2025-07-25 A | P2.B2.EE.A.1070 | 100% |  |
| P2.B2.EE.A.1070 |  | Fire Caulk MEPF Penetrations / B2 / South / 3980 | 5d | 2025-07-23 A | 2025-08-28 A | P2.B2.EE.A.1280 | 100% |  |
| P2.B2.EE.A.1130 |  | Lighting Install / B2 / South / 3980 | 5d | 2025-08-01 A | 2025-08-08 A | P2.B2.EE.A.1240, P2.B2.EE.A.1120 | 100% |  |
| P2.B2.EE.A.1140 |  | Fire Alarm/Ceiling Device Install / B2 / South / 3980 | 5d | 2025-08-22 A | 2025-08-28 A | P2.B2.EE.A.1130 | 100% |  |
| P2.B2.EE.A.1120 |  | HVAC - GRD's / B2 / South / 3980 | 5d | 2025-10-27 A | 2025-10-31 A | P2.B2.EE.A.1110 | 100% |  |

| ID | WBS | Task | Duration | Start | Finish | Predecessors | Complete | Total float |
| --- | --- | --- | --- | --- | --- | --- | --- | --- |
| P2.B2.EE.A.1240 |  | Testing & Inspection / B2 / South / 3980 | 10d | 2025-11-03 A | 2025-11-14 A | P2.B2.EE.A.1230 | 100% |  |
| P2.B2.EE.A.1150 |  | Prep Floor for Flooring / B2 / South / 3980 | 5d | 2025-11-17 A | 2025-11-21 A | P2.B2.EE.A.1140 | 100% |  |
| P2.B2.EE.A.1160 |  | Flooring / B2 / South / 3980 | 5d | 2025-12-01 | 2025-12-05 | P2.B2.EE.A.1150 |  | 39d |
| P2.B2.EE.A.1250 |  | Energize SWGR B2-3980 / B2 / South / 3980 | 5d | 2025-12-22 | 2025-12-29 | P2.B2.EMS.A.1250, P2.B2.EE.A.1160 |  | 29d |
|  | 4 | **Electrical Med Volt Switchgear Room A - B2-3940A** |  | 2024-10-14 | 2025-12-12 |  |  |  |
| P2.B2.EMVS.A.1280 |  | Mechanical Ductwork Install / B2 / South / 3940A | 5d | 2024-10-14 A | 2025-02-27 A | P2.B2.EMVS.A.1200 | 100% |  |
| P2.B2.EMVS.A.1000 |  | Layout - All Trades / B2 / South / 3940A | 1d | 2024-11-04 A | 2024-11-04 A | P2.B2.EE.A.1000 | 100% |  |
| P2.B2.EMVS.A.1010 |  | OH Structural Supports / B2 / South / 3940A | 5d | 2024-11-05 A | 2024-11-11 A | P2.BIM.B2.40.140, P2.B2.EMVS.A.1000 | 100% |  |
| P2.B2.EMVS.A.1180 |  | OH Conduit (EF) Install / B2 / South / 3940A | 20d | 2024-12-10 A | 2025-03-14 A | P2.B2.EMVS.A.1020 | 100% |  |
| P2.B2.EMVS.A.1030 |  | CMU Dowels / B2 / South / 3940A | 5d | 2025-01-23 A | 2025-01-29 A | P2.B2.EE.A.1030, P2.B2.EMVS.A.1010 | 100% |  |
| P2.B2.EMVS.A.1040 |  | CMU Walls / B2 / South / 3940A | 5d | 2025-01-30 A | 2025-02-04 A | P2.B2.EMVS.A.1030 | 100% |  |
| P2.B2.EMVS.A.1060 |  | In Wall MEPF Rough In / B2 / South / 3940A | 5d | 2025-02-10 A | 2025-02-25 A | P2.B2.EMVS.A.1050 | 100% |  |
| P2.B2.EMVS.A.1080 |  | In Wall Inspection / B2 / South / 3940A | 5d | 2025-02-23 A | 2025-02-27 A | P2.B2.EMVS.A.1060 | 100% |  |
| P2.B2.EMVS.A.1050 |  | Frame Partitions / B2 / South / 3940A | 5d | 2025-02-24 A | 2025-02-28 A | P2.B2.EMVS.A.1040, P2.B2.EE.A.1050 | 100% |  |
| P2.B2.EMVS.A.1090 |  | Hang-Tape-Finish / B2 / South / 3940A | 5d | 2025-02-28 A | 2025-03-04 A | P2.B2.EMVS.A.1080 | 100% |  |
| P2.B2.EMVS.A.1100 |  | Fire Stop Top of Wall / B2 / South / 3940A | 5d | 2025-02-28 A | 2025-03-04 A | P2.B2.EMVS.A.1090 FF | 100% |  |
| P2.B2.EMVS.A.1020 |  | OH Mechanical Install / B2 / South / 3940A | 5d | 2025-03-05 A | 2025-03-10 A | P2.B2.EMVS.A.1100 | 100% |  |
| P2.B2.EMVS.A.1190 |  | Install Horizontal Bus Duct / B2 / South / 3940A | 10d | 2025-03-14 A | 2025-04-04 A | P2.B2.EMVS.A.1180 | 100% |  |
| P2.B2.EMVS.A.1170 |  | Set SWGR B2-3940A / B2 / South / 3940A | 5d | 2025-03-24 A | 2025-05-09 A | P1.B2.03.290, BP1.261.3.160, P2.B2.EMVS.A.1190, P2.B2.EMVS.A.1020 | 100% |  |
| P2.B2.EMVS.A.1290 |  | OH Conduit and Busduct tie-in to SWGR / B2 / South / 3940A | 10d | 2025-04-21 A | 2025-04-28 A | P2.B2.EMVS.A.1170 | 100% |  |
| P2.B2.EMVS.A.1210 |  | Pull Feeders / B2 / South / 3940A | 20d | 2025-05-30 A | 2025-06-06 A | P2.B2.EMVS.A.1290 | 100% |  |
| P2.B2.EMVS.A.1260 |  | Frame Leave Out Partitions / B2 / South / 3940A | 5d | 2025-05-30 A | 2025-09-17 A | P2.B2.EMVS.A.1170 | 100% |  |
| P2.B2.EMVS.A.1270 |  | Hang-Tape-Finish Leave Out Walls / B2 / South / 3940A | 5d | 2025-05-30 A | 2025-09-30 A | P2.B2.EMVS.A.1260 | 100% |  |
| P2.B2.EMVS.A.1220 |  | Pull Medium Voltage Feeders / B2 / South / 3940A | 5d | 2025-06-02 A | 2025-06-06 A | BP1.261.3.150, P2.B2.EMVS.A.1210 | 100% |  |
| P2.B2.EMVS.A.1230 |  | Termination of Feeders at Gear / B2 / South / 3940A | 15d | 2025-06-16 A | 2025-08-29 A | P2.B2.EMVS.A.1220 | 100% |  |
| P2.B2.EMVS.A.1200 |  | Install Doors & Hardware / B2 / South / 3940A | 5d | 2025-07-15 A | 2025-07-21 A | P2.B2.EMVS.A.1270 | 100% |  |
| P2.B2.EMVS.A.1240 |  | Testing & Inspection / B2 / South / 3940A | 10d | 2025-07-21 A | 2025-08-29 A | P2.B2.EMVS.A.1230 | 100% |  |
| P2.B2.EMVS.A.1130 |  | Lighting Install / B2 / South / 3940A | 5d | 2025-08-01 A | 2025-08-08 A | P2.B2.EMVS.A.1240, P2.B2.EMVS.A.1120 | 100% |  |
| P2.B2.EMVS.A.1070 |  | Fire Caulk MEPF Penetrations / B2 / South / 3940A | 5d | 2025-08-11 A | 2025-08-15 A | P2.B2.EMVS.A.1280 | 100% |  |
| P2.B2.EMVS.A.1110 |  | Paint Walls / B2 / South / 3940A | 5d | 2025-08-18 A | 2025-08-22 A | P2.B2.EMVS.A.1070 | 100% |  |
| P2.B2.EMVS.A.1140 |  | Fire Alarm/Ceiling Device Install / B2 / South / 3940A | 5d | 2025-08-22 A | 2025-08-25 A | P2.B2.EMVS.A.1130 | 100% |  |
| P2.B2.EMVS.A.1120 |  | HVAC - GRD's / B2 / South / 3940A | 5d | 2025-10-27 A | 2025-10-31 A | P2.B2.EMVS.A.1110 | 100% |  |
| P2.B2.EMVS.A.1150 |  | Prep Floor for Flooring / B2 / South / 3940A | 5d | 2025-11-10 A | 2025-11-14 A | P2.B2.EMVS.A.1140 | 100% |  |
| P2.B2.EMVS.A.1160 |  | Flooring / B2 / South / 3940A | 5d | 2025-12-01 | 2025-12-05 | P2.B2.EMVS.A.1150 |  | 34d |
| P2.B2.EMVS.A.1250 |  | Energize SWGR B2-3940A / B2 / South / 3940A | 5d | 2025-12-08 | 2025-12-12 | P2.B2.EMVS.A.1160 |  | 34d |
|  | 5 | **Electrical Med Volt Switchgear Room B - B2-3940B** |  | 2024-10-14 | 2025-12-19 |  |  |  |
| P2.B2.EMVS.B.1020 |  | OH Mechanical Install / B2 / South / 3940B | 5d | 2024-10-14 A | 2025-03-14 A | P2.B2.EMVS.B.1100 | 100% |  |
| P2.B2.EMVS.B.1180 |  | OH Conduit (EF) Install / B2 / South / 3940B | 20d | 2024-10-14 A | 2025-03-14 A | P2.B2.EMVS.B.1020 | 100% |  |
| P2.B2.EMVS.B.1000 |  | Layout - All Trades / B2 / South / 3940B | 1d | 2024-11-04 A | 2024-11-04 A | P2.B2.EMVS.A.1000 | 100% |  |
| P2.B2.EMVS.B.1010 |  | OH Structural Supports / B2 / South / 3940B | 5d | 2024-11-05 A | 2024-11-11 A | P2.BIM.B2.40.140, P2.B2.EMVS.B.1000 | 100% |  |
| P2.B2.EMVS.B.1050 |  | Frame Partitions / B2 / South / 3940B | 5d | 2024-12-12 A | 2025-02-10 A | P2.B2.EMVS.A.1050, P2.B2.EMVS.B.1040 | 100% |  |
| P2.B2.EMVS.B.1060 |  | In Wall MEPF Rough In / B2 / South / 3940B | 5d | 2024-12-15 A | 2025-02-09 A | P2.B2.EMVS.B.1050 | 100% |  |
| P2.B2.EMVS.B.1080 |  | In Wall Inspection / B2 / South / 3940B | 5d | 2024-12-15 A | 2025-02-10 A | P2.B2.EMVS.B.1060 | 100% |  |
| P2.B2.EMVS.B.1090 |  | Hang-Tape-Finish / B2 / South / 3940B | 5d | 2025-01-09 A | 2025-02-27 A | P2.B2.EMVS.B.1080 | 100% |  |
| P2.B2.EMVS.B.1030 |  | CMU Dowels / B2 / South / 3940B | 5d | 2025-01-30 A | 2025-02-05 A | P2.B2.EMVS.A.1030, P2.B2.EMVS.B.1010 | 100% |  |
| P2.B2.EMVS.B.1040 |  | CMU Walls / B2 / South / 3940B | 5d | 2025-02-06 A | 2025-02-12 A | P2.B2.EMVS.B.1030 | 100% |  |
| P2.B2.EMVS.B.1100 |  | Fire Stop Top of Wall / B2 / South / 3940B | 5d | 2025-02-15 A | 2025-02-27 A | P2.B2.EMVS.B.1090 FF | 100% |  |
| P2.B2.EMVS.B.1190 |  | Install Horizontal Bus Duct / B2 / South / 3940B | 11d | 2025-03-14 A | 2025-04-04 A | P2.B2.EMVS.B.1180 | 100% |  |
| P2.B2.EMVS.B.1170 |  | Set SWGR B2-3940B / B2 / South / 3940B | 5d | 2025-03-28 A | 2025-05-09 A | P1.B2.03.290, P2.B2.EMVS.A.1170, P2.B2.EMVS.B.1020, P2.B2.EMVS.B.1190 | 100% |  |
| P2.B2.EMVS.B.1280 |  | Mechanical Ductwork Install / B2 / South / 3940B | 5d | 2025-04-01 A | 2025-05-01 A | P2.B2.EMVS.B.1200 | 100% |  |
| P2.B2.EMVS.B.1290 |  | OH Conduit and Busduct tie-in to SWGR / B2 / South / 3940B | 10d | 2025-04-21 A | 2025-04-28 A | P2.B2.EMVS.B.1170 | 100% |  |
| P2.B2.EMVS.B.1210 |  | Pull Feeders / B2 / South / 3940B | 20d | 2025-04-28 A | 2025-05-05 A | P2.B2.EMVS.B.1290 | 100% |  |
| P2.B2.EMVS.B.1220 |  | Pull Medium Voltage Feeders / B2 / South / 3940B | 5d | 2025-05-05 A | 2025-05-09 A | P2.B2.EMVS.B.1210 | 100% |  |
| P2.B2.EMVS.B.1260 |  | Frame Leave Out Partitions / B2 / South / 3940B | 5d | 2025-05-30 A | 2025-07-03 A | P2.B2.EMVS.B.1170 | 100% |  |
| P2.B2.EMVS.B.1230 |  | Termination of Feeders at Gear / B2 / South / 3940B | 5d | 2025-07-01 A | 2025-08-29 A | P2.B2.EMVS.B.1220 | 100% |  |
| P2.B2.EMVS.B.1270 |  | Hang-Tape-Finish Leave Out Walls / B2 / South / 3940B | 5d | 2025-07-07 A | 2025-07-11 A | P2.B2.EMVS.B.1260 | 100% |  |
| P2.B2.EMVS.B.1200 |  | Install Doors & Hardware / B2 / South / 3940B | 5d | 2025-07-14 A | 2025-07-18 A | P2.B2.EMVS.B.1270 | 100% |  |
| P2.B2.EMVS.B.1070 |  | Fire Caulk MEPF Penetrations / B2 / South / 3940B | 5d | 2025-07-21 A | 2025-08-25 A | P2.B2.EMVS.B.1280 | 100% |  |
| P2.B2.EMVS.B.1240 |  | Testing & Inspection / B2 / South / 3940B | 10d | 2025-07-21 A | 2025-11-04 A | P2.B2.EMVS.B.1230 | 100% |  |
| P2.B2.EMVS.B.1130 |  | Lighting Install / B2 / South / 3940B | 5d | 2025-08-01 A | 2025-08-08 A | P2.B2.EMVS.B.1240, P2.B2.EMVS.B.1120 | 100% |  |
| P2.B2.EMVS.B.1110 |  | Paint Walls / B2 / South / 3940B | 5d | 2025-08-06 A | 2025-08-12 A | P2.B2.EMVS.B.1070 | 100% |  |
| P2.B2.EMVS.B.1140 |  | Fire Alarm/Ceiling Device Install / B2 / South / 3940B | 5d | 2025-08-18 A | 2025-08-22 A | P2.B2.EMVS.B.1130 | 100% |  |
| P2.B2.EMVS.B.1120 |  | HVAC - GRD's / B2 / South / 3940B | 5d | 2025-10-27 A | 2025-10-31 A | P2.B2.EMVS.B.1110 | 100% |  |
| P2.B2.EMVS.B.1150 |  | Prep Floor for Flooring / B2 / South / 3940B | 5d | 2025-11-10 A | 2025-11-14 A | P2.B2.EMVS.B.1140 | 100% |  |
| P2.B2.EMVS.B.1160 |  | Flooring / B2 / South / 3940B | 5d | 2025-12-01 | 2025-12-05 | P2.B2.EMVS.B.1150 |  | 39d |
| P2.B2.EMVS.B.1250 |  | Energize SWGR B2-3940B / B2 / South / 3940B | 5d | 2025-12-15 | 2025-12-19 | P2.B2.EMVS.A.1250, P2.B2.EMVS.B.1160 |  | 34d |
|  | 9 | **Emergency Swtichgear Room A - B2-3920A** |  | 2024-10-14 | 2025-12-19 |  |  |  |
| P2.B2.EMS.B.1020 |  | OH Mechanical Install / B2 / North / 3920A | 5d | 2024-10-14 A | 2025-04-30 A | P2.B2.EMS.B.1100 | 100% |  |
| P2.B2.EMS.B.1180 |  | OH Conduit (EF) Install / B2 / North / 3920A | 20d | 2024-10-14 A | 2025-03-18 A | P2.B2.EMS.B.1020 | 100% |  |
| P2.B2.EMS.B.1000 |  | Layout - All Trades / B2 / North / 3920A | 1d | 2024-11-11 A | 2024-11-11 A | P2.B2.EE.B.1000 | 100% |  |

| ID | WBS | Task | Duration | Start | Finish | Predecessors | Complete | Total float |
| --- | --- | --- | --- | --- | --- | --- | --- | --- |
| P2.B2.EMS.B.1010 |  | OH Structural Supports / B2 / North / 3920A | 5d | 2024-11-12 A | 2024-11-18 A | P2.B2.EMS.B.1000, P2.BIM.B2.40.140 | 100% |  |
| P2.B2.EMS.B.1030 |  | CMU Dowels / B2 / North / 3920A | 5d | 2024-12-16 A | 2024-12-20 A | P2.B2.EMS.B.1010, P2.B2.EE.B.1030 | 100% |  |
| P2.B2.EMS.B.1040 |  | CMU Walls / B2 / North / 3920A | 5d | 2024-12-23 A | 2024-12-27 A | P2.B2.EMS.B.1030 | 100% |  |
| P2.B2.EMS.B.1050 |  | Frame Partitions / B2 / North / 3920A | 5d | 2024-12-24 A | 2025-02-03 A | P2.B2.EMS.B.1040, P2.B2.EE.B.1050 | 100% |  |
| P2.B2.EMS.B.1060 |  | In Wall MEPF Rough In / B2 / North / 3920A | 5d | 2025-02-03 A | 2025-02-10 A | P2.B2.EMS.B.1050 | 100% |  |
| P2.B2.EMS.B.1080 |  | In Wall Inspection / B2 / North / 3920A | 5d | 2025-02-03 A | 2025-02-10 A | P2.B2.EMS.B.1060 | 100% |  |
| P2.B2.EMS.B.1090 |  | Hang-Tape-Finish / B2 / North / 3920A | 5d | 2025-02-03 A | 2025-02-10 A | P2.B2.EMS.B.1080 | 100% |  |
| P2.B2.EMS.B.1100 |  | Fire Stop Top of Wall / B2 / North / 3920A | 5d | 2025-02-03 A | 2025-02-10 A | P2.B2.EMS.B.1090 FF | 100% |  |
| P2.B2.EMS.B.1190 |  | Install Horizontal Bus Duct / B2 / North / 3920A | 10d | 2025-03-25 A | 2025-04-04 A | P2.B2.EMS.B.1180 | 100% |  |
| P2.B2.EMS.B.1280 |  | Mechanical Ductwork Install / B2 / North / 3920A | 5d | 2025-04-21 A | 2025-05-01 A | P2.B2.EMS.B.1200 | 100% |  |
| P2.B2.EMS.B.1290 |  | OH Conduit and Busduct tie-in to SWGR / B2 / North / 3920A | 10d | 2025-05-05 A | 2025-05-30 A | P2.B2.EMS.B.1170 | 100% |  |
| P2.B2.EMS.B.1170 |  | Set Emergency SWGR B2-3920A / B2 / North / 3920A | 5d | 2025-06-02 A | 2025-06-06 A | P2.B2.EMS.B.1020, P2.B2.EMS.B.1190, P1.B2.03.290, BP1.261.3.110, BP1.261.3.120 SS | 100% |  |
| P2.B2.EMS.B.1210 |  | Pull Feeders / B2 / North / 3920A | 20d | 2025-06-23 A | 2025-08-29 A | P2.B2.EMS.B.1290 | 100% |  |
| P2.B2.EMS.B.1260 |  | Frame Leave Out Partitions / B2 / North / 3920A | 5d | 2025-07-01 A | 2025-07-08 A | P2.B2.EMS.B.1170 | 100% |  |
| P2.B2.EMS.B.1270 |  | Hang-Tape-Finish Leave Out Walls / B2 / North / 3920A | 5d | 2025-07-09 A | 2025-07-15 A | P2.B2.EMS.B.1260 | 100% |  |
| P2.B2.EMS.B.1200 |  | Install Doors & Hardware / B2 / North / 3920A | 5d | 2025-07-16 A | 2025-07-22 A | P2.B2.EMS.B.1270 | 100% |  |
| P2.B2.EMS.B.1070 |  | Fire Caulk MEPF Penetrations / B2 / North / 3920A | 5d | 2025-07-21 A | 2025-08-05 A | P2.B2.EMS.B.1280 | 100% |  |
| P2.B2.EMS.B.1220 |  | Pull Medium Voltage Feeders / B2 / North / 3920A | 5d | 2025-07-23 A | 2025-08-29 A | P2.B2.EMS.B.1210 | 100% |  |
| P2.B2.EMS.B.1230 |  | Termination of Feeders at Gear / B2 / North / 3920A | 15d | 2025-07-30 A | 2025-08-29 A | P2.B2.EMS.B.1220 | 100% |  |
| P2.B2.EMS.B.1130 |  | Lighting Install / B2 / North / 3920A | 5d | 2025-08-01 A | 2025-08-08 A | P2.B2.EMS.B.1240, P2.B2.EMS.B.1120 | 100% |  |
| P2.B2.EMS.B.1110 |  | Paint Walls / B2 / North / 3920A | 5d | 2025-08-06 A | 2025-08-12 A | P2.B2.EMS.B.1070 | 100% |  |
| P2.B2.EMS.B.1140 |  | Fire Alarm/Ceiling Device Install / B2 / North / 3920A | 5d | 2025-08-18 A | 2025-08-22 A | P2.B2.EMS.B.1130 | 100% |  |
| P2.B2.EMS.B.1120 |  | HVAC - GRD's / B2 / North / 3920A | 5d | 2025-10-27 A | 2025-10-31 A | P2.B2.EMS.B.1110 | 100% |  |
| P2.B2.EMS.B.1240 |  | Testing & Inspection / B2 / North / 3920A | 10d | 2025-11-03 A | 2025-11-14 A | P2.B2.EMS.B.1230 | 100% |  |
| P2.B2.EMS.B.1150 |  | Prep Floor for Flooring / B2 / North / 3920A | 5d | 2025-11-17 A | 2025-11-21 A | P2.B2.EMS.B.1140 | 100% |  |
| P2.B2.EMS.B.1160 |  | Flooring / B2 / North / 3920A | 5d | 2025-12-01 | 2025-12-05 | P2.B2.EMS.B.1150 |  | 34d |
| P2.B2.EMS.B.1250 |  | Energize SWGR B2-3920A / B2 / North / 3920A | 5d | 2025-12-15 | 2025-12-19 | P2.B2.EMS.B.1160, P2.B2.EE.B.1250 |  | 29d |
|  | 11 | **Electrical Switchgear Room B - B2-3920B** |  | 2024-10-14 | 2025-12-29 |  |  |  |
| P2.B2.ES.B.1020 |  | OH Mechanical Install / B2 / North / 3920B | 5d | 2024-10-14 A | 2025-04-30 A | P2.B2.ES.B.1100 | 100% |  |
| P2.B2.ES.B.1180 |  | OH Conduit (EF) Install to SWGR / B2 / North / 3920B | 20d | 2024-10-14 A | 2025-03-18 A | P2.B2.ES.B.1020 | 100% |  |
| P2.B2.ES.B.1000 |  | Layout - All Trades / B2 / North / 3920B | 1d | 2024-11-07 A | 2024-11-07 A | P2.B2.EMVS.B.1000 | 100% |  |
| P2.B2.ES.B.1010 |  | OH Structural Supports / B2 / North / 3920B | 5d | 2024-11-08 A | 2024-11-14 A | P2.BIM.B2.40.140, P2.B2.ES.B.1000 | 100% |  |
| P2.B2.ES.B.1050 |  | Frame Partitions / B2 / North / 3920B | 5d | 2024-12-13 A | 2025-02-10 A | P2.B2.EMVS.B.1050, P2.B2.ES.B.1040 | 100% |  |
| P2.B2.ES.B.1060 |  | In Wall MEPF Rough In / B2 / North / 3920B | 5d | 2024-12-15 A | 2025-02-13 A | P2.B2.ES.B.1050 | 100% |  |
| P2.B2.ES.B.1030 |  | CMU Dowels / B2 / North / 3920B | 5d | 2024-12-16 A | 2024-12-20 A | P2.B2.ES.B.1010 | 100% |  |
| P2.B2.ES.B.1080 |  | In Wall Inspection / B2 / North / 3920B | 5d | 2024-12-17 A | 2025-02-14 A | P2.B2.ES.B.1060 | 100% |  |
| P2.B2.ES.B.1040 |  | CMU Walls / B2 / North / 3920B | 5d | 2024-12-23 A | 2024-12-27 A | P2.B2.ES.B.1030 | 100% |  |
| P2.B2.ES.B.1100 |  | Fire Stop Top of Wall / B2 / North / 3920B | 5d | 2025-01-08 A | 2025-01-09 A | P2.B2.ES.B.1090 FF | 100% |  |
| P2.B2.ES.B.1090 |  | Hang-Tape-Finish / B2 / North / 3920B | 5d | 2025-01-09 A | 2025-02-26 A | P2.B2.ES.B.1080 | 100% |  |
| P2.B2.ES.B.1190 |  | Install Horizontal Bus Duct / B2 / North / 3920B | 10d | 2025-03-25 A | 2025-04-04 A | P2.B2.ES.B.1180 | 100% |  |
| P2.B2.ES.B.1260 |  | Mechanical Ductwork Install / B2 / North / 3920B | 5d | 2025-04-21 A | 2025-05-01 A | P2.B2.ES.B.1200 | 100% |  |
| P2.B2.ES.B.1170 |  | Set Emergency SWGR B2-3920B / B2 / North / 3920B | 5d | 2025-04-26 A | 2025-05-05 A | P2.B2.EMS.B.1170, P1.B2.03.290, P2.B2.ES.B.1020, P2.B2.ES.B.1190 | 100% |  |
| P2.B2.ES.B.1290 |  | OH Conduit and Busduct tie-in to SWGR / B2 / North / 3920B | 10d | 2025-05-05 A | 2025-05-22 A | P2.B2.ES.B.1170 | 100% |  |
| P2.B2.ES.B.1210 |  | Pull Feeders / B2 / North / 3920B | 20d | 2025-06-23 A | 2025-08-29 A | P2.B2.ES.B.1290 | 100% |  |
| P2.B2.ES.B.1270 |  | Frame Leave Out Partitions / B2 / North / 3920B | 5d | 2025-07-01 A | 2025-07-08 A | P2.B2.ES.B.1170 | 100% |  |
| P2.B2.ES.B.1220 |  | Pull Medium Voltage Feeders / B2 / North / 3920B | 5d | 2025-07-03 A | 2025-08-29 A | P2.B2.ES.B.1210 | 100% |  |
| P2.B2.ES.B.1280 |  | Hang-Tape-Finish Leave Out Walls / B2 / North / 3920B | 5d | 2025-07-09 A | 2025-07-15 A | P2.B2.ES.B.1270 | 100% |  |
| P2.B2.ES.B.1200 |  | Install Doors & Hardware / B2 / North / 3920B | 5d | 2025-07-16 A | 2025-07-22 A | P2.B2.ES.B.1280 | 100% |  |
| P2.B2.ES.B.1070 |  | Fire Caulk MEPF Penetrations / B2 / North / 3920B | 5d | 2025-07-21 A | 2025-08-05 A | P2.B2.ES.B.1260 | 100% |  |
| P2.B2.ES.B.1110 |  | Paint Walls / B2 / North / 3920B | 5d | 2025-07-21 A | 2025-07-25 A | P2.B2.ES.B.1070 | 100% |  |
| P2.B2.ES.B.1230 |  | Termination of Feeders at Gear / B2 / North / 3920B | 15d | 2025-07-30 A | 2025-08-29 A | P2.B2.ES.B.1220 | 100% |  |
| P2.B2.ES.B.1130 |  | Lighting Install / B2 / North / 3920B | 5d | 2025-08-01 A | 2025-08-08 A | P2.B2.ES.B.1240, P2.B2.ES.B.1120 | 100% |  |
| P2.B2.ES.B.1140 |  | Fire Alarm/Ceiling Device Install / B2 / North / 3920B | 5d | 2025-10-01 A | 2025-10-07 A | P2.B2.ES.B.1130 | 100% |  |
| P2.B2.ES.B.1120 |  | HVAC - GRD's / B2 / North / 3920B | 5d | 2025-10-27 A | 2025-10-31 A | P2.B2.ES.B.1110 | 100% |  |
| P2.B2.ES.B.1240 |  | Testing & Inspection / B2 / North / 3920B | 10d | 2025-11-03 A | 2025-11-14 A | P2.B2.ES.B.1230 | 100% |  |
| P2.B2.ES.B.1150 |  | Prep Floor for Flooring / B2 / North / 3920B | 5d | 2025-11-17 A | 2025-11-21 A | P2.B2.ES.B.1140 | 100% |  |
| P2.B2.ES.B.1160 |  | Flooring / B2 / North / 3920B | 5d | 2025-12-01 | 2025-12-05 | P2.B2.ES.B.1150 |  | 39d |
| P2.B2.ES.B.1250 |  | Energize SWGR B2-3920B / B2 / North / 3920B | 5d | 2025-12-22 | 2025-12-29 | P2.B2.EMS.B.1250, P2.B2.ES.B.1160 |  | 29d |
|  | 10 | **Electrical Emergency Room - B2-3910** |  | 2015-08-11 | 2025-12-12 |  |  |  |
| P2.B2.EE.B.1070 |  | Fire Caulk MEPF Penetrations / B2 / North / 3910 | 5d | 2015-08-11 A | 2025-08-15 A | P2.B2.EE.B.1260 | 100% |  |
| P2.B2.EE.B.1180 |  | OH Conduit Install to SWGR / B2 / North / 3910 | 20d | 2024-10-14 A | 2025-03-18 A | P2.B2.EE.B.1020 | 100% |  |
| P2.B2.EE.B.1020 |  | OH Mechanical Install / B2 / North / 3910 | 5d | 2024-10-21 A | 2025-04-30 A | P2.B2.EE.B.1090 | 100% |  |
| P2.B2.EE.B.1000 |  | Layout - All Trades / B2 / North / 3910 | 1d | 2024-11-08 A | 2024-11-08 A | P2.B2.ES.B.1000 | 100% |  |
| P2.B2.EE.B.1010 |  | OH Structural Supports / B2 / North / 3910 | 5d | 2024-11-11 A | 2024-11-15 A | P2.BIM.B2.40.140, P2.B2.EE.B.1000 | 100% |  |
| P2.B2.EE.B.1050 |  | Frame Partitions / B2 / North / 3910 | 5d | 2024-12-13 A | 2025-02-03 A | P2.B2.ES.B.1050, P2.B2.EE.B.1040 | 100% |  |
| P2.B2.EE.B.1060 |  | In Wall MEPF Rough In / B2 / North / 3910 | 5d | 2024-12-14 A | 2025-02-04 A | P2.B2.EE.B.1050 | 100% |  |
| P2.B2.EE.B.1030 |  | CMU Dowels / B2 / North / 3910 | 5d | 2024-12-16 A | 2024-12-20 A | P2.B2.ES.B.1030, P2.B2.EE.B.1010 | 100% |  |
| P2.B2.EE.B.1040 |  | CMU Walls / B2 / North / 3910 | 5d | 2024-12-23 A | 2024-12-27 A | P2.B2.EE.B.1030 | 100% |  |
| P2.B2.EE.B.1080 |  | In Wall Inspection / B2 / North / 3910 | 5d | 2025-02-03 A | 2025-02-13 A | P2.B2.EE.B.1060 | 100% |  |
| P2.B2.EE.B.1100 |  | Fire Stop Top of Wall / B2 / North / 3910 | 5d | 2025-02-03 A | 2025-02-13 A | P2.B2.EE.B.1090 FF | 100% |  |

| ID | WBS | Task | Duration | Start | Finish | Predecessors | Complete | Total float | Constraint |
| --- | --- | --- | --- | --- | --- | --- | --- | --- | --- |
| P2.B2.EE.B.1090 |  | Hang-Tape-Finish / B2 / North / 3910 | 5d | 2025-02-13 A | 2025-02-27 A | P2.B2.EE.B.1080 | 100% |  |  |
| P2.B2.EE.B.1170 |  | Set SWGR B2-3910 / B2 / North / 3910 | 5d | 2025-05-12 A | 2025-05-28 A | BP1.260.3.300 FF, P2.B2.EE.B.1020, P2.B2.EE.B.1190 | 100% |  |  |
| P2.B2.EE.B.1290 |  | OH Conduit and Busduct tie-in to SWGR / B2 / North / 3910 | 10d | 2025-05-27 A | 2025-06-27 A | P2.B2.EE.B.1170 | 100% |  |  |
| P2.B2.EE.B.1190 |  | Install Horizontal Bus Duct / B2 / North / 3910 | 10d | 2025-06-02 A | 2025-06-13 A | P2.B2.EE.B.1180 | 100% |  |  |
| P2.B2.EE.B.1210 |  | Pull Feeders / B2 / North / 3910 | 20d | 2025-06-02 A | 2025-08-05 A | P2.B2.EE.B.1290 | 100% |  |  |
| P2.B2.EE.B.1220 |  | Pull Medium Voltage Feeders / B2 / North / 3910 | 5d | 2025-06-02 A | 2025-06-30 A | P2.B2.EE.B.1210 | 100% |  |  |
| P2.B2.EE.B.1230 |  | Termination of Feeders at Gear / B2 / North / 3910 | 15d | 2025-06-09 A | 2025-06-27 A | P2.B2.EE.B.1220 | 100% |  |  |
| P2.B2.EE.B.1280 |  | Hang-Tape-Finish Leave Out Walls / B2 / North / 3910 | 5d | 2025-07-10 A | 2025-07-16 A | P2.B2.EE.B.1270 | 100% |  |  |
| P2.B2.EE.B.1260 |  | Mechanical Ductwork Install / B2 / North / 3910 | 5d | 2025-07-14 A | 2025-07-21 A | P2.B2.EE.B.1200 | 100% |  |  |
| P2.B2.EE.B.1200 |  | Install Doors & Hardware / B2 / North / 3910 | 5d | 2025-07-17 A | 2025-07-23 A | P2.B2.EE.B.1280 | 100% |  |  |
| P2.B2.EE.B.1130 |  | Lighting Install / B2 / North / 3910 | 5d | 2025-08-01 A | 2025-08-08 A | P2.B2.EE.B.1120, P2.B2.EE.B.1240 | 100% |  |  |
| P2.B2.EE.B.1110 |  | Paint Walls / B2 / North / 3910 | 5d | 2025-08-18 A | 2025-08-22 A | P2.B2.EE.B.1070, P2.B2.EE.B.1100 | 100% |  |  |
| P2.B2.EE.B.1140 |  | Fire Alarm/Ceiling Device Install / B2 / North / 3910 | 5d | 2025-08-18 A | 2025-08-22 A | P2.B2.EE.B.1130 | 100% |  |  |
| P2.B2.EE.B.1270 |  | Frame Leave Out Partitions / B2 / North / 3910 | 5d | 2025-10-01 A | 2025-10-07 A | P2.B2.EE.B.1170 | 100% |  |  |
| P2.B2.EE.B.1120 |  | HVAC - GRD's / B2 / North / 3910 | 5d | 2025-10-27 A | 2025-10-31 A | P2.B2.EE.B.1110 | 100% |  |  |
| P2.B2.EE.B.1240 |  | Testing & Inspection / B2 / North / 3910 | 10d | 2025-11-03 A | 2025-11-14 A | BP1.263.3.120, P2.B2.EE.B.1230 | 100% |  |  |
| P2.B2.EE.B.1150 |  | Prep Floor for Flooring / B2 / North / 3910 | 5d | 2025-11-17 A | 2025-11-21 A | P2.B2.EE.B.1140 | 100% |  |  |
| P2.B2.EE.B.1160 |  | Flooring / B2 / North / 3910 | 5d | 2025-12-01 | 2025-12-05 | P2.B2.EE.B.1150 |  | 29d |  |
| P2.B2.EE.B.1250 |  | Energize SWGR B2-3910 / B2 / North / 3910 | 5d | 2025-12-08 | 2025-12-12 | P2.B2.EE.B.1160 |  | 29d |  |
|  | 4 | **House Electrical Rooms / Level B2/B1** |  | 2025-04-01 | 2026-01-02 |  |  |  |  |
|  | 6 | **House Electrical Room B2-5995** |  | 2025-04-01 | 2025-12-11 |  |  |  |  |
| P2.B2.HE.5995.1000 |  | Paint Prime & 1st Coat / B2 / South / 5995 | 2d | 2025-04-01 A | 2025-04-03 A | P2.B2.S.1110 | 100% |  |  |
| P2.B2.HE.5995.1010 |  | Cans/Troughs/Backboxes/XFMRs / B2 / South / 5995 | 5d | 2025-07-01 A | 2025-07-08 A | P2.B2.HE.5995.1000, BP1.261.3.120 | 100% |  |  |
| P2.B2.HE.5995.1020 |  | Risers and OH Conduit Connections / B2 / South / 5995 | 5d | 2025-08-01 A | 2025-08-07 A | P2.B2.HE.5995.1010 | 100% |  |  |
| P2.B2.HE.5995.1030 |  | Pull Wire - In From Distribution Panels / Out to Branch Circuits / B2 / South / 5995 | 5d | 2025-08-08 A | 2025-08-14 A | P2.B2.HE.5995.1020 | 100% |  |  |
| P2.B2.HE.5995.1040 |  | Panelboards, Interconnect Wiring, and Room Buildout of All Systems / B2 / South / 5995 | 10d | 2025-11-03 A | 2025-11-14 A | P2.B2.HE.5995.1020, BP1.262.3.100, BP1.262.3.220, BP1.265.3.900 | 100% |  |  |
| P2.B2.HE.5995.1120 |  | Panelboards, Interconnect Wiring, and Remaining Room Buildout of All Systems / B2 / South / 5995 | 5d | 2025-11-03 A | 2025-11-07 A | BP1.262.3.100, BP1.262.3.220, BP1.265.3.900 | 100% |  |  |
| P2.B2.HE.5995.1050 |  | Test & Terminate / B2 / South / 5995 | 5d | 2025-11-17 A | 2025-11-21 A | P2.B2.HE.5995.1120, P2.B2.HE.5995.1040, P2.B2.HE.5995.1030 | 100% |  |  |
| P2.B2.HE.5995.1060 |  | Paint - Finish Coat / B2 / South / 5995 | 2d | 2025-11-24 A | 2025-11-25 A | P2.B2.HE.5995.1050 | 100% |  |  |
| P2.B2.HE.5995.1130 |  | Paint Prime & 1st Coat - Crane Hatch / B2 / South / 5995 | 2d | 2025-11-24 A | 2025-11-25 A | P1.BGS.310 | 100% |  |  |
| P2.B2.HE.5995.1070 |  | Trim All MEPF Finishes / B2 / South / 5995 | 2d | 2025-11-26 A | 2025-11-26 A | P2.B2.HE.5995.1060, BP1.233.3.410 | 100% |  |  |
| P2.B2.HE.5995.1080 |  | Flooring / B2 / South / 5995 | 2d | 2025-12-01 | 2025-12-02 | P2.B2.HE.5995.1070 |  | 40d |  |
| P2.B2.HE.5995.1090 |  | Doors & Hardware / B2 / South / 5995 | 2d | 2025-12-03 | 2025-12-04 | P2.B2.HE.5995.1080 |  | 40d |  |
| P2.B2.HE.5995.1100 |  | Panels Ready to Energize - Lock Doors and Limit Access / B2 / South / 5995 | 0d | 2025-12-11 | 2025-12-11 | P2.B2.HE.5995.1050, P2.B2.HE.5995.1090 FF, P2.B2.HE.5995.1130 FF |  | 35d |  |
|  | 7 | **House Electrical Room B2-5920** |  | 2025-04-01 | 2026-01-02 |  |  |  |  |
| P2.B2.HE.5920.1000 |  | Paint Prime & 1st Coat / B2 / South / 5920 | 2d | 2025-04-01 A | 2025-04-03 A | P2.B2.S.1110 | 100% |  |  |
| P2.B2.HE.5920.1010 |  | Cans/Troughs/Backboxes/XFMRs / B2 / South / 5920 | 5d | 2025-07-01 A | 2025-07-08 A | P2.B2.HE.5920.1000 | 100% |  |  |
| P2.B2.HE.5920.1020 |  | Risers and OH Conduit Connections / B2 / South / 5920 | 5d | 2025-08-01 A | 2025-08-07 A | P2.B2.HE.5920.1010 | 100% |  |  |
| P2.B2.HE.5920.1030 |  | Pull Wire - In From Distribution Panels / Out to Branch Circuits / B2 / South / 5920 | 5d | 2025-08-08 A | 2025-08-14 A | P2.B2.HE.5920.1020 | 100% |  |  |
| P2.B2.HE.5920.1040 |  | Panelboards, Interconnect Wiring, and Remaining Room Buildout of All Systems / B2 / South / 5920 | 10d | 2025-12-01 | 2025-12-12 | P2.B2.HE.5920.1020, BP1.262.3.100, BP1.262.3.220 |  | 153d |  |
| P2.B2.HE.5920.1050 |  | Test & Terminate / B2 / South / 5920 | 5d | 2025-12-15 | 2025-12-19 | P2.B2.HE.5920.1040, P2.B2.HE.5920.1030 |  | 153d |  |
| P2.B2.HE.5920.1060 |  | Paint - Finish Coat / B2 / South / 5920 | 2d | 2025-12-22 | 2025-12-23 | P2.B2.HE.5920.1050 |  | 153d |  |
| P2.B2.HE.5920.1070 |  | Trim All MEPF Finishes / B2 / South / 5920 | 2d | 2025-12-24 | 2025-12-26 | P2.B2.HE.5920.1060, BP1.233.3.410 |  | 153d |  |
| P2.B2.HE.5920.1080 |  | Flooring / B2 / South / 5920 | 2d | 2025-12-29 | 2025-12-30 | P2.B2.HE.5920.1070 |  | 153d |  |
| P2.B2.HE.5920.1090 |  | Doors & Hardware / B2 / South / 5920 | 2d | 2025-12-31 | 2026-01-02 | P2.B2.HE.5920.1080 |  | 153d |  |
| P2.B2.HE.5920.1100 |  | Panels Ready to Energize - Lock Doors and Limit Access / B2 / South / 5920 | 0d | 2026-01-02 | 2026-01-02 | P2.B2.HE.5920.1050, P2.B2.HE.5920.1090 FF |  | 153d |  |
|  | 1 | **Mechanical Rooms / Level B2/B1** |  | 2024-10-01 | 2026-05-14 |  |  |  |  |
|  | 1 | **Mechanical B2-5970 (Z1)** |  | 2024-10-01 | 2026-04-20 |  |  |  |  |
| P2.B2.M.5970.1140 |  | Layout - All Trades / B2 / South / 5970 | 5d | 2024-10-01 A | 2024-10-08 A | P1.1.03.610 | 100% |  |  |
| P2.B2.M.5970.1380 |  | OH Fire Suppression Install / B2 / South / 5970 | 5d | 2024-10-15 A | 2024-10-28 A | P2.B2.M.5970.1140 SS | 100% |  |  |
| P2.B2.M.5970.1390 |  | OH Electrical Install / B2 / South / 5970 | 15d | 2024-10-15 A | 2025-02-04 A | P2.B2.M.5970.1440 FF | 100% |  |  |
| P2.B2.M.5970.1400 |  | OH High Plumbing Install / B2 / South / 5970 | 20d | 2024-10-15 A | 2025-02-07 A | P2.B2.M.5970.1390 FF | 100% |  |  |
| P2.B2.M.5970.1440 |  | Paint OH Fire Suppression / B2 / South / 5970 | 2d | 2024-10-16 A | 2025-02-03 A | P2.B2.M.5970.1380 FF | 100% |  |  |
| P2.B2.M.5970.1150 |  | OH Structural Supports / B2 / South / 5970 | 5d | 2024-11-01 A | 2024-11-07 A | P2.B2.M.5970.1140, P2.BIM.B2.40.140 | 100% |  |  |
| P2.B2.M.5970.2130 |  | CMU - Drill Dowels and Lay Block (ACRF Separation Wall) / B2 / South / 5970 | 5d | 2024-11-01 A | 2024-11-07 A | P2.B2.M.5970.1140 | 100% |  |  |
| P2.B2.M.5970.1160 |  | OH Mechanical Ductwork (High) Install / B2 / South / 5970 | 10d | 2024-11-12 A | 2025-02-04 A | P2.B2.M.5970.1150 | 100% |  |  |
| P2.B2.M.5970.1450 |  | OH Mechanical Piping Install (Chilled Water) / B2 / South / 5970 | 20d | 2025-01-31 A | 2025-04-30 A | P2.B2.M.5970.1400 SS | 100% |  |  |
| P2.B2.M.5970.2140 |  | CMU - Point & Patch / B2 / South / 5970 | 2d | 2025-02-03 A | 2025-02-04 A | P2.B2.M.5970.2130 | 100% |  |  |
| P2.B2.M.5970.2150 |  | Paint - CMU Block Fill / B2 / South / 5970 | 2d | 2025-02-05 A | 2025-02-06 A | P2.B2.M.5970.2140 | 100% |  |  |
| P2.B2.M.5970.1210 |  | Fire Caulk MEPF Penetrations / B2 / South / 5970 | 5d | 2025-04-01 A | 2025-04-30 A | P2.B2.M.5970.1400 | 100% |  |  |
| P2.B2.M.5970.1460 |  | OH Mechanical Piping Install (Glycol) / B2 / South / 5970 | 20d | 2025-04-16 A | 2025-05-14 A | P2.B2.M.5970.1450 | 100% |  |  |
| P2.B2.M.5970.1410 |  | Insulate High MEP / B2 / South / 5970 | 5d | 2025-05-01 A | 2025-05-07 A | P2.B2.M.5970.1400 | 100% |  |  |
| P2.B2.M.5970.1470 |  | OH Mechanical Piping Install (Reheat) / B2 / South / 5970 | 20d | 2025-05-15 A | 2025-06-12 A | P2.B2.M.5970.1460 | 100% |  |  |
| P2.B2.M.5970.1480 |  | OH Mechanical Piping Install (Steam) / B2 / South / 5970 | 20d | 2025-06-13 A | 2025-07-11 A | P2.B2.M.5970.1470 | 100% |  |  |
| P2.B2.M.5970.1060 |  | Install Steam Station / B2 / South / 5970 | 5d | 2025-06-23 A | 2025-06-27 A | P2.B2.M.5970.1410, P1.B2.03.290, BP1.224.3.950, BP1.238.3.190, P2.B2.S.1120 | 100% |  |  |
| P2.B2.M.5970.1430 |  | Test OH Fire Suppression / B2 / South / 5970 | 5d | 2025-07-26 A | 2025-07-31 A | P2.B2.M.5970.1440 | 100% |  |  |
| P2.B2.M.5970.1030 |  | Install Glycol Pre-Heat Pump & Hx Skid / B2 / South / 5970 | 5d | 2025-07-30 A | 2025-08-05 A | P2.B2.M.5970.1410, P1.B2.03.290, BP1.224.3.940, BP1.235.3.100, P2.B2.S.1120 | 100% |  |  |
| P2.B2.M.5970.1040 |  | Install Reheat Pump and Hx Skid / B2 / South / 5970 | 5d | 2025-07-30 A | 2025-08-05 A | P2.B2.M.5970.1410, P1.B2.03.290, BP1.224.3.940, BP1.235.3.100, P2.B2.S.1120 | 100% |  |  |
| P2.B2.M.5970.1050 |  | Install Clean Steam Generator Skid / B2 / South / 5970 | 5d | 2025-09-02 A | 2025-09-08 A | P2.B2.M.5970.1410, BP1.226.3.110, P2.B2.S.1120 | 100% |  |  |
| FRG.P2.B2.M.5970.1000 |  | MP Steam Spool / B2 / South / 5970 - FRAGNET | 0d | 2025-09-17 A | 2025-09-17 A | P2.B2.M.5970.1040 | 100% |  | finish on 2025-09-17 |

| ID | WBS | Task | Duration | Start | Finish | Predecessors | Complete | Total float | Constraint |
| --- | --- | --- | --- | --- | --- | --- | --- | --- | --- |
| FRG.P2.B2.M.5970.1010 |  | Install Remaining Steam Spool / B2 / South / 5970 - FRAGNET | 20d | 2025-09-18 A | 2025-10-27 A | FRG.P2.B2.M.5970.1000 | 100% |  |  |
| P2.B2.M.5970.1130 |  | Risers and Distribution Connections / B2 / South / 5970 | 5d | 2025-09-18 A | 2025-09-30 A | FRG.P2.B2.M.5970.1000 | 100% |  |  |
| P2.B2.M.5970.1500 |  | Piping Spool Pieces & Field Connections (High Purity Water) / B2 / South / 5970 | 15d | 2025-10-01 A | 2025-10-21 A | P2.B2.M.5970.1050 | 100% |  |  |
| FRG.P2.B2.M.5970.1120 |  | Temp Cooling Offline / B2 / South / 5970 - FRAGNET | 0d | 2025-10-01 A | 2025-10-01 A | P2.B2.M.5970.1480 | 100% |  | finish on or after 2025-10-01 |
| FRG.P2.B2.M.5970.1040 |  | Install Remaining Reheat Spool / B2 / South / 5970 - FRAGNET | 20d | 2025-10-02 A | 2025-10-29 A | FRG.P2.B2.M.5970.1120 | 100% |  |  |
| FRG.P2.B2.M.5970.1130 |  | Set CHW System Header & Equip (Post Temp Cool) / B2 / South / 5970 - FRAGNET | 20d | 2025-10-02 A | 2025-10-16 A | FRG.P2.B2.M.5970.1120 | 100% |  |  |
| FRG.P2.B2.M.5970.1140 |  | Set CHW System Header & Equip (Post Temp Cool) / B2 / South / 5970 - FRAGNET | 12d | 2025-10-02 A | 2025-10-16 A | FRG.P2.B2.M.5970.1130 | 100% |  |  |
| FRG.P2.B2.M.5970.1020 |  | Install Remaining Steam Spool / B2 / South / 5970 - FRAGNET | 4d | 2025-10-28 A | 2025-10-31 A | FRG.P2.B2.M.5970.1010 | 100% |  |  |
| P2.B2.M.5970.1090 |  | Piping Spool Pieces & Field Connections / B2 / South / 5970 | 15d | 2025-10-29 A | 2025-11-26 A | P2.B2.M.5970.1070, P2.B2.M.5970.1030, P2.B2.M.5970.1060, BP1.230.3.110 | 100% |  |  |
| FRG.P2.B2.M.5970.1050 |  | Install Remaining Reheat Spool / B2 / South / 5970 - FRAGNET | 12d | 2025-10-30 A | 2025-12-19 | FRG.P2.B2.M.5970.1040 |  | 4d |  |
| P2.B2.M.5970.1070 |  | Install Hot Water Heaters / B2 / South / 5970 | 5d | 2025-11-03 A | 2025-11-07 A | P2.B2.M.5970.1410, BP1.220.3.100, P1.B2.03.290, BP1.220.3.110, P2.B2.S.1120 | 100% |  |  |
| P2.B2.M.5970.1510 |  | Pressure Test Systems (High Purity Water) / B2 / South / 5970 | 5d | 2025-11-03 A | 2025-11-07 A | P2.B2.M.5970.1500 | 100% |  |  |
| FRG.P2.B2.M.5970.2100 |  | Temp Heat - Prep for Flush / B2 / South / 5970 - FRAGNET | 1d | 2025-11-10 A | 2025-11-14 A | FRG.P2.B2.M.5970.1050 | 100% |  |  |
| FRG.P2.B2.M.5970.1030 |  | Glycol Spool Delivery / B2 / South / 5970 - FRAGNET | 0d | 2025-12-01 | 2025-12-01 | P2.B2.M.5970.1030 |  | 22d | finish on or after 2025-10-21 |
| FRG.P2.B2.M.5970.1060 |  | Install Glycol Spool / B2 / South / 5970 - FRAGNET | 20d | 2025-12-01 | 2025-12-29 | FRG.P2.B2.M.5970.1030 |  | 22d |  |
| FRG.P2.B2.M.5970.1150 |  | Install CHW & PCHW System Spools / B2 / South / 5970 - FRAGNET | 20d | 2025-12-01 | 2025-12-29 | FRG.P2.B2.M.5970.1120, FRG.P2.B2.M.5970.1140 |  | 9d |  |
| P2.B2.M.5970.1000 |  | BAS Equipment Install / B2 / South / 5970 | 5d | 2025-12-01 | 2025-12-05 | BP1.250.3.110, P2.B2.M.5970.1090 |  | 124d |  |
| P2.B2.M.5970.1270 |  | Lighting Install / B2 / South / 5970 | 5d | 2025-12-01 | 2025-12-05 | P2.B2.M.5970.1390 |  | 62d |  |
| P2.B2.M.5970.1310 |  | Electrical Tie in to Equipment / B2 / South / 5970 | 5d | 2025-12-01 | 2025-12-05 | P2.B2.M.5970.1090, P2.B2.M.5970.1040 |  | 129d |  |
| P2.B2.M.5970.1010 |  | Control Wiring to Equipment / B2 / South / 5970 | 5d | 2025-12-08 | 2025-12-12 | P2.B2.M.5970.1000, P2.B2.M.5970.1090 |  | 124d |  |
| P2.B2.M.5970.1280 |  | Fire Alarm/Ceiling Device Install / B2 / South / 5970 | 5d | 2025-12-08 | 2025-12-12 | P2.B2.M.5970.1270 |  | 62d |  |
| P2.B2.M.5970.1020 |  | Install Chilled Water Pump Skid / B2 / South / 5970 | 5d | 2025-12-22 | 2025-12-29 | P2.B2.M.5970.1410, P1.B2.03.290, BP1.224.3.940, P2.B2.S.1120, P2.B2.M.5970.1430, FRG.P2.B2.M.5970.2100 |  | 4d |  |
| FRG.P2.B2.M.5970.1100 |  | Install Glycol Spool / B2 / South / 5970 - FRAGNET | 20d | 2025-12-30 | 2026-01-27 | FRG.P2.B2.M.5970.1060 |  | 22d |  |
| FRG.P2.B2.M.5970.1160 |  | Install CHW & PCHW System Spools / B2 / South / 5970 - FRAGNET | 20d | 2025-12-30 | 2026-01-27 | FRG.P2.B2.M.5970.1150 |  | 19d |  |
| P2.B2.M.5970.1110 |  | Pressure Test Systems / B2 / South / 5970 | 5d | 2025-12-30 | 2026-01-06 | P2.B2.M.5970.1090, P2.B2.M.5970.1130, P2.B2.M.5970.1020 |  | 4d |  |
| P2.B2.M.5970.2160 |  | Install Domestic Water Softener / B2 / South / 5970 | 5d | 2025-12-31 | 2026-01-08 | BP1.223.3.100 |  | 165d |  |
| P2.B2.M.5970.2170 |  | Install Piping for Domestic Water Softener / B2 / South / 5970 | 5d | 2026-01-08 | 2026-01-15 | P2.B2.M.5970.2160 |  | 165d |  |
| P2.B2.M.5970.2180 |  | Install Wiring for Domestic Water Softener / B2 / South / 5970 | 5d | 2026-01-15 | 2026-01-22 | P2.B2.M.5970.2170 |  | 165d |  |
| FRG.P2.B2.M.5970.1110 |  | Install Glycol Spool / B2 / South / 5970 - FRAGNET | 12d | 2026-01-28 | 2026-02-12 | FRG.P2.B2.M.5970.1100 |  | 22d |  |
| FRG.P2.B2.M.5970.1170 |  | Install CHW & PCHW System Spools/ B2 / South / 5970 - FRAGNET | 10d | 2026-01-28 | 2026-02-10 | FRG.P2.B2.M.5970.1160 |  | 19d |  |
| FRG.P2.B2.M.5970.2090 |  | AHU Piping Install / B2 - FRAGNET | 20d | 2026-01-28 | 2026-02-24 | FRG.P2.L7.SMT.1050 |  | 129d |  |
| P2.B2.N.1560 |  | Trades Inspect & Verify R/I Work Completed to Specs / B2 / South / 5970 | 5d | 2026-02-11 | 2026-02-17 | P2.B2.M.5970.2150, P2.B2.M.5970.1110, P2.B2.M.5970.1270, P2.B2.M.5970.1280, P2.B2.M.5970.1130, FRG.P2.B2.M.5970.1020, FRG.P2.B2.M.5970.1170 |  | 22d |  |
| FRG.P2.B2.M.5970.1070 |  | PH Glycol & CHW/PCHW - Prep for Flushing / B2 / South / 5970 - FRAGNET | 12d | 2026-02-13 | 2026-03-02 | FRG.P2.B2.M.5970.1050, FRG.P2.B2.M.5970.1170, FRG.P2.B2.M.5970.1110 |  | 40d |  |
| P2.B2.M.5970.1490 |  | OH Mechanical Piping Install (Humidification) / B2 / South / 5970 | 20d | 2026-02-13 | 2026-03-12 | P2.B2.M.5970.1480, FRG.P2.B2.M.5970.1110 |  | 105d |  |
| P2.B2.M.5970.1290 |  | Prep Floor for Flooring - Epoxy Floors / B2 / South / 5970 | 5d | 2026-02-18 | 2026-02-24 | P2.B2.M.5970.1210, BP7.096.3.200, P2.B2.N.1560 |  | 22d |  |
| P2.B2.M.5970.1300 |  | Flooring - Epoxy Floors / B2 / South / 5970 | 2d | 2026-02-25 | 2026-02-26 | P2.B2.M.5970.1290 |  | 22d |  |
| FRG.P2.B2.M.5970.1080 |  | PH Glycol & CHW/PCHW - System Install / B2 / South / 5970 - FRAGNET | 15d | 2026-03-03 | 2026-03-23 | FRG.P2.B2.M.5970.1070 |  | 40d |  |
| P2.B2.M.5970.2190 |  | Preasure Test Clean Steam (Humidification) / B2 / South / 5970 | 5d | 2026-03-13 | 2026-03-19 | P2.B2.M.5970.1490 |  | 105d |  |
| P2.B2.M.5970.1420 |  | Hydraulic Lift Installation / B2 / South / 5970 | 10d | 2026-03-19 | 2026-04-01 | BP9.111.3.110, P2.B2.S.1470, P2.B2.M.5970.1300 |  | 8d |  |
| P2.B2.M.5970.2200 |  | Flush Clean Steam (Humidification) / B2 / South / 5970 | 20d | 2026-03-20 | 2026-04-16 | P2.B2.M.5970.2190 |  | 105d |  |
| FRG.P2.B2.M.5970.1090 |  | PH Glycol & CHW/PCHW - Fill & flush/ B2 / South / 5970 - FRAGNET | 15d | 2026-03-24 | 2026-04-13 | FRG.P2.B2.M.5970.1080 |  | 40d |  |
| P2.B2.M.5970 |  | Overhead Coiling Door Install / B2 / South / 5970 | 5d | 2026-04-02 | 2026-04-08 | BP8.083.3.100, P2.B2.S.1470, P2.B2.M.5970.1420 |  | 8d |  |
| P2.B2.M.5970.1120 |  | Insulate / B2 / South / 5970 | 5d | 2026-04-14 | 2026-04-20 | P2.B2.M.5970.1130, P2.B2.M.5970.1110, FRG.P2.B2.M.5970.1090 |  | 83d |  |
| P2.B2.M.5970.1320 |  | Ready for Start Up - Mech Equip / B2 / South / 5970 | 5d | 2026-04-14 | 2026-04-20 | P2.B2.M.5970.1010, P2.B2.M.5970.1310, FRG.P2.B2.M.5970.1090 |  | 40d |  |
|  | 2 | **Mechanical B2-5985 (Z1)** |  | 2024-11-05 | 2026-02-05 |  |  |  |  |
| P2.B2.M.5985.1310 |  | OH Mechanical Piping Install / B2 / South / 5985 | 15d | 2024-11-05 A | 2025-04-01 A | P2.B2.M.5985.1300 FF+5d | 100% |  |  |
| P2.B2.M.5985.1110 |  | Layout - All Trades / B2 / South / 5985 | 5d | 2024-11-08 A | 2024-11-08 A | P2.B2.M.5970.1140 | 100% |  |  |
| P2.B2.M.5985.1120 |  | OH Structural Supports / B2 / South / 5985 | 5d | 2024-11-08 A | 2025-01-23 A | P2.B2.M.5985.1110, P2.BIM.B2.40.140 | 100% |  |  |
| P2.B2.M.5985.1290 |  | OH Fire Suppression Install / B2 / South / 5985 | 5d | 2024-12-10 A | 2024-12-31 A | P2.B2.M.5970.1380 | 100% |  |  |
| P2.B2.M.5985.1340 |  | Paint OH Fire Suppression / B2 / South / 5985 | 2d | 2025-02-10 A | 2025-02-11 A | P2.B2.M.5985.1290 | 100% |  |  |
| P2.B2.M.5985.1300 |  | OH Electrical Install / B2 / South / 5985 | 10d | 2025-02-19 A | 2025-04-11 A | P2.B2.M.5985.1340 | 100% |  |  |
| P2.B2.M.5985.1180 |  | Fire Caulk MEPF Penetrations / B2 / South / 5985 | 5d | 2025-04-03 A | 2025-05-21 A | P2.B2.M.5985.1310, P2.B2.M.5985.1130 | 100% |  |  |
| P2.B2.M.5985.1130 |  | OH Mechanical Ductwork (High) Install / B2 / South / 5985 | 10d | 2025-05-27 A | 2025-09-02 A | P2.B2.M.5970.1160, P2.B2.M.5985.1120 | 100% |  |  |
| P2.B2.M.5985.1060 |  | Piping Spool Pieces & Field Connections / B2 / South / 5985 | 15d | 2025-06-02 A | 2025-06-20 A | P2.B2.M.5985.1020, P2.B2.M.5985.1030 | 100% |  |  |
| P2.B2.M.5985.1100 |  | Riser and Distribution Connections / B2 / South / 5985 | 15d | 2025-06-02 A | 2025-06-20 A | P2.B2.M.5985.1000 | 100% |  |  |
| P2.B2.M.5985.1080 |  | Pressure Test Systems / B2 / South / 5985 | 5d | 2025-07-16 A | 2025-11-19 A | P2.B2.M.5985.1040, P2.B2.M.5985.1060 | 100% |  |  |
| P2.B2.M.5985.1330 |  | Test OH Fire Suppression / B2 / South / 5985 | 5d | 2025-07-18 A | 2025-09-09 A | P2.B2.M.5985.1290 | 100% |  |  |
| P2.B2.M.5985.1320 |  | Insulate High MEP / B2 / South / 5985 | 5d | 2025-10-31 A | 2025-12-05 | P2.B2.M.5985.1310 |  | 24d |  |
| P2.B2.M.5985.1020 |  | Install Domestic Water Heat Exchanger / B2 / South / 5985 | 5d | 2025-11-17 A | 2025-11-24 A | P2.B2.M.5985.1320, P1.B2.03.290, BP1.235.3.100 | 100% |  |  |
| P2.B2.M.5985.1030 |  | Install Backflow Preventer Skids / B2 / South / 5985 | 5d | 2025-11-17 A | 2025-11-21 A | P2.B2.M.5985.1320, P1.B2.03.290, BP1.226.3.140 | 100% |  |  |
| P2.B2.M.5985.1040 |  | Install Booster Pump (BP-1) / B2 / South / 5985 | 5d | 2025-11-17 A | 2025-11-21 A | P2.B2.M.5985.1320, P1.B2.03.290, BP1.220.3.140 | 100% |  |  |
| P2.B2.M.5985.1000 |  | BAS Equipment Install / B2 / South / 5985 | 5d | 2025-12-08 | 2025-12-12 | P2.B2.M.5985.1060 |  | 49d |  |
| P2.B2.M.5985.1280 |  | Electrical Tie in to Equipment / B2 / South / 5985 | 5d | 2025-12-08 | 2025-12-12 | P2.B2.M.5985.1060 |  | 214d |  |
| P2.B2.M.5985.1010 |  | Control Wiring to Equipment / B2 / South / 5985 | 5d | 2025-12-15 | 2025-12-19 | P2.B2.M.5985.1000 |  | 49d |  |
| P2.B2.M.5970.1330 |  | Ready for Start Up - Mech Equip / B2 / South / 5985 | 5d | 2025-12-22 | 2025-12-29 | P2.B2.M.5985.1010 |  | 49d |  |
| P2.B2.M.5985.1090 |  | Insulate/Label / B2 / South / 5985 | 5d | 2025-12-22 | 2025-12-29 | P2.B2.M.5985.1010, P2.B2.M.5985.1180, P2.B2.M.5985.1080, P2.B2.M.5985.1100 |  | 182d |  |
| P2.B2.M.5985.1230 |  | HVAC - GRD's / B2 / South / 5985 | 5d | 2025-12-30 | 2026-01-06 | P2.B2.M.5985.1090 |  | 182d |  |
| P2.B2.M.5985.1240 |  | Lighting Install / B2 / South / 5985 | 5d | 2026-01-07 | 2026-01-13 | P2.B2.M.5985.1230 |  | 182d |  |
| P2.B2.M.5985.1250 |  | Fire Alarm/Ceiling Device Install / B2 / South / 5985 | 5d | 2026-01-14 | 2026-01-20 | P2.B2.M.5985.1240 |  | 182d |  |
| P2.B2.M.5985.1260 |  | Prep Floor for Flooring - Epoxy Floors / B2 / South / 5985 | 5d | 2026-01-21 | 2026-01-27 | P2.B2.M.5985.1250, BP7.096.3.200 |  | 182d |  |

| ID | WBS | Task | Duration | Start | Finish | Predecessors | Complete | Total float |
| --- | --- | --- | --- | --- | --- | --- | --- | --- |
| P2.B2.M.5985.1270 |  | Flooring - Epoxy Floors / B2 / South / 5985 | 2d | 2026-01-28 | 2026-01-29 | P2.B2.M.5985.1260 |  | 182d |
| P2.B2.N.1570 |  | Trades Inspect & Verify R/I Work Completed to Specs / B2 / South / 5985 | 5d | 2026-01-30 | 2026-02-05 | P2.B2.M.5985.1280, P2.B2.M.5985.1270 |  | 182d |
|  | 3 | **Mechanical B2-2910 (Z2)** |  | 2024-11-08 | 2026-01-15 |  |  |  |
| P2.B2.M.2910.1040 |  | Layout - All Trades / B2 / North / 2910 | 5d | 2024-11-08 A | 2024-11-11 A | P2.B2.M.5985.1110 | 100% |  |
| P2.B2.M.2910.1050 |  | OH Structural Supports / B2 / North / 2910 | 5d | 2024-11-22 A | 2025-01-10 A | P2.B2.M.2910.1040, P2.BIM.B2.40.140 | 100% |  |
| P2.B2.M.2910.1060 |  | OH Fire Suppression Install / B2 / North / 2910 | 5d | 2024-11-22 A | 2025-02-04 A | P2.B2.M.2910.1050 SS | 100% |  |
| P2.B2.M.2910.1230 |  | OH Electrical Install / B2 / North / 2910 | 5d | 2025-01-10 A | 2025-04-01 A | P2.B2.M.2910.1270 SS | 100% |  |
| P2.B2.M.2910.1270 |  | Paint OH Fire Suppression Install / B2 / North / 2910 | 2d | 2025-01-21 A | 2025-04-02 A | P2.B2.M.2910.1060 FF | 100% |  |
| P2.B2.M.2910.1240 |  | OH Mechanical Piping Install / B2 / North / 2910 | 15d | 2025-03-10 A | 2025-04-28 A | P2.B2.M.5970.1400, P2.B2.M.2910.1230 FF+14d | 100% |  |
| P2.B2.M.2910.1250 |  | Insulate High MEP / B2 / North / 2910 | 5d | 2025-07-09 A | 2025-07-15 A | P2.B2.M.2910.1240, P2.B2.M.2910.1260 | 100% |  |
| P2.B2.M.2910.1260 |  | Test OH Fire Suppression Install / B2 / North / 2910 | 5d | 2025-07-18 A | 2025-10-24 A | P2.B2.M.2910.1060 FF+1d, P2.B2.M.2910.1270 | 100% |  |
| P2.B2.M.2910.1220 |  | Install Equipment DUCT / B2 / North / 2910 | 10d | 2025-09-02 A | 2025-09-16 A | P2.B2.M.2910.1030 | 100% |  |
| P2.B2.M.2910.1020 |  | Install AHU B2-3 & B2-4 / B2 / North / 2910 | 5d | 2025-09-15 A | 2025-09-19 A | P2.B2.M.2910.1250, BP1.237.3.200, P1.B2.03.290 | 100% |  |
| P2.B2.M.2910.1030 |  | Install RF B2-T1 / B2 / North / 2910 | 5d | 2025-09-22 A | 2025-09-22 A | P2.B2.M.2910.1250, BP1.237.3.100, P1.B2.03.290 | 100% |  |
| P2.B2.M.2910.1000 |  | BAS Equipment Install / B2 / North / 2910 | 5d | 2025-10-01 A | 2025-10-04 A | P2.B2.M.2910.1020 | 100% |  |
| BP1.226.2.190 |  | Install - Waste Water Tanks | 10d | 2025-12-01 | 2025-12-12 | P2.B2.M.2910.1030, BP1.226.2.180 |  | 194d |
| P2.B2.M.2910.1010 |  | Control Wiring to Equipment / B2 / North / 2910 | 5d | 2025-12-01 | 2025-12-05 | P2.B2.M.2910.1000, P2.B2.M.2910.1030 |  | 119d |
| P2.B2.M.2910.1110 |  | Fire Caulk MEPF Penetrations / B2 / North / 2910 | 5d | 2025-12-01 | 2025-12-05 | P2.B2.M.2910.1240 |  | 117d |
| P2.B2.M.2910.1160 |  | HVAC - GRD's / B2 / North / 2910 | 5d | 2025-12-01 | 2025-12-05 | P2.B2.M.2910.1030 |  | 102d |
| P2.B2.M.2910.1210 |  | Electrical Tie in to Equipment / B2 / North / 2910 | 5d | 2025-12-01 | 2025-12-05 | P2.B2.M.2910.1020, P2.B2.M.2910.1030 |  | 119d |
| P2.B2.M.2910.1170 |  | Lighting Install / B2 / North / 2910 | 5d | 2025-12-08 | 2025-12-12 | P2.B2.M.2910.1220, P2.B2.M.2910.1160 |  | 102d |
| P2.B2.M.2910.1180 |  | Fire Alarm/Ceiling Device Install / B2 / North / 2910 | 5d | 2025-12-15 | 2025-12-19 | P2.B2.M.2910.1170 |  | 102d |
| P2.B2.M.2910.1190 |  | Prep Floor for Flooring - Epoxy Floors / B2 / North / 2910 | 5d | 2025-12-22 | 2025-12-29 | P2.B2.M.2910.1180, BP7.096.3.200 |  | 102d |
| P2.B2.M.2910.1200 |  | Flooring - Epoxy Floors / B2 / North / 2910 | 2d | 2025-12-30 | 2025-12-31 | P2.B2.M.2910.1110, P2.B2.M.2910.1190 |  | 102d |
| P2.B2.N.1580 |  | Trades Inspect & Verify R/I Work Completed to Specs / B2 / North / 2910 | 5d | 2026-01-02 | 2026-01-08 | P2.B2.M.2910.1010, P2.B2.M.2910.1210, P2.B2.M.2910.1200 |  | 102d |
| P2.B2.M.5970.1340 |  | Ready for Start Up - Mech Equip / B2 / North / 2910 | 5d | 2026-01-09 | 2026-01-15 | P2.B2.N.1580 |  | 102d |
|  | 4 | **Mechanical B2-2930 (Z2)** |  | 2024-11-15 | 2026-03-24 |  |  |  |
| P2.B2.M.2930.1130 |  | Layout - All Trades / B2 / North / 2930 | 5d | 2024-11-15 A | 2024-11-21 A | P2.B2.M.2910.1040 | 100% |  |
| P2.B2.M.2930.1140 |  | OH Structural Supports / B2 / North / 2930 | 5d | 2025-02-03 A | 2025-02-07 A | P2.B2.M.2930.1130, P2.BIM.B2.40.140 | 100% |  |
| P2.B2.M.2930.1150 |  | OH Fire Suppression Install / B2 / North / 2930 | 5d | 2025-02-10 A | 2025-02-14 A | P2.B2.M.2910.1060, P2.B2.M.2930.1140 | 100% |  |
| P2.B2.M.2930.1350 |  | Paint OH Fire Suppression / B2 / North / 2930 | 2d | 2025-02-24 A | 2025-02-25 A | P2.B2.M.2930.1150 | 100% |  |
| P2.B2.M.2930.1320 |  | OH Mechanical Piping Install / B2 / North / 2930 | 15d | 2025-04-29 A | 2025-09-16 A | P2.B2.M.2910.1240, P2.B2.M.2930.1310 | 100% |  |
| P2.B2.M.2930.1340 |  | Test OH Fire Suppression / B2 / North / 2930 | 5d | 2025-07-18 A | 2025-10-24 A | P2.B2.M.2930.1150, P2.B2.M.5985.1330 SS | 100% |  |
| P2.B2.M.2930.1310 |  | OH Electrical Install / B2 / North / 2930 | 10d | 2025-10-01 A | 2025-10-11 A | P2.B2.M.2930.1350, P2.B2.M.2930.1340 | 100% |  |
| P2.B2.M.2930.1030 |  | Install Med Air Skid / B2 / North / 2930 | 5d | 2025-11-17 A | 2025-11-24 A | P2.B2.M.2930.1330, BP1.226.3.900, P2.HZ.E.51 | 100% |  |
| P2.B2.M.2930.1040 |  | Install WAGD Skid / B2 / North / 2930 | 5d | 2025-11-17 A | 2025-11-24 A | BP1.226.3.100, P1.B2.03.290, P2.B2.M.2930.1330, P2.HZ.E.51 | 100% |  |
| P2.B2.M.2930.1210 |  | Fire Caulk MEPF Penetrations / B2 / North / 2930 | 5d | 2025-12-01 | 2025-12-05 | P2.B2.M.2930.1320 |  | 114d |
| P2.B2.M.2930.1330 |  | Insulate High MEP / B2 / North / 2930 | 5d | 2025-12-01 | 2025-12-05 | P2.B2.M.2930.1320 |  | 54d |
| P2.B2.M.2930.1020 |  | Install Med Vacuum Skid / B2 / North / 2930 | 5d | 2025-12-08 | 2025-12-12 | P1.B2.03.290, P2.B2.M.2930.1330, BP1.226.1.100, P2.HZ.E.51 |  | 74d |
| P2.B2.M.2930.1050 |  | Install MVP Skid / B2 / North / 2930 | 5d | 2025-12-08 | 2025-12-12 | P1.B2.03.290, P2.B2.M.2930.1330, BP1.226.3.900, P2.HZ.E.51 |  | 54d |
| P2.B2.M.2930.1070 |  | Piping Spool Pieces & Field Connections / B2 / North / 2930 | 15d | 2025-12-15 | 2026-01-06 | P2.B2.M.2930.1050 |  | 54d |
| P2.B2.M.2930.1090 |  | Pressure Test Systems / B2 / North / 2930 | 5d | 2026-01-07 | 2026-01-13 | P2.B2.M.2930.1070 |  | 54d |
| P2.B2.M.2930.1000 |  | BAS Equipment Install / B2 / North / 2930 | 5d | 2026-01-14 | 2026-01-20 | P2.B2.M.2930.1030, P2.B2.M.2930.1040, P2.B2.M.2930.1020, P2.B2.M.2930.1090 |  | 54d |
| P2.B2.M.2930.1120 |  | Electrical Tie in to Equipment / B2 / North / 2930 | 5d | 2026-01-14 | 2026-01-20 | P2.B2.M.2930.1030, P2.B2.M.2930.1040, P2.B2.M.2930.1020, P2.B2.M.2930.1090 |  | 89d |
| P2.B2.M.2930.1010 |  | Control Wiring to Equipment / B2 / North / 2930 | 5d | 2026-01-21 | 2026-01-27 | P2.B2.M.2930.1000 |  | 84d |
| P2.B2.M.2930.1110 |  | Risers and Distribution Connections / B2 / North / 2930 | 5d | 2026-01-21 | 2026-01-27 | P2.B2.M.2930.1000 |  | 54d |
| P2.B2.M.2930.1100 |  | Insulate / B2 / North / 2930 | 5d | 2026-01-28 | 2026-02-03 | P2.B2.M.2930.1110 |  | 54d |
| P2.B2.M.2930.1250 |  | Paint Walls / B2 / North / 2930 | 5d | 2026-02-04 | 2026-02-10 | P2.B2.M.2930.1100 |  | 54d |
| P2.B2.M.2930.1260 |  | HVAC - GRD's / B2 / North / 2930 | 5d | 2026-02-11 | 2026-02-17 | P2.B2.M.2930.1250 |  | 54d |
| P2.B2.M.2930.1270 |  | Lighting Install / B2 / North / 2930 | 5d | 2026-02-18 | 2026-02-24 | P2.B2.M.2930.1260 |  | 54d |
| P2.B2.M.2930.1280 |  | Fire Alarm/Ceiling Device Install / B2 / North / 2930 | 5d | 2026-02-25 | 2026-03-03 | P2.B2.M.2930.1270 |  | 54d |
| P2.B2.M.2930.1290 |  | Prep Floor for Flooring - Epoxy Floors / B2 / North / 2930 | 3d | 2026-03-04 | 2026-03-06 | P2.B2.M.2930.1280, P2.B2.M.2930.1210, BP7.096.3.200 |  | 54d |
| P2.B2.M.2930.1300 |  | Flooring - Epoxy Floors / B2 / North / 2930 | 2d | 2026-03-09 | 2026-03-10 | P2.B2.M.2930.1290 |  | 54d |
| P2.B2.N.1590 |  | Trades Inspect & Verify R/I Work Completed to Specs / B2 / North / 2930 | 5d | 2026-03-11 | 2026-03-17 | P2.B2.M.2930.1120, P2.B2.M.2930.1010, P2.B2.M.2930.1300 |  | 54d |
| P2.B2.M.5970.1350 |  | Ready for Start Up - Mech Equip / B2 / North / 2930 | 5d | 2026-03-18 | 2026-03-24 | P2.B2.N.1590 |  | 54d |
|  | 6 | **Mechanical B2-2801 (Z3)** |  | 2024-11-22 | 2026-03-31 |  |  |  |
| P2.B2.M.2801.1040 |  | Layout - All Trades / B2 / North / 2801 | 4d | 2024-11-22 A | 2024-11-27 A | P2.B2.M.2930.1130 | 100% |  |
| P2.B2.M.2801.1050 |  | OH Structural Supports / B2 / North / 2801 | 5d | 2025-01-09 A | 2025-03-03 A | P2.B2.M.2801.1040, P2.BIM.B2.40.140 | 100% |  |
| P2.B2.M.2801.1220 |  | OH Fire Suppression Install / B2 / North / 2801 | 5d | 2025-01-09 A | 2025-03-03 A | P2.B2.M.5985.1290, P2.B2.M.2801.1050 FF | 100% |  |
| P2.B2.M.2801.1060 |  | OH Plumbing Install / B2 / North / 2801 | 10d | 2025-01-25 A | 2025-04-30 A | P2.B2.M.2801.1050 | 100% |  |
| P2.B2.M.2801.1280 |  | Paint OH Fire Suppression / B2 / North / 2801 | 2d | 2025-04-21 A | 2025-04-30 A | P2.B2.M.2801.1220 | 100% |  |
| P2.B2.M.2801.1230 |  | OH Electrical Install / B2 / North / 2801 | 5d | 2025-05-08 A | 2025-06-10 A | P2.B2.M.2801.1270 | 100% |  |
| P2.B2.M.2801.1290 |  | OH Chilled Water Install / B2 / North / 2801 | 20d | 2025-06-15 A | 2025-09-24 A | P2.B2.M.2801.1230, P2.B2.M.2801.1060 | 100% |  |
| P2.B2.M.2801.1300 |  | OH Glycol Install / B2 / North / 2801 | 20d | 2025-07-30 A | 2025-09-24 A | P2.B2.M.2801.1290 | 100% |  |
| FRG.P2.B2.M.2801.1000 |  | Delivery and Staging - CHW/PCHW System / B2 / North / 2801 - FRAGNET | 20d | 2025-08-01 A | 2025-08-29 A | P2.B2.M.2801.1060 | 100% |  |
| FRG.P2.B2.M.2801.1010 |  | Delivery and Staging - RH Glycol Preheat System / B2 / North / 2801 - FRAGNET | 20d | 2025-08-01 A | 2025-09-03 A | P2.B2.M.2801.1060 | 100% |  |
| P2.B2.M.2801.1020 |  | Install AHU B2-1 & B2-2 / B2 / North / 2801 | 5d | 2025-09-01 A | 2025-09-18 A | P1.B2.03.290, BP1.233.3.110 | 100% |  |
| FRG.P2.B2.M.2801.1020 |  | Install Hangers - CHW/PCHW System / B2 / North / 2801 - FRAGNET | 20d | 2025-09-02 A | 2025-09-29 A | FRG.P2.B2.M.2801.1000 | 100% |  |
| FRG.P2.B2.M.2801.1030 |  | Install Hangers - RH Glycol Preheat System / B2 / North / 2801 - FRAGNET | 20d | 2025-09-04 A | 2025-11-18 A | FRG.P2.B2.M.2801.1010 | 100% |  |
| FRG.P2.B2.M.2801.1040 |  | Install Piping - CHW/PCHW System / B2 / North / 2801 - FRAGNET | 20d | 2025-09-30 A | 2025-12-05 | FRG.P2.B2.M.2801.1020 | 75% | 22d |

| ID | WBS | Task | Duration | Start | Finish | Predecessors | Complete | Total float | Constraint |
| --- | --- | --- | --- | --- | --- | --- | --- | --- | --- |
| FRG.P2.B2.M.2801.1080 |  | Staging & Install - MRI Cooling System / B2 / North / 2801 - FRAGNET | 20d | 2025-11-03 A | 2025-12-02 A | FRG.P2.B2.M.2801.1090 | 100% |  |  |
| FRG.P2.B2.M.2801.1090 |  | Delivery- MRI Cooling System / B2 / North / 2801 - FRAGNET | 0d | 2025-11-03 A | 2025-11-03 A | P2.B2.M.2801.1060 FF | 100% |  | finish on or after 2025-10-10 |
| FRG.P2.B2.M.2801.1070 |  | Install Hangers - Steam/Condensate System / B2 / North / 2801 - FRAGNET | 5d | 2025-11-10 A | 2025-11-14 A | FRG.P2.B2.M.2801.1060 | 100% |  |  |
| P2.B2.M.2801.1310 |  | OH Humidification Install / B2 / North / 2801 | 20d | 2025-11-10 A | 2026-01-06 | P2.B2.M.2801.1300 |  | 69d |  |
| FRG.P2.B2.M.2801.1050 |  | Delivery- Steam/Condensate System Spools / B2 / North / 2801 - FRAGNET | 0d | 2025-12-01 | 2025-12-01 | P2.B2.M.2801.1060 FF |  | 89d | finish on or after 2025-10-02 |
| FRG.P2.B2.M.2801.1060 |  | Staging - Steam/Condensate System / B2 / North / 2801 - FRAGNET | 5d | 2025-12-01 | 2025-12-05 | FRG.P2.B2.M.2801.1050 |  | 89d |  |
| FRG.P2.B2.M.2801.1120 |  | Install - MRI Cooling System / B2 / North / 2801 - FRAGNET | 20d | 2025-12-01 | 2025-12-29 | FRG.P2.B2.M.2801.1080 |  | 77d |  |
| P2.B2.M.2801.1000 |  | BAS Equipment Install / B2 / North / 2801 | 5d | 2025-12-01 | 2025-12-05 | P2.B2.M.2801.1020 |  | 82d |  |
| P2.B2.M.2801.1270 |  | Test OH Fire Suppression / B2 / North / 2801 | 5d | 2025-12-01 | 2025-12-05 | P2.B2.M.2801.1220, P2.B2.M.2801.1280 |  | 69d |  |
| FRG.P2.B2.M.2801.1100 |  | Install Piping - Steam/Condensate System / B2 / North / 2801 - FRAGNET | 20d | 2025-12-08 | 2026-01-06 | FRG.P2.B2.M.2801.1070 |  | 89d |  |
| FRG.P2.B2.M.2801.1110 |  | Weld Piping - CHW/PCHW System / B2 / North / 2801 - FRAGNET | 20d | 2025-12-08 | 2026-01-06 | FRG.P2.B2.M.2801.1040 |  | 22d |  |
| P2.B2.M.2801.1010 |  | Control Wiring to Equipment / B2 / North / 2801 | 5d | 2025-12-08 | 2025-12-12 | P2.B2.M.2801.1000 |  | 82d |  |
| P2.B2.M.2801.1260 |  | Insulate/Label / B2 / North / 2801 | 10d | 2025-12-15 | 2025-12-29 | P2.B2.M.2801.1010 |  | 82d |  |
| FRG.P2.B2.M.2801.1150 |  | Final Connections - MRI Cooling System / B2 / North / 2801 - FRAGNET | 8d | 2025-12-30 | 2026-01-09 | FRG.P2.B2.M.2801.1120 |  | 77d |  |
| P2.B2.M.2801.1160 |  | Paint Walls / B2 / North / 2801 | 5d | 2025-12-30 | 2026-01-06 | P2.B2.M.2801.1260 |  | 82d |  |
| FRG.P2.B2.M.2801.1130 |  | Weld Piping - Steam/Condensate System / B2 / North / 2801 - FRAGNET | 15d | 2026-01-07 | 2026-01-27 | FRG.P2.B2.M.2801.1100 |  | 89d |  |
| FRG.P2.B2.M.2801.1140 |  | Remaining Weld - CHW/PCHW System / B2 / North / 2801 - FRAGNET | 20d | 2026-01-07 | 2026-02-03 | FRG.P2.B2.M.2801.1110 |  | 22d |  |
| P2.B2.M.2801.1170 |  | HVAC - GRD's / B2 / North / 2801 | 5d | 2026-01-07 | 2026-01-13 | P2.B2.M.2801.1160 |  | 82d |  |
| P2.B2.M.2801.1240 |  | OH Steam Install / B2 / North / 2801 | 20d | 2026-01-07 | 2026-02-03 | P2.B2.M.2801.1310 |  | 69d |  |
| FRG.P2.B2.M.2801.1160 |  | Install Remaining - Glycol Preheat / B2 / North / 2801 - FRAGNET | 20d | 2026-01-12 | 2026-02-06 | FRG.P2.B2.M.2801.1150 |  | 77d |  |
| P2.B2.M.2801.1180 |  | Lighting Install / B2 / North / 2801 | 5d | 2026-01-14 | 2026-01-20 | P2.B2.M.2801.1170 |  | 82d |  |
| P2.B2.M.2801.1190 |  | Fire Alarm/Ceiling Device Install / B2 / North / 2801 | 5d | 2026-01-21 | 2026-01-27 | P2.B2.M.2801.1180 |  | 82d |  |
| FRG.P2.B2.M.2801.1170 |  | Final Connections - CHW/PCHW System/ B2 / North / 2801 - FRAGNET | 20d | 2026-02-04 | 2026-03-03 | FRG.P2.B2.M.2801.1140 |  | 22d |  |
| P2.B2.M.2801.1120 |  | Fire Caulk MEPF Penetrations / B2 / North / 2801 | 5d | 2026-02-04 | 2026-02-10 | P2.B2.M.2801.1240, P2.B2.M.2801.1270 |  | 72d |  |
| P2.B2.M.2801.1250 |  | Insulate High MEP / B2 / North / 2801 | 10d | 2026-02-04 | 2026-02-17 | P2.B2.M.2801.1240 |  | 69d |  |
| FRG.P2.B2.M.2801.1180 |  | Inspection - Glycol Preheat / B2 / North / 2801 - FRAGNET | 4d | 2026-02-09 | 2026-02-12 | FRG.P2.B2.M.2801.1160 |  | 77d |  |
| P2.B2.M.2801.1200 |  | Prep Floor for Flooring - Epoxy Floors / B2 / North / 2801 | 5d | 2026-02-11 | 2026-02-17 | P2.B2.M.2801.1190, P2.B2.M.2801.1120, BP7.096.3.200 |  | 72d |  |
| P2.B2.M.2801.1030 |  | Electrical Tie in to Equipment / B2 / North / 2801 | 5d | 2026-02-18 | 2026-02-24 | P2.B2.M.2801.1000, P2.B2.M.2801.1250 |  | 69d |  |
| P2.B2.M.2801.1210 |  | Flooring - Epoxy Floors / B2 / North / 2801 | 2d | 2026-02-18 | 2026-02-19 | P2.B2.M.2801.1200 |  | 72d |  |
| FRG.P2.B2.M.2801.1190 |  | Inspection - CHW/PCHW System / B2 / North / 2801 - FRAGNET | 10d | 2026-03-04 | 2026-03-17 | FRG.P2.B2.M.2801.1170 |  | 54d |  |
| P2.B2.N.1600 |  | Trades Inspect & Verify R/I Work Completed to Specs / B2 / North / 2801 | 5d | 2026-03-18 | 2026-03-24 | P2.B2.M.2801.1210, P2.B2.M.2801.1030, FRG.P2.B2.M.2801.1190, FRG.P2.B2.M.2801.1180, FRG.P2.B2.M.2801.1130, FRG.P2.B2.M.2801.1030 |  | 54d |  |
| P2.B2.M.5970.1360 |  | Ready for Start Up - Mech Equip / B2 / North / 2801 | 5d | 2026-03-25 | 2026-03-31 | P2.B2.N.1600 |  | 54d |  |
|  | 5 | **Mechanical B2.2803 (Z3)** |  | 2025-01-15 | 2026-05-14 |  |  |  |  |
| P2.B2.M.2803.1130 |  | Layout - All Trades / B2 / North / 2803 | 5d | 2025-01-15 A | 2025-02-07 A | P2.B2.M.2801.1040 | 100% |  |  |
| P2.B2.M.2803.1140 |  | OH Structural Supports / B2 / North / 2803 | 5d | 2025-01-15 A | 2025-02-07 A | P2.BIM.B2.40.140, P2.B2.M.2803.1130 SS | 100% |  |  |
| P2.B2.M.2803.1150 |  | OH Plumbing Install / B2 / North / 2803 | 10d | 2025-01-23 A | 2025-02-17 A | P2.B2.M.2803.1140 FF+1d | 100% |  |  |
| P2.B2.M.2803.1310 |  | OH Fire Suppression Install / B2 / North / 2803 | 5d | 2025-02-18 A | 2025-02-24 A | P2.B2.M.2803.1150, P2.B2.M.2801.1220 | 100% |  |  |
| P2.B2.M.2803.1370 |  | OH Process Chilled Install / B2 / North / 2803 | 20d | 2025-03-31 A | 2025-04-30 A | P2.B2.M.2803.1310 | 100% |  |  |
| P2.B2.M.2803.1360 |  | Paint OH Fire Suppression / B2 / North / 2803 | 2d | 2025-04-21 A | 2025-04-30 A | P2.B2.M.2803.1310 | 100% |  |  |
| P2.B2.M.2803.1380 |  | OH MRI Chilled Install / B2 / North / 2803 | 20d | 2025-05-01 A | 2025-05-29 A | P2.B2.M.2803.1370 | 100% |  |  |
| P2.B2.M.2803.1320 |  | OH Electrical Install / B2 / North / 2803 | 20d | 2025-05-08 A | 2025-05-29 A | P2.ETV.1010 FF | 100% |  |  |
| P2.B2.M.2803.1330 |  | OH Steam Install / B2 / North / 2803 | 20d | 2025-07-15 A | 2025-09-08 A | P2.B2.M.2803.1380, P2.B2.M.2803.1320 | 100% |  |  |
| P2.B2.M.2803.1400 |  | OH GMP Glycol Install / B2 / North / 2803 | 20d | 2025-07-15 A | 2025-09-22 A | P2.B2.M.2803.1330 | 100% |  |  |
| P2.B2.M.2803.1350 |  | Test OH Fire Suppression / B2 / North / 2803 | 5d | 2025-12-01 | 2025-12-05 | P2.B2.M.2803.1310, P2.B2.M.2803.1360 |  | 94d |  |
| P2.B2.M.2803.1390 |  | OH GMP Reheat Install / B2 / North / 2803 | 20d | 2025-12-01 | 2025-12-29 | P2.B2.M.2803.1400 |  | 62d |  |
| P2.B2.M.2803.1210 |  | Fire Caulk MEPF Penetrations / B2 / North / 2803 | 5d | 2025-12-30 | 2026-01-06 | P2.B2.M.2803.1390 |  | 102d |  |
| P2.B2.M.2803.1340 |  | Insulate High MEP / B2 / North / 2803 | 5d | 2025-12-30 | 2026-01-06 | P2.B2.M.2803.1390 |  | 62d |  |
| P2.B2.M.2803.1030 |  | Install GMP Reheat Skid | 5d | 2026-01-07 | 2026-01-13 | P1.B2.03.290, BP1.224.3.940, BP1.235.3.100, P2.B2.M.2803.1340 |  | 62d |  |
| P2.B2.M.2803.1040 |  | Install MRI Cooling Skid / B2 / North / 2803 | 5d | 2026-01-07 | 2026-01-13 | P1.B2.03.290, BP1.224.3.940, P2.B2.M.2803.1340 |  | 94d |  |
| P2.B2.M.2803.1050 |  | Install Process Cooling Skid / B2 / North / 2803 | 5d | 2026-01-07 | 2026-01-13 | P1.B2.03.290, BP1.224.3.940, P2.B2.M.2803.1340 |  | 69d |  |
| P2.B2.M.2803.1090 |  | Pressure Test Systems / B2 / North / 2803 | 5d | 2026-01-14 | 2026-01-20 | P2.B2.M.2803.1050, P2.B2.M.2803.1350 |  | 69d |  |
| P2.B2.M.2803.1020 |  | Install GMP Preheat Skid | 5d | 2026-03-04 | 2026-03-10 | P1.B2.03.290, BP1.224.3.940, BP1.235.3.100, P2.B2.M.2803.1340, FRG.P2.B2.M.2801.1170 |  | 22d |  |
| P2.B2.M.2803.1000 |  | BAS Equipment Install / B2 / North / 2803 | 5d | 2026-03-11 | 2026-03-17 | P2.B2.M.2803.1020, P2.B2.M.2803.1030 |  | 22d |  |
| P2.B2.M.2803.1110 |  | Risers and Distribution Connections / B2 / North / 2803 | 20d | 2026-03-11 | 2026-04-07 | P2.B2.M.2803.1090, CX.B2.SP.1000 |  | 34d |  |
| P2.B2.M.2803.1120 |  | Electrical Tie in to Equipment / B2 / North / 2803 | 5d | 2026-03-11 | 2026-03-17 | P2.B2.M.2803.1050, P2.B2.M.2803.1020, P2.B2.M.2803.1030, P2.B2.M.2803.1040 |  | 54d |  |
| P2.B2.M.2803.1010 |  | Control Wiring to Equipment / B2 / North / 2803 | 5d | 2026-03-18 | 2026-03-24 | P2.B2.M.2803.1000 |  | 22d |  |
| P2.B2.M.2803.1250 |  | Paint Walls / B2 / North / 2803 | 5d | 2026-03-25 | 2026-03-31 | P2.B2.M.2803.1010 |  | 22d |  |
| P2.B2.M.2803.1260 |  | HVAC - GRD's / B2 / North / 2803 | 5d | 2026-04-01 | 2026-04-07 | P2.B2.M.2803.1250 |  | 22d |  |
| P2.B2.M.2803.1100 |  | Insulate / B2 / North / 2803 | 5d | 2026-04-08 | 2026-04-14 | P2.B2.M.2803.1110 |  | 34d |  |
| P2.B2.M.2803.1270 |  | Lighting Install / B2 / North / 2803 | 5d | 2026-04-08 | 2026-04-14 | P2.B2.M.2803.1260 |  | 22d |  |
| P2.B2.M.2803.1280 |  | Fire Alarm/Ceiling Device Install / B2 / North / 2803 | 5d | 2026-04-15 | 2026-04-21 | P2.B2.M.2803.1270 |  | 22d |  |
| P2.B2.M.2803.1290 |  | Prep Floor for Flooring - Epoxy Floors / B2 / North / 2803 | 5d | 2026-04-22 | 2026-04-28 | P2.B2.M.2803.1280, BP7.096.3.200 |  | 22d |  |
| P2.B2.M.2803.1300 |  | Flooring - Epoxy Floors / B2 / North / 2803 | 2d | 2026-04-29 | 2026-04-30 | P2.B2.M.2803.1210, P2.B2.M.2803.1290 |  | 22d |  |
| P2.B2.N.1610 |  | Trades Inspect & Verify R/I Work Completed to Specs / B2 / North / 2930 | 5d | 2026-05-01 | 2026-05-07 | P2.B2.M.2803.1300, P2.B2.M.2803.1100, P2.B2.M.2803.1120 |  | 22d |  |
| P2.B2.M.5970.1370 |  | Ready for Start Up - Mech Equip / B2 / North / 2803 | 5d | 2026-05-08 | 2026-05-14 | P2.B2.N.1610 |  | 22d |  |
|  | 5 | **IT Closets / Level B2/B1** |  | 2025-03-20 | 2026-05-14 |  |  |  |  |
|  | 1 | **IT Closet / B2-2806** |  | 2025-03-20 | 2026-05-14 |  |  |  |  |
| P2.B2.IT.2806.110 |  | Paint Prime & 1st Coat / B2 / North / 2806 | 2d | 2025-03-20 A | 2025-04-03 A | P2.B2.M.2803.1130 | 100% |  |  |
| P2.B2.IT.2806.100 |  | Hang Plywood Backboards / B2 / North / 2806 | 2d | 2025-09-24 A | 2025-09-29 A | P2.B2.N.1140 | 100% |  |  |
| P2.B2.IT.2806.120 |  | Electrical Panels / Conduit Connections / Wire Terminations / B2 / North / 2806 | 5d | 2025-12-01 | 2025-12-05 | P2.B2.IT.2806.110, P2.B2.HE.5995.1030 FF |  | 133d |  |

| ID | WBS | Task | Duration | Start | Finish | Predecessors | Complete | Total float |
| --- | --- | --- | --- | --- | --- | --- | --- | --- |
| P2.B2.IT.2806.130 |  | HVAC Equipment / B2 / North / 2806 | 5d | 2025-12-01 | 2025-12-05 | P2.B2.IT.2806.110, P2.B2.N.1300 |  | 133d |
| P2.B2.IT.2806.140 |  | Trim all MEPF / B2 / North / 2806 | 2d | 2025-12-08 | 2025-12-09 | BP1.233.3.410, P2.B2.IT.2806.130, P2.B2.IT.2806.120 |  | 133d |
| P2.B2.IT.2806.150 |  | Flooring / B2 / North / 2806 | 5d | 2025-12-10 | 2025-12-16 | P2.B2.IT.2806.140 |  | 133d |
| P2.B2.IT.2806.180 |  | Grounding and Bonding / B2 / North / 2806 | 2d | 2025-12-17 | 2025-12-18 | BP1.260.3.180, P2.B2.IT.2806.150 |  | 133d |
| P2.B2.IT.2806.170 |  | OH Cable Tray / B2 / North / 2806 | 5d | 2026-03-25 | 2026-03-31 | P2.B2.N.1390, P2.B2.S.1390, P2.B2.LC.1510 |  | 62d |
| P2.B2.IT.2806.260 |  | Room Ready - CIT / B2 / North / 2806 | 5d | 2026-04-01 | 2026-04-07 | P2.B2.IT.2806.150, P2.B2.IT.2806.170, P2.B2.IT.2806.180 |  | 62d |
| P2.B2.IT.2806.160 |  | Equipment Racks and Ladders / B2 / North / 2806 | 5d | 2026-04-08 | 2026-04-14 | P2.B2.IT.2806.150, BP1.270.3.120, P2.B2.IT.2806.260 |  | 62d |
| P2.B2.IT.2806.190 |  | Pull Wire - Backbone Cabling Into Racks / B2 / North / 2806 | 5d | 2026-04-15 | 2026-04-21 | P2.B2.IT.2806.160, P2.B2.IT.2806.260 |  | 62d |
| P2.B2.IT.2806.200 |  | Pull Wire - Horizontal Cabling Out to Termination Points / B2 / North / 2806 | 5d | 2026-04-15 | 2026-04-21 | P2.B2.IT.2806.160, P2.B2.IT.2806.260 |  | 62d |
| P2.B2.IT.2806.210 |  | Paint - Finish Coat / B2 / North / 2806 | 2d | 2026-04-22 | 2026-04-23 | P2.B2.IT.2806.190, P2.B2.IT.2806.200 |  | 62d |
| P2.B2.IT.2806.220 |  | Terminations and Punch Downs - All Cabling / B2 / North / 2806 | 15d | 2026-04-24 | 2026-05-14 | P2.B2.IT.2806.210, P2.B2.IT.2806.160, P2.B2.IT.2806.260 |  | 62d |
| P2.B2.IT.2806.230 |  | Doors & Hardware / B2 / North / 2806 | 2d | 2026-04-24 | 2026-04-27 | P2.B2.IT.2806.210 |  | 72d |
| P2.B2.IT.2806.240 |  | Energize Elec Panels Serving Comms Racks / B2 / North / 2806 | 3d | 2026-04-28 | 2026-04-30 | P2.B2.HE.5995.1100, P2.B2.IT.2806.230, CX.B2.SWGR.1010, CX.B2.MVEE.1010 |  | 72d |
| P2.B2.IT.2806.250 |  | Comms Racks In Service / B2 / North / 2806 | 0d | 2026-05-14 | 2026-05-14 | P2.B2.IT.2806.240, P2.B2.IT.2806.220 |  | 62d |
|  | 3 | **IT Closet / B2-2903** |  | 2025-09-24 | 2026-05-07 |  |  |  |
| P2.B2.IT.2903.100 |  | Hang Plywood Backboards / B2 / North / 2903 | 2d | 2025-09-24 A | 2025-09-29 A | P2.B2.S.1140 | 100% |  |
| P2.B2.IT.2903.110 |  | Paint Prime & 1st Coat / B2 / North / 2903 | 2d | 2025-09-29 A | 2025-09-30 A | P2.B2.IT.2903.100 | 100% |  |
| P2.B2.IT.2903.120 |  | Electrical Panels / Conduit Connections / Wire Terminations / B2 / North / 2903 | 5d | 2025-12-01 | 2025-12-05 | P2.B2.IT.2903.110, P2.B2.HE.5920.1030 FF |  | 138d |
| P2.B2.IT.2903.130 |  | HVAC Equipment / B2 / North / 2903 | 5d | 2025-12-01 | 2025-12-05 | P2.B2.IT.2903.110, P2.B2.S.1300 |  | 138d |
| P2.B2.IT.2903.140 |  | Trim all MEPF / B2 / North / 2903 | 2d | 2025-12-08 | 2025-12-09 | P2.B2.IT.2903.120, P2.B2.IT.2903.130, BP1.233.3.410 |  | 138d |
| P2.B2.IT.2903.150 |  | Flooring / B2 / North / 2903 | 5d | 2025-12-10 | 2025-12-16 | P2.B2.IT.2903.140 |  | 138d |
| P2.B2.IT.2903.160 |  | Grounding and Bonding / B2 / North / 2903 | 2d | 2025-12-17 | 2025-12-18 | P2.B2.IT.2903.150 |  | 138d |
| P2.B2.IT.2903.170 |  | OH Cable Tray / B2 / North / 2903 | 5d | 2026-03-25 | 2026-03-31 | P2.B2.N.1390, P2.B2.S.1390, P2.B2.LC.1510 |  | 67d |
| P2.B2.IT.2903.180 |  | Room Ready - CIT / B2 / North / 2903 | 5d | 2026-04-01 | 2026-04-07 | P2.B2.IT.2903.150, P2.B2.IT.2903.170, P2.B2.IT.2903.160 |  | 67d |
| P2.B2.IT.2903.190 |  | Equipment Racks and Ladders / B2 / North / 2903 | 5d | 2026-04-08 | 2026-04-14 | P2.B2.IT.2903.180 |  | 67d |
| P2.B2.IT.2903.200 |  | Pull Wire - Backbone Cabling Into Racks / B2 / North / 2903 | 5d | 2026-04-15 | 2026-04-21 | P2.B2.IT.2903.190, P2.B2.IT.2903.180 |  | 67d |
| P2.B2.IT.2903.210 |  | Pull Wire - Horizontal Cabling Out to Termination Points / B2 / North / 2903 | 5d | 2026-04-15 | 2026-04-21 | P2.B2.IT.2903.190, P2.B2.IT.2903.180 |  | 67d |
| P2.B2.IT.2903.220 |  | Paint - Finish Coat / B2 / North / 2903 | 2d | 2026-04-22 | 2026-04-23 | P2.B2.IT.2903.210, P2.B2.IT.2903.200 |  | 67d |
| P2.B2.IT.2903.230 |  | Terminations and Punch Downs - All Cabling / B2 / North / 2903 | 10d | 2026-04-24 | 2026-05-07 | P2.B2.IT.2903.190, P2.B2.IT.2903.180, P2.B2.IT.2903.220 |  | 67d |
| P2.B2.IT.2903.240 |  | Doors & Hardware / B2 / North / 2903 | 2d | 2026-04-24 | 2026-04-27 | P2.B2.IT.2903.220 |  | 72d |
| P2.B2.IT.2903.250 |  | Energize Elec Panels Serving Comms Racks / B2 / North / 2903 | 3d | 2026-04-28 | 2026-04-30 | CX.B2.MVEE.1010, CX.B2.SWGR.1010, P2.B2.IT.2903.240, P2.B2.HE.5920.1100 |  | 72d |
| P2.B2.IT.2903.260 |  | Comms Racks In Service / B2 / North / 2903 | 0d | 2026-05-07 | 2026-05-07 | P2.B2.IT.2903.250, P2.B2.IT.2903.230 |  | 67d |
|  | 1 | **FINISHES - CORE & SUPPORT SPACES / Level B2/B1** |  | 2025-03-17 | 2026-11-30 |  |  |  |
|  | 6 | **Bathrooms - Break Rooms - Locker Rooms / Level B2/B1** |  | 2025-03-17 | 2026-06-24 |  |  |  |
|  | 1 | **Toilets B2-2811A / B2-2811B / B2-2811C** |  | 2025-03-17 | 2026-02-05 |  |  |  |
| P2.B2.BR.2000 |  | Plumbing - Set Pipe Carriers / B2 / North / 2811 Toilets | 10d | 2025-03-17 A | 2025-04-30 A | P2.B2.EMS.A.1020 | 100% |  |
| P2.B2.BR.2010 |  | Framing & Blocking - Walls and Hard Lid Ceilings / B2 / North / 2811 Toilets | 2d | 2025-12-01 | 2025-12-02 | P2.B2.BR.2000 |  | 177d |
| P2.B2.BR.2020 |  | Plumbing - Test Pipe / B2 / North / 2811 Toilets | 2d | 2025-12-01 | 2025-12-02 | P2.B2.BR.2000 |  | 185d |
| P2.B2.BR.2040 |  | Trim Sprinkler Drops _ Hard Lids / B2 / North / 2811 Toilets | 2d | 2025-12-03 | 2025-12-04 | P2.B2.BR.2010 |  | 177d |
| P2.B2.BR.2050 |  | Duct Drops _ Hard Lids / B2 / North / 2811 Toilets | 2d | 2025-12-05 | 2025-12-08 | P2.B2.BR.2040, P2.B2.BR.2010 |  | 177d |
| P2.B2.BR.2030 |  | R/I - Electrical _ Hard Lids / B2 / North / 2811 Toilets | 2d | 2025-12-09 | 2025-12-10 | P2.B2.BR.2050, P2.B2.BR.2010 |  | 177d |
| P2.B2.BR.2060 |  | R/I - Fire Alarm _ Hard Lids / B2 / North / 2811 Toilets | 2d | 2025-12-11 | 2025-12-12 | P2.B2.BR.2030, P2.B2.BR.2010 |  | 177d |
| P2.B2.BR.2070 |  | In Wall - Insulate Plumbing / B2 / North / 2811 Toilets | 2d | 2025-12-15 | 2025-12-16 | P2.B2.BR.2060, P2.B2.BR.2020 |  | 177d |
| P2.B2.BR.2080 |  | Inspection - Close In - Walls and Hard Lid Ceilings / B2 / North / 2811 Toilets | 3d | 2025-12-17 | 2025-12-19 | P2.B2.BR.2050, P2.B2.BR.2030, P2.B2.BR.2040, P2.B2.BR.2070, P2.B2.BR.2060 |  | 177d |
| P2.B2.BR.2090 |  | Hang-Tape-Finish _ Walls and Hard Lids Ceilings / B2 / North / 2811 Toilets | 5d | 2025-12-22 | 2025-12-29 | P2.B2.BR.2080, P2.SUM.175 |  | 177d |
| P2.B2.BR.2100 |  | Paint Prime & Final Coat _ Walls & Hard Lid Ceilings / B2 / North / 2811 Toilets | 2d | 2025-12-30 | 2025-12-31 | P2.B2.BR.2090 |  | 177d |
| P2.B2.BR.2140 |  | Trim - HVAC G/R/D's / B2 / North / 2811 Toilets | 2d | 2026-01-02 | 2026-01-05 | P2.B2.BR.2100 |  | 177d |
| P2.B2.BR.2120 |  | Pull Wire & Trim Devices - Electrical / B2 / North / 2811 Toilets | 2d | 2026-01-06 | 2026-01-07 | P2.B2.BR.2140, P2.B2.BR.2100 |  | 177d |
| P2.B2.BR.2130 |  | Lights - Set & Terminate / B2 / North / 2811 Toilets | 2d | 2026-01-06 | 2026-01-07 | P2.B2.BR.2120 SS |  | 179d |
| P2.B2.BR.2110 |  | Pull Wire & Trim Devices - Fire Alarm / B2 / North / 2811 Toilets | 2d | 2026-01-08 | 2026-01-09 | P2.B2.BR.2120, P2.B2.BR.2100 |  | 177d |
| P2.B2.BR.2150 |  | Wall Tile / B2 / North / 2811 Toilets | 5d | 2026-01-12 | 2026-01-16 | P2.B2.BR.2130, P2.B2.BR.2140, P2.B2.BR.2110 |  | 177d |
| P2.B2.BR.2170 |  | Plumbing Fixtures / Sinks / Showers / B2 / North / 2811 Toilets | 2d | 2026-01-19 | 2026-01-20 | BP1.224.3.100, P2.B2.BR.2150 |  | 177d |
| P2.B2.BR.2180 |  | Bathroom Accessories / B2 / North / 2811 Toilets | 2d | 2026-01-21 | 2026-01-22 | P2.B2.BR.2170, BP7.102.3.200 |  | 269d |
| P2.B2.BR.2210 |  | Flooring Prep - Epoxy Floors / B2 / North / 2811 Toilets | 3d | 2026-01-21 | 2026-01-23 | P2.B2.BR.2150, P2.B2.BR.2170, BP7.096.3.200 |  | 177d |
| P2.B2.BR.2200 |  | Flooring - Epoxy Floors / B2 / North / 2811 Toilets | 2d | 2026-01-26 | 2026-01-27 | P2.B2.BR.2150, P2.B2.BR.2210 |  | 177d |
| P2.B2.BR.2160 |  | Doors & Hardware / B2 / North / 2811 Toilets | 2d | 2026-01-28 | 2026-01-29 | P2.B2.BR.2150, P2.B2.BR.2200 |  | 177d |
| P2.B2.BR.2190 |  | Work Completion List - Finishes / B2 / North / 2811 Toilets | 5d | 2026-01-30 | 2026-02-05 | P2.B2.BR.2160, P2.B2.BR.2180, P2.B2.BR.2110 |  | 264d |
|  | 4 | **Lockers, Toilets, and Showers B2-2981 / B2-2989** |  | 2025-05-19 | 2026-06-24 |  |  |  |
| P2.B2.BR.1000 |  | Plumbing - Set Pipe Carriers / B2 / South / 289X Toilets | 10d | 2025-05-19 A | 2025-11-05 A | P2.B2.BR.2000, P2.B2.S.1240, P2.B2.S.1560 | 100% |  |
| P2.B2.BR.1030 |  | Plumbing - Test Pipe @ Chase Walls / B2 / South / 289X Toilets | 5d | 2025-12-01 | 2025-12-05 | P2.B2.BR.1000 |  | 124d |
| P2.B2.BR.1010 |  | Countertop Support Framing / B2 / South / 289X Toilets | 5d | 2025-12-08 | 2025-12-12 | P2.B2.S.1420 |  | 99d |
| P2.B2.BR.1080 |  | In Wall - Insulate Plumbing / B2 / South / 289X Toilets | 5d | 2025-12-08 | 2025-12-12 | P2.B2.BR.1030 |  | 124d |
| P2.B2.BR.1020 |  | Frame - Chase Walls and Hard Lid Ceilings / B2 / South / 289X Toilets | 5d | 2025-12-15 | 2025-12-19 | P2.B2.BR.1010, P2.B2.BR.1000 |  | 99d |
| P2.B2.BR.1050 |  | Trim Sprinkler Drops _ Hard Lids / B2 / South / 289X Toilets | 5d | 2025-12-22 | 2025-12-29 | P2.B2.BR.1020 |  | 99d |
| P2.B2.BR.1060 |  | Duct Drops _ Hard Lids / B2 / South / 289X Toilets | 5d | 2025-12-30 | 2026-01-06 | P2.B2.BR.1050, P2.B2.BR.1020 |  | 99d |
| P2.B2.BR.1040 |  | R/I - Electrical _ Hard Lids / B2 / South / 289X Toilets | 5d | 2026-01-07 | 2026-01-13 | P2.B2.BR.1060, P2.B2.BR.1020 |  | 99d |
| P2.B2.BR.1070 |  | R/I - Fire Alarm _ Hard Lids / B2 / South / 289X Toilets | 5d | 2026-01-14 | 2026-01-20 | P2.B2.BR.1040, P2.B2.BR.1020 |  | 99d |
| P2.B2.BR.1090 |  | Inspection - Close In - Chase Walls and Hard Lid Ceilings / B2 / South / 289X Toilets | 5d | 2026-01-21 | 2026-01-27 | P2.B2.BR.1040, P2.B2.BR.1050, P2.B2.BR.1060, P2.B2.BR.1080, P2.B2.BR.1070 |  | 99d |
| P2.B2.BR.1100 |  | Hang-Tape-Finish _ Chase Walls and Hard Lids Ceilings / B2 / South / 289X Toilets | 5d | 2026-01-28 | 2026-02-03 | P2.B2.BR.1090, P2.SUM.175 |  | 99d |
| P2.B2.BR.1110 |  | Paint Prime & 1st Coat _ Walls & Hard Lid Ceilings / B2 / South / 289X Toilets | 5d | 2026-02-04 | 2026-02-10 | P2.B2.BR.1100 |  | 99d |

| ID | WBS | Task | Duration | Start | Finish | Predecessors | Complete | Total float |
| --- | --- | --- | --- | --- | --- | --- | --- | --- |
| P2.B2.BR.1140 |  | Ceiling Grid / B2 / South / 289X Toilets | 5d | 2026-02-11 | 2026-02-17 | P2.B2.BR.1110 |  | 99d |
| P2.B2.BR.1170 |  | Trim Sprinkler Drops _ Ceiling Tiles / B2 / South / 289X Toilets | 5d | 2026-02-18 | 2026-02-24 | P2.B2.BR.1140 FF, P2.B2.BR.1140 |  | 99d |
| P2.B2.BR.1160 |  | Trim - HVAC G/R/D's / B2 / South / 289X Toilets | 5d | 2026-02-25 | 2026-03-03 | P2.B2.BR.1140, P2.B2.BR.1170 |  | 99d |
| P2.B2.BR.1130 |  | Pull Wire - Electrical / B2 / South / 289X Toilets | 5d | 2026-03-04 | 2026-03-10 | P2.B2.BR.1160, P2.B2.BR.1110 |  | 99d |
| P2.B2.BR.1120 |  | Pull Wire - Fire Alarm / B2 / South / 289X Toilets | 5d | 2026-03-11 | 2026-03-17 | P2.B2.BR.1130, P2.B2.BR.1110 |  | 226d |
| P2.B2.BR.1150 |  | Lights - Set & Terminate / B2 / South / 289X Toilets | 5d | 2026-03-11 | 2026-03-17 | P2.B2.BR.1140, P2.B2.BR.1130 |  | 99d |
| P2.B2.BR.1180 |  | Inspection - Ceiling Close In - ACT Ceilings / B2 / South / 289X Toilets | 5d | 2026-03-18 | 2026-03-24 | P2.B2.BR.1160, P2.B2.BR.1150, P2.B2.BR.1170 |  | 99d |
| P2.B2.BR.1190 |  | Ceiling Tiles / B2 / South / 289X Toilets | 5d | 2026-03-25 | 2026-03-31 | P2.B2.BR.1180 |  | 99d |
| P2.B2.BR.1200 |  | Wall Tile / B2 / South / 289X Toilets | 5d | 2026-04-01 | 2026-04-07 | P2.B2.BR.1190 |  | 99d |
| P2.B2.BR.2220 |  | Flooring Prep - Epoxy Floors / B2 / South / 289X Toilets | 3d | 2026-04-08 | 2026-04-10 | P2.B2.BR.1200, BP7.096.3.200 |  | 99d |
| P2.B2.BR.2230 |  | Flooring - Epoxy Floors / B2 / South / 289X Toilets | 2d | 2026-04-13 | 2026-04-14 | P2.B2.BR.2220 |  | 99d |
| P2.B2.BR.1210 |  | Paint - Finish Coat / B2 / South / 289X Toilets | 5d | 2026-04-15 | 2026-04-21 | P2.B2.BR.2230 |  | 99d |
| P2.B2.BR.1220 |  | Countertops / B2 / South / 289X Toilets | 5d | 2026-04-22 | 2026-04-28 | P2.B2.BR.1210, BP7.123.3.100 |  | 99d |
| P2.B2.BR.1260 |  | Lockers & Benches / B2 / South / 289X Toilets | 5d | 2026-04-29 | 2026-05-05 | P2.B2.BR.1220, P2.B2.BR.1210, BP7.105.3.100 |  | 99d |
| P2.B2.BR.1270 |  | Plumbing Fixtures / Sinks / Showers / B2 / South / 289X Toilets | 5d | 2026-05-06 | 2026-05-12 | P2.B2.BR.1260, P2.B2.BR.1220, BP7.102.3.120 |  | 99d |
| P2.B2.BR.1250 |  | Doors & Hardware / B2 / South / 289X Toilets | 5d | 2026-05-13 | 2026-05-19 | P2.B2.BR.1270, P2.B2.BR.1210 |  | 99d |
| P2.B2.BR.1280 |  | Toilet Partitions / B2 / South / 289X Toilets | 5d | 2026-05-20 | 2026-05-27 | P2.B2.BR.1270, P2.B2.BR.1250 |  | 166d |
| P2.B2.BR.1290 |  | Bathroom Accessories / B2 / South / 289X Toilets | 5d | 2026-05-28 | 2026-06-03 | P2.B2.BR.1270, P2.B2.BR.1280 |  | 166d |
| P2.B2.BR.1240 |  | Trim - Electrical Devices / B2 / South / 289X Toilets | 5d | 2026-06-04 | 2026-06-10 | P2.B2.BR.1290, P2.B2.BR.1210 |  | 166d |
| P2.B2.BR.1230 |  | Trim - Fire Alarm Devices / B2 / South / 289X Toilets | 5d | 2026-06-11 | 2026-06-17 | P2.B2.BR.1240, P2.B2.BR.1210, P2.B2.BR.1120 |  | 166d |
| P2.B2.BR.1300 |  | Work Completion List - Finishes / B2 / South / 289X Toilets | 5d | 2026-06-18 | 2026-06-24 | P2.B2.BR.1260, P2.B2.BR.1250, P2.B2.BR.1280, P2.B2.BR.1290, P2.B2.BR.1230, P2.B2.BR.1240 |  | 166d |
|  | 4 | **Corridors & Lobbies / Level B2/B1** |  | 2026-04-09 | 2026-11-30 |  |  |  |
| P2.B2.CL.1000 |  | Paint Prime & 1st Coat Walls / B2 / Corr & Lobbies | 5d | 2026-04-09 | 2026-04-15 | P2.B2.SC.1290, P2.B2.WC.1280, P2.B2.WC.1640, P2.B2.N.1550 |  | 57d |
| P2.B2.CL.1010 |  | Framing - Hard Lid Ceilings / B2 / Corr & Lobbies | 10d | 2026-04-16 | 2026-04-29 | P2.B2.CL.1000 |  | 62d |
| P2.B2.CL.1020 |  | T-Grid / B2 / Corr & Lobbies | 10d | 2026-04-16 | 2026-04-29 | P2.B2.CL.1000 |  | 57d |
| P2.B2.CL.1070 |  | Trim - Sprinkler Heads @ T-Grid / B2 / Corr & Lobbies | 5d | 2026-04-27 | 2026-05-01 | P2.B2.CL.1020 FF+2d |  | 57d |
| P2.B2.CL.1040 |  | R/I - Trim Sprinkler Heads- All Ceilings / B2 / Corr & Lobbies | 5d | 2026-05-04 | 2026-05-08 | P2.B2.CL.1020 FF+2d, P2.B2.CL.1010 FF+2d, P2.B2.CL.1070 |  | 57d |
| P2.B2.CL.1050 |  | R/I - HVAC- All Ceilings / B2 / Corr & Lobbies | 5d | 2026-05-11 | 2026-05-15 | P2.B2.CL.1020 FF+2d, P2.B2.CL.1010 FF+2d, P2.B2.CL.1040 |  | 57d |
| P2.B2.CL.1030 |  | R/I - Electrical - All Ceilings / B2 / Corr & Lobbies | 5d | 2026-05-18 | 2026-05-22 | P2.B2.CL.1020 FF+2d, P2.B2.CL.1010 FF+2d, P2.B2.CL.1050 |  | 57d |
| P2.B2.CL.1080 |  | R/I - Fire Alarm/Life Safety - All Ceilings / B2 / Corr & Lobbies | 5d | 2026-05-26 | 2026-06-01 | P2.B2.CL.1010 FF+2d, P2.B2.CL.1030 |  | 57d |
| P2.B2.CL.1100 |  | Pull Wire - Electrical / B2 / Corr & Lobbies | 10d | 2026-05-26 | 2026-06-08 | P2.B2.CL.1030 |  | 87d |
| P2.B2.CL.1060 |  | R/I - All Remaining Low Voltage - All Ceilings / B2 / Corr & Lobbies | 5d | 2026-06-02 | 2026-06-08 | P2.B2.CL.1020 FF+2d, P2.B2.CL.1010 FF+2d, P2.B2.CL.1080 |  | 57d |
| P2.B2.CL.1110 |  | Pull Wire - Fire Alarm / B2 / Corr & Lobbies | 5d | 2026-06-02 | 2026-06-08 | P2.B2.CL.1080 |  | 97d |
| P2.B2.CL.1090 |  | Inspections - Close In- All Ceilings / B2 / Corr & Lobbies | 5d | 2026-06-09 | 2026-06-15 | P2.B2.CL.1050, P2.B2.CL.1060, P2.B2.CL.1030, P2.B2.CL.1040, P2.B2.CL.1080 |  | 57d |
| P2.B2.CL.1120 |  | Pull Wire - All Remianing Low Voltage Systems / B2 / Corr & Lobbies | 5d | 2026-06-09 | 2026-06-15 | P2.B2.CL.1060 |  | 102d |
| P2.B2.CL.1130 |  | Hang/Tape/Finish- Hard Lid Ceilings / B2 / Corr & Lobbies | 10d | 2026-06-16 | 2026-06-29 | P2.B2.CL.1090, P2.SUM.175 |  | 57d |
| P2.B2.CL.1140 |  | Drop Ceiling Tiles @ T-Grid / B2 / Corr & Lobbies | 5d | 2026-06-16 | 2026-06-22 | P2.B2.CL.1070, P2.B2.CL.1100, P2.B2.CL.1110, P2.B2.CL.1120 |  | 115d |
| P2.B2.CL.1190 |  | Paint - Hard Lid Ceilings / B2 / Corr & Lobbies | 5d | 2026-06-30 | 2026-07-07 | P2.B2.CL.1130 |  | 57d |
| P2.B2.CL.1180 |  | Ceiling Mounted - HVAC GRD's / B2 / Corr & Lobbies | 15d | 2026-07-08 | 2026-07-28 | P2.B2.CL.1020, P2.B2.CL.1190 |  | 57d |
| P2.B2.CL.1150 |  | Ceiling Mounted - Electrical Devices and Lights / B2 / Corr & Lobbies | 20d | 2026-07-22 | 2026-08-18 | P2.B2.CL.1100, P2.B2.CL.1190, P2.B2.CL.1180 SS+10d |  | 57d |
| P2.B2.CL.1160 |  | Ceiling Mounted - Fire Alarm/Life Saftey Devices / B2 / Corr & Lobbies | 15d | 2026-08-05 | 2026-08-25 | P2.B2.CL.1020, P2.B2.CL.1110, P2.B2.CL.1190, P2.B2.CL.1150 SS+10d |  | 57d |
| P2.B2.CL.1170 |  | Ceiling Mounted - All Low Voltage Devices / B2 / Corr & Lobbies | 15d | 2026-08-19 | 2026-09-09 | P2.B2.CL.1120, P2.B2.CL.1190, P2.B2.CL.1160 SS+10d |  | 57d |
| P2.B2.CL.1200 |  | Flooring / B2 / Corr & Lobbies | 10d | 2026-09-10 | 2026-09-23 | P2.B2.CL.1150, P2.B2.CL.1160, P2.B2.CL.1170, P2.B2.CL.1180, P2.B2.CL.1140 SS+2d |  | 57d |
| P2.B2.CL.1210 |  | Final Paint / B2 / Corr & Lobbies | 5d | 2026-09-21 | 2026-09-25 | P2.B2.CL.1200 FF+2d, P2.B2.CL.1140, BP7.097.3.100 |  | 57d |
| P2.B2.CL.1220 |  | Floor Base / B2 / Corr & Lobbies | 5d | 2026-09-28 | 2026-10-02 | P2.B2.CL.1210 |  | 57d |
| P2.B2.CL.1250 |  | Trim - HVAC - Wall Mounted Devices / B2 / Corr & Lobbies | 5d | 2026-10-05 | 2026-10-09 | P2.B2.CL.1210, P2.B2.CL.1220 |  | 57d |
| P2.B2.CL.1230 |  | Trim - All Electrical - Wall Mounted Devices / B2 / Corr & Lobbies | 5d | 2026-10-12 | 2026-10-16 | P2.B2.CL.1250, P2.B2.CL.1210 |  | 57d |
| P2.B2.CL.1240 |  | Trim - Fire Alarm - Wall Mounted Devices / B2 / Corr & Lobbies | 5d | 2026-10-19 | 2026-10-23 | P2.B2.CL.1230, P2.B2.CL.1210 |  | 57d |
| P2.B2.CL.1260 |  | Trim - All Remining Low Voltage Systems - Wall Mounted Devices / B2 / Corr & Lobbies | 5d | 2026-10-26 | 2026-10-30 | P2.B2.CL.1240, P2.B2.CL.1210 |  | 57d |
| P2.B2.CL.1270 |  | Building Signage / B2 / Corr & Lobbies | 5d | 2026-11-02 | 2026-11-06 | P2.B2.CL.1260, P2.B2.CL.1210, BP7.100.3.110 |  | 57d |
| P2.B2.CL.1280 |  | Work Completion List / B2 / Corr & Lobbies | 5d | 2026-11-09 | 2026-11-13 | P2.B2.CL.1230, P2.B2.CL.1240, P2.B2.CL.1250, P2.B2.CL.1260, P2.B2.CL.1220, P2.B2.CL.1270 |  | 57d |
| P2.B2.CL.1290 |  | Rough Clean / B2 / Corr & Lobbies | 2d | 2026-11-16 | 2026-11-17 | P2.B2.CL.1280 |  | 57d |
| P2.B2.CL.1300 |  | Punchlist / B2 / Corr & Lobbies | 5d | 2026-11-18 | 2026-11-24 | P2.B2.CL.1290 |  | 57d |
| P2.B2.CL.1310 |  | Final Clean / B2 / Corr & Lobbies | 2d | 2026-11-25 | 2026-11-30 | P2.B2.CL.1300 |  | 57d |
|  | 4 | **LAB & CLINICAL SPACES (Below Interstitials) / LEVEL B2/B1** |  | 2025-01-01 | 2026-12-02 |  |  |  |
|  | 3 | **ROUGH IN - Lab & Clinical Spaces (25K SF) / Level B2/B1** |  | 2025-01-01 | 2026-04-21 |  |  |  |
| P2.B2.LC.1000 |  | Layout - All Trades / B2 / Lab & Clinical | 5d | 2025-01-01 A | 2025-02-10 A | P1.1.03.660, P2.B2.N.1000 | 100% |  |
| P2.B2.LC.1290 |  | CMU - Lay Block / B2 / Lab & Clinical | 10d | 2025-01-01 A | 2025-01-02 A | P2.B2.LC.1310, P2.B2.LC.1600, P2.B2.N.1050 | 100% |  |
| P2.B2.LC.1310 |  | CMU - Drill_Epoxy Masonry Dowels / B2 / Lab & Clinical | 10d | 2025-01-01 A | 2025-01-01 A | P2.B2.EMS.B.1030, P2.B2.N.1040, P2.B2.LC.1000 SS | 100% |  |
| P2.B2.LC.1320 |  | In Wall - Electrical - CMU / B2 / Lab & Clinical | 20d | 2025-01-03 A | 2025-01-04 A | P2.B2.LC.1290 SS | 100% |  |
| P2.B2.LC.1330 |  | Paint - CMU Block Fill / B2 / Lab & Clinical | 10d | 2025-01-03 A | 2025-01-06 A | P2.B2.LC.1290 | 100% |  |
| P2.B2.LC.1350 |  | In Wall - Plumbing - CMU / B2 / Lab & Clinical | 20d | 2025-01-03 A | 2025-01-04 A | P2.B2.LC.1290 SS | 100% |  |
| P2.B2.LC.1010 |  | Framing - Top Track / B2 / Lab & Clinical | 10d | 2025-01-06 A | 2025-01-18 A | P2.B2.LC.1000, P2.B2.N.1010 | 100% |  |
| P2.B2.LC.1600 |  | OH - Integrated Ceilings Structural Supports (Verticle Only) / B2 / Lab & Clinical | 5d | 2025-01-06 A | 2025-01-18 A | BP1.095.3.200, P2.B2.LC.1000 SS | 100% |  |
| P2.B2.LC.1300 |  | CMU - Point & Patch / B2 / Lab & Clinical | 10d | 2025-01-07 A | 2025-01-08 A | P2.B2.LC.1350, P2.B2.LC.1320, P2.B2.LC.1330 | 100% |  |
| P2.B2.LC.1340 |  | Paint Prime & 1st Coat - CMU / B2 / Lab & Clinical | 10d | 2025-01-09 A | 2025-01-15 A | P2.B2.LC.1300 SS | 100% |  |
| P2.B2.LC.1020 |  | OH - Structural Supports (All Trades) / B2 / Lab & Clinical | 5d | 2025-01-13 A | 2025-01-17 A | P2.B2.LC.1000 | 100% |  |
| P2.B2.LC.1030 |  | OH - MEPF - Hangers & Supports / B2 / Lab & Clinical | 10d | 2025-01-13 A | 2025-01-25 A | BP1.149.3.100, P2.B2.LC.1000, P2.BIM.B2.40.140 | 100% |  |
| P2.B2.LC.1100 |  | Framing - Priority Walls & Door Frames / B2 / Lab & Clinical | 10d | 2025-01-13 A | 2025-01-24 A | P2.B2.LC.1010, P2.B2.LC.1020, P2.B2.LC.1600, P2.B2.N.1090 | 100% |  |
| P2.B2.LC.1400 |  | Spray/Seal/Firestop - Head of Wall - Priority Walls / B2 / Lab & Clinical | 5d | 2025-01-20 A | 2025-01-24 A | P2.B2.LC.1100 | 100% |  |

| ID | WBS | Task | Duration | Start | Finish | Predecessors | Complete | Total float |
| --- | --- | --- | --- | --- | --- | --- | --- | --- |
| P2.B2.LC.1050 |  | OH - Fire Suppression / B2 / Lab & Clinical | 10d | 2025-01-27 A | 2025-02-07 A | P2.B2.LC.1020, P2.B2.N.1170 | 100% |  |
| P2.B2.LC.1630 |  | In Wall - Priority Wall - Backing/Blocking/Supports / B2 / Lab & Clinical | 5d | 2025-01-27 A | 2025-01-31 A | P2.B2.LC.1100 | 100% |  |
| P2.B2.LC.1360 |  | Framing - Priority Walls - AHJ Inspections / B2 / Lab & Clinical | 5d | 2025-02-10 A | 2025-02-14 A | P2.B2.LC.1100, P2.B2.LC.1630 | 100% |  |
| P2.B2.LC.1370 |  | Hang/Tape/Finish - Priority Walls / B2 / Lab & Clinical | 10d | 2025-02-17 A | 2025-02-28 A | P2.B2.LC.1020, P2.B2.LC.1360, P2.B2.N.1140 | 100% |  |
| P2.B2.LC.1380 |  | Paint Prime & 1st Coat - Priority Walls / B2 / Lab & Clinical | 10d | 2025-03-03 A | 2025-03-14 A | P2.B2.LC.1400 SS, P2.B2.LC.1370 | 100% |  |
| P2.B2.LC.1080 |  | OH - Electrical - 480/277v Distribution / B2 / Lab & Clinical | 10d | 2025-04-01 A | 2025-04-12 A | P2.B2.LC.1030, P2.B2.LC.1020 | 100% |  |
| P2.B2.LC.1070 |  | OH - Plumbing Piping / B2 / Lab & Clinical (South) | 20d | 2025-04-03 A | 2025-05-01 A | P2.B2.LC.1030, P2.B2.LC.1020 | 100% |  |
| P2.B2.LC.1090 |  | OH - HVAC Piping / B2 / Lab & Clinical | 20d | 2025-04-21 A | 2025-09-03 A | P2.B2.LC.1030, P2.B2.LC.1020, P2.B2.LC.1050 | 100% |  |
| P2.B2.LC.1190 |  | Firestop - Thru Wall - Priority Walls / B2 / Lab & Clinical | 5d | 2025-05-01 A | 2025-05-07 A | P2.B2.LC.1380 | 100% |  |
| P2.B2.LC.1060 |  | OH - Hang Duct - HP Mains / B2 / Lab & Clinical | 20d | 2025-05-22 A | 2025-08-22 A | P2.B2.LC.1190, P2.B2.LC.1580 FF+5d, P2.B2.LC.1070, P2.B2.LC.1570, P2.B2.N.1210 | 100% |  |
| P2.B2.LC.1570 |  | Paint - OH Fire Suppression / B2 / Lab & Clinical | 5d | 2025-05-22 A | 2025-05-30 A | P2.B2.LC.1560, P2.B2.N.1630 | 100% |  |
| P2.B2.LC.1580 |  | OH - Plumbing Piping / B2 / Lab & Clinical (North) | 20d | 2025-06-02 A | 2025-08-22 A | P2.B2.LC.1070 | 100% |  |
| P2.B2.LC.1590 |  | OH - Quench Vent / B2 / Lab & Clinical | 20d | 2025-06-17 A | 2025-09-04 A | P2.B2.LC.1030 | 100% |  |
| P2.B2.LC.1560 |  | Test - OH Fire Suppression / B2 / Lab & Clinical | 5d | 2025-07-18 A | 2025-12-03 | P2.B2.LC.1050 | 40% | 76d |
| P2.B2.LC.1220 |  | OH - DALT - HP Mains / B2 / Lab & Clinical | 5d | 2025-07-23 A | 2025-09-23 A | P2.B2.LC.1060 | 100% |  |
| P2.B2.LC.1470 |  | Pull Wire - Electrical - 480/277v Distribution / B2 / Lab & Clinical | 10d | 2025-08-29 A | 2025-09-04 A | P2.B2.LC.1080 | 100% |  |
| P2.B2.LC.1240 |  | OH - HVAC Piping - Test / B2 / Lab & Clinical | 10d | 2025-10-01 A | 2025-10-07 A | P2.B2.LC.1090 | 100% |  |
| P2.B2.LC.1280 |  | OH - Plumbing - Test / B2 / Lab & Clinical | 5d | 2025-10-01 A | 2025-10-07 A | P2.B2.LC.1580 | 100% |  |
| P2.B2.LC.1250 |  | OH - Insulate HVAC Pipe / B2 / Lab & Clinical | 10d | 2025-10-20 A | 2026-02-17 | P2.B2.LC.1040, P2.B2.LC.1240, RFP.015.1290 | 50% | 54d |
| P2.B2.LC.1270 |  | OH - Insulate Plumbing / B2 / Lab & Clinical | 10d | 2025-10-20 A | 2026-02-03 | P2.B2.LC.1280, RFP.015.1290 | 50% | 74d |
| P2.B2.LC.1390 |  | OH - Set & Connect Mech Equipment / B2 / Lab & Clinical | 10d | 2025-11-06 A | 2025-12-17 | P2.B2.LC.1220 |  | 96d |
| P2.B2.LC.2470 |  | OH - Integrated Ceilings MEP Infrastructure (Trunkline, monotrack, Etc.) / B2 / Lab & Clinical | 5d | 2025-12-08 | 2025-12-12 | P2.L3.LC.1610, P2.L3.LC.2480 |  | 216d |
| P2.B2.LC.1210 |  | OH - Electrical - Equip Tie In / B2 / Lab & Clinical | 10d | 2025-12-30 | 2026-01-13 | P2.B2.LC.1390, PCO.225.1320 |  | 89d |
| P2.B2.LC.1040 |  | OH - Insulate HP Duct / B2 / Lab & Clinical | 10d | 2026-01-28 | 2026-02-10 | P2.B2.LC.1220, RFP.015.1290 |  | 54d |
| P2.B2.LC.1120 |  | OH - Hang Duct - LP Branch / B2 / Lab & Clinical | 20d | 2026-01-28 | 2026-02-24 | P2.B2.LC.1220, RFP.015.1290 |  | 39d |
| P2.B2.LC.1200 |  | OH - Electrical - 208/120v Branch / B2 / Lab & Clinical | 10d | 2026-01-28 | 2026-02-10 | P2.B2.LC.1080, RFP.015.1290, RFP.015.1350 |  | 34d |
| P2.B2.LC.1230 |  | OH - HVAC Piping - Equip Tie In / B2 / Lab & Clinical | 20d | 2026-01-28 | 2026-02-24 | P2.B2.LC.1390, P2.B2.LC.1240, PCO.225.1320, CX.B2.HYDR.1000 |  | 69d |
| P2.B2.LC.1410 |  | Framing - Balance of Framing & Door Frames / B2 / Lab & Clinical | 10d | 2026-01-28 | 2026-02-10 | BP5.083.3.110, RFP.015.1290, P2.L3.N.1420, P2.L3.LC.1410, P2.L3.S.1420 |  | 34d |
| P2.B2.LC.2460 |  | Chair Carrier - In Wall Rough-in / B2 / Lab & Clinical | 1d | 2026-02-10 | 2026-02-10 | P2.B2.LC.1410 FF, RFP.015.1350 |  | 34d |
| P2.B2.LC.1110 |  | In Wall - Plumbing - Framing / B2 / Lab & Clinical | 20d | 2026-02-11 | 2026-03-10 | P2.B2.LC.1410, P2.B2.LC.2460, OFOI.PWS.1220, RFP.015.1350, PCO.824.1170 |  | 34d |
| P2.B2.LC.1140 |  | In Wall - Electrical - Framing / B2 / Lab & Clinical | 20d | 2026-02-11 | 2026-03-10 | P2.B2.LC.1200, P2.B2.LC.1410, P2.B2.LC.2460, OFOI.PWS.1220, RFP.015.1350 |  | 34d |
| P2.B2.LC.1150 |  | In Wall - Backing/Blocking/Supports / B2 / Lab & Clinical | 5d | 2026-02-11 | 2026-02-17 | P2.B2.LC.1410, P2.B2.LC.2460, OFOI.PWS.1220, RFP.015.1350 |  | 49d |
| P2.B2.LC.1490 |  | OH - Conduit - Low Volt - BAS/Controls / B2 / Lab & Clinical | 10d | 2026-02-18 | 2026-03-03 | P2.B2.LC.1390, P2.B2.LC.1250 |  | 54d |
| P2.B2.LC.1520 |  | OH - Conduit - Low Volt - Security / B2 / Lab & Clinical | 10d | 2026-02-18 | 2026-03-03 | P2.B2.LC.1250 |  | 54d |
| P2.B2.LC.1260 |  | OH - Insulate LP Duct / B2 / Lab & Clinical | 10d | 2026-02-25 | 2026-03-10 | P2.B2.LC.1120 |  | 39d |
| P2.B2.LC.1170 |  | AHJ Inspections - Wall Close In / B2 / Lab & Clinical | 5d | 2026-03-11 | 2026-03-17 | P2.B2.LC.1150, P2.B2.LC.1110, P2.B2.LC.1140, P2.B2.LC.2460, PCO.225.1270, RFP.015.1350 |  | 34d |
| P2.B2.LC.1420 |  | Pull Wire - Electrical - 208/120v Branch & Equip / B2 / Lab & Clinical | 10d | 2026-03-11 | 2026-03-24 | P2.B2.LC.1200, P2.B2.LC.1210, P2.B2.LC.1140 |  | 49d |
| P2.B2.LC.1500 |  | OH - Conduit - Low Volt - Fire Alarm / B2 / Lab & Clinical | 10d | 2026-03-11 | 2026-03-24 | P2.B2.LC.1390, P2.B2.LC.1260 |  | 39d |
| P2.B2.LC.1510 |  | OH - Conduit - Low Volt - Telecom / B2 / Lab & Clinical | 10d | 2026-03-11 | 2026-03-24 | P2.B2.LC.1260 |  | 39d |
| P2.B2.LC.1530 |  | OH - Conduit - Low Volt - Medical Services/Nurse Call (?) / B2 / Lab & Clinical | 10d | 2026-03-11 | 2026-03-24 | BP1.283.3.200, BP1.275.3.200, BP1.275.3.100, P2.B2.LC.1260 |  | 39d |
| P2.B2.LC.1180 |  | Hang-Tape-Finish - Walls and Hard Lid Ceilings / B2 / Lab & Clinical | 10d | 2026-03-18 | 2026-03-31 | P2.B2.LC.1170, BP4.134.3.130, P2.L7.S.1470, P2.L7.N.1470 |  | 34d |
| P2.B2.LC.1130 |  | Spray/Seal/Firestop - Head of Wall / B2 / Lab & Clinical | 10d | 2026-04-01 | 2026-04-14 | P2.B2.LC.1180, P2.B2.LC.1340 |  | 34d |
| P2.B2.LC.1160 |  | Firestop - Thru Wall / B2 / Lab & Clinical | 10d | 2026-04-01 | 2026-04-14 | P2.B2.LC.1180, P2.B2.LC.1270 |  | 34d |
| P2.B2.LC.1430 |  | Pull Wire - Low Volt - BAS/Controls / B2 / Lab & Clinical | 10d | 2026-04-01 | 2026-04-14 | P2.B2.LC.1180, P2.B2.LC.1490 |  | 34d |
| P2.B2.LC.1440 |  | Pull Wire - Low Volt - Fire Alarm / B2 / Lab & Clinical | 10d | 2026-04-01 | 2026-04-14 | P2.B2.LC.1180, P2.B2.LC.1500 |  | 34d |
| P2.B2.LC.1450 |  | Pull Wire - Low Volt - Telecom / B2 / Lab & Clinical | 10d | 2026-04-01 | 2026-04-14 | P2.B2.LC.1180, P2.B2.LC.1510 |  | 34d |
| P2.B2.LC.1460 |  | Pull Wire - Low Volt - Security / B2 / Lab & Clinical | 10d | 2026-04-01 | 2026-04-14 | P2.B2.LC.1180, P2.B2.LC.1520 |  | 34d |
| P2.B2.LC.1480 |  | Pull Wire - Low Volt - Medical Services/Nurse Call (?) / B2 / Lab & Clinical | 10d | 2026-04-01 | 2026-04-14 | P2.B2.LC.1180, P2.B2.LC.1530 |  | 34d |
| P2.B2.LC.1550 |  | Trades Inspect & Verify R/I Work Completed to Specs / B2 / Lab & Clinical | 5d | 2026-04-15 | 2026-04-21 | P2SUM.208 FF, P2.B2.LC.1160, P2.B2.LC.1130, P2.B2.LC.1470, P2.B2.LC.1480, P2.B2.LC.1420, P2.B2.LC.1430, P2.B2.LC.1440, P2.B2.LC.1450, P2.B2.LC.1460, P2.B2.LC.1230 |  | 34d |
|  | 2 | **FINISHES - Lab & Clinical Spaces / Level B2/B1** |  | 2026-04-01 | 2026-12-02 |  |  |  |
|  | 2 | **Decon & Sterile Storage Suites - Room Blocks B2-29.. (8K SF) / Level B2/B1** |  | 2026-04-16 | 2026-12-02 |  |  |  |
| P2.B2.F.LC.1000 |  | Paint - Walls / B2 / Decon, Sterile | 5d | 2026-04-16 | 2026-04-22 | P2.B2.S.1550 |  | 70d |
| BP1.226.2.160 |  | Install - High Purity Water Equipment - CSP | 10d | 2026-04-23 | 2026-05-06 | BP1.226.2.140, P2.B2.F.LC.1000 |  | 93d |
| P2.B2.F.LC.1010 |  | R/I - Ceiling Assemblies & Supports - Med Equip / B2 / Decon, Sterile | 5d | 2026-04-23 | 2026-04-29 | P2.B2.F.LC.1000 |  | 70d |
| P2.B2.F.LC.1020 |  | Framing - Hard Lid Ceilings / B2 / Decon, Sterile | 5d | 2026-04-30 | 2026-05-06 | P2.B2.F.LC.1010 |  | 70d |
| P2.B2.F.LC.1030 |  | R/I - Lights & Devices - Hard Lids Ceilings / B2 / Decon, Sterile | 5d | 2026-05-07 | 2026-05-13 | P2.B2.F.LC.1020 |  | 70d |
| P2.B2.F.LC.1040 |  | R/I - Diffusers - Hard Lid Ceilings / B2 / Decon, Sterile | 5d | 2026-05-07 | 2026-05-13 | P2.B2.F.LC.1020 |  | 70d |
| P2.B2.F.LC.1050 |  | R/I - Sprinkler Heads - Hard Lid Ceilings / B2 / Decon, Sterile | 5d | 2026-05-07 | 2026-05-13 | P2.B2.F.LC.1020 |  | 70d |
| P2.B2.F.LC.1060 |  | R/I - Fire Alarm - Hard Lid Ceilings / B2 / Decon, Sterile | 5d | 2026-05-07 | 2026-05-13 | P2.B2.F.LC.1020 |  | 70d |
| P2.B2.F.LC.1070 |  | OH Ceiling Inspection & Signoff - Hard Lid Ceilings / B2 / Decon, Sterile | 5d | 2026-05-14 | 2026-05-20 | P2.B2.F.LC.1040, P2.B2.F.LC.1050, P2.B2.F.LC.1060, P2.B2.F.LC.1030, CW.FD-MU -210 |  | 70d |
| P2.B2.F.LC.1080 |  | Hang-Tape-Finish _Hard Lid Ceilings / B2 / Decon, Sterile | 5d | 2026-05-21 | 2026-05-28 | P2.SUM.175, P2.B2.F.LC.1070 |  | 70d |
| P2.B2.F.LC.1090 |  | Paint Ceilings / B2 / Decon, Sterile | 5d | 2026-05-29 | 2026-06-04 | P2.B2.F.LC.1080 |  | 70d |
| P2.B2.F.LC.1100 |  | Waterproof Ceramic Tile / B2 / Decon, Sterile | 5d | 2026-06-05 | 2026-06-11 | P2.B2.F.LC.1090 |  | 70d |
| P2.B2.F.LC.1110 |  | Ceramic Tile / B2 / Decon, Sterile | 5d | 2026-06-12 | 2026-06-18 | P2.B2.F.LC.1100 |  | 70d |
| P2.B2.F.LC.1120 |  | T-Grid / B2 / Decon, Sterile | 5d | 2026-06-19 | 2026-06-25 | BP5.095.3.100, P2.B2.F.LC.1110 |  | 70d |
| P2.B2.F.LC.1130 |  | Diffusers in T-Grid / B2 / Decon, Sterile | 5d | 2026-06-26 | 2026-07-02 | P2.B2.F.LC.1120 |  | 70d |
| P2.B2.F.LC.1140 |  | Lights & Devices / B2 / Decon, Sterile | 5d | 2026-06-26 | 2026-07-02 | P2.B2.F.LC.1120 |  | 70d |
| P2.B2.F.LC.1150 |  | Sprinkler Heads / B2 / Decon, Sterile | 5d | 2026-06-26 | 2026-07-02 | P2.B2.F.LC.1120 |  | 70d |
| P2.B2.F.LC.1160 |  | Trim Low Voltage / B2 / Decon, Sterile | 5d | 2026-06-26 | 2026-07-02 | P2.B2.F.LC.1120 |  | 70d |
| P2.B2.F.LC.1170 |  | Trim Fire Alarm / B2 / Decon, Sterile | 5d | 2026-06-26 | 2026-07-02 | P2.B2.F.LC.1120 |  | 70d |

| ID | WBS | Task | Duration | Start | Finish | Predecessors | Total float |
| --- | --- | --- | --- | --- | --- | --- | --- |
| P2.B2.F.LC.2460 |  | Ceiling Service Panel (After Cieling Grid Flooring) / B2 / Decon, Sterile | 1d | 2026-06-26 | 2026-06-26 | P2.B2.F.LC.1120 | 74d |
| P2.B2.F.LC.1190 |  | Casework (Before Flooring) / B2 / Decon, Sterile | 2d | 2026-07-22 | 2026-07-23 | P2.B2.LC.1180, BP6.115.3.100, BP6.123.3.100, BP7.113.3.100, BP7.064.3.100 | 49d |
| P2.B2.F.LC.2450 |  | Equipment (Before Flooring) / B2 / Decon, Sterile | 3d | 2026-07-22 | 2026-07-24 | P2.B2.LC.1180, BP6.115.3.100, BP7.113.3.100 | 48d |
| P2.B2.F.LC.1220 |  | Plumbing Fixtures & Drinking Fountains / B2 / Decon, Sterile | 5d | 2026-07-24 | 2026-07-30 | P2.B2.F.LC.1190 | 76d |
| P2.B2.F.LC.1180 |  | OH Ceiling Signoff / B2 / Decon, Sterile | 10d | 2026-07-27 | 2026-08-07 | P2.B2.F.LC.1170, P2.B2.F.LC.1160, P2.B2.F.LC.1190, P2.B2.F.LC.1130, P2.B2.F.LC.1140, P2.B2.F.LC.1150, P2.B2.F.LC.2450, P2.B2.F.LC.2460 | 55d |
| P2.B2.F.LC.1210 |  | Wall Protection / B2 / Decon, Sterile | 5d | 2026-07-27 | 2026-07-31 | BP7.102.3.300, BP7.097.3.110, P2.B2.F.LC.2450, P2.B2.F.LC.1190 | 70d |
| P2.B2.F.LC.1260 |  | Doors & Hardware / B2 / Decon, Sterile | 5d | 2026-07-27 | 2026-07-31 | BP5.083.3.120, BP5.081.3.410, P2.B2.F.LC.1190, P2.B2.F.LC.2450, BP5.081.3.420 | 48d |
| P2.B2.F.LC.1200 |  | Drop Ceiling Tile / B2 / Decon, Sterile | 5d | 2026-08-10 | 2026-08-14 | BP5.095.3.100, P2.B2.F.LC.2460, P2.B2.F.LC.1180 | 55d |
| P2.B2.F.LC.1400 |  | Integrated Ceilings Panel Install (Finishes) / B2 / Lab & Clinical | 5d | 2026-08-17 | 2026-08-21 | P2.B2.F.LC.1200, P2.L3.F.LC.2400 FF, P2.B2.LC.2470, BP1.095.3.220 | 55d |
| P2.B2.F.LC.1230 |  | Trim T-Stats / B2 / Decon, Sterile | 5d | 2026-08-24 | 2026-08-28 | P2.B2.F.LC.1210, P2.B2.F.LC.1400 | 55d |
| P2.B2.F.LC.1240 |  | Trim Electrical / B2 / Decon, Sterile | 5d | 2026-08-24 | 2026-08-28 | P2.B2.F.LC.1230 SS, P2.B2.F.LC.1400 | 55d |
| P2.B2.F.LC.1250 |  | Trim Telephone/ Data / B2 / Decon, Sterile | 5d | 2026-08-24 | 2026-08-28 | P2.B2.F.LC.1240 SS, P2.B2.F.LC.1400 | 55d |
| P2.B2.F.LC.1270 |  | Trim Med Gas / B2 / Decon, Sterile | 5d | 2026-08-24 | 2026-08-28 | P2.B2.F.LC.1190, P2.B2.F.LC.1210, P2.B2.F.LC.1400, P2.B2.F.LC.2450 | 55d |
| P2.B2.F.LC.1280 |  | Floor Prep / B2 / Decon, Sterile | 5d | 2026-08-31 | 2026-09-04 | P2.B2.F.LC.1200, P2.B2.F.LC.1260, P2.B2.F.LC.1250, P2.B2.F.LC.1190, P2.B2.F.LC.1220, P2.B2.F.LC.1230, P2.B2.F.LC.1240, P2.B2.F.LC.2450, P2.B2.F.LC.1270 | 55d |
| P2.B2.F.LC.1290 |  | Flooring / B2 / Decon, Sterile | 5d | 2026-09-08 | 2026-09-14 | P2.B2.F.LC.1280 | 55d |
| P2.B2.F.LC.1300 |  | Building Specialities / B2 / Decon, Sterile | 5d | 2026-09-15 | 2026-09-21 | P2.B2.F.LC.1290, BP7.100.3.100 | 55d |
| P2.B2.F.LC.1310 |  | Interior Building Signage / B2 / Decon, Sterile | 5d | 2026-09-15 | 2026-09-21 | P2.B2.F.LC.1290 | 55d |
| P2.B2.F.LC.1320 |  | Work Completion List - Finishes / B2 / Decon, Sterile | 5d | 2026-09-22 | 2026-09-28 | P2.B2.F.LC.1310, P2.B2.F.LC.1300 | 55d |
| P2.B2.F.LC.1330 |  | Remaining Equipment Post Flooring / B2 / Decon, Sterile | 15d | 2026-09-29 | 2026-10-19 | P2.B2.F.LC.1320, P2.B2.F.LC.1290 | 55d |
| P2.B2.F.LC.1340 |  | Remaining MEP Hook-Ups / B2 / Decon, Sterile | 5d | 2026-10-20 | 2026-10-26 | P2.B2.F.LC.1330 | 55d |
| P2.B2.F.LC.1350 |  | OFOI Furniture & Equipment / B2 / Decon, Sterile | 5d | 2026-10-20 | 2026-10-26 | P2.B2.F.LC.1340 SS | 65d |
| P2.B2.F.LC.1360 |  | Rough Clean / B2 / Decon, Sterile | 5d | 2026-10-27 | 2026-11-02 | P2.B2.F.LC.1340 | 55d |
| P2.B2.F.LC.1370 |  | Prepare Punchlist / B2 / Decon, Sterile | 5d | 2026-11-03 | 2026-11-09 | P2.B2.F.LC.1340 SS, P2.B2.F.LC.1360 | 55d |
| P2.B2.F.LC.1380 |  | Correct Punchlist / B2 / Decon, Sterile | 10d | 2026-11-10 | 2026-11-23 | P2.B2.F.LC.1370, P2.B2.F.LC.1350 | 55d |
| P2.B2.F.LC.1390 |  | Final Clean / B2 / Decon, Sterile | 5d | 2026-11-24 | 2026-12-02 | P2.SUM.205 FF, P2.B2.F.LC.1380 | 55d |
|  | 3 | **MRI & Cath Lab Suites - Room Blocks B2-28.. (10K SF) / Level B2/B1** |  | 2026-04-01 | 2026-09-17 |  |  |
| P2.B2.F.LC.2190 |  | Casework (Before Flooring) / B2 / MRI & Cath | 3d | 2026-04-01 | 2026-04-03 | P2.B2.LC.1180, BP2.134.3.140 | 126d |
| P2.B2.F.LC.2470 |  | Equipment (Before Flooring) / B2 / MRI & Cath | 1d | 2026-04-01 | 2026-04-01 | P2.B2.LC.1180 | 182d |
| P2.B2.F.LC.2430 |  | Fumehood Equipment Install / B2 / MRI & Cath | 1d | 2026-04-03 | 2026-04-03 | P2.B2.F.LC.2190 FF | 192d |
| P2.B2.F.LC.2210 |  | Wall Protection / B2 / MRI & Cath | 5d | 2026-04-06 | 2026-04-10 | P2.B2.F.LC.2190, BP7.102.3.300 | 148d |
| P2.B2.F.LC.2220 |  | Plumbing Fixtures & Drinking Fountains / B2 / MRI & Cath | 5d | 2026-04-06 | 2026-04-10 | P2.B2.F.LC.2190 | 148d |
| P2.B2.F.LC.2260 |  | Doors & Hardware / B2 / MRI & Cath | 5d | 2026-04-06 | 2026-04-10 | BP4.134.3.100, P2.B2.F.LC.2190 | 126d |
| P2.B2.F.LC.2440 |  | Fumehood Equipment MEP Connection / B2 / MRI & Cath | 1d | 2026-04-06 | 2026-04-06 | P2.B2.F.LC.2430 | 192d |
| P2.B2.F.LC.2000 |  | Paint - Walls / B2 / MRI & Cath | 5d | 2026-04-09 | 2026-04-15 | P2.B2.N.1550 | 107d |
| P2.B2.F.LC.2230 |  | Trim T-Stats / B2 / MRI & Cath | 5d | 2026-04-13 | 2026-04-17 | P2.B2.F.LC.2210, P2.B2.F.LC.2220 | 148d |
| P2.B2.F.LC.2240 |  | Trim Electrical / B2 / MRI & Cath | 5d | 2026-04-13 | 2026-04-17 | P2.B2.F.LC.2230 SS | 148d |
| P2.B2.F.LC.2250 |  | Trim Telephone/ Data / B2 / MRI & Cath | 5d | 2026-04-13 | 2026-04-17 | P2.B2.F.LC.2240 SS | 148d |
| P2.B2.F.LC.2010 |  | R/I - Ceiling Assemblies & Supports - Med Equip / B2 / MRI & Cath | 5d | 2026-04-16 | 2026-04-22 | P2.B2.F.LC.2000 | 107d |
| P2.B2.F.LC.2270 |  | Trim Med Gas / B2 / MRI & Cath | 5d | 2026-04-20 | 2026-04-24 | P2.B2.F.LC.2190, P2.B2.F.LC.2210, P2.B2.F.LC.2250 | 148d |
| P2.B2.F.LC.2020 |  | Framing - Hard Lid Ceilings / B2 / MRI & Cath | 5d | 2026-04-23 | 2026-04-29 | P2.B2.F.LC.2010 | 107d |
| P2.B2.F.LC.2410 |  | Floor Prep / B2 / MRI | 5d | 2026-04-27 | 2026-05-01 | P2.B2.F.LC.2270 | 148d |
| P2.B2.F.LC.2030 |  | R/I - Lights & Devices - Hard Lids Ceilings / B2 / MRI & Cath | 5d | 2026-04-30 | 2026-05-06 | P2.B2.F.LC.2020 | 107d |
| P2.B2.F.LC.2040 |  | R/I - Diffusers - Hard Lid Ceilings / B2 / MRI & Cath | 5d | 2026-04-30 | 2026-05-06 | P2.B2.F.LC.2020 | 107d |
| P2.B2.F.LC.2050 |  | R/I - Sprinkler Heads - Hard Lid Ceilings / B2 / MRI & Cath | 5d | 2026-04-30 | 2026-05-06 | P2.B2.F.LC.2020 | 107d |
| P2.B2.F.LC.2060 |  | R/I - Fire Alarm - Hard Lid Ceilings / B2 / MRI & Cath | 5d | 2026-04-30 | 2026-05-06 | P2.B2.F.LC.2020 | 107d |
| P2.B2.F.LC.2420 |  | Flooring / B2 / MRI | 5d | 2026-05-04 | 2026-05-08 | P2.B2.F.LC.2410 | 148d |
| P2.B2.F.LC.2070 |  | OH Ceiling Inspection & Signoff - Hard Lid Ceilings / B2 / MRI & Cath | 5d | 2026-05-07 | 2026-05-13 | P2.B2.F.LC.2040, P2.B2.F.LC.2050, P2.B2.F.LC.2060, P2.B2.F.LC.2030 | 107d |
| P2.B2.F.LC.2300 |  | Building Specialities / B2 / MRI & Cath | 5d | 2026-05-11 | 2026-05-15 | P2.B2.F.LC.2420, P2.B2.F.LC.2260 | 148d |
| P2.B2.F.LC.2490 |  | Headwall - Set For MEP Tie-in / B2 / MRI & Cath | 1d | 2026-05-11 | 2026-05-11 | P2.B2.LC.1140, P2.B2.LC.1150, P2.B2.LC.1170, P2.B2.LC.1180, P2.B2.LC.1110, BP6.102.3.100 | 155d |
| P2.B2.F.LC.2510 |  | Headwall - MEP Trades Connection / B2 / MRI & Cath | 1d | 2026-05-12 | 2026-05-12 | P2.B2.F.LC.2490 | 155d |
| P2.B2.F.LC.2500 |  | Headwall - Coverplate Install / B2 / MRI & Cath | 1d | 2026-05-13 | 2026-05-13 | P2.B2.F.LC.2510 | 155d |
| P2.B2.F.LC.2080 |  | Hang-Tape-Finish _Hard Lid Ceilings / B2 / MRI & Cath | 5d | 2026-05-14 | 2026-05-20 | P2.SUM.175, P2.B2.F.LC.2070 | 107d |
| P2.B2.F.LC.2310 |  | Interior Building Signage / B2 / MRI & Cath | 5d | 2026-05-18 | 2026-05-22 | P2.B2.F.LC.2300 | 148d |
| P2.B2.F.LC.2090 |  | Paint Ceilings / B2 / MRI & Cath | 5d | 2026-05-21 | 2026-05-28 | P2.B2.F.LC.2080 | 107d |
| P2.B2.F.LC.2320 |  | Work Completion List - Finishes / B2 / MRI & Cath | 5d | 2026-05-26 | 2026-06-01 | P2.B2.F.LC.2310, P2.B2.F.LC.2300, P2.B2.F.LC.2500 | 148d |
| P2.B2.F.LC.2100 |  | Waterproof Ceramic Tile / B2 / MRI & Cath | 5d | 2026-05-29 | 2026-06-04 | P2.B2.F.LC.2090 | 107d |
| P2.B2.F.LC.2110 |  | Ceramic Tile / B2 / MRI & Cath | 5d | 2026-06-05 | 2026-06-11 | P2.B2.F.LC.2100 | 107d |
| P2.B2.F.LC.2120 |  | T-Grid / B2 / MRI & Cath | 5d | 2026-06-12 | 2026-06-18 | P2.B2.F.LC.2110 | 107d |
| P2.B2.F.LC.2130 |  | Diffusers in T-Grid / B2 / MRI & Cath | 5d | 2026-06-19 | 2026-06-25 | P2.B2.F.LC.2120 | 107d |
| P2.B2.F.LC.2140 |  | Lights & Devices / B2 / MRI & Cath | 5d | 2026-06-19 | 2026-06-25 | P2.B2.F.LC.2120 | 107d |
| P2.B2.F.LC.2150 |  | Sprinkler Heads / B2 / MRI & Cath | 5d | 2026-06-19 | 2026-06-25 | P2.B2.F.LC.2120 | 107d |
| P2.B2.F.LC.2160 |  | Trim Low Voltage / B2 / MRI & Cath | 5d | 2026-06-19 | 2026-06-25 | P2.B2.F.LC.2120 | 107d |
| P2.B2.F.LC.2170 |  | Trim Fire Alarm / B2 / MRI & Cath | 5d | 2026-06-19 | 2026-06-25 | P2.B2.F.LC.2120 | 107d |
| P2.B2.F.LC.2180 |  | OH Ceiling Signoff / B2 / MRI & Cath | 10d | 2026-06-26 | 2026-07-10 | P2.B2.F.LC.2130, P2.B2.F.LC.2140, P2.B2.F.LC.2150, P2.B2.F.LC.2170, P2.B2.F.LC.2160 | 107d |
| P2.B2.F.LC.2200 |  | Drop Ceiling Tile / B2 / MRI & Cath | 5d | 2026-07-13 | 2026-07-17 | P2.B2.F.LC.2180 | 107d |
| P2.B2.F.LC.2280 |  | Floor Prep - Epoxy Floors / B2 / Cath & Animal Critical | 5d | 2026-07-20 | 2026-07-24 | P2.B2.F.LC.2190, P2.B2.F.LC.2470, P2.B2.F.LC.2200, BP7.096.3.200 | 107d |
| P2.B2.F.LC.2290 |  | Flooring - Epoxy Floors / B2 / Cath & Animal Critical | 2d | 2026-07-27 | 2026-07-28 | P2.B2.F.LC.2280 | 107d |
| P2.B2.F.LC.2480 |  | Casework (After Flooring) / B2 / MRI & Cath | 1d | 2026-07-29 | 2026-07-29 | P2.B2.F.LC.2290 | 107d |
| P2.B2.F.LC.2330 |  | Remaining Equipment Post Flooring / B2 / MRI & Cath | 5d | 2026-07-30 | 2026-08-05 | BP6.117.3.100, BP6.117.3.110, BP6.117.3.120, P2.B2.F.LC.2320, P2.B2.F.LC.2480 | 107d |
| P2.B2.F.LC.2340 |  | Remaining MEP Hook-Ups / B2 / MRI & Cath | 5d | 2026-08-06 | 2026-08-12 | P2.B2.F.LC.2440, P2.B2.F.LC.2330 | 107d |

| ID | WBS | Task | Duration | Start | Finish | Predecessors | Complete | Total float |
| --- | --- | --- | --- | --- | --- | --- | --- | --- |
| P2.B2.F.LC.2350 |  | OFOI Furniture & Equipment / B2 / MRI & Cath | 5d | 2026-08-06 | 2026-08-12 | P2.B2.F.LC.2340 SS, OFOI.EQUIP.B2.1040, OFOI.EQUIP.B2.1050, OFOI.EQUIP.B2.1000, OFOI.EQUIP.B2.1010, OFOI.EQUIP.B2.1020, OFOI.EQUIP.B2.1030 |  | 117d |
| P2.B2.F.LC.2360 |  | Rough Clean / B2 / MRI & Cath | 5d | 2026-08-13 | 2026-08-19 | P2.B2.F.LC.2440, P2.B2.F.LC.2340 |  | 107d |
| P2.B2.F.LC.2370 |  | Prepare Punchlist / B2 / MRI & Cath | 5d | 2026-08-20 | 2026-08-26 | P2.B2.F.LC.2340 SS, P2.B2.F.LC.2360, P2.B2.F.LC.2500 |  | 107d |
| P2.B2.F.LC.2380 |  | Correct Punchlist / B2 / MRI & Cath | 10d | 2026-08-27 | 2026-09-10 | P2.B2.F.LC.2370, P2.B2.F.LC.2350 |  | 107d |
| P2.B2.F.LC.2390 |  | Final Clean / B2 / MRI & Cath | 5d | 2026-09-11 | 2026-09-17 | P2.SUM.205 FF, P2.B2.F.LC.2380 |  | 107d |
|  | L1 | **L1 / BUILDOUT** |  | 2024-11-11 | 2026-10-21 |  |  |  |
|  | 2 | **CORE & SUPPORT SPACES / LEVEL 1** |  | 2024-11-11 | 2026-10-21 |  |  |  |
|  | 2 | **ROUGH IN - Core & Support Spaces / Level 1** |  | 2024-11-11 | 2026-02-24 |  |  |  |
|  | Z11 | **South (14K SF) / Level 1** |  | 2024-11-11 | 2026-02-24 |  |  |  |
| P2.L1.S.1000 |  | Layout - All Trades / L1 / South | 5d | 2024-11-11 A | 2024-11-25 A | P2.2.03.620 | 100% |  |
| P2.L1.S.1020 |  | OH - Structural Supports (All Trades) / L1 / South | 5d | 2024-11-18 A | 2025-02-07 A | P2.L1.S.1000 | 100% |  |
| P2.L1.S.1030 |  | OH - MEPF - Hangers & Supports / L1 / South | 7d | 2024-11-18 A | 2025-02-07 A | P2.L1.S.1000, P2.L1.S.1020 SS, P2.BIM.L1.40.140 SS | 100% |  |
| P2.L1.S.1010 |  | Framing - Top Track / L1 / South | 10d | 2024-11-19 A | 2024-12-06 A | P2.L1.S.1000 | 100% |  |
| P2.L1.S.1090 |  | Framing - Priority Walls & Door Frames / L1 / South | 10d | 2024-12-09 A | 2025-01-22 A | P2.L1.S.1000, P2.L1.S.1010 | 100% |  |
| P2.L1.S.1130 |  | Framing - Priority Walls - AHJ Inspections / L1 / South | 5d | 2024-12-26 A | 2025-01-24 A | P2.L1.S.1570 FF, P2.L1.S.1090 SS | 100% |  |
| P2.L1.S.1140 |  | Hang/Tape/Finish - Priority Walls / L1 / South | 10d | 2025-01-07 A | 2025-02-07 A | P2.L1.S.1130 SS+4d, P2.L1.S.1020 FF+1d | 100% |  |
| P2.L1.S.1160 |  | Spray/Seal/Firestop - Head of Wall - Priority Walls / L1 / South | 5d | 2025-01-07 A | 2025-02-10 A | P2.L1.S.1140 FF | 100% |  |
| P2.L1.S.1180 |  | OH - Plumbing Piping / L1 / South | 20d | 2025-01-16 A | 2025-03-31 A | P2.L1.S.1030 FF+2d, P2.B2.S.1180 SS | 100% |  |
| P2.L1.S.1570 |  | In Wall - Priority Wall - Backing/Blocking/Supports / L1 / South | 5d | 2025-01-23 A | 2025-01-23 A | P2.L1.S.1090 | 100% |  |
| P2.L1.S.1170 |  | OH - Fire Suppression / L1 / South | 10d | 2025-01-30 A | 2025-02-14 A | P2.B2.N.1170, P2.L1.S.1030 FF+2d | 100% |  |
| P2.L1.S.1190 |  | OH - Electrical - 480/277v Distribution / L1 / South | 10d | 2025-02-10 A | 2025-03-21 A | P2.L1.S.1170, P2.L1.S.1030 | 100% |  |
| P2.L1.S.1210 |  | OH - Hang Duct - HP Mains / L1 / South | 10d | 2025-03-03 A | 2025-03-17 A | P2.L1.S.1030 | 100% |  |
| P2.L1.S.1260 |  | OH - DALT - HP Mains / L1 / South | 10d | 2025-03-17 A | 2025-03-31 A | P2.L1.S.1210 | 100% |  |
| P2.L1.S.1230 |  | OH - Electrical - 208/120v Branch / L1 / South | 10d | 2025-03-24 A | 2025-04-02 A | P2.L1.S.1190 | 100% |  |
| P2.L1.S.1290 |  | OH - Insulate HP Duct / L1 / South | 10d | 2025-03-24 A | 2025-03-31 A | P2.L1.S.1260 | 100% |  |
| P2.L1.S.1220 |  | OH - HVAC Piping (High) / L1 / South | 20d | 2025-03-28 A | 2025-04-17 A | P2.L1.S.1170, P2.L1.S.1030 | 100% |  |
| P2.L1.S.1380 |  | OH - Conduit - Low Volt - Fire Alarm / L1 / South | 10d | 2025-04-14 A | 2025-05-16 A | P2.L1.S.1350, P2.L1.S.1310 | 100% |  |
| P2.L1.S.1390 |  | OH - Conduit - Low Volt - Telecom / L1 / South | 10d | 2025-04-14 A | 2025-05-02 A | P2.L1.S.1350 | 100% |  |
| P2.L1.S.1410 |  | OH - Conduit - Low Volt - Medical Services/Nurse Call (?) / L1 / South | 10d | 2025-04-14 A | 2025-04-25 A | P2.L1.S.1350 | 100% |  |
| P2.L1.S.1350 |  | OH - Insulate LP Duct / L1 / South | 10d | 2025-04-15 A | 2025-04-30 A | P2.L1.S.1300 | 100% |  |
| P2.L1.S.1040 |  | CMU - Drill_Epoxy Masonry Dowels / L1 / South | 10d | 2025-04-18 A | 2025-04-30 A | P2.L1.S.1000, P2.B2.N.1040, P2.FAC.2.Z1.110 | 100% |  |
| P2.L1.S.1300 |  | OH - Hang Duct - LP Branch / L1 / South | 10d | 2025-04-21 A | 2025-04-25 A | P2.L1.S.1260 | 100% |  |
| P2.L1.S.1050 |  | CMU - Lay Block / L1 / South | 10d | 2025-05-01 A | 2025-05-14 A | P2.L1.S.1040, P2.B2.S.1050 | 100% |  |
| P2.L1.S.1060 |  | In Wall - Electrical - CMU / L1 / South | 10d | 2025-05-01 A | 2025-05-14 A | P2.L1.S.1050 SS | 100% |  |
| P2.L1.S.1070 |  | In Wall - Plumbing - CMU / L1 / South | 10d | 2025-05-01 A | 2025-05-14 A | P2.L1.S.1050 SS | 100% |  |
| P2.L1.S.1150 |  | Paint Prime & 1st Coat - Priority Walls / L1 / South | 10d | 2025-05-01 A | 2025-05-14 A | P2.L1.S.1160 SS | 100% |  |
| P2.L1.S.1560 |  | OH - HVAC Piping (Low) / L1 / South | 20d | 2025-05-01 A | 2025-05-29 A | P2.L1.S.1220 | 100% |  |
| P2.L1.S.1100 |  | Paint - CMU Block Fill / L1 / South | 10d | 2025-05-15 A | 2025-05-29 A | P2.L1.S.1050, P2.L1.S.1060, P2.L1.S.1070 | 100% |  |
| P2.L1.S.1110 |  | CMU - Point & Patch / L1 / South | 10d | 2025-05-15 A | 2025-05-29 A | P2.L1.S.1060, P2.L1.S.1100, P2.L1.S.1070 | 100% |  |
| P2.L1.S.1120 |  | Paint Prime & 1st Coat - CMU / L1 / South | 10d | 2025-05-15 A | 2025-05-29 A | P2.L1.S.1110 SS+2d | 100% |  |
| P2.L1.S.1240 |  | OH - Plumbing - Test / L1 / South | 10d | 2025-05-30 A | 2025-06-27 A | P2.L1.S.1220, P2.L1.S.1180, P2.L1.S.1560, P2.L1.S.1070 | 100% |  |
| P2.L1.S.1420 |  | Framing - Balance of Framing & Door Frames / L1 / South | 10d | 2025-06-01 A | 2025-06-10 A | P2.L1.S.1280, P2.L1.S.1410, P2.L1.S.1370, P2.L1.S.1380, P2.L1.S.1390, P2.L1.S.1400 | 100% |  |
| P2.L1.S.1200 |  | Firestop - Thru Wall - Priority Walls / L1 / South | 5d | 2025-06-02 A | 2025-06-06 A | P2.L1.S.1150 | 100% |  |
| P2.L1.S.1270 |  | OH - HVAC Piping - Test / L1 / South | 10d | 2025-06-02 A | 2025-06-13 A | P2.L1.S.1560 | 100% |  |
| P2.L1.S.1280 |  | OH - Insulate Plumbing / L1 / South | 10d | 2025-06-16 A | 2025-07-08 A | P2.L1.S.1240 | 100% |  |
| P2.L1.S.1370 |  | OH - Conduit - Low Volt - BAS/Controls / L1 / South | 10d | 2025-06-16 A | 2025-07-22 A | P2.L1.S.1340, P2.L1.S.1310 | 100% |  |
| P2.L1.S.1400 |  | OH - Conduit - Low Volt - Security / L1 / South | 10d | 2025-06-16 A | 2025-07-22 A | P2.L1.S.1340 | 100% |  |
| P2.L1.S.1340 |  | OH - Insulate HVAC Pipe / L1 / South | 10d | 2025-07-01 A | 2025-07-15 A | P2.L1.S.1270, P2.L1.S.1290, P2.L1.S.1200 | 100% |  |
| P2.L1.S.1310 |  | OH - Set & Connect Mech Equipment / L1 / South | 10d | 2025-07-23 A | 2025-09-26 A | P2.L1.S.1260, P2.L1.S.1270 | 100% |  |
| P2.L1.S.1480 |  | Spray/Seal/Firestop - Head of Wall / L1 / South | 10d | 2025-08-01 A | 2025-08-11 A | P2.L1.S.1470, P2.L1.S.1120 | 100% |  |
| P2.L1.S.1430 |  | In Wall - Plumbing - Framing / L1 / South | 10d | 2025-08-28 A | 2025-09-11 A | P2.L1.S.1420 | 100% |  |
| P2.L1.S.1440 |  | In Wall - Electrical - Framing / L1 / South | 10d | 2025-08-28 A | 2025-09-25 A | P2.L1.S.1230, P2.L1.S.1420 | 100% |  |
| P2.L1.S.1450 |  | In Wall - Backing/Blocking/Supports / L1 / South | 5d | 2025-08-28 A | 2025-09-15 A | P2.L1.S.1420 | 100% |  |
| P2.L1.S.1250 |  | Pull Wire - Electrical - 480/277v Distribution / L1 / South | 10d | 2025-09-29 A | 2025-11-14 A | P2.L1.S.1190, P2.1.HE.3911.1010, P2.1.HE.5959.1050, P2.1.HE.6940.1050 | 100% |  |
| P2.L1.S.1360 |  | Pull Wire - Electrical - 208/120v Branch & Equip / L1 / South | 20d | 2025-09-29 A | 2025-11-14 A | P2.L1.S.1230, P2.L1.S.1320, P2.L1.S.1440 | 100% |  |
| P2.L1.S.1320 |  | OH - Electrical - Equip Tie In / L1 / South | 10d | 2025-11-10 A | 2025-11-14 A | P2.L1.S.1310 | 100% |  |
| P2.L1.S.1460 |  | AHJ Inspections - Wall Close In / L1 / South | 5d | 2025-12-01 | 2025-12-05 | P2.L1.S.1440, P2.L1.S.1450, P2.L1.S.1430 |  | 24d |
| P2.L1.S.1470 |  | Hang-Tape-Finish - Walls and Hard Lid Ceilings / L1 / South | 15d | 2025-12-08 | 2025-12-29 | P2.L1.S.1460, P2.SUM.175, BP5.081.3.200, P2.FAC.4.Z1.150, P2.L1.LC.1420 |  | 24d |
| P2.L1.S.1490 |  | Firestop - Thru Wall / L1 / South | 10d | 2025-12-30 | 2026-01-13 | P2.L1.S.1470 |  | 69d |
| P2.L1.S.1500 |  | Pull Wire - Low Volt - BAS/Controls / L1 / South | 10d | 2025-12-30 | 2026-01-13 | P2.L1.S.1470 |  | 69d |
| P2.L1.S.1510 |  | Pull Wire - Low Volt - Fire Alarm / L1 / South | 10d | 2025-12-30 | 2026-01-13 | P2.L1.S.1470 |  | 69d |
| P2.L1.S.1520 |  | Pull Wire - Low Volt - Telecom / L1 / South | 10d | 2025-12-30 | 2026-01-13 | P2.L1.S.1470 |  | 69d |
| P2.L1.S.1530 |  | Pull Wire - Low Volt - Security / L1 / South | 10d | 2025-12-30 | 2026-01-13 | P2.L1.S.1470 |  | 69d |
| P2.L1.S.1540 |  | Pull Wire - Low Volt - Medical Services/Nurse Call (?) / L1 / South | 10d | 2025-12-30 | 2026-01-13 | P2.L1.S.1470 |  | 69d |
| P2.L1.S.1330 |  | OH - HVAC Piping - Equip Tie In / L1 / South | 15d | 2026-01-28 | 2026-02-17 | P2.L1.S.1270, P2.L1.S.1310, CX.B2.HYDR.1000 |  | 44d |
| P2.L1.S.1550 |  | Trades Inspect & Verify R/I Work Completed to Specs / L1 / South | 5d | 2026-02-18 | 2026-02-24 | P2.L1.S.1490, P2.L1.S.1480, P2.L1.S.1510, P2.L1.S.1520, P2.L1.S.1530, P2.L1.S.1250, P2.L1.S.1540, P2.L1.S.1360, P2.L1.S.1500, DDD2600, DDD3150, DDD2950, DDD3100, DDD2150, DDD3000, DDD3050, P2.L1.S.1330 |  | 44d |
|  | Z111 | **North (15K SF) / Level 1** |  | 2024-11-25 | 2026-02-24 |  |  |  |
| P2.L1.N.1000 |  | Layout - All Trades / L1 / North | 5d | 2024-11-25 A | 2024-12-10 A | P2.2.03.630 | 100% |  |
| P2.L1.N.1010 |  | Framing - Top Track / L1 / North | 10d | 2024-12-04 A | 2024-12-23 A | P2.L1.N.1000 | 100% |  |
| P2.L1.N.1030 |  | OH - MEPF - Hangers & Supports / L1 / North | 10d | 2024-12-24 A | 2025-02-19 A | P2.L1.N.1000, P2.BIM.L1.40.140 SS | 100% |  |

| ID | WBS | Task | Duration | Start | Finish | Predecessors | Complete | Total float |
| --- | --- | --- | --- | --- | --- | --- | --- | --- |
| P2.L1.N.1090 |  | Framing - Priority Walls & Door Frames / L1 / North | 10d | 2024-12-26 A | 2025-02-04 A | P2.L1.N.1000, P2.L1.N.1010, P2.B2.N.1090 | 100% |  |
| P2.L1.N.1180 |  | OH - Plumbing Piping / L1 / North | 20d | 2024-12-26 A | 2025-03-03 A | P2.L1.N.1030 SS | 100% |  |
| P2.L1.N.1020 |  | OH - Structural Supports (All Trades) / L1 / North | 5d | 2025-01-02 A | 2025-02-19 A | P2.L1.N.1000 | 100% |  |
| P2.L1.N.1040 |  | CMU - Drill_Epoxy Masonry Dowels / L1 / North | 10d | 2025-01-16 A | 2025-02-01 A | P2.L1.N.1000 | 100% |  |
| P2.L1.N.1570 |  | In Wall - Priority Walls - Backing/Blocking/Supports / L1 / North | 5d | 2025-01-20 A | 2025-01-21 A | P2.L1.N.1090 SS | 100% |  |
| P2.L1.N.1130 |  | Framing - Priority Walls - AHJ Inspections / L1 / North | 5d | 2025-01-22 A | 2025-02-19 A | P2.L1.N.1570, P2.L1.N.1090 FF+2d | 100% |  |
| P2.L1.N.1140 |  | Hang/Tape/Finish - Priority Walls / L1 / North | 10d | 2025-01-22 A | 2025-02-17 A | P2.L1.N.1130 FF+2d, P2.L1.N.1020 FF | 100% |  |
| P2.L1.N.1160 |  | Spray/Seal/Firestop - Head of Wall - Priority Walls / L1 / North | 5d | 2025-01-23 A | 2025-01-24 A | P2.L1.N.1140 SS | 100% |  |
| P2.L1.N.1210 |  | OH - Hang Duct - HP Mains / L1 / North | 10d | 2025-02-13 A | 2025-03-14 A | P2.L1.N.1030 | 100% |  |
| P2.L1.N.1170 |  | OH - Fire Suppression / L1 / North | 10d | 2025-02-17 A | 2025-02-28 A | P2.L1.N.1030 | 100% |  |
| P2.L1.N.1190 |  | OH - Electrical - 480/277v Distribution / L1 / North | 10d | 2025-02-17 A | 2025-03-20 A | P2.L1.N.1030 | 100% |  |
| P2.L1.N.1220 |  | OH - HVAC Piping (High) / L1 / North | 20d | 2025-03-17 A | 2025-04-14 A | P2.L1.N.1170, P2.L1.N.1030 | 100% |  |
| P2.L1.N.1260 |  | OH - DALT - HP Mains / L1 / North | 10d | 2025-03-17 A | 2025-04-05 A | P2.L1.N.1210 | 100% |  |
| P2.L1.N.1230 |  | OH - Electrical - 208/120v Branch / L1 / North | 10d | 2025-03-24 A | 2025-04-07 A | P2.L1.N.1190 | 100% |  |
| P2.L1.N.1290 |  | OH - Insulate HP Duct / L1 / North | 10d | 2025-03-24 A | 2025-04-07 A | P2.L1.N.1260 SS | 100% |  |
| P2.L1.N.1300 |  | OH - Hang Duct - LP Branch / L1 / North | 5d | 2025-04-14 A | 2025-04-18 A | P2.L1.N.1290, P2.L1.N.1260 | 100% |  |
| P2.L1.N.1350 |  | OH - Insulate LP Duct / L1 / North | 10d | 2025-04-21 A | 2025-05-02 A | P2.L1.N.1300 | 100% |  |
| P2.L1.N.1150 |  | Paint Prime & 1st Coat - Priority Walls / L1 / North | 10d | 2025-05-01 A | 2025-05-14 A | P2.L1.N.1160 SS | 100% |  |
| P2.L1.N.1560 |  | OH - HVAC Piping (Low) / L1 / North | 20d | 2025-05-01 A | 2025-05-29 A | P2.L1.N.1220 | 100% |  |
| P2.L1.N.1050 |  | CMU - Lay Block / L1 / North | 10d | 2025-05-08 A | 2025-05-21 A | P2.L1.N.1040, P2.B2.N.1050, P2.FAC.2.Z3.110, P2.FAC.2.Z2.110, P2.FAC.2.Z1.120 | 100% |  |
| P2.L1.N.1060 |  | In Wall - Electrical - CMU / L1 / North | 10d | 2025-05-08 A | 2025-05-21 A | P2.L1.N.1050 SS | 100% |  |
| P2.L1.N.1070 |  | In Wall - Plumbing - CMU / L1 / North | 10d | 2025-05-08 A | 2025-05-21 A | P2.L1.N.1050 SS | 100% |  |
| P2.L1.N.1380 |  | OH - Conduit - Low Volt - Fire Alarm / L1 / North | 10d | 2025-05-15 A | 2025-05-29 A | P2.L1.N.1350 | 100% |  |
| P2.L1.N.1100 |  | Paint - CMU Block Fill / L1 / North | 10d | 2025-05-22 A | 2025-05-30 A | P2.L1.N.1050 | 100% |  |
| P2.L1.N.1390 |  | OH - Conduit - Low Volt - Telecom / L1 / North | 10d | 2025-05-22 A | 2025-05-30 A | P2.L1.N.1350, P2.L1.N.1380 | 100% |  |
| P2.L1.N.1200 |  | Firestop - Thru Wall - Priority Walls / L1 / North | 5d | 2025-05-30 A | 2025-06-05 A | P2.L1.N.1150 | 100% |  |
| P2.L1.N.1270 |  | OH - HVAC Piping - Test / L1 / North | 5d | 2025-05-30 A | 2025-06-05 A | P2.L1.N.1560 | 100% |  |
| P2.L1.N.1110 |  | CMU - Point & Patch / L1 / North | 10d | 2025-06-02 A | 2025-06-13 A | P2.L1.N.1060, P2.L1.N.1100, P2.L1.N.1070 | 100% |  |
| P2.L1.N.1410 |  | OH - Conduit - Low Volt - Medical Services/Nurse Call (?) / L1 / North | 10d | 2025-06-02 A | 2025-06-13 A | P2.L1.N.1350, P2.L1.N.1390 | 100% |  |
| P2.L1.N.1120 |  | Paint Prime & 1st Coat - CMU / L1 / North | 10d | 2025-06-04 A | 2025-06-17 A | P2.L1.N.1110 SS+2d | 100% |  |
| P2.L1.N.1240 |  | OH - Plumbing - Test / L1 / North | 10d | 2025-06-13 A | 2025-06-26 A | P2.L1.N.1180, P2.L1.S.1240 | 100% |  |
| P2.L1.N.1340 |  | OH - Insulate HVAC Pipe / L1 / North | 10d | 2025-06-16 A | 2025-06-19 A | P2.L1.N.1290, P2.L1.N.1270, P2.L1.N.1200 | 100% |  |
| P2.L1.N.1420 |  | Framing - Balance of Framing & Door Frames / L1 / North | 10d | 2025-06-16 A | 2025-06-26 A | P2.L1.N.1280, P2.L1.N.1400, P2.L1.N.1410, P2.L1.N.1370, P2.L1.N.1380, P2.L1.N.1390 | 100% |  |
| P2.L1.N.1370 |  | OH - Conduit - Low Volt - BAS/Controls / L1 / North | 10d | 2025-06-20 A | 2025-07-22 A | P2.L1.N.1340, P2.L1.N.1310 | 100% |  |
| P2.L1.N.1400 |  | OH - Conduit - Low Volt - Security / L1 / North | 10d | 2025-06-20 A | 2025-07-08 A | P2.L1.N.1340 | 100% |  |
| P2.L1.N.1280 |  | OH - Insulate Plumbing / L1 / North | 10d | 2025-06-27 A | 2025-07-14 A | P2.L1.N.1240 | 100% |  |
| P2.L1.N.1310 |  | OH - Set & Connect Mech Equipment / L1 / North | 10d | 2025-07-09 A | 2025-07-23 A | P2.L1.N.1260, P2.L1.N.1300, P2.L1.N.1270 | 100% |  |
| P2.L1.N.1430 |  | In Wall - Plumbing - Framing / L1 / North | 10d | 2025-07-23 A | 2025-08-06 A | P2.L1.N.1420 | 100% |  |
| P2.L1.N.1440 |  | In Wall - Electrical - Framing / L1 / North | 10d | 2025-07-23 A | 2025-08-06 A | P2.L1.N.1230, P2.L1.N.1420 | 100% |  |
| P2.L1.N.1450 |  | In Wall - Backing/Blocking/Supports / L1 / North | 5d | 2025-07-23 A | 2025-08-06 A | P2.L1.N.1420 | 100% |  |
| P2.L1.N.1480 |  | Spray/Seal/Firestop - Head of Wall / L1 / North | 10d | 2025-08-01 A | 2025-08-11 A | P2.L1.N.1120, P2.L1.N.1470 | 100% |  |
| P2.L1.N.1250 |  | Pull Wire - Electrical - 480/277v Distribution / L1 / North | 10d | 2025-09-29 A | 2025-12-05 | P2.L1.N.1190, P2.1.HE.2950.1050, P2.1.HE.2803.1050 | 50% | 94d |
| P2.L1.N.1360 |  | Pull Wire - Electrical - 208/120v Branch & Equip / L1 / North | 10d | 2025-09-29 A | 2025-12-01 A | P2.L1.N.1230, P2.L1.N.1320, P2.L1.N.1440, P2.L1.N.1500 | 100% |  |
| P2.L1.N.1320 |  | OH - Electrical - Equip Tie In / L1 / North | 10d | 2025-11-10 A | 2025-12-12 | P2.L1.N.1310 |  | 59d |
| P2.L1.N.1460 |  | AHJ Inspections - Wall Close In / L1 / North | 5d | 2025-12-01 | 2025-12-05 | P2.L1.N.1440, P2.L1.N.1450, P2.L1.N.1430 |  | 24d |
| P2.L1.N.1510 |  | Pull Wire - Low Volt - Fire Alarm / L1 / North | 10d | 2025-12-01 | 2025-12-12 | P2.L1.N.1440, P2.L1.N.1380 |  | 49d |
| P2.L1.N.1500 |  | Pull Wire - Low Volt - BAS/Controls / L1 / North | 10d | 2025-12-15 | 2025-12-29 | P2.L1.N.1440, P2.L1.N.1370, P2.L1.N.1510, P2.L1.N.1510 FF |  | 49d |
| P2.L1.N.1470 |  | Hang-Tape-Finish - Walls and Hard Lid Ceilings / L1 / North | 15d | 2025-12-30 | 2026-01-20 | P2.L1.N.1460, P2.SUM.175, P2.FAC.4.Z2.110, P2.FAC.4.Z2.170, P2.ETV.1080, P2.FAC.4.Z3.110 FF, P2.FAC.4.Z3.230 FF, P2.L1.LC.1420 |  | 9d |
| P2.L1.N.1520 |  | Pull Wire - Low Volt - Telecom / L1 / North | 10d | 2025-12-30 | 2026-01-13 | P2.L1.N.1390, P2.L1.N.1440, P2.L1.N.1500, P2.L1.N.1360 |  | 49d |
| P2.L1.N.1530 |  | Pull Wire - Low Volt - Security / L1 / North | 10d | 2026-01-14 | 2026-01-27 | P2.L1.N.1400, P2.L1.N.1440, P2.L1.N.1520, P2.L1.N.1520 FF |  | 49d |
| P2.L1.N.1490 |  | Firestop - Thru Wall / L1 / North | 10d | 2026-01-21 | 2026-02-03 | P2.L1.N.1470 |  | 54d |
| P2.L1.N.1330 |  | OH - HVAC Piping - Equip Tie In / L1 / North | 15d | 2026-01-28 | 2026-02-17 | P2.L1.N.1310, P2.L1.N.1270, CX.B2.HYDR.1000 |  | 44d |
| P2.L1.N.1540 |  | Pull Wire - Low Volt - Medical Services/Nurse Call (?) / L1 / North | 10d | 2026-01-28 | 2026-02-10 | P2.L1.N.1440, P2.L1.N.1410, P2.L1.N.1530 |  | 49d |
| P2.L1.N.1550 |  | Trades Inspect & Verify R/I Work Completed to Specs / L1 / North | 5d | 2026-02-18 | 2026-02-24 | P2.L1.N.1490, P2.L1.N.1480, P2.L1.N.1540, P2.L1.N.1500, P2.L1.N.1510, P2.L1.N.1520, P2.L1.N.1530, P2.L1.N.1250, P2.L1.N.1360, DDD2450, DDD2200, DDD2300, DDD2350, DDD2550, P2.L1.N.1330 |  | 44d |
|  | 3 | **House Electrical Rooms / Level 1** |  | 2025-01-07 | 2025-12-17 |  |  |  |
|  | 10 | **House Electrical Room 1-6940** |  | 2025-01-07 | 2025-12-08 |  |  |  |
| P2.1.HE.6940.1000 |  | Framing and Blocking / L1 / South / 6940 | 3d | 2025-01-07 A | 2025-03-01 A | P2.L1.S.1090 | 100% |  |
| P2.1.HE.6940.1010 |  | In Wall Rough In / L1 / South / 6940 | 2d | 2025-01-10 A | 2025-03-31 A | P2.1.HE.6940.1000 FF+1d | 100% |  |
| P2.1.HE.6940.1020 |  | Inspections - Wall Close In / L1 / South / 6940 | 2d | 2025-05-02 A | 2025-05-02 A | P2.1.HE.6940.1010 | 100% |  |
| P2.1.HE.6940.1030 |  | Hang-Tape-Finish / L1 / South / 6940 | 5d | 2025-05-07 A | 2025-05-23 A | P2.1.HE.6940.1020 | 100% |  |
| P2.1.HE.6940.1040 |  | Paint Prime & 1st Coat / L1 / South / 6940 | 2d | 2025-05-26 A | 2025-05-30 A | P2.1.HE.6940.1030 | 100% |  |
| P2.1.HE.6940.1050 |  | Cans/Troughs/Backboxes/XFMRs / L1 / South / 6940 | 5d | 2025-06-09 A | 2025-06-10 A | P2.1.HE.6940.1040 | 100% |  |
| P2.1.HE.6940.1060 |  | Risers and OH Conduit Connections / L1 / South / 6940 | 5d | 2025-06-16 A | 2025-06-25 A | P2.1.HE.6940.1050 | 100% |  |
| P2.1.HE.6940.1070 |  | Pull Wire - In From Distribution Panels / Out to Branch Circuits / L1 / South / 6940 | 5d | 2025-10-07 A | 2025-10-24 A | P2.1.HE.6940.1060 | 100% |  |
| P2.1.HE.6940.1080 |  | Panelboards, Interconnect Wiring, and Remaining Room Buildout of All Systems / L1 / South / 6940 | 10d | 2025-10-14 A | 2025-10-24 A | BP1.262.3.100, BP1.262.3.220, P2.1.HE.6940.1060 | 100% |  |
| P2.1.HE.6940.1090 |  | Test & Terminate / L1 / South / 6940 | 5d | 2025-11-03 A | 2025-11-07 A | P2.1.HE.6940.1070, P2.1.HE.6940.1080 | 100% |  |
| P2.1.HE.6940.1100 |  | Paint - Finish Coat / L1 / South / 6940 | 2d | 2025-11-10 A | 2025-11-11 A | P2.1.HE.6940.1090 | 100% |  |
| P2.1.HE.6940.1110 |  | Trim All MEPF Finishes / L1 / South / 6940 | 2d | 2025-12-01 | 2025-12-02 | BP1.233.3.410, P2.1.HE.6940.1100 |  | 43d |
| P2.1.HE.6940.1120 |  | Flooring / L1 / South / 6940 | 2d | 2025-12-03 | 2025-12-04 | P2.1.HE.6940.1110 |  | 43d |
| P2.1.HE.6940.1130 |  | Doors & Hardware / L1 / South / 6940 | 2d | 2025-12-05 | 2025-12-08 | P2.1.HE.6940.1120 |  | 43d |

| ID | WBS | Task | Duration | Start | Finish | Predecessors | Complete | Total float |
| --- | --- | --- | --- | --- | --- | --- | --- | --- |
| P2.1.HE.6940.1140 |  | Panels Ready to Energize - Lock Doors and Limit Access / L1 / South / 6940 | 0d | 2025-12-08 | 2025-12-08 | P2.1.HE.6940.1130 FF, P2.1.HE.6940.1090 |  | 43d |
|  | 9 | **House Electrical Room 1-3911** |  | 2025-03-24 | 2025-12-10 |  |  |  |
| P2.1.HE.3911.1070 |  | Framing and Blocking / L1 / South / 3911 | 3d | 2025-03-24 A | 2025-03-28 A | P2.L1.S.1090 | 100% |  |
| P2.1.HE.3911.1080 |  | In Wall Rough In / L1 / South / 3911 | 2d | 2025-03-31 A | 2025-04-11 A | P2.1.HE.3911.1070 | 100% |  |
| P2.1.HE.3911.1100 |  | Inspections - Wall Close In / L1 / South / 3911 | 2d | 2025-04-17 A | 2025-04-18 A | P2.1.HE.3911.1080 | 100% |  |
| P2.1.HE.3911.1090 |  | Hang-Tape-Finish / L1 / South / 3911 | 5d | 2025-04-21 A | 2025-04-25 A | P2.1.HE.3911.1100 | 100% |  |
| P2.1.HE.3911.1000 |  | Paint Prime & 1st Coat / L1 / South / 3911 | 2d | 2025-04-28 A | 2025-04-30 A | P2.1.HE.3911.1090 | 100% |  |
| P2.1.HE.3911.1010 |  | Cans/Troughs/Backboxes/XFMRs / L1 / South / 3911 | 5d | 2025-06-11 A | 2025-06-12 A | P2.1.HE.3911.1000 | 100% |  |
| P2.1.HE.3911.1020 |  | Risers and OH Conduit Connections / L1 / South / 3911 | 5d | 2025-06-16 A | 2025-06-19 A | P2.1.HE.3911.1010 | 100% |  |
| P2.1.HE.3911.1030 |  | Pull Wire - In From Distribution Panels / Out to Branch Circuits / L1 / South / 3911 | 5d | 2025-10-06 A | 2025-10-15 A | P2.1.HE.3911.1020 | 100% |  |
| P2.1.HE.3911.1050 |  | Panelboards, Interconnect Wiring, and Remaining Room Buildout of All Systems / L1 / South / 3911 | 10d | 2025-10-15 A | 2025-11-04 A | BP1.262.3.100, BP1.262.3.220, P2.1.HE.3911.1020 | 100% |  |
| P2.1.HE.3911.1040 |  | Test & Terminate / L1 / South / 3911 | 5d | 2025-11-05 A | 2025-11-11 A | P2.1.HE.3911.1050, P2.1.HE.3911.1030 | 100% |  |
| P2.1.HE.3911.1120 |  | Paint - Finish Coat / L1 / South / 3911 | 2d | 2025-12-01 | 2025-12-02 | P2.1.HE.3911.1040 |  | 41d |
| P2.1.HE.3911.1110 |  | Trim All MEPF Finishes / L1 / South / 3911 | 2d | 2025-12-03 | 2025-12-04 | BP1.233.3.410, P2.1.HE.3911.1120 |  | 41d |
| P2.1.HE.3911.1130 |  | Flooring / L1 / South / 3911 | 2d | 2025-12-05 | 2025-12-08 | P2.1.HE.3911.1110 |  | 41d |
| P2.1.HE.3911.1140 |  | Doors & Hardware / L1 / South / 3911 | 2d | 2025-12-09 | 2025-12-10 | P2.1.HE.3911.1130 |  | 41d |
| P2.1.HE.3911.1060 |  | Panels Ready to Energize - Lock Doors and Limit Access / L1 / South / 3911 | 0d | 2025-12-10 | 2025-12-10 | P2.1.HE.3911.1140 FF, P2.1.HE.3911.1040 |  | 41d |
|  | 8 | **House Electrical Room 1-5959** |  | 2025-01-07 | 2025-12-10 |  |  |  |
| P2.1.HE.5959.1000 |  | Framing and Blocking / L1 / South / 5959 | 3d | 2025-01-07 A | 2025-03-28 A | P2.L1.S.1090 | 100% |  |
| P2.1.HE.5959.1010 |  | In Wall Rough In / L1 / South / 5959 | 2d | 2025-01-10 A | 2025-03-31 A | P2.1.HE.5959.1000 FF+1d | 100% |  |
| P2.1.HE.5959.1020 |  | Inspections - Wall Close In / L1 / South / 5959 | 2d | 2025-04-10 A | 2025-04-10 A | P2.1.HE.5959.1010 | 100% |  |
| P2.1.HE.5959.1030 |  | Hang-Tape-Finish / L1 / South / 5959 | 5d | 2025-04-14 A | 2025-04-15 A | P2.1.HE.5959.1020, P2.FAC.2.Z1.180 | 100% |  |
| P2.1.HE.5959.1040 |  | Paint Prime & 1st Coat / L1 / South / 5959 | 2d | 2025-04-21 A | 2025-04-22 A | P2.1.HE.5959.1030 | 100% |  |
| P2.1.HE.5959.1050 |  | Cans/Troughs/Backboxes/XFMRs / L1 / South / 5959 | 5d | 2025-06-11 A | 2025-06-12 A | P2.1.HE.5959.1040 | 100% |  |
| P2.1.HE.5959.1060 |  | Risers and OH Conduit Connections / L1 / South / 5959 | 5d | 2025-06-16 A | 2025-06-18 A | P2.1.HE.5959.1050 | 100% |  |
| P2.1.HE.5959.1070 |  | Pull Wire - In From Distribution Panels / Out to Branch Circuits / L1 / South / 5959 | 5d | 2025-10-02 A | 2025-10-15 A | P2.1.HE.5959.1060 | 100% |  |
| P2.1.HE.5959.1080 |  | Panelboards, Interconnect Wiring, and Remaining Room Buildout of All Systems / L1 / South / 5959 | 10d | 2025-10-15 A | 2025-11-05 A | BP1.262.3.100, BP1.262.3.220, P2.1.HE.5959.1060 | 100% |  |
| P2.1.HE.5959.1090 |  | Test & Terminate / L1 / South / 5959 | 5d | 2025-11-06 A | 2025-11-12 A | P2.1.HE.5959.1080, P2.1.HE.5959.1070 | 100% |  |
| P2.1.HE.5959.1100 |  | Paint - Finish Coat / L1 / South / 5959 | 2d | 2025-12-01 | 2025-12-02 | P2.1.HE.5959.1090 |  | 41d |
| P2.1.HE.5959.1110 |  | Trim All MEPF Finishes / L1 / South / 5959 | 2d | 2025-12-03 | 2025-12-04 | BP1.233.3.410, P2.1.HE.5959.1100 |  | 41d |
| P2.1.HE.5959.1120 |  | Flooring / L1 / South / 5959 | 2d | 2025-12-05 | 2025-12-08 | P2.1.HE.5959.1110 |  | 41d |
| P2.1.HE.5959.1130 |  | Doors & Hardware / L1 / South / 5959 | 2d | 2025-12-09 | 2025-12-10 | P2.1.HE.5959.1120 |  | 41d |
| P2.1.HE.5959.1140 |  | Panels Ready to Energize - Lock Doors and Limit Access / L1 / South / 5959 | 0d | 2025-12-10 | 2025-12-10 | P2.1.HE.5959.1130 FF, P2.1.HE.5959.1090 |  | 41d |
|  | 7 | **House Electrical Room 1-2950** |  | 2025-01-16 | 2025-12-10 |  |  |  |
| P2.1.HE.2950.1000 |  | Framing and Blocking / L1 / North / 2950 | 3d | 2025-01-16 A | 2025-03-01 A | P2.L1.N.1090 SS | 100% |  |
| P2.1.HE.2950.1010 |  | In Wall Rough In / L1 / North / 2950 | 2d | 2025-01-21 A | 2025-03-31 A | P2.1.HE.2950.1000 FF+1d | 100% |  |
| P2.1.HE.2950.1020 |  | Inspections - Wall Close In / L1 / North / 2950 | 2d | 2025-04-10 A | 2025-04-10 A | P2.1.HE.2950.1010 | 100% |  |
| P2.1.HE.2950.1030 |  | Hang-Tape-Finish / L1 / North / 2950 | 5d | 2025-04-14 A | 2025-04-17 A | P2.1.HE.2950.1020 | 100% |  |
| P2.1.HE.2950.1040 |  | Paint Prime & 1st Coat / L1 / North / 2950 | 2d | 2025-04-21 A | 2025-04-23 A | P2.1.HE.2950.1030 | 100% |  |
| P2.1.HE.2950.1050 |  | Cans/Troughs/Backboxes/XFMRs / L1 / North / 2950 | 2d | 2025-04-24 A | 2025-05-01 A | P2.1.HE.2950.1040 | 100% |  |
| P2.1.HE.2950.1060 |  | Risers and OH Conduit Connections / L1 / North / 2950 | 5d | 2025-05-01 A | 2025-05-06 A | P2.1.HE.2950.1050 | 100% |  |
| P2.1.HE.2950.1070 |  | Pull Wire - In From Distribution Panels / Out to Branch Circuits / L1 / North / 2950 | 5d | 2025-10-13 A | 2025-10-24 A | P2.1.HE.2950.1060 | 100% |  |
| P2.1.HE.2950.1080 |  | Panelboards, Interconnect Wiring, and Remaining Room Buildout of All Systems / L1 / North / 2950 | 10d | 2025-10-24 A | 2025-11-07 A | BP1.262.3.100, BP1.262.3.220, P2.1.HE.2950.1060 | 100% |  |
| P2.1.HE.2950.1090 |  | Test & Terminate / L1 / North / 2950 | 5d | 2025-11-10 A | 2025-11-14 A | P2.1.HE.2950.1070, P2.1.HE.2950.1080 | 100% |  |
| P2.1.HE.2950.1100 |  | Paint - Finish Coat / L1 / North / 2950 | 2d | 2025-12-01 | 2025-12-02 | P2.1.HE.2950.1090 |  | 41d |
| P2.1.HE.2950.1110 |  | Trim All MEPF Finishes / L1 / North / 2950 | 2d | 2025-12-03 | 2025-12-04 | BP1.233.3.410, P2.1.HE.2950.1100 |  | 41d |
| P2.1.HE.2950.1120 |  | Flooring / L1 / North / 2950 | 2d | 2025-12-05 | 2025-12-08 | P2.1.HE.2950.1110 |  | 41d |
| P2.1.HE.2950.1130 |  | Doors & Hardware / L1 / North / 2950 | 2d | 2025-12-09 | 2025-12-10 | P2.1.HE.2950.1120 |  | 41d |
| P2.1.HE.2950.1140 |  | Panels Ready to Energize - Lock Doors and Limit Access / L1 / North / 2950 | 0d | 2025-12-10 | 2025-12-10 | P2.1.HE.2950.1130 FF, P2.1.HE.2950.1090 |  | 41d |
|  | 6 | **House Electrical Room 1-2803** |  | 2025-01-16 | 2025-12-17 |  |  |  |
| P2.1.HE.2803.1000 |  | Framing and Blocking / L1 / North / 2803 | 3d | 2025-01-16 A | 2025-03-01 A | P2.L1.N.1090 SS | 100% |  |
| P2.1.HE.2803.1010 |  | In Wall Rough In / L1 / North / 2803 | 2d | 2025-01-21 A | 2025-03-31 A | P2.1.HE.2803.1000 FF+1d | 100% |  |
| P2.1.HE.2803.1020 |  | Inspections - Wall Close In / L1 / North / 2803 | 2d | 2025-04-17 A | 2025-04-17 A | P2.1.HE.2803.1010 FF+1d | 100% |  |
| P2.1.HE.2803.1030 |  | Hang-Tape-Finish / L1 / North / 2803 | 5d | 2025-04-21 A | 2025-04-25 A | P2.1.HE.2803.1020 | 100% |  |
| P2.1.HE.2803.1040 |  | Paint Prime & 1st Coat / L1 / North / 2803 | 2d | 2025-05-26 A | 2025-05-30 A | P2.1.HE.2803.1030 | 100% |  |
| P2.1.HE.2803.1050 |  | Cans/Troughs/Backboxes/XFMRs / L1 / North / 2803 | 5d | 2025-06-10 A | 2025-06-12 A | P2.1.HE.2803.1040 | 100% |  |
| P2.1.HE.2803.1060 |  | Risers and OH Conduit Connections / L1 / North / 2803 | 5d | 2025-06-12 A | 2025-06-17 A | P2.1.HE.2803.1050 | 100% |  |
| P2.1.HE.2803.1070 |  | Pull Wire - In From Distribution Panels / Out to Branch Circuits / L1 / North / 2803 | 5d | 2025-11-03 A | 2025-11-07 A | P2.1.HE.2803.1060 | 100% |  |
| P2.1.HE.2803.1080 |  | Panelboards, Interconnect Wiring, and Remaining Room Buildout of All Systems / L1 / North / 2803 | 10d | 2025-11-03 A | 2025-11-14 A | BP1.262.3.100, BP1.262.3.220, P2.1.HE.2803.1060 | 100% |  |
| P2.1.HE.2803.1090 |  | Test & Terminate / L1 / North / 2803 | 5d | 2025-12-01 | 2025-12-05 | P2.1.HE.2803.1070, P2.1.HE.2803.1080 |  | 36d |
| P2.1.HE.2803.1100 |  | Paint - Finish Coat / L1 / North / 2803 | 2d | 2025-12-08 | 2025-12-09 | P2.1.HE.2803.1090 |  | 36d |
| P2.1.HE.2803.1110 |  | Trim All MEPF Finishes / L1 / North / 2803 | 2d | 2025-12-10 | 2025-12-11 | BP1.233.3.410, P2.1.HE.2803.1100 |  | 36d |
| P2.1.HE.2803.1120 |  | Flooring / L1 / North / 2803 | 2d | 2025-12-12 | 2025-12-15 | P2.1.HE.2803.1110 |  | 36d |
| P2.1.HE.2803.1130 |  | Doors & Hardware / L1 / North / 2803 | 2d | 2025-12-16 | 2025-12-17 | P2.1.HE.2803.1120 |  | 36d |
| P2.1.HE.2803.1140 |  | Panels Ready to Energize - Lock Doors and Limit Access / L1 / North / 2803 | 0d | 2025-12-17 | 2025-12-17 | P2.1.HE.2803.1130 FF, P2.1.HE.2803.1090 |  | 36d |
|  | 1 | **Fire Pump Room 1-6950** |  | 2025-07-03 | 2025-12-19 |  |  |  |
| P2.1.FP.6950.1020 |  | FRP Equip Pads / L1 / South / 6950 | 3d | 2025-07-03 A | 2025-07-08 A | P2.L1.S.1420 | 100% |  |
| P2.1.FP.6950.1010 |  | Set Fire Pump and Supporting Equipment / L1 / South / 6950 | 5d | 2025-08-05 A | 2025-08-11 A | P2.1.FP.6950.1020, BP1.210.3.200 | 100% |  |
| P2.1.FP.6950.1030 |  | Fire Suppression Piping and Connections / L1 / South / 6950 | 10d | 2025-08-15 A | 2025-08-28 A | P2.1.FP.6950.1010 | 100% |  |
| P2.1.FP.6950.1050 |  | Fire Alarm Connections to Fire Pump and Supporting Equipment / L1 / South / 6950 | 5d | 2025-08-26 A | 2025-12-02 | P2.1.FP.6950.1030 FF+2d | 60% | 250d |

| ID | WBS | Task | Duration | Start | Finish | Predecessors | Total float |
| --- | --- | --- | --- | --- | --- | --- | --- |
| P2.1.FP.6950.1000 |  | Paint Prime & 1st Coat / L1 / South / 6950 | 2d | 2025-12-01 | 2025-12-02 | P2.L1.S.1110 | 247d |
| P2.1.FP.6950.1040 |  | Electrical Connections to Fire Pump and Supporting Equipment / L1 / South / 6950 | 10d | 2025-12-01 | 2025-12-12 | P2.1.FP.6950.1010 | 242d |
| P2.1.FP.6950.1070 |  | Flooring Prep - Epoxy Floors / L1 / South / 6950 | 2d | 2025-12-03 | 2025-12-04 | P2.1.FP.6950.1000, P2.1.FP.6950.1010, P2.1.FP.6950.1020, BP7.096.3.200 | 247d |
| P2.1.FP.6950.1080 |  | Flooring - Epoxy Floors / L1 / South / 6950 | 1d | 2025-12-05 | 2025-12-05 | P2.1.FP.6950.1070 | 247d |
| P2.1.FP.6950.1060 |  | Initial Start Up Fire Pump and Supporting Equipment / L1 / South / 6950 | 5d | 2025-12-15 | 2025-12-19 | P2.1.FP.6950.1040, P2.1.FP.6950.1050, P2.1.FP.6950.1080 | 242d |
|  | 4 | **FINISHES - Core & Support Spaces / Level 1** |  | 2025-03-13 | 2026-10-21 |  |  |
|  | 7KSF | **Lobby - Storage - Support Areas (5.5K SF) / Level 1** |  | 2026-03-04 | 2026-10-06 |  |  |
|  | 1 | **Finishes** |  | 2026-03-04 | 2026-10-06 |  |  |
| P2.L1.F.CS.1000 |  | Paint Prime & 1st Coat Walls / L1 / Lobby,Storage | 5d | 2026-03-04 | 2026-03-10 | P2.L1.S.1550, P2.L1.F.CS.2000 | 53d |
| P2.L1.F.CS.1020 |  | R/I - Ceiling Assemblies & Supports - All Trades (A/V, Oper Part, Glass Part, etc.) / L1 / Lobby,Storage | 5d | 2026-03-11 | 2026-03-17 | P2.L1.F.CS.1000 | 94d |
| P2.L1.F.CS.1010 |  | T-Grid / L1 / Lobby,Storage | 5d | 2026-03-18 | 2026-03-24 | P2.L1.F.CS.1020 | 94d |
| P2.L1.F.CS.1050 |  | Sprinkler Heads in T-Grid / L1 / Lobby,Storage | 5d | 2026-03-25 | 2026-03-31 | P2.L1.F.CS.1010 | 94d |
| P2.L1.F.CS.1030 |  | Diffusers in T-Grid / L1 / Lobby,Storage | 5d | 2026-04-01 | 2026-04-07 | P2.L1.F.CS.1010, P2.L1.F.CS.1050 | 94d |
| P2.L1.F.CS.1040 |  | Lights & Elec Devices in T-Grid / L1 / Lobby,Storage | 5d | 2026-04-08 | 2026-04-14 | BP1.265.3.100, P2.L1.F.CS.1010, P2.L1.F.CS.1030 | 94d |
| P2.L1.F.CS.1070 |  | Fire Alarm in T-Grid / L1 / Lobby,Storage | 5d | 2026-04-15 | 2026-04-21 | P2.L1.F.CS.1010, P2.L1.F.CS.1040 | 94d |
| P2.L1.F.CS.1060 |  | Low Voltage in T-Grid / L1 / Lobby,Storage | 5d | 2026-04-22 | 2026-04-28 | P2.L1.F.CS.1070, P2.L1.F.CS.1010 | 94d |
| P2.L1.F.LC.2450 |  | Fumehood Equipment Install / L1 / Chem Storage 1-6920 | 1d | 2026-04-29 | 2026-04-29 | P2.L1.F.LC.3420 FF | 94d |
| P2.L1.F.LC.3420 |  | Casework (Before Flooring) / L1 / Lobby - Storage | 1d | 2026-04-29 | 2026-04-29 | P2.L1.S.1470, P2.L1.F.CS.1060, P2.L1.F.CS.1000 | 94d |
| P2.L1.F.LC.2460 |  | Fumehood Equipment MEP Connection / L1 / Chem Storage 1-6920 | 5d | 2026-04-30 | 2026-05-06 | P2.L1.F.LC.2450 | 94d |
| P2.L1.F.CS.1080 |  | OH Ceiling Signoff / L1 / Lobby,Storage | 5d | 2026-05-07 | 2026-05-13 | P2.L1.F.CS.1070, P2.L1.F.CS.1060, P2.L1.F.CS.1050, P2.L1.F.CS.1030, P2.L1.F.CS.1040, P2.L1.F.LC.2460 | 94d |
| P2.L1.F.CS.1090 |  | Millwork / L1 / Lobby,Storage | 5d | 2026-05-14 | 2026-05-20 | P2.L1.F.CS.1080, BP7.062.3.100 | 94d |
| P2.L1.F.CS.1100 |  | Plumbing Fixtures / L1 / Lobby,Storage | 5d | 2026-05-14 | 2026-05-20 | P2.L1.F.CS.1090 FF, P2.L1.F.CS.1080 | 155d |
| P2.L1.F.CS.1110 |  | Drop Ceiling Tile / L1 / Lobby,Storage | 5d | 2026-05-21 | 2026-05-28 | P2.L1.F.CS.1080, P2.L1.F.CS.1090, P2.L1.F.LC.2460 | 94d |
| P2.L1.F.CS.1120 |  | Floor Prep / L1 / Lobby,Storage | 5d | 2026-05-29 | 2026-06-04 | P2.L1.F.CS.1110, P2.L1.F.CS.1090, P2.L1.F.LC.3420 | 94d |
| P2.L1.F.CS.2300 |  | Floor Prep - Epoxy Floors / L1 / Chem Storage 1-6920 | 2d | 2026-05-29 | 2026-06-01 | P2.L1.F.CS.1110, P2.L1.F.LC.3420 | 101d |
| P2.L1.F.CS.2310 |  | Floor Finishes - Epoxy Floors / L1 / Chem Storage 1-6920 | 1d | 2026-06-02 | 2026-06-02 | P2.L1.F.CS.2300 | 101d |
| P2.L1.F.CS.1130 |  | Floor Finishes / L1 / Lobby,Storage | 5d | 2026-06-05 | 2026-06-11 | P2.L1.F.CS.1120, BP7.093.3.100 | 94d |
| P2.L1.F.LC.3430 |  | Casework (After Clooring) / L1 / Lobby - Storage | 1d | 2026-06-12 | 2026-06-12 | P2.L1.F.CS.1130, P2.L1.F.CS.2310 | 94d |
| P2.L1.F.CS.1140 |  | Doors & Hardware / L1 / Lobby,Storage | 5d | 2026-06-15 | 2026-06-19 | P2.L1.F.CS.1130, P2.L1.F.LC.3430, P2.L1.F.CS.2310 | 94d |
| P2.L1.F.CS.1150 |  | Paint - Finish Coat / L1 / Lobby,Storage | 5d | 2026-06-22 | 2026-06-26 | P2.L1.F.CS.1130, P2.L1.F.CS.1140, P2.L1.F.LC.3430, P2.L1.F.CS.2310 | 94d |
| P2.L1.F.CS.1190 |  | Interior Building Signage / L1 / Lobby,Storage | 5d | 2026-06-29 | 2026-07-06 | BP7.100.3.110, BP7.101.3.100, P2.L1.F.CS.1150 | 124d |
| P2.L1.F.CS.1200 |  | Floor Base / L1 / Lobby,Storage | 5d | 2026-06-29 | 2026-07-06 | P2.L1.F.CS.1150 | 94d |
| P2.L1.F.CS.1210 |  | Demountable Partitions / L1 / Lobby,Storage | 5d | 2026-07-07 | 2026-07-13 | BP7.102.3.130, P2.L1.F.CS.1200 | 94d |
| P2.L1.F.CS.1180 |  | Building Specialities / L1 / Lobby,Storage | 5d | 2026-07-14 | 2026-07-20 | BP4.055.3.520, BP7.057.3.100, P2.L1.F.CS.1210, BP7.088.3.100, P2.L1.F.CS.1150, P2.L1.F.CS.1200 | 94d |
| P2.L1.F.CS.1170 |  | Trim T-Stats / L1 / Lobby,Storage | 5d | 2026-07-21 | 2026-07-27 | P2.L1.F.CS.1180, P2.L1.F.CS.1150 | 94d |
| P2.L1.F.CS.1160 |  | Set AV/IT Devices and Configure / L1 / Lobby,Storage | 5d | 2026-07-28 | 2026-08-03 | BP1.274.3.100, BP1.271.3.110, P2.L1.F.CS.1170, P2.L1.F.CS.1150 | 94d |
| P2.L1.F.CS.1220 |  | Trim Electrical / L1 / Lobby,Storage | 5d | 2026-08-04 | 2026-08-10 | P2.L1.F.CS.1160, P2.L1.F.CS.1210, P2.L1.F.CS.1170 SS | 94d |
| P2.L1.F.CS.1230 |  | Trim Telephone/ Data / L1 / Lobby,Storage | 5d | 2026-08-11 | 2026-08-17 | P2.L1.F.CS.1220, P2.L1.F.CS.1220 SS | 94d |
| P2.L1.F.CS.1240 |  | Work Completion List - Finishes / L1 / Lobby,Storage | 5d | 2026-08-18 | 2026-08-24 | P2.L1.F.CS.1190, P2.L1.F.CS.1140, P2.L1.F.CS.1230, P2.L1.F.CS.1180, P2.L1.F.CS.1100, P2.L1.F.CS.1160, P2.L1.F.LC.3430 | 94d |
| P2.L1.F.CS.1250 |  | Rough Clean / L1 / Lobby,Storage | 5d | 2026-08-25 | 2026-08-31 | P2.L1.F.CS.1240 | 94d |
| P2.L1.F.CS.1260 |  | FF&E / L1 / Lobby,Storage | 5d | 2026-09-01 | 2026-09-08 | P2.L1.F.CS.1250 | 94d |
| P2.L1.F.CS.1270 |  | Prepare Punchlist / L1 / Lobby,Storage | 5d | 2026-09-09 | 2026-09-15 | P2.L1.F.CS.1260 | 94d |
| P2.L1.F.CS.1280 |  | Correct Punchlist / L1 / Lobby,Storage | 10d | 2026-09-16 | 2026-09-29 | P2.L1.F.CS.1270 | 94d |
| P2.L1.F.CS.1290 |  | Final Clean / L1 / Lobby,Storage | 5d | 2026-09-30 | 2026-10-06 | P2.L1.F.CS.1280 | 94d |
|  | 2 | **Closeout** |  |  |  |  |  |
|  | 7KSF1 | **Offices (7K SF) / Level 1** |  | 2026-02-25 | 2026-09-03 |  |  |
|  | 1 | **Finishes** |  | 2026-02-25 | 2026-09-03 |  |  |
| P2.L1.F.CS.2000 |  | Paint Prime & 1st Coat Walls / L1 / Offices | 5d | 2026-02-25 | 2026-03-03 | P2.L1.N.1550 | 53d |
| P2.L1.F.CS.2020 |  | R/I - Ceiling Assemblies & Supports - All Trades (A/V, Oper Part, Glass Part, etc.) / L1 / Offices | 5d | 2026-03-04 | 2026-03-10 | P2.L1.F.CS.2000 | 116d |
| P2.L1.F.CS.2010 |  | T-Grid / L1 / Offices | 5d | 2026-03-11 | 2026-03-17 | P2.L1.F.CS.2020 | 116d |
| P2.L1.F.CS.2050 |  | Sprinkler Heads in T-Grid / L1 / Offices | 5d | 2026-03-18 | 2026-03-24 | P2.L1.F.CS.2010 FF, P2.L1.F.CS.2010 | 116d |
| P2.L1.F.CS.2030 |  | Diffusers in T-Grid / L1 / Offices | 5d | 2026-03-25 | 2026-03-31 | P2.L1.F.CS.2010, P2.L1.F.CS.2050 | 116d |
| P2.L1.F.CS.2040 |  | Lights & Elec Devices in T-Grid / L1 / Offices | 5d | 2026-04-01 | 2026-04-07 | P2.L1.F.CS.2010, P2.L1.F.CS.2030 | 116d |
| P2.L1.F.CS.2070 |  | Fire Alarm in T-Grid / L1 / Offices | 5d | 2026-04-08 | 2026-04-14 | P2.L1.F.CS.2010, P2.L1.F.CS.2040 | 116d |
| P2.L1.F.CS.2060 |  | Low Voltage in T-Grid / L1 / Offices | 5d | 2026-04-15 | 2026-04-21 | P2.L1.F.CS.2070, P2.L1.F.CS.2010 | 116d |
| P2.L1.F.CS.2080 |  | OH Ceiling Signoff / L1 / Offices | 5d | 2026-04-22 | 2026-04-28 | P2.L1.F.CS.2070, P2.L1.F.CS.2060, P2.L1.F.CS.2050, P2.L1.F.CS.2030, P2.L1.F.CS.2040 | 116d |
| P2.L1.F.CS.2090 |  | Millwork / L1 / Offices | 5d | 2026-04-29 | 2026-05-05 | P2.L1.F.CS.2080 | 116d |
| P2.L1.F.CS.2100 |  | Plumbing Fixtures / L1 / Offices | 5d | 2026-04-29 | 2026-05-05 | P2.L1.F.CS.2090 FF, P2.L1.F.CS.2080 | 116d |
| P2.L1.F.CS.2110 |  | Drop Ceiling Tile / L1 / Offices | 5d | 2026-05-06 | 2026-05-12 | P2.L1.F.CS.2100, P2.L1.F.CS.2080 | 116d |
| P2.L1.F.CS.2120 |  | Floor Prep / L1 / Offices | 5d | 2026-05-13 | 2026-05-19 | P2.L1.F.CS.2110, P2.L1.F.CS.2090 | 116d |
| P2.L1.F.CS.2130 |  | Floor Finishes / L1 / Offices | 5d | 2026-05-20 | 2026-05-27 | BP7.096.3.100, P2.L1.F.CS.2120, BP2.079.3.100 | 116d |
| P2.L1.F.CS.2140 |  | Doors & Hardware / L1 / Offices | 5d | 2026-05-28 | 2026-06-03 | P2.L1.F.CS.2130 | 116d |
| P2.L1.F.CS.2150 |  | Paint - Finish Coat / L1 / Offices | 5d | 2026-06-04 | 2026-06-10 | P2.L1.F.CS.2130, P2.L1.F.CS.2140 | 116d |
| P2.L1.F.CS.2200 |  | Floor Base / L1 / Offices | 5d | 2026-06-11 | 2026-06-17 | P2.L1.F.CS.2150 | 116d |
| P2.L1.F.CS.2170 |  | Trim T-Stats / L1 / Offices | 5d | 2026-06-18 | 2026-06-24 | P2.L1.F.CS.2150, P2.L1.F.CS.2200 | 116d |
| P2.L1.F.CS.2210 |  | Demountable Partitions / L1 / Offices | 5d | 2026-06-18 | 2026-06-24 | P2.L1.F.CS.2200 | 121d |
| P2.L1.F.CS.2160 |  | Set AV/IT Devices and Configure / L1 / Offices | 5d | 2026-06-25 | 2026-07-01 | P2.L1.F.CS.2170, P2.L1.F.CS.2150 | 116d |
| P2.L1.F.CS.2180 |  | Building Specialities / L1 / Offices | 5d | 2026-07-02 | 2026-07-09 | P2.L1.F.CS.2160, P2.L1.F.CS.2150 | 116d |
| P2.L1.F.CS.2220 |  | Trim Electrical / L1 / Offices | 5d | 2026-07-02 | 2026-07-09 | P2.L1.F.CS.2160, P2.L1.F.CS.2210, P2.L1.F.CS.2170 SS | 116d |
| P2.L1.F.CS.2190 |  | Interior Building Signage / L1 / Offices | 5d | 2026-07-10 | 2026-07-16 | BP7.100.3.110, P2.L1.F.CS.2180, P2.L1.F.CS.2150, P2.L1.F.CS.2200 | 116d |

| ID | WBS | Task | Duration | Start | Finish | Predecessors | Complete | Total float |
| --- | --- | --- | --- | --- | --- | --- | --- | --- |
| P2.L1.F.CS.2230 |  | Trim Telephone/ Data / L1 / Offices | 5d | 2026-07-10 | 2026-07-16 | P2.L1.F.CS.2220, P2.L1.F.CS.2220 SS |  | 116d |
| P2.L1.F.CS.2240 |  | Work Completion List - Finishes / L1 / Offices | 5d | 2026-07-17 | 2026-07-23 | P2.L1.F.CS.2190, P2.L1.F.CS.2140, P2.L1.F.CS.2230, P2.L1.F.CS.2180, P2.L1.F.CS.2100, P2.L1.F.CS.2160 |  | 116d |
| P2.L1.F.CS.2250 |  | Rough Clean / L1 / Offices | 5d | 2026-07-24 | 2026-07-30 | P2.L1.F.CS.2240 |  | 116d |
| P2.L1.F.CS.2260 |  | FF&E / L1 / Offices | 5d | 2026-07-31 | 2026-08-06 | P2.L1.F.CS.2250 |  | 116d |
| P2.L1.F.CS.2270 |  | Prepare Punchlist / L1 / Offices | 5d | 2026-08-07 | 2026-08-13 | P2.L1.F.CS.2260 |  | 116d |
| P2.L1.F.CS.2280 |  | Correct Punchlist / L1 / Offices | 10d | 2026-08-14 | 2026-08-27 | P2.L1.F.CS.2270 |  | 116d |
| P2.L1.F.CS.2290 |  | Final Clean / L1 / Offices | 5d | 2026-08-28 | 2026-09-03 | P2.L1.F.CS.2280 |  | 116d |
|  | 2 | **Closeout** |  |  |  |  |  |  |
|  | 1 | **Bathrooms-Break Rooms - Locker Rooms / Level 1** |  | 2025-03-13 | 2026-01-30 |  |  |  |
|  | 5 | **Toilet 1-2859** |  | 2025-06-16 | 2026-01-26 |  |  |  |
| P2.L1.BR.1000 |  | Plumbing - Set Pipe Carriers / L1 / Toilet 2859 | 3d | 2025-06-16 A | 2025-06-18 A | P2.B2.BR.1000, P2.L1.S.1240 | 100% |  |
| P2.L1.BR.1020 |  | Plumbing - Test Pipe / L1 / Toilet 2859 | 2d | 2025-06-19 A | 2025-06-20 A | P2.L1.BR.1000 | 100% |  |
| P2.L1.BR.1070 |  | In Wall - Insulate Plumbing / L1 / Toilet 2859 | 2d | 2025-06-23 A | 2025-06-24 A | P2.L1.BR.1020 | 100% |  |
| P2.L1.BR.1010 |  | Framing & Blocking - Walls and Hard Lid Ceilings / L1 / Toilet 2859 | 2d | 2025-07-16 A | 2025-07-17 A | P2.L1.BR.1000 | 100% |  |
| P2.L1.BR.1050 |  | Duct Drops _ Hard Lids / L1 / Toilet 2859 | 2d | 2025-08-11 A | 2025-08-28 A | P2.L1.BR.1010 | 100% |  |
| P2.L1.BR.1030 |  | R/I - Electrical _ Hard Lids / L1 / Toilet 2859 | 2d | 2025-12-01 | 2025-12-02 | P2.L1.BR.1010, P2.L1.BR.1050 |  | 152d |
| P2.L1.BR.1040 |  | Trim Sprinkler Drops _ Hard Lids / L1 / Toilet 2859 | 2d | 2025-12-01 | 2025-12-02 | P2.L1.BR.1010 |  | 154d |
| P2.L1.BR.1060 |  | R/I - Fire Alarm _ Hard Lids / L1 / Toilet 2859 | 2d | 2025-12-03 | 2025-12-04 | P2.L1.BR.1010, P2.L1.BR.1030 |  | 152d |
| P2.L1.BR.1080 |  | Inspection - Close In - Walls and Hard Lid Ceilings / L1 / Toilet 2859 | 3d | 2025-12-05 | 2025-12-09 | P2.L1.BR.1070, P2.L1.BR.1060, P2.L1.BR.1040, P2.L1.BR.1050, P2.L1.BR.1030 |  | 152d |
| P2.L1.BR.1090 |  | Hang-Tape-Finish _ Walls and Hard Lids Ceilings / L1 / Toilet 2859 | 5d | 2025-12-10 | 2025-12-16 | P2.SUM.175, P2.L1.BR.1080 |  | 152d |
| P2.L1.BR.1100 |  | Paint Prime & Final Coat _ Walls & Hard Lid Ceilings / L1 / Toilet 2859 | 2d | 2025-12-17 | 2025-12-18 | P2.L1.BR.1090 |  | 152d |
| P2.L1.BR.1140 |  | Trim - HVAC G/R/D's / L1 / Toilet 2859 | 2d | 2025-12-19 | 2025-12-22 | P2.L1.BR.1100 |  | 152d |
| P2.L1.BR.1120 |  | Pull Wire & Trim Devices - Electrical / L1 / Toilet 2859 | 2d | 2025-12-23 | 2025-12-24 | P2.L1.BR.1140, P2.L1.BR.1100 |  | 152d |
| P2.L1.BR.1130 |  | Lights - Set & Terminate / L1 / Toilet 2859 | 2d | 2025-12-23 | 2025-12-24 | P2.L1.BR.1120 SS |  | 154d |
| P2.L1.BR.1110 |  | Pull Wire & Trim Devices - Fire Alarm / L1 / Toilet 2859 | 2d | 2025-12-26 | 2025-12-29 | P2.L1.BR.1120, P2.L1.BR.1100 |  | 152d |
| P2.L1.BR.1150 |  | Wall Tile / L1 / Toilet 2859 | 5d | 2025-12-30 | 2026-01-06 | P2.L1.BR.1140, P2.L1.BR.1130, P2.L1.BR.1110 |  | 152d |
| P2.L1.BR.5260 |  | Flooring Prep - Epoxy Floors / L1 / Toilet 2859 | 1d | 2026-01-09 | 2026-01-09 | P2.L1.BR.1150, P2.L1.BR.5240 |  | 150d |
| P2.L1.BR.5270 |  | Flooring - Epoxy Floors / L1 / Toilet 2859 | 2d | 2026-01-12 | 2026-01-13 | P2.L1.BR.5260 |  | 257d |
| P2.L1.BR.1160 |  | Doors & Hardware / L1 / Toilet 2859 | 2d | 2026-01-14 | 2026-01-15 | P2.L1.BR.5270, P2.L1.BR.1150 |  | 257d |
| P2.L1.BR.1170 |  | Plumbing Fixtures / Sinks / Showers / L1 / Toilet 2859 | 2d | 2026-01-14 | 2026-01-15 | P2.L1.BR.5270, P2.L1.BR.1150 |  | 272d |
| P2.L1.BR.1180 |  | Bathroom Accessories / L1 / Toilet 2859 | 2d | 2026-01-16 | 2026-01-19 | P2.L1.BR.5270, P2.L1.BR.1170 |  | 272d |
| P2.L1.BR.1190 |  | Work Completion List - Finishes / L1 / Toilet 2859 | 5d | 2026-01-20 | 2026-01-26 | P2.L1.BR.1160, P2.L1.BR.1180, P2.L1.BR.1110 |  | 272d |
|  | 4 | **Toilets 1-2804 / 1-2806** |  | 2025-03-13 | 2026-01-27 |  |  |  |
| P2.L1.BR.2000 |  | Plumbing - Set Pipe Carriers / L1 / Toilets 2804 & 06 | 3d | 2025-03-13 A | 2025-03-14 A | P2.L1.S.1180 | 100% |  |
| P2.L1.BR.2020 |  | Plumbing - Test Pipe / L1 / Toilets 2804 & 06 | 2d | 2025-05-30 A | 2025-06-02 A | P2.L1.BR.2000 | 100% |  |
| P2.L1.BR.2010 |  | Framing & Blocking - Walls and Hard Lid Ceilings / L1 / Toilets 2804 & 06 | 2d | 2025-07-23 A | 2025-07-24 A | P2.L1.BR.2000, P2.L1.N.1420 | 100% |  |
| P2.L1.BR.2050 |  | Duct Drops _ Hard Lids / L1 / Toilets 2804 & 06 | 2d | 2025-08-11 A | 2025-08-28 A | P2.L1.BR.2010 | 100% |  |
| P2.L1.BR.2070 |  | In Wall - Insulate Plumbing / L1 / Toilets 2804 & 06 | 2d | 2025-09-08 A | 2025-09-15 A | P2.L1.BR.2020, P2.L1.BR.2050 | 100% |  |
| P2.L1.BR.2030 |  | R/I - Electrical _ Hard Lids / L1 / Toilets 2804 & 06 | 2d | 2025-12-01 | 2025-12-02 | P2.L1.BR.2010, P2.L1.BR.2070 |  | 151d |
| P2.L1.BR.2040 |  | Trim Sprinkler Drops _ Hard Lids / L1 / Toilets 2804 & 06 | 2d | 2025-12-01 | 2025-12-02 | P2.L1.BR.2010 |  | 153d |
| P2.L1.BR.2060 |  | R/I - Fire Alarm _ Hard Lids / L1 / Toilets 2804 & 06 | 2d | 2025-12-03 | 2025-12-04 | P2.L1.BR.2010, P2.L1.BR.2030 |  | 151d |
| P2.L1.BR.2080 |  | Inspection - Close In - Walls and Hard Lid Ceilings / L1 / Toilets 2804 & 06 | 3d | 2025-12-05 | 2025-12-09 | P2.L1.BR.2060, P2.L1.BR.2070, P2.L1.BR.2030, P2.L1.BR.2040, P2.L1.BR.2050 |  | 151d |
| P2.L1.BR.2090 |  | Hang-Tape-Finish _ Walls and Hard Lids Ceilings / L1 / Toilets 2804 & 06 | 5d | 2025-12-10 | 2025-12-16 | P2.SUM.175, P2.L1.BR.2080 |  | 151d |
| P2.L1.BR.2100 |  | Paint Prime & Final Coat _ Walls & Hard Lid Ceilings / L1 / Toilets 2804 & 06 | 2d | 2025-12-17 | 2025-12-18 | P2.L1.BR.2090 |  | 151d |
| P2.L1.BR.2140 |  | Trim - HVAC G/R/D's / L1 / Toilets 2804 & 06 | 2d | 2025-12-19 | 2025-12-22 | P2.L1.BR.2100 |  | 151d |
| P2.L1.BR.2120 |  | Pull Wire & Trim Devices - Electrical / L1 / Toilets 2804 & 06 | 2d | 2025-12-23 | 2025-12-24 | P2.L1.BR.2100, P2.L1.BR.2140 |  | 151d |
| P2.L1.BR.2130 |  | Lights - Set & Terminate / L1 / Toilets 2804 & 06 | 2d | 2025-12-23 | 2025-12-24 | P2.L1.BR.2120 SS |  | 153d |
| P2.L1.BR.2110 |  | Pull Wire & Trim Devices - Fire Alarm / L1 / Toilets 2804 & 06 | 2d | 2025-12-26 | 2025-12-29 | P2.L1.BR.2100, P2.L1.BR.2120 |  | 151d |
| P2.L1.BR.2150 |  | Wall Tile / L1 / Toilets 2804 & 06 | 5d | 2025-12-30 | 2026-01-06 | P2.L1.BR.2130, P2.L1.BR.2140, P2.L1.BR.2110 |  | 151d |
| P2.L1.BR.5240 |  | Flooring Prep - Epoxy Floors / L1 / Toilets 2804 & 06 | 1d | 2026-01-08 | 2026-01-08 | P2.L1.BR.2150, P2.L1.BR.5280 |  | 150d |
| P2.L1.BR.5250 |  | Flooring - Epoxy Floors / L1 / Toilets 2804 & 06 | 2d | 2026-01-09 | 2026-01-12 | P2.L1.BR.5240 |  | 258d |
| P2.L1.BR.2160 |  | Doors & Hardware / L1 / Toilets 2804 & 06 | 2d | 2026-01-13 | 2026-01-14 | P2.L1.BR.5250, P2.L1.BR.2150 |  | 258d |
| P2.L1.BR.2170 |  | Plumbing Fixtures / Sinks / Showers / L1 / Toilets 2804 & 06 | 2d | 2026-01-15 | 2026-01-16 | P2.L1.BR.5250, P2.L1.BR.2150, P2.L1.BR.2160 |  | 271d |
| P2.L1.BR.2180 |  | Bathroom Accessories / L1 / Toilets 2804 & 06 | 2d | 2026-01-19 | 2026-01-20 | P2.L1.BR.5250, P2.L1.BR.2170 |  | 271d |
| P2.L1.BR.2190 |  | Work Completion List - Finishes / L1 / Toilets 2804 & 06 | 5d | 2026-01-21 | 2026-01-27 | P2.L1.BR.2180, P2.L1.BR.2160, P2.L1.BR.2110 |  | 271d |
|  | 3 | **Toilet 1-2940A** |  | 2025-04-01 | 2026-01-26 |  |  |  |
| P2.L1.BR.3000 |  | Plumbing - Set Pipe Carriers / L1 / Toilets 2940A | 3d | 2025-04-01 A | 2025-04-03 A | P2.L1.BR.2000 | 100% |  |
| P2.L1.BR.3020 |  | Plumbing - Test Pipe / L1 / Toilets 2940A | 2d | 2025-05-01 A | 2025-05-02 A | P2.L1.BR.3000 | 100% |  |
| P2.L1.BR.3010 |  | Framing & Blocking - Walls and Hard Lid Ceilings / L1 / Toilets 2940A | 2d | 2025-07-30 A | 2025-07-31 A | P2.L1.BR.3000, P2.L1.LC.1420 | 100% |  |
| P2.L1.BR.3050 |  | Duct Drops _ Hard Lids / L1 / Toilets 2940A | 2d | 2025-08-11 A | 2025-08-28 A | P2.L1.BR.3010 | 100% |  |
| P2.L1.BR.3070 |  | In Wall - Insulate Plumbing / L1 / Toilets 2940A | 2d | 2025-09-08 A | 2025-09-15 A | P2.L1.BR.3050, P2.L1.BR.3020 | 100% |  |
| P2.L1.BR.3030 |  | R/I - Electrical _ Hard Lids / L1 / Toilets 2940A | 2d | 2025-12-01 | 2025-12-02 | P2.L1.BR.3070, P2.L1.BR.3010 |  | 150d |
| P2.L1.BR.3040 |  | Trim Sprinkler Drops _ Hard Lids / L1 / Toilets 2940A | 2d | 2025-12-01 | 2025-12-02 | P2.L1.BR.3010 |  | 152d |
| P2.L1.BR.3060 |  | R/I - Fire Alarm _ Hard Lids / L1 / Toilets 2940A | 2d | 2025-12-03 | 2025-12-04 | P2.L1.BR.3030, P2.L1.BR.3010 |  | 150d |
| P2.L1.BR.3080 |  | Inspection - Close In - Walls and Hard Lid Ceilings / L1 / Toilets 2940A | 3d | 2025-12-05 | 2025-12-09 | P2.L1.BR.3040, P2.L1.BR.3050, P2.L1.BR.3030, P2.L1.BR.3070, P2.L1.BR.3060 |  | 150d |
| P2.L1.BR.3090 |  | Hang-Tape-Finish _ Walls and Hard Lids Ceilings / L1 / Toilets 2940A | 5d | 2025-12-10 | 2025-12-16 | P2.SUM.175, P2.L1.BR.3080 |  | 150d |
| P2.L1.BR.3100 |  | Paint Prime & Final Coat _ Walls & Hard Lid Ceilings / L1 / Toilets 2940A | 2d | 2025-12-17 | 2025-12-18 | P2.L1.BR.3090 |  | 150d |
| P2.L1.BR.3140 |  | Trim - HVAC G/R/D's / L1 / Toilets 2940A | 2d | 2025-12-19 | 2025-12-22 | P2.L1.BR.3100 |  | 150d |
| P2.L1.BR.3120 |  | Pull Wire & Trim Devices - Electrical / L1 / Toilets 2940A | 2d | 2025-12-23 | 2025-12-24 | P2.L1.BR.3100, P2.L1.BR.3140 |  | 150d |
| P2.L1.BR.3130 |  | Lights - Set & Terminate / L1 / Toilets 2940A | 2d | 2025-12-23 | 2025-12-24 | P2.L1.BR.3120 SS |  | 152d |

| ID | WBS | Task | Duration | Start | Finish | Predecessors | Complete | Total float |
| --- | --- | --- | --- | --- | --- | --- | --- | --- |
| P2.L1.BR.3110 |  | Pull Wire & Trim Devices - Fire Alarm / L1 / Toilets 2940A | 2d | 2025-12-26 | 2025-12-29 | P2.L1.BR.3120, P2.L1.BR.3100 |  | 150d |
| P2.L1.BR.3150 |  | Wall Tile / L1 / Toilets 2940A | 5d | 2025-12-30 | 2026-01-06 | P2.L1.BR.3130, P2.L1.BR.3110, P2.L1.BR.3140 |  | 150d |
| P2.L1.BR.5280 |  | Flooring Prep - Epoxy Floors / L1 / Toilets 2940A | 1d | 2026-01-07 | 2026-01-07 | P2.L1.BR.3150 |  | 150d |
| P2.L1.BR.5290 |  | Flooring - Epoxy Floors / L1 / Toilets 2940A | 2d | 2026-01-08 | 2026-01-09 | P2.L1.BR.5280 |  | 259d |
| P2.L1.BR.3160 |  | Doors & Hardware / L1 / Toilets 2940A | 2d | 2026-01-12 | 2026-01-13 | P2.L1.BR.5290 |  | 259d |
| P2.L1.BR.3170 |  | Plumbing Fixtures / Sinks / Showers / L1 / Toilets 2940A | 2d | 2026-01-14 | 2026-01-15 | P2.L1.BR.3160, P2.L1.BR.5290 |  | 272d |
| P2.L1.BR.3180 |  | Bathroom Accessories / L1 / Toilets 2940A | 2d | 2026-01-16 | 2026-01-19 | P2.L1.BR.3170 |  | 272d |
| P2.L1.BR.3190 |  | Work Completion List - Finishes / L1 / Toilets 2940A | 5d | 2026-01-20 | 2026-01-26 | P2.L1.BR.3160, P2.L1.BR.3180, P2.L1.BR.3110 |  | 272d |
|  | 1 | **Toilet 1-3902C** |  | 2025-04-04 | 2026-01-30 |  |  |  |
| P2.L1.BR.4000 |  | Plumbing - Set Pipe Carriers / L1 / Toilets 3902C | 3d | 2025-04-04 A | 2025-04-08 A | P2.L1.BR.3000 | 100% |  |
| P2.L1.BR.4010 |  | Framing & Blocking - Walls and Hard Lid Ceilings / L1 / Toilets 3902C | 2d | 2025-04-09 A | 2025-04-10 A | P2.L1.BR.4000 | 100% |  |
| P2.L1.BR.4020 |  | Plumbing - Test Pipe / L1 / Toilets 3902C | 2d | 2025-05-01 A | 2025-05-02 A | P2.L1.BR.4000, P2.L1.LC.1420 | 100% |  |
| P2.L1.BR.4050 |  | Duct Drops _ Hard Lids / L1 / Toilets 3902C | 2d | 2025-08-11 A | 2025-08-28 A | P2.L1.BR.4010 | 100% |  |
| P2.L1.BR.4070 |  | In Wall - Insulate Plumbing / L1 / Toilets 3902C | 2d | 2025-09-08 A | 2025-09-15 A | P2.L1.BR.4020, P2.L1.BR.4050 | 100% |  |
| P2.L1.BR.4030 |  | R/I - Electrical _ Hard Lids / L1 / Toilets 3902C | 2d | 2025-12-01 | 2025-12-02 | P2.L1.BR.4010, P2.L1.BR.4070 |  | 154d |
| P2.L1.BR.4040 |  | Trim Sprinkler Drops _ Hard Lids / L1 / Toilets 3902C | 2d | 2025-12-01 | 2025-12-02 | P2.L1.BR.4010, P2.L1.LC.1420 |  | 156d |
| P2.L1.BR.4060 |  | R/I - Fire Alarm _ Hard Lids / L1 / Toilets 3902C | 2d | 2025-12-03 | 2025-12-04 | P2.L1.BR.4010, P2.L1.BR.4030 |  | 154d |
| P2.L1.BR.4080 |  | Inspection - Close In - Walls and Hard Lid Ceilings / L1 / Toilets 3902C | 3d | 2025-12-05 | 2025-12-09 | P2.L1.BR.4060, P2.L1.BR.4070, P2.L1.BR.4030, P2.L1.BR.4040, P2.L1.BR.4050 |  | 154d |
| P2.L1.BR.4090 |  | Hang-Tape-Finish _ Walls and Hard Lids Ceilings / L1 / Toilets 3902C | 5d | 2025-12-10 | 2025-12-16 | P2.SUM.175, P2.L1.BR.4080 |  | 154d |
| P2.L1.BR.4100 |  | Paint Prime & Final Coat _ Walls & Hard Lid Ceilings / L1 / Toilets 3902C | 2d | 2025-12-17 | 2025-12-18 | P2.L1.BR.4090 |  | 154d |
| P2.L1.BR.4140 |  | Trim - HVAC G/R/D's / L1 / Toilets 3902C | 2d | 2025-12-19 | 2025-12-22 | P2.L1.BR.4100 |  | 154d |
| P2.L1.BR.4120 |  | Pull Wire & Trim Devices - Electrical / L1 / Toilets 3902C | 2d | 2025-12-23 | 2025-12-24 | P2.L1.BR.4140, P2.L1.BR.4100 |  | 154d |
| P2.L1.BR.4130 |  | Lights - Set & Terminate / L1 / Toilets 3902C | 2d | 2025-12-23 | 2025-12-24 | P2.L1.BR.4120 SS |  | 156d |
| P2.L1.BR.4110 |  | Pull Wire & Trim Devices - Fire Alarm / L1 / Toilets 3902C | 2d | 2025-12-26 | 2025-12-29 | P2.L1.BR.4120, P2.L1.BR.4100 |  | 154d |
| P2.L1.BR.4150 |  | Wall Tile / L1 / Toilets 3902C | 5d | 2025-12-30 | 2026-01-06 | P2.L1.BR.4130, P2.L1.BR.4140, P2.L1.BR.4110 |  | 154d |
| P2.L1.BR.5220 |  | Flooring Prep - Epoxy Floors / L1 / Toilets 3902C | 1d | 2026-01-13 | 2026-01-13 | P2.L1.BR.4140, P2.L1.BR.4150, P2.L1.BR.5200 |  | 150d |
| P2.L1.BR.5230 |  | Flooring - Epoxy Floors / L1 / Toilets 3902C | 2d | 2026-01-14 | 2026-01-15 | P2.L1.BR.5220 |  | 150d |
| P2.L1.BR.4160 |  | Doors & Hardware / L1 / Toilets 3902C | 2d | 2026-01-16 | 2026-01-19 | P2.L1.BR.5230, P2.L1.BR.4150 |  | 255d |
| P2.L1.BR.4170 |  | Plumbing Fixtures / Sinks / Showers / L1 / Toilets 3902C | 2d | 2026-01-20 | 2026-01-21 | P2.L1.BR.4150, P2.L1.BR.4160 |  | 268d |
| P2.L1.BR.4180 |  | Bathroom Accessories / L1 / Toilets 3902C | 2d | 2026-01-22 | 2026-01-23 | P2.L1.BR.5230, P2.L1.BR.4170 |  | 268d |
| P2.L1.BR.4190 |  | Work Completion List - Finishes / L1 / Toilets 3902C | 5d | 2026-01-26 | 2026-01-30 | P2.L1.BR.4180, P2.L1.BR.4160, P2.L1.BR.4110 |  | 268d |
|  | 2 | **Toilet 1-2878** |  | 2025-04-09 | 2026-01-23 |  |  |  |
| P2.L1.BR.5000 |  | Plumbing - Set Pipe Carriers / L1 / Toilet 2878 | 3d | 2025-04-09 A | 2025-04-11 A | P2.L1.BR.4000 | 100% |  |
| P2.L1.BR.5010 |  | Framing & Blocking - Walls and Hard Lid Ceilings / L1 / Toilet 2878 | 2d | 2025-04-14 A | 2025-04-15 A | P2.L1.BR.5000 | 100% |  |
| P2.L1.BR.5020 |  | Plumbing - Test Pipe / L1 / Toilet 2878 | 2d | 2025-05-01 A | 2025-05-02 A | P2.L1.BR.5000, P2.L1.LC.1420 | 100% |  |
| P2.L1.BR.5050 |  | Duct Drops _ Hard Lids / L1 / Toilet 2878 | 2d | 2025-08-11 A | 2025-08-28 A | P2.L1.BR.5010 | 100% |  |
| P2.L1.BR.5070 |  | In Wall - Insulate Plumbing / L1 / Toilet 2878 | 2d | 2025-09-08 A | 2025-09-15 A | P2.L1.BR.5020, P2.L1.BR.5050 | 100% |  |
| P2.L1.BR.5030 |  | R/I - Electrical _ Hard Lids / L1 / Toilet 2878 | 2d | 2025-12-01 | 2025-12-02 | P2.L1.BR.5070, P2.L1.BR.5010 |  | 153d |
| P2.L1.BR.5040 |  | Trim Sprinkler Drops _ Hard Lids / L1 / Toilet 2878 | 2d | 2025-12-01 | 2025-12-02 | P2.L1.BR.5010, P2.L1.LC.1420 |  | 155d |
| P2.L1.BR.5060 |  | R/I - Fire Alarm _ Hard Lids / L1 / Toilet 2878 | 2d | 2025-12-03 | 2025-12-04 | P2.L1.BR.5010, P2.L1.BR.5030 |  | 153d |
| P2.L1.BR.5080 |  | Inspection - Close In - Walls and Hard Lid Ceilings / L1 / Toilet 2878 | 3d | 2025-12-05 | 2025-12-09 | P2.L1.BR.5070, P2.L1.BR.5060, P2.L1.BR.5040, P2.L1.BR.5050, P2.L1.BR.5030 |  | 153d |
| P2.L1.BR.5090 |  | Hang-Tape-Finish _ Walls and Hard Lids Ceilings / L1 / Toilet 2878 | 5d | 2025-12-10 | 2025-12-16 | P2.SUM.175, P2.L1.BR.5080 |  | 153d |
| P2.L1.BR.5100 |  | Paint Prime & Final Coat _ Walls & Hard Lid Ceilings / L1 / Toilet 2878 | 2d | 2025-12-17 | 2025-12-18 | P2.L1.BR.5090 |  | 153d |
| P2.L1.BR.5140 |  | Trim - HVAC G/R/D's / L1 / Toilet 2878 | 2d | 2025-12-19 | 2025-12-22 | P2.L1.BR.5100 |  | 153d |
| P2.L1.BR.5120 |  | Pull Wire & Trim Devices - Electrical / L1 / Toilet 2878 | 2d | 2025-12-23 | 2025-12-24 | P2.L1.BR.5140, P2.L1.BR.5100 |  | 153d |
| P2.L1.BR.5130 |  | Lights - Set & Terminate / L1 / Toilet 2878 | 2d | 2025-12-23 | 2025-12-24 | P2.L1.BR.5120 SS |  | 155d |
| P2.L1.BR.5110 |  | Pull Wire & Trim Devices - Fire Alarm / L1 / Toilet 2878 | 2d | 2025-12-26 | 2025-12-29 | P2.L1.BR.5120, P2.L1.BR.5100 |  | 153d |
| P2.L1.BR.5150 |  | Wall Tile / L1 / Toilet 2878 | 5d | 2025-12-30 | 2026-01-06 | P2.L1.BR.5140, P2.L1.BR.5130, P2.L1.BR.5110 |  | 153d |
| P2.L1.BR.5160 |  | Doors & Hardware / L1 / Toilet 2878 | 2d | 2026-01-07 | 2026-01-08 | P2.L1.BR.5150 |  | 262d |
| P2.L1.BR.5170 |  | Plumbing Fixtures / Sinks / Showers / L1 / Toilet 2878 | 2d | 2026-01-07 | 2026-01-08 | P2.L1.BR.5150 |  | 277d |
| P2.L1.BR.5200 |  | Flooring Prep - Epoxy Floors / L1 / Toilet 2878 | 1d | 2026-01-12 | 2026-01-12 | P2.L1.BR.5260, P2.L1.BR.5140, P2.L1.BR.5150, P2.L1.BR.5130 |  | 150d |
| P2.L1.BR.5210 |  | Flooring - Epoxy Floors / L1 / Toilet 2878 | 2d | 2026-01-13 | 2026-01-14 | P2.L1.BR.5200 |  | 273d |
| P2.L1.BR.5180 |  | Bathroom Accessories / L1 / Toilet 2878 | 2d | 2026-01-15 | 2026-01-16 | P2.L1.BR.5210, P2.L1.BR.5170 |  | 273d |
| P2.L1.BR.5190 |  | Work Completion List - Finishes / L1 / Toilet 2878 | 5d | 2026-01-19 | 2026-01-23 | P2.L1.BR.5160, P2.L1.BR.5180, P2.L1.BR.5110 |  | 273d |
|  | 6 | **Corridors & Lobbies / Level 1** |  | 2026-03-11 | 2026-10-21 |  |  |  |
| P2.L1.CL.1000 |  | Paint Prime & 1st Coat Walls / L1 / Corr & Lobbies | 5d | 2026-03-11 | 2026-03-17 | P2.L1.S.1550, P2.L1.N.1550, P2.L1.F.CS.1000 |  | 53d |
| P2.L1.CL.1010 |  | Framing - Hard Lid Ceilings / L1 / Corr & Lobbies | 10d | 2026-03-18 | 2026-03-31 | P2.L1.CL.1000 |  | 58d |
| P2.L1.CL.1020 |  | T-Grid / L1 / Corr & Lobbies | 10d | 2026-03-18 | 2026-03-31 | P2.L1.CL.1000 |  | 53d |
| P2.L1.CL.1070 |  | Trim - Sprinkler Heads @ T-Grid / L1 / Corr & Lobbies | 5d | 2026-03-27 | 2026-04-02 | P2.L1.CL.1020 FF+2d |  | 53d |
| P2.L1.CL.1040 |  | R/I - Trim Sprinkler Heads- All Ceilings / L1 / Corr & Lobbies | 5d | 2026-04-03 | 2026-04-09 | P2.L1.CL.1020 FF+2d, P2.L1.CL.1010 FF+2d, P2.L1.CL.1070 |  | 53d |
| P2.L1.CL.1050 |  | R/I - HVAC- All Ceilings / L1 / Corr & Lobbies | 5d | 2026-04-10 | 2026-04-16 | P2.L1.CL.1020 FF+2d, P2.L1.CL.1010 FF+2d, P2.L1.CL.1040 |  | 53d |
| P2.L1.CL.1030 |  | R/I - Electrical - All Ceilings / L1 / Corr & Lobbies | 5d | 2026-04-17 | 2026-04-23 | P2.L1.CL.1020 FF+2d, P2.L1.CL.1010 FF+2d, P2.L1.CL.1050 |  | 53d |
| P2.L1.CL.1080 |  | R/I - Fire Alarm/Life Safety - All Ceilings / L1 / Corr & Lobbies | 5d | 2026-04-24 | 2026-04-30 | P2.L1.CL.1010 FF+2d, P2.L1.CL.1030 |  | 53d |
| P2.L1.CL.1100 |  | Pull Wire - Electrical / L1 / Corr & Lobbies | 5d | 2026-04-24 | 2026-04-30 | P2.L1.CL.1030 |  | 88d |
| P2.L1.CL.1060 |  | R/I - All Remaining Low Voltage - All Ceilings / L1 / Corr & Lobbies | 5d | 2026-05-01 | 2026-05-07 | P2.L1.CL.1020 FF+2d, P2.L1.CL.1010 FF+2d, P2.L1.CL.1080 |  | 53d |
| P2.L1.CL.1110 |  | Pull Wire - Fire Alarm / L1 / Corr & Lobbies | 5d | 2026-05-01 | 2026-05-07 | P2.L1.CL.1100, P2.L1.CL.1080 |  | 93d |
| P2.L1.CL.1090 |  | Inspections - Close In- All Ceilings / L1 / Corr & Lobbies | 5d | 2026-05-08 | 2026-05-14 | P2.L1.CL.1050, P2.L1.CL.1060, P2.L1.CL.1030, P2.L1.CL.1040, P2.L1.CL.1080 |  | 53d |
| P2.L1.CL.1120 |  | Pull Wire - All Remianing Low Voltage Systems / L1 / Corr & Lobbies | 5d | 2026-05-08 | 2026-05-14 | P2.L1.CL.1110, P2.L1.CL.1060 |  | 98d |
| P2.L1.CL.1130 |  | Hang/Tape/Finish- Hard Lid Ceilings / L1 / Corr & Lobbies | 10d | 2026-05-15 | 2026-05-29 | P2.L1.CL.1090 |  | 53d |
| P2.L1.CL.1140 |  | Drop Ceiling Tiles @ T-Grid / L1 / Corr & Lobbies | 5d | 2026-05-15 | 2026-05-21 | P2.L1.CL.1100, P2.L1.CL.1110, P2.L1.CL.1120, P2.L1.CL.1070 |  | 111d |

| ID | WBS | Task | Duration | Start | Finish | Predecessors | Total float |
| --- | --- | --- | --- | --- | --- | --- | --- |
| P2.L1.CL.1190 |  | Paint - Hard Lid Ceilings / L1 / Corr & Lobbies | 5d | 2026-06-01 | 2026-06-05 | P2.L1.CL.1130 | 53d |
| P2.L1.CL.1180 |  | Ceiling Mounted - HVAC GRD's / L1 / Corr & Lobbies | 15d | 2026-06-08 | 2026-06-26 | P2.L1.CL.1190, P2.L1.CL.1020 | 53d |
| P2.L1.CL.1150 |  | Ceiling Mounted - Electrical Devices and Lights / L1 / Corr & Lobbies | 15d | 2026-06-22 | 2026-07-13 | P2.L1.CL.1180 SS+10d, P2.L1.CL.1100, P2.L1.CL.1190 | 53d |
| P2.L1.CL.1160 |  | Ceiling Mounted - Fire Alarm/Life Saftey Devices / L1 / Corr & Lobbies | 15d | 2026-07-07 | 2026-07-27 | P2.L1.CL.1150 SS+10d, P2.L1.CL.1110, P2.L1.CL.1190, P2.L1.CL.1020 | 53d |
| P2.L1.CL.1170 |  | Ceiling Mounted - All Low Voltage Devices / L1 / Corr & Lobbies | 15d | 2026-07-21 | 2026-08-10 | P2.L1.CL.1160 SS+10d, P2.L1.CL.1190, P2.L1.CL.1120 | 53d |
| P2.L1.CL.1200 |  | Prep Flooring / L1 / Corr & Lobbies | 2d | 2026-08-11 | 2026-08-12 | P2.L1.CL.1140 SS+2d, BP10.124.3.100, P2.L1.CL.1170, P2.L1.CL.1180, P2.L1.CL.1150, P2.L1.CL.1160, PCO.823.1150 | 53d |
| P2.L1.CL.1330 |  | Flooring / L1 / Corr & Lobbies | 8d | 2026-08-13 | 2026-08-24 | P2.L1.CL.1200 | 53d |
| P2.L1.CL.1210 |  | Final Paint / L1 / Corr & Lobbies | 5d | 2026-08-20 | 2026-08-26 | P2.L1.CL.1330 FF+2d, P2.L1.CL.1140, BP7.097.3.100 | 83d |
| P2.L1.CL.1220 |  | Floor Base / L1 / Corr & Lobbies | 5d | 2026-08-27 | 2026-09-02 | P2.L1.CL.1210 | 103d |
| P2.L1.CL.1250 |  | Trim - HVAC - Wall Mounted Devices / L1 / Corr & Lobbies | 5d | 2026-08-27 | 2026-09-02 | BP1.233.3.410, P2.L1.CL.1210 | 83d |
| P2.L1.CL.1230 |  | Trim - All Electrical - Wall Mounted Devices / L1 / Corr & Lobbies | 5d | 2026-09-03 | 2026-09-10 | P2.L1.CL.1250, P2.L1.CL.1210 | 83d |
| P2.L1.CL.1240 |  | Trim - Fire Alarm - Wall Mounted Devices / L1 / Corr & Lobbies | 5d | 2026-09-11 | 2026-09-17 | P2.L1.CL.1230, P2.L1.CL.1210 | 83d |
| P2.L1.CL.1260 |  | Trim - All Remining Low Voltage Systems - Wall Mounted Devices / L1 / Corr & Lobbies | 5d | 2026-09-18 | 2026-09-24 | P2.L1.CL.1240, P2.L1.CL.1210 | 83d |
| P2.L1.CL.1270 |  | Building Signage / L1 / Corr & Lobbies | 5d | 2026-09-25 | 2026-10-01 | P2.L1.CL.1260, P2.L1.CL.1210 | 83d |
| P2.L1.CL.1280 |  | Work Completion List / L1 / Corr & Lobbies | 5d | 2026-10-02 | 2026-10-08 | P2.L1.CL.1270, P2.L1.CL.1230, P2.L1.CL.1240, P2.L1.CL.1250, P2.L1.CL.1260, P2.L1.CL.1220 | 83d |
| P2.L1.CL.1290 |  | Rough Clean / L1 / Corr & Lobbies | 2d | 2026-10-09 | 2026-10-12 | P2.L1.CL.1280 | 83d |
| P2.L1.CL.1300 |  | Punchlist / L1 / Corr & Lobbies | 5d | 2026-10-13 | 2026-10-19 | P2.L1.CL.1290 | 83d |
| P2.L1.CL.1310 |  | Final Clean / L1 / Corr & Lobbies | 2d | 2026-10-20 | 2026-10-21 | P2.L1.CL.1300 | 83d |
|  | L1 | **LAB & CLINICAL SPACES (Below Interstitials) / LEVEL 1** |  | 2025-02-10 | 2026-10-20 |  |  |
|  | 13 | **FINISHES - Lab & Clinical Spaces / Level 1** |  | 2026-03-13 | 2026-10-20 |  |  |
|  | 2 | **CT Suites - Room Blocks 1-39.. (6K SF) / Level 1** |  | 2026-03-13 | 2026-10-07 |  |  |
| P2.L1.F.LC.3440 |  | Headwall Set for MEP Tie in / L1 / CT Suites | 1d | 2026-03-13 | 2026-03-13 | P2.L1.LC.1450, P2.L1.LC.1470, P2.L1.LC.1430, P2.L1.LC.1440 | 196d |
| P2.L1.F.LC.3450 |  | Headwall MEP Tie in / L1 / CT Suites | 1d | 2026-03-16 | 2026-03-16 | P2.L1.F.LC.3440 | 196d |
| P2.L1.F.LC.3460 |  | Headwall Coverplate Install / L1 / CT Suites | 1d | 2026-03-17 | 2026-03-17 | P2.L1.F.LC.3450 | 196d |
| P2.L1.F.LC.1000 |  | Paint - Walls / L1 / CT Suites | 5d | 2026-04-03 | 2026-04-09 | P2.L1.LC.1550 | 93d |
| P2.L1.F.LC.1010 |  | R/I - Ceiling Assemblies & Supports - Med Equip / L1 / CT Suites | 5d | 2026-04-10 | 2026-04-16 | P2.L1.F.LC.1000 | 93d |
| P2.L1.F.LC.1020 |  | Framing - Hard Lid Ceilings / L1 / CT Suites | 5d | 2026-04-17 | 2026-04-23 | P2.L1.F.LC.1010 | 93d |
| P2.L1.F.LC.1030 |  | R/I - Lights & Devices - Hard Lids Ceilings / L1 / CT Suites | 5d | 2026-04-24 | 2026-04-30 | P2.L1.F.LC.1020 | 93d |
| P2.L1.F.LC.1040 |  | R/I - Diffusers - Hard Lid Ceilings / L1 / CT Suites | 5d | 2026-04-24 | 2026-04-30 | P2.L1.F.LC.1020 | 93d |
| P2.L1.F.LC.1050 |  | R/I - Sprinkler Heads - Hard Lid Ceilings / L1 / CT Suites | 5d | 2026-04-24 | 2026-04-30 | P2.L1.F.LC.1020 | 93d |
| P2.L1.F.LC.1060 |  | R/I - Fire Alarm - Hard Lid Ceilings / L1 / CT Suites | 5d | 2026-04-24 | 2026-04-30 | P2.L1.F.LC.1020 | 93d |
| P2.L1.F.LC.1070 |  | OH Ceiling Inspection & Signoff - Hard Lid Ceilings / L1 / CT Suites | 5d | 2026-05-01 | 2026-05-07 | P2.L1.F.LC.1040, P2.L1.F.LC.1050, P2.L1.F.LC.1060, P2.L1.F.LC.1030 | 93d |
| P2.L1.F.LC.1080 |  | Hang-Tape-Finish _Hard Lid Ceilings / L1 / CT Suites | 5d | 2026-05-08 | 2026-05-14 | P2.L1.F.LC.1070 | 93d |
| P2.L1.F.LC.1090 |  | Paint Ceilings / L1 / CT Suites | 5d | 2026-05-15 | 2026-05-21 | P2.L1.F.LC.1080 | 93d |
| P2.L1.F.LC.1100 |  | Waterproof Ceramic Tile / L1 / CT Suites | 5d | 2026-05-22 | 2026-05-29 | P2.L1.F.LC.1090 | 93d |
| P2.L1.F.LC.1110 |  | Ceramic Tile / L1 / CT Suites | 5d | 2026-06-01 | 2026-06-05 | P2.L1.F.LC.1100 | 93d |
| P2.L1.F.LC.1120 |  | T-Grid / L1 / CT Suites | 5d | 2026-06-08 | 2026-06-12 | P2.L1.F.LC.1110, RFP.014.1040 | 93d |
| P2.L1.F.LC.1130 |  | Diffusers in T-Grid / L1 / CT Suites | 5d | 2026-06-15 | 2026-06-19 | P2.L1.F.LC.1120 | 93d |
| P2.L1.F.LC.1140 |  | Lights & Devices / L1 / CT Suites | 5d | 2026-06-15 | 2026-06-19 | P2.L1.F.LC.1120 | 93d |
| P2.L1.F.LC.1150 |  | Sprinkler Heads / L1 / CT Suites | 5d | 2026-06-15 | 2026-06-19 | P2.L1.F.LC.1120 | 93d |
| P2.L1.F.LC.1160 |  | Trim Low Voltage / L1 / CT Suites | 5d | 2026-06-15 | 2026-06-19 | P2.L1.F.LC.1120 | 93d |
| P2.L1.F.LC.1170 |  | Trim Fire Alarm / L1 / CT Suites | 5d | 2026-06-15 | 2026-06-19 | P2.L1.F.LC.1120 | 93d |
| P2.L1.F.LC.1180 |  | OH Ceiling Signoff / L1 / CT Suites | 10d | 2026-06-22 | 2026-07-06 | P2.L1.F.LC.1150, P2.L1.F.LC.1130, P2.L1.F.LC.1140, P2.L1.F.LC.1160, P2.L1.F.LC.1170 | 93d |
| P2.L1.F.LC.1190 |  | Casework (Before Flooring) / L1 / CT Suites | 1d | 2026-07-07 | 2026-07-07 | BP7.102.3.110, BP7.102.3.140, P2.L1.F.LC.1180 | 93d |
| P2.L1.F.LC.1200 |  | Drop Ceiling Tile / L1 / CT Suites | 5d | 2026-07-07 | 2026-07-13 | P2.L1.F.LC.1180 | 99d |
| P2.L1.F.LC.1210 |  | Wall Protection / L1 / CT Suites | 5d | 2026-07-08 | 2026-07-14 | P2.L1.F.LC.1190, BP7.102.3.300 | 93d |
| P2.L1.F.LC.1220 |  | Plumbing Fixtures & Drinking Fountains / L1 / CT Suites | 5d | 2026-07-08 | 2026-07-14 | P2.L1.F.LC.1190 | 98d |
| P2.L1.F.LC.1260 |  | Doors & Hardware / L1 / CT Suites | 5d | 2026-07-08 | 2026-07-14 | P2.L1.F.LC.1190 | 98d |
| P2.L1.F.LC.1230 |  | Trim T-Stats / L1 / CT Suites | 5d | 2026-07-15 | 2026-07-21 | P2.L1.F.LC.1210 | 93d |
| P2.L1.F.LC.1240 |  | Trim Electrical / L1 / CT Suites | 5d | 2026-07-15 | 2026-07-21 | P2.L1.F.LC.1230 SS | 93d |
| P2.L1.F.LC.1250 |  | Trim Telephone/ Data / L1 / CT Suites | 5d | 2026-07-15 | 2026-07-21 | P2.L1.F.LC.1240 SS | 93d |
| P2.L1.F.LC.1270 |  | Trim Med Gas / L1 / CT Suites | 5d | 2026-07-15 | 2026-07-21 | P2.L1.F.LC.1190, P2.L1.F.LC.1210 | 93d |
| P2.L1.F.LC.1280 |  | Floor Prep / L1 / CT Suites | 5d | 2026-07-22 | 2026-07-28 | P2.L1.F.LC.1240, P2.L1.F.LC.1250, P2.L1.F.LC.1190, P2.L1.F.LC.1220, P2.L1.F.LC.1230, P2.L1.F.LC.1270, P2.L1.F.LC.1200, P2.L1.F.LC.1260 | 93d |
| P2.L1.F.LC.1290 |  | Flooring / L1 / CT Suites | 5d | 2026-07-29 | 2026-08-04 | P2.L1.F.LC.1280 | 93d |
| P2.L1.F.LC.1300 |  | Building Specialities / L1 / CT Suites | 5d | 2026-08-05 | 2026-08-11 | P2.L1.F.LC.1290 | 93d |
| P2.L1.F.LC.1310 |  | Interior Building Signage / L1 / CT Suites | 5d | 2026-08-05 | 2026-08-11 | P2.L1.F.LC.1290 | 93d |
| P2.L1.F.LC.1320 |  | Work Completion List - Finishes / L1 / CT Suites | 5d | 2026-08-12 | 2026-08-18 | P2.L1.F.LC.1300, P2.L1.F.LC.3460, P2.L1.F.LC.1310 | 93d |
| P2.L1.F.LC.1330 |  | Remaining Equipment Post Flooring / L1 / CT Suites | 5d | 2026-08-19 | 2026-08-25 | P2.L1.F.LC.1320 | 93d |
| P2.L1.F.LC.1340 |  | Remaining MEP Hook-Ups / L1 / CT Suites | 5d | 2026-08-26 | 2026-09-01 | P2.L1.F.LC.3460, P2.L1.F.LC.1330 | 93d |
| P2.L1.F.LC.1350 |  | OFOI Furniture & Equipment / L1 / CT Suites | 5d | 2026-08-26 | 2026-09-01 | P2.L1.F.LC.1340 SS, OFOI.EQUIP.L1.1100, OFOI.EQUIP.L1.1070, OFOI.EQUIP.L1.1080, OFOI.EQUIP.L1.1090 | 103d |
| P2.L1.F.LC.1360 |  | Rough Clean / L1 / CT Suites | 5d | 2026-09-02 | 2026-09-09 | P2.L1.F.LC.3460, P2.L1.F.LC.1340 | 93d |
| P2.L1.F.LC.1370 |  | Prepare Punchlist / L1 / CT Suites | 5d | 2026-09-10 | 2026-09-16 | P2.L1.F.LC.1340 SS, P2.L1.F.LC.1360 | 93d |
| P2.L1.F.LC.1380 |  | Correct Punchlist / L1 / CT Suites | 10d | 2026-09-17 | 2026-09-30 | P2.L1.F.LC.1370, P2.L1.F.LC.1350 | 93d |
| P2.L1.F.LC.1390 |  | Final Clean / L1 / CT Suites | 5d | 2026-10-01 | 2026-10-07 | P2.L1.F.LC.1380 | 93d |
|  | 3 | **Control / WorkStations - Room Blocks 1-29.. (3K SF) / Level 1** |  | 2026-03-13 | 2026-09-29 |  |  |
| P2.L1.F.LC.2190 |  | Casework (Before Flooring) / L1 / Ctrl,Wrkstn 294X | 2d | 2026-03-13 | 2026-03-16 | P2.L1.LC.1470 | 152d |
| P2.L1.F.LC.3470 |  | Headwall Set for MEP Tie in / L1 / Ctrl,Wrkstn 294X | 3d | 2026-03-13 | 2026-03-17 | P2.L1.LC.1470, P2.L1.LC.1440, P2.L1.LC.1450, P2.L1.LC.1430 | 193d |
| P2.L1.F.LC.2210 |  | Wall Protection / L1 / Ctrl,Wrkstn 294X | 5d | 2026-03-17 | 2026-03-23 | P2.L1.F.LC.2190, BP7.102.3.300 | 172d |
| P2.L1.F.LC.2220 |  | Plumbing Fixtures & Drinking Fountains / L1 / Ctrl,Wrkstn 294X | 5d | 2026-03-17 | 2026-03-23 | P2.L1.F.LC.2190 | 177d |
| P2.L1.F.LC.2260 |  | Doors & Hardware / L1 / Ctrl,Wrkstn 294X | 5d | 2026-03-17 | 2026-03-23 | P2.L1.F.LC.2190 | 177d |

| ID | WBS | Task | Duration | Start | Finish | Predecessors | Total float |
| --- | --- | --- | --- | --- | --- | --- | --- |
| P2.L1.F.LC.3480 |  | Headwall MEP Tie in / L1 / Ctrl,Wrkstn 294X | 2d | 2026-03-18 | 2026-03-19 | P2.L1.F.LC.3470 | 193d |
| P2.L1.F.LC.3490 |  | Headwall Coverplate Install / L1 / Ctrl,Wrkstn 294X | 1d | 2026-03-20 | 2026-03-20 | P2.L1.F.LC.3480 | 193d |
| P2.L1.F.LC.2230 |  | Trim T-Stats / L1 / Ctrl,Wrkstn 294X | 5d | 2026-03-24 | 2026-03-30 | P2.L1.F.LC.2210 | 172d |
| P2.L1.F.LC.2240 |  | Trim Electrical / L1 / Ctrl,Wrkstn 294X | 5d | 2026-03-24 | 2026-03-30 | P2.L1.F.LC.2230 SS | 172d |
| P2.L1.F.LC.2250 |  | Trim Telephone/ Data / L1 / Ctrl,Wrkstn 294X | 5d | 2026-03-24 | 2026-03-30 | P2.L1.F.LC.2240 SS | 172d |
| P2.L1.F.LC.2270 |  | Trim Med Gas / L1 / Ctrl,Wrkstn 294X | 5d | 2026-03-24 | 2026-03-30 | P2.L1.F.LC.2190, P2.L1.F.LC.2210 | 172d |
| P2.L1.F.LC.2000 |  | Paint - Walls / L1 / Ctrl,Wrkstn 294X | 5d | 2026-04-03 | 2026-04-09 | P2.L1.LC.1550 | 99d |
| P2.L1.F.LC.2010 |  | R/I - Ceiling Assemblies & Supports - Med Equip / L1 / Ctrl,Wrkstn 294X | 5d | 2026-04-10 | 2026-04-16 | P2.L1.F.LC.2000 | 99d |
| P2.L1.F.LC.2020 |  | Framing - Hard Lid Ceilings / L1 / Ctrl,Wrkstn 294X | 5d | 2026-04-17 | 2026-04-23 | P2.L1.F.LC.2010 | 99d |
| P2.L1.F.LC.2030 |  | R/I - Lights & Devices - Hard Lids Ceilings / L1 / Ctrl,Wrkstn 294X | 5d | 2026-04-24 | 2026-04-30 | P2.L1.F.LC.2020 | 99d |
| P2.L1.F.LC.2040 |  | R/I - Diffusers - Hard Lid Ceilings / L1 / Ctrl,Wrkstn 294X | 5d | 2026-04-24 | 2026-04-30 | P2.L1.F.LC.2020 | 99d |
| P2.L1.F.LC.2050 |  | R/I - Sprinkler Heads - Hard Lid Ceilings / L1 / Ctrl,Wrkstn 294X | 5d | 2026-04-24 | 2026-04-30 | P2.L1.F.LC.2020 | 99d |
| P2.L1.F.LC.2060 |  | R/I - Fire Alarm - Hard Lid Ceilings / L1 / Ctrl,Wrkstn 294X | 5d | 2026-04-24 | 2026-04-30 | P2.L1.F.LC.2020 | 99d |
| P2.L1.F.LC.2070 |  | OH Ceiling Inspection & Signoff - Hard Lid Ceilings / L1 / Ctrl,Wrkstn 294X | 5d | 2026-05-01 | 2026-05-07 | P2.L1.F.LC.2030, P2.L1.F.LC.2040, P2.L1.F.LC.2050, P2.L1.F.LC.2060 | 99d |
| P2.L1.F.LC.2080 |  | Hang-Tape-Finish _Hard Lid Ceilings / L1 / Ctrl,Wrkstn 294X | 5d | 2026-05-08 | 2026-05-14 | P2.L1.F.LC.2070 | 99d |
| P2.L1.F.LC.2090 |  | Paint Ceilings / L1 / Ctrl,Wrkstn 294X | 5d | 2026-05-15 | 2026-05-21 | P2.L1.F.LC.2080 | 99d |
| P2.L1.F.LC.2100 |  | Waterproof Ceramic Tile / L1 / Ctrl,Wrkstn 294X | 5d | 2026-05-22 | 2026-05-29 | P2.L1.F.LC.2090 | 99d |
| P2.L1.F.LC.3400 |  | Floor Prep - Epoxy Floors / L1 / TLT-ISO 1-294X | 3d | 2026-05-22 | 2026-05-27 | P2.L1.F.LC.2090, P2.L1.F.LC.2190 | 104d |
| P2.L1.F.LC.3410 |  | Flooring - Epoxy Floors / L1 / TLT-ISO 1-294X | 2d | 2026-05-28 | 2026-05-29 | P2.L1.F.LC.3400 | 104d |
| P2.L1.F.LC.2110 |  | Ceramic Tile / L1 / Ctrl,Wrkstn 294X | 5d | 2026-06-01 | 2026-06-05 | P2.L1.F.LC.2100 | 99d |
| P2.L1.F.LC.2120 |  | T-Grid / L1 / Ctrl,Wrkstn 294X | 5d | 2026-06-08 | 2026-06-12 | P2.L1.F.LC.2110, P2.L1.F.LC.3410 | 99d |
| P2.L1.F.LC.2130 |  | Diffusers in T-Grid / L1 / Ctrl,Wrkstn 294X | 5d | 2026-06-15 | 2026-06-19 | P2.L1.F.LC.2120 | 99d |
| P2.L1.F.LC.2140 |  | Lights & Devices / L1 / Ctrl,Wrkstn 294X | 5d | 2026-06-15 | 2026-06-19 | P2.L1.F.LC.2120 | 99d |
| P2.L1.F.LC.2150 |  | Sprinkler Heads / L1 / Ctrl,Wrkstn 294X | 5d | 2026-06-15 | 2026-06-19 | P2.L1.F.LC.2120 | 99d |
| P2.L1.F.LC.2160 |  | Trim Low Voltage / L1 / Ctrl,Wrkstn 294X | 5d | 2026-06-15 | 2026-06-19 | P2.L1.F.LC.2120 | 99d |
| P2.L1.F.LC.2170 |  | Trim Fire Alarm / L1 / Ctrl,Wrkstn 294X | 5d | 2026-06-15 | 2026-06-19 | P2.L1.F.LC.2120 | 99d |
| P2.L1.F.LC.2180 |  | OH Ceiling Signoff / L1 / Ctrl,Wrkstn 294X | 10d | 2026-06-22 | 2026-07-06 | P2.L1.F.LC.2170, P2.L1.F.LC.2160, P2.L1.F.LC.2130, P2.L1.F.LC.2140, P2.L1.F.LC.2150 | 99d |
| P2.L1.F.LC.2200 |  | Drop Ceiling Tile / L1 / Ctrl,Wrkstn 294X | 5d | 2026-07-07 | 2026-07-13 | P2.L1.F.LC.2180 | 99d |
| P2.L1.F.LC.2280 |  | Floor Prep / L1 / Ctrl,Wrkstn 294X | 5d | 2026-07-14 | 2026-07-20 | P2.L1.F.LC.2270, P2.L1.F.LC.2200, P2.L1.F.LC.2260, P2.L1.F.LC.2250, P2.L1.F.LC.2220, P2.L1.F.LC.2230, P2.L1.F.LC.2240 | 99d |
| P2.L1.F.LC.2290 |  | Flooring / L1 / Ctrl,Wrkstn 294X | 5d | 2026-07-21 | 2026-07-27 | P2.L1.F.LC.2280 | 99d |
| P2.L1.F.LC.2300 |  | Building Specialities / L1 / Ctrl,Wrkstn 294X | 5d | 2026-07-28 | 2026-08-03 | P2.L1.F.LC.2290 | 99d |
| P2.L1.F.LC.2310 |  | Interior Building Signage / L1 / Ctrl,Wrkstn 294X | 5d | 2026-07-28 | 2026-08-03 | P2.L1.F.LC.2290 | 99d |
| P2.L1.F.LC.2320 |  | Work Completion List - Finishes / L1 / Ctrl,Wrkstn 294X | 5d | 2026-08-04 | 2026-08-10 | P2.L1.F.LC.2310, P2.L1.F.LC.2300, P2.L1.F.LC.3490 | 99d |
| P2.L1.F.LC.2330 |  | Remaining Equipment Post Flooring / L1 / Ctrl,Wrkstn 294X | 5d | 2026-08-11 | 2026-08-17 | P2.L1.F.LC.2320, P2.L1.F.LC.3490 | 99d |
| P2.L1.F.LC.2340 |  | Remaining MEP Hook-Ups / L1 / Ctrl,Wrkstn 294X | 5d | 2026-08-18 | 2026-08-24 | P2.L1.F.LC.2330, P2.L1.F.LC.3490 | 99d |
| P2.L1.F.LC.2350 |  | OFOI Furniture & Equipment / L1 / Ctrl,Wrkstn 294X | 5d | 2026-08-18 | 2026-08-24 | P2.L1.F.LC.2340 SS | 109d |
| P2.L1.F.LC.2360 |  | Rough Clean / L1 / Ctrl,Wrkstn 294X | 5d | 2026-08-25 | 2026-08-31 | P2.L1.F.LC.2340 | 99d |
| P2.L1.F.LC.2370 |  | Prepare Punchlist / L1 / Ctrl,Wrkstn 294X | 5d | 2026-09-01 | 2026-09-08 | P2.L1.F.LC.2340 SS, P2.L1.F.LC.2360 | 99d |
| P2.L1.F.LC.2380 |  | Correct Punchlist / L1 / Ctrl,Wrkstn 294X | 10d | 2026-09-09 | 2026-09-22 | P2.L1.F.LC.2370, P2.L1.F.LC.2350 | 99d |
| P2.L1.F.LC.2390 |  | Final Clean / L1 / Ctrl,Wrkstn 294X | 5d | 2026-09-23 | 2026-09-29 | P2.L1.F.LC.2380 | 99d |
|  | 4 | **MRI Suites - Room Blocks 1-28.. (13.5K SF) / Level 1** |  | 2026-03-13 | 2026-10-20 |  |  |
| P2.L1.F.LC.3500 |  | Headwall Set for MEP Tie in / L1 / MRI 28XX | 1d | 2026-03-13 | 2026-03-13 | P2.L1.LC.1470, P2.L1.LC.1440, P2.L1.LC.1450, P2.L1.LC.1430 | 196d |
| P2.L1.F.LC.3510 |  | Headwall MEP Tie in / L1 / MRI 28XX | 1d | 2026-03-16 | 2026-03-16 | P2.L1.F.LC.3500 | 196d |
| P2.L1.F.LC.3520 |  | Headwall Coverplate Install / L1 / MRI 28XX | 1d | 2026-03-17 | 2026-03-17 | P2.L1.F.LC.3510 | 196d |
| P2.L1.F.LC.3000 |  | Paint - Walls / L1 / MRI 28XX | 5d | 2026-04-03 | 2026-04-09 | P2.L1.LC.1550 | 84d |
| P2.L1.F.LC.3010 |  | R/I - Ceiling Assemblies & Supports - Med Equip / L1 / MRI 28XX | 5d | 2026-04-10 | 2026-04-16 | CW.FD-MU -210, P2.L1.F.LC.3000 | 84d |
| P2.L1.F.LC.3020 |  | Framing - Hard Lid Ceilings / L1 / MRI 28XX | 5d | 2026-04-17 | 2026-04-23 | P2.L1.F.LC.3010 | 84d |
| P2.L1.F.LC.3030 |  | R/I - Lights & Devices - Hard Lids Ceilings / L1 / MRI 28XX | 5d | 2026-04-24 | 2026-04-30 | P2.L1.F.LC.3020 | 84d |
| P2.L1.F.LC.3040 |  | R/I - Diffusers - Hard Lid Ceilings / L1 / MRI 28XX | 5d | 2026-04-24 | 2026-04-30 | P2.L1.F.LC.3020 | 84d |
| P2.L1.F.LC.3050 |  | R/I - Sprinkler Heads - Hard Lid Ceilings / L1 / MRI 28XX | 5d | 2026-04-24 | 2026-04-30 | P2.L1.F.LC.3020 | 84d |
| P2.L1.F.LC.3060 |  | R/I - Fire Alarm - Hard Lid Ceilings / L1 / MRI 28XX | 5d | 2026-04-24 | 2026-04-30 | P2.L1.F.LC.3020 | 84d |
| P2.L1.F.LC.3070 |  | OH Ceiling Inspection & Signoff - Hard Lid Ceilings / L1 / MRI 28XX | 5d | 2026-05-01 | 2026-05-07 | P2.L1.F.LC.3040, P2.L1.F.LC.3050, P2.L1.F.LC.3060, P2.L1.F.LC.3030 | 84d |
| P2.L1.F.LC.3080 |  | Hang-Tape-Finish _Hard Lid Ceilings / L1 / MRI 28XX | 5d | 2026-05-08 | 2026-05-14 | P2.L1.F.LC.3070 | 84d |
| P2.L1.F.LC.3090 |  | Paint Ceilings / L1 / MRI 28XX | 5d | 2026-05-15 | 2026-05-21 | P2.L1.F.LC.3080 | 84d |
| P2.L1.F.LC.3100 |  | Waterproof Ceramic Tile / L1 / MRI 28XX | 5d | 2026-05-22 | 2026-05-29 | P2.L1.F.LC.3090 | 84d |
| P2.L1.F.LC.3110 |  | Ceramic Tile / L1 / MRI 28XX | 5d | 2026-06-01 | 2026-06-05 | P2.L1.F.LC.3100 | 84d |
| P2.L1.F.LC.3120 |  | T-Grid / L1 / MRI 28XX | 5d | 2026-06-08 | 2026-06-12 | P2.L1.F.LC.3110 | 84d |
| P2.L1.F.LC.3130 |  | Diffusers in T-Grid / L1 / MRI 28XX | 5d | 2026-06-15 | 2026-06-19 | P2.L1.F.LC.3120 | 84d |
| P2.L1.F.LC.3140 |  | Lights & Devices / L1 / MRI 28XX | 5d | 2026-06-15 | 2026-06-19 | P2.L1.F.LC.3120 | 84d |
| P2.L1.F.LC.3150 |  | Sprinkler Heads / L1 / MRI 28XX | 5d | 2026-06-15 | 2026-06-19 | P2.L1.F.LC.3120 | 84d |
| P2.L1.F.LC.3160 |  | Trim Low Voltage / L1 / MRI 28XX | 5d | 2026-06-15 | 2026-06-19 | P2.L1.F.LC.3120 | 84d |
| P2.L1.F.LC.3170 |  | Trim Fire Alarm / L1 / MRI 28XX | 5d | 2026-06-15 | 2026-06-19 | P2.L1.F.LC.3120 | 84d |
| P2.L1.F.LC.3180 |  | OH Ceiling Signoff / L1 / MRI 28XX | 10d | 2026-06-22 | 2026-07-06 | P2.L1.F.LC.3160, P2.L1.F.LC.3170, P2.L1.F.LC.3150, P2.L1.F.LC.3130, P2.L1.F.LC.3140 | 84d |
| P2.L1.F.LC.3190 |  | Casework/ Equipment / L1 / MRI 28XX | 10d | 2026-07-07 | 2026-07-20 | P2.L1.F.LC.3180 | 84d |
| P2.L1.F.LC.3200 |  | Drop Ceiling Tile / L1 / MRI 28XX | 5d | 2026-07-07 | 2026-07-13 | P2.L1.F.LC.3180 | 99d |
| P2.L1.F.LC.3210 |  | Wall Protection / L1 / MRI 28XX | 5d | 2026-07-21 | 2026-07-27 | P2.L1.F.LC.3190 SS+10d, BP7.102.3.300 | 84d |
| P2.L1.F.LC.3220 |  | Plumbing Fixtures & Drinking Fountains / L1 / MRI 28XX | 5d | 2026-07-21 | 2026-07-27 | P2.L1.F.LC.3190 | 89d |
| P2.L1.F.LC.3260 |  | Doors & Hardware / L1 / MRI 28XX | 5d | 2026-07-21 | 2026-07-27 | P2.L1.F.LC.3190 | 89d |
| P2.L1.F.LC.3230 |  | Trim T-Stats / L1 / MRI 28XX | 5d | 2026-07-28 | 2026-08-03 | P2.L1.F.LC.3210 | 84d |
| P2.L1.F.LC.3240 |  | Trim Electrical / L1 / MRI 28XX | 5d | 2026-07-28 | 2026-08-03 | P2.L1.F.LC.3230 SS | 84d |

| ID | WBS | Task | Duration | Start | Finish | Predecessors | Complete | Total float |
| --- | --- | --- | --- | --- | --- | --- | --- | --- |
| P2.L1.F.LC.3250 |  | Trim Telephone/ Data / L1 / MRI 28XX | 5d | 2026-07-28 | 2026-08-03 | P2.L1.F.LC.3240 SS |  | 84d |
| P2.L1.F.LC.3270 |  | Trim Med Gas / L1 / MRI 28XX | 5d | 2026-07-28 | 2026-08-03 | P2.L1.F.LC.3190, P2.L1.F.LC.3210 |  | 84d |
| P2.L1.F.LC.3280 |  | Floor Prep / L1 / MRI 28XX | 5d | 2026-08-04 | 2026-08-10 | P2.L1.F.LC.3200, P2.L1.F.LC.3260, P2.L1.F.LC.3240, P2.L1.F.LC.3250, P2.L1.F.LC.3190, P2.L1.F.LC.3220, P2.L1.F.LC.3230, P2.L1.F.LC.3270, PCO.823.1150 |  | 84d |
| P2.L1.F.LC.3290 |  | Flooring / L1 / MRI 28XX | 5d | 2026-08-11 | 2026-08-17 | P2.L1.F.LC.3280 |  | 84d |
| P2.L1.F.LC.3300 |  | Building Specialities / L1 / MRI 28XX | 5d | 2026-08-18 | 2026-08-24 | P2.L1.F.LC.3290 |  | 84d |
| P2.L1.F.LC.3310 |  | Interior Building Signage / L1 / MRI 28XX | 5d | 2026-08-18 | 2026-08-24 | P2.L1.F.LC.3290 |  | 84d |
| P2.L1.F.LC.3320 |  | Work Completion List - Finishes / L1 / MRI 28XX | 5d | 2026-08-25 | 2026-08-31 | P2.L1.F.LC.3310, P2.L1.F.LC.3300, P2.L1.F.LC.3520 |  | 84d |
| P2.L1.F.LC.3330 |  | Remaining Equipment Post Flooring / L1 / MRI 28XX | 5d | 2026-09-01 | 2026-09-08 | P2.L1.F.LC.3320, P2.L1.F.LC.3520 |  | 84d |
| P2.L1.F.LC.3340 |  | Remaining MEP Hook-Ups / L1 / MRI 28XX | 5d | 2026-09-09 | 2026-09-15 | P2.L1.F.LC.3330, P2.L1.F.LC.3520 |  | 84d |
| P2.L1.F.LC.3350 |  | OFOI Furniture & Equipment / L1 / MRI 28XX | 5d | 2026-09-09 | 2026-09-15 | P2.L1.F.LC.3340 SS, OFOI.EQUIP.L1.1030, OFOI.EQUIP.L1.1040, OFOI.EQUIP.L1.1050, OFOI.EQUIP.L1.1060, OFOI.EQUIP.L1.1000, OFOI.EQUIP.L1.1010, OFOI.EQUIP.L1.1020 |  | 94d |
| P2.L1.F.LC.3360 |  | Rough Clean / L1 / MRI 28XX | 5d | 2026-09-16 | 2026-09-22 | P2.L1.F.LC.3340 |  | 84d |
| P2.L1.F.LC.3370 |  | Prepare Punchlist / L1 / MRI 28XX | 5d | 2026-09-23 | 2026-09-29 | P2.L1.F.LC.3340 SS, P2.L1.F.LC.3360 |  | 84d |
| P2.L1.F.LC.3380 |  | Correct Punchlist / L1 / MRI 28XX | 10d | 2026-09-30 | 2026-10-13 | P2.L1.F.LC.3370, P2.L1.F.LC.3350 |  | 84d |
| P2.L1.F.LC.3390 |  | Final Clean / L1 / MRI 28XX | 5d | 2026-10-14 | 2026-10-20 | P2.L1.F.LC.3380 |  | 84d |
|  | 3 | **ROUGH IN - Lab & Clinical Spaces (22K SF) / Level 1** |  | 2025-02-10 | 2026-04-02 |  |  |  |
| P2.L1.LC.1040 |  | CMU - Drill_Epoxy Masonry Dowels / L1 / Lab & Clinical | 10d | 2025-02-10 A | 2025-02-21 A | BP4.040.3.100, P2.L1.LC.1000 | 100% |  |
| P2.L1.LC.1080 |  | OH - Fireproof Interstitial Steel Above / L1 / Lab & Clinical | 10d | 2025-02-10 A | 2025-02-18 A | P2.2.I.03.320, P2.L1.LC.1020, P2.L1.LC.1030 | 100% |  |
| P2.L1.LC.1000 |  | Layout - All Trades / L1 / Lab & Clinical | 5d | 2025-02-15 A | 2025-03-03 A | P2.2.I.05.220, P2.2.I.03.010 | 100% |  |
| P2.L1.LC.1010 |  | Framing - Top Track / L1 / Lab & Clinical | 10d | 2025-02-15 A | 2025-03-21 A | P2.L1.N.1010, P2.L1.LC.1000 | 100% |  |
| P2.L1.LC.1020 |  | OH - Structural Supports (All Trades) / L1 / Lab & Clinical | 10d | 2025-02-15 A | 2025-03-21 A | P2.L1.LC.1000 | 100% |  |
| P2.L1.LC.1030 |  | OH - MEPF - Hangers & Supports / L1 / Lab & Clinical | 10d | 2025-02-17 A | 2025-03-21 A | P2.L1.LC.1000, P2.BIM.L1.40.140 | 100% |  |
| P2.L1.LC.1180 |  | OH - Plumbing Piping South (High) / L1 / Lab & Clinical | 15d | 2025-02-17 A | 2025-03-21 A | P2.L1.LC.1080 | 100% |  |
| P2.L1.LC.1560 |  | OH - Plumbing Piping North (High) / L1 / Lab & Clinical | 15d | 2025-02-18 A | 2025-03-14 A | P2.L1.LC.1180 | 100% |  |
| P2.L1.LC.1050 |  | CMU - Lay Block / L1 / Lab & Clinical | 10d | 2025-02-24 A | 2025-02-28 A | P2.L1.LC.1040 | 100% |  |
| P2.L1.LC.1060 |  | In Wall - Electrical - CMU / L1 / Lab & Clinical | 10d | 2025-02-24 A | 2025-02-28 A | P2.L1.LC.1050 SS | 100% |  |
| P2.L1.LC.1070 |  | In Wall - Plumbing - CMU / L1 / Lab & Clinical | 10d | 2025-02-24 A | 2025-02-28 A | P2.L1.LC.1050 SS | 100% |  |
| P2.L1.LC.1210 |  | OH - Hang Duct - HP Mains / L1 / Lab & Clinical | 10d | 2025-02-24 A | 2025-04-01 A | P2.L1.N.1210, P2.L1.LC.1080 | 100% |  |
| P2.L1.LC.1170 |  | OH - Fire Suppression / L1 / Lab & Clinical | 10d | 2025-03-01 A | 2025-03-14 A | P2.L1.LC.1080 | 100% |  |
| P2.L1.LC.1100 |  | Paint - CMU Block Fill / L1 / Lab & Clinical | 10d | 2025-03-10 A | 2025-03-14 A | P2.L1.LC.1050 | 100% |  |
| P2.L1.LC.1270 |  | OH - Quench Vent Piping - Test / B2/L1 / Lab & Clinical | 5d | 2025-03-10 A | 2025-03-13 A | P2.L1.LC.1220 | 100% |  |
| P2.L1.LC.1110 |  | CMU - Point & Patch / L1 / Lab & Clinical | 10d | 2025-03-17 A | 2025-03-21 A | P2.L1.LC.1070, P2.L1.LC.1060, P2.L1.LC.1100 | 100% |  |
| P2.L1.LC.1090 |  | Framing - Priority Walls & Door Frames / L1 / Lab & Clinical | 10d | 2025-03-24 A | 2025-04-23 A | P2.L1.N.1090, P2.L1.LC.1010, P2.L1.LC.1080 | 100% |  |
| P2.L1.LC.1120 |  | Paint Prime & 1st Coat - CMU / L1 / Lab & Clinical | 10d | 2025-03-24 A | 2025-03-28 A | P2.L1.LC.1110 SS | 100% |  |
| P2.L1.LC.1190 |  | OH - Electrical - 480/277v Distribution / L1 / Lab & Clinical | 10d | 2025-03-24 A | 2025-04-07 A | P2.L1.LC.1170, P2.L1.LC.1080 | 100% |  |
| P2.L1.LC.1230 |  | OH - Electrical - 208/120v Branch / L1 / Lab & Clinical | 10d | 2025-03-24 A | 2025-04-07 A | P2.L1.LC.1180 | 100% |  |
| P2.L1.LC.1570 |  | OH - Plumbing Piping South (Low) / L1 / Lab & Clinical | 15d | 2025-04-01 A | 2025-04-21 A | P2.L1.LC.1560 | 100% |  |
| P2.L1.LC.1260 |  | OH - DALT - HP Mains / L1 / Lab & Clinical | 10d | 2025-04-02 A | 2025-05-02 A | P2.L1.LC.1210 | 100% |  |
| P2.L1.LC.1130 |  | Framing - Priority Walls - AHJ Inspections / L1 / Lab & Clinical | 5d | 2025-04-15 A | 2025-04-30 A | P2.L1.LC.1090 | 100% |  |
| P2.L1.LC.1160 |  | Spray/Seal/Firestop - Head of Wall - Priority Walls / L1 / Lab & Clinical | 5d | 2025-04-16 A | 2025-04-23 A | P2.L1.LC.1130 | 100% |  |
| P2.L1.LC.1290 |  | OH - Insulate HP Duct / L1 / Lab & Clinical | 10d | 2025-04-16 A | 2025-04-30 A | P2.L1.LC.1210 | 100% |  |
| P2.L1.LC.1300 |  | OH - Hang Duct - LP Branch / L1 / Lab & Clinical | 10d | 2025-04-16 A | 2025-04-30 A | P2.L1.LC.1210 | 100% |  |
| P2.L1.LC.1580 |  | OH - Plumbing Piping North (Low) / L1 / Lab & Clinical | 15d | 2025-04-22 A | 2025-05-12 A | P2.L1.LC.1570 | 100% |  |
| P2.L1.LC.1140 |  | Hang/Tape/Finish - Priority Walls / L1 / Lab & Clinical | 10d | 2025-05-01 A | 2025-05-23 A | P2.L1.N.1140, P2.L1.LC.1130 | 100% |  |
| P2.L1.LC.1310 |  | OH - Set & Connect Mech Equipment / L1 / Lab & Clinical | 10d | 2025-05-05 A | 2025-05-16 A | P2.L1.LC.1260 | 100% |  |
| P2.L1.LC.1150 |  | Paint Prime & 1st Coat - Priority Walls / L1 / Lab & Clinical | 10d | 2025-05-15 A | 2025-05-29 A | P2.L1.LC.1160 SS, P2.L1.LC.1140 | 100% |  |
| P2.L1.LC.1280 |  | OH - Insulate Plumbing / L1 / Lab & Clinical | 10d | 2025-05-19 A | 2025-05-30 A | P2.L1.LC.1240, P2.L1.LC.1150 | 100% |  |
| P2.L1.LC.1320 |  | OH - Electrical - Equip Tie In / L1 / Lab & Clinical | 10d | 2025-05-19 A | 2025-05-30 A | P2.L1.LC.1310 | 100% |  |
| P2.L1.LC.1240 |  | OH - Plumbing - Test / L1 / Lab & Clinical | 10d | 2025-05-27 A | 2025-05-30 A | P2.L1.LC.1580 | 100% |  |
| P2.L1.LC.1200 |  | Firestop - Thru Wall - Priority Walls / L1 / Lab & Clinical | 5d | 2025-06-02 A | 2025-06-06 A | P2.L1.LC.1240 | 100% |  |
| P2.L1.LC.1340 |  | OH - Insulate HVAC Pipe / L1 / Lab & Clinical | 10d | 2025-06-02 A | 2025-06-13 A | P2.L1.LC.1290 | 100% |  |
| P2.L1.LC.1350 |  | OH - Insulate LP Duct / L1 / Lab & Clinical | 10d | 2025-06-02 A | 2025-06-13 A | P2.L1.LC.1300 | 100% |  |
| P2.L1.LC.1370 |  | OH - Conduit - Low Volt - BAS/Controls / L1 / Lab & Clinical | 10d | 2025-06-16 A | 2025-06-27 A | P2.L1.LC.1310, P2.L1.LC.1340 | 100% |  |
| P2.L1.LC.1380 |  | OH - Conduit - Low Volt - Fire Alarm / L1 / Lab & Clinical | 10d | 2025-06-16 A | 2025-06-27 A | P2.L1.LC.1310, P2.L1.LC.1350 | 100% |  |
| P2.L1.LC.1390 |  | OH - Conduit - Low Volt - Telecom / L1 / Lab & Clinical | 10d | 2025-06-16 A | 2025-06-27 A | P2.L1.LC.1350 | 100% |  |
| P2.L1.LC.1400 |  | OH - Conduit - Low Volt - Security / L1 / Lab & Clinical | 10d | 2025-06-16 A | 2025-06-27 A | P2.L1.LC.1340 | 100% |  |
| P2.L1.LC.1220 |  | OH - Quench Vent Piping / L1 / Lab & Clinical | 10d | 2025-09-09 A | 2025-09-15 A | P2.L2.INT.N.2120, P2.B2.LC.1590, P2.L1.LC.1180, P2.L1.LC.1170, P2.L1.LC.1080 | 100% |  |
| P2.L1.LC.1430 |  | In Wall - Plumbing - Framing / L1 / Lab & Clinical | 10d | 2025-09-15 A | 2025-09-26 A | OFOI.PWS.1230, RFP.014.1040, P2.L1.LC.1420 SS | 100% |  |
| P2.L1.LC.1420 |  | Framing - Balance of Framing & Door Frames / L1 / Lab & Clinical | 10d | 2025-09-22 A | 2025-11-14 A | P2.L1.LC.1280, P2.L1.LC.1380, P2.L1.LC.1390, P2.L1.LC.1400, P2.L1.LC.1370, P2.L6.S.1420, P2.L6.N.1420 | 100% |  |
| P2.L1.LC.1410 |  | OH - Conduit - Low Volt - Medical Services/Nurse Call (?) / L1 / Lab & Clinical | 10d | 2025-11-10 A | 2025-11-14 A | P2.L1.LC.1350 | 100% |  |
| P2.L1.LC.1250 |  | Pull Wire - Electrical - 480/277v Distribution / L1 / Lab & Clinical | 10d | 2025-12-01 | 2025-12-12 | P2.L1.LC.1190, P2.L1.LC.1380 |  | 89d |
| P2.L1.LC.1440 |  | In Wall - Electrical - Framing / L1 / Lab & Clinical | 10d | 2025-12-29 | 2026-01-12 | P2.L1.LC.1420, P2.L1.LC.1230, OFOI.PWS.1230, RFP.014.1040 |  | 35d |
| P2.L1.LC.1450 |  | In Wall - Backing/Blocking/Supports / L1 / Lab & Clinical | 10d | 2025-12-29 | 2026-01-12 | P2.L1.LC.1420, OFOI.PWS.1230, RFP.014.1040 |  | 45d |
| P2.L1.LC.1360 |  | Pull Wire - Electrical - 208/120v Branch & Equip / L1 / Lab & Clinical | 10d | 2026-01-13 | 2026-01-26 | P2.L1.LC.1320, P2.L1.LC.1230, P2.L1.LC.1440 |  | 35d |
| P2.L1.LC.1330 |  | OH - HVAC Piping - Equip Tie In / L1 / Lab & Clinical | 10d | 2026-01-28 | 2026-02-10 | P2.L1.LC.1310, CX.B2.HYDR.1000 |  | 49d |
| P2.L1.LC.1460 |  | AHJ Inspections - Wall Close In / L1 / Lab & Clinical | 5d | 2026-02-20 | 2026-02-26 | PCO.225.1220, P2.L1.LC.1360, P2.L1.LC.1440, P2.L1.LC.1450, P2.L1.LC.1430, RFP.014.1040 |  | 17d |
| P2.L1.LC.1470 |  | Hang-Tape-Finish - Walls and Hard Lid Ceilings / L1 / Lab & Clinical | 10d | 2026-02-27 | 2026-03-12 | P2.SUM.175, P2.L1.LC.1460, BP4.134.3.130 |  | 17d |
| P2.L1.LC.1480 |  | Spray/Seal/Firestop - Head of Wall / L1 / Lab & Clinical | 10d | 2026-03-13 | 2026-03-26 | P2.L1.LC.1120, P2.L1.LC.1470 |  | 17d |
| P2.L1.LC.1490 |  | Firestop - Thru Wall / L1 / Lab & Clinical | 10d | 2026-03-13 | 2026-03-26 | P2.L1.LC.1470, P2.L1.LC.1200 |  | 17d |
| P2.L1.LC.1500 |  | Pull Wire - Low Volt - BAS/Controls / L1 / Lab & Clinical | 10d | 2026-03-13 | 2026-03-26 | P2.L1.LC.1470 |  | 17d |
| P2.L1.LC.1510 |  | Pull Wire - Low Volt - Fire Alarm / L1 / Lab & Clinical | 10d | 2026-03-13 | 2026-03-26 | P2.L1.LC.1470 |  | 17d |

| ID | WBS | Task | Duration | Start | Finish | Predecessors | Complete | Total float |
| --- | --- | --- | --- | --- | --- | --- | --- | --- |
| P2.L1.LC.1520 |  | Pull Wire - Low Volt - Telecom / L1 / Lab & Clinical | 10d | 2026-03-13 | 2026-03-26 | P2.L1.LC.1470 |  | 17d |
| P2.L1.LC.1530 |  | Pull Wire - Low Volt - Security / L1 / Lab & Clinical | 10d | 2026-03-13 | 2026-03-26 | P2.L1.LC.1470 |  | 17d |
| P2.L1.LC.1540 |  | Pull Wire - Low Volt - Medical Services/Nurse Call (?) / L1 / Lab & Clinical | 10d | 2026-03-13 | 2026-03-26 | P2.L1.LC.1470, P2.L1.LC.1410 |  | 17d |
| P2.L1.LC.1550 |  | Trades Inspect & Verify R/I Work Completed to Specs / L1 / Lab & Clinical | 5d | 2026-03-27 | 2026-04-02 | P2.L1.LC.1480, P2.L1.LC.1490, P2.L1.LC.1520, P2.L1.LC.1530, P2.L1.LC.1250, P2.L1.LC.1540, P2.L1.LC.1360, P2.L1.LC.1500, P2.L1.LC.1510, P2.L1.LC.1330 |  | 17d |
|  | 1 | **MECHANICAL TOWERS / LEVEL 1** |  | 2025-05-14 | 2026-03-11 |  |  |  |
|  | 8 | **East Mechanical Tower / Rough In & Finish (3K SF) / Level 1** |  | 2025-05-14 | 2026-03-11 |  |  |  |
| P2.L1.EMT.1070 |  | Set & Connect - Mech Equipment / L1 - E. Mech Tower | 10d | 2025-05-14 A | 2025-05-16 A | BP1.237.3.200 | 100% |  |
| P2.L1.EMT.1000 |  | Insulation - Exterior Wall Assembly / L1 - E. Mech Tower | 5d | 2025-06-11 A | 2025-06-30 A | P2.FAC.2.Z3.130 | 100% |  |
| P2.L1.EMT.1020 |  | In Wall - Electrical - CMU / L1 - E. Mech Tower | 10d | 2025-07-03 A | 2025-07-05 A | P2.L1.EMT.1010 SS | 100% |  |
| P2.L1.EMT.1030 |  | In Wall - Mech/Plumbing - CMU / L1 - E. Mech Tower | 10d | 2025-07-03 A | 2025-07-05 A | P2.L1.EMT.1010 SS | 100% |  |
| P2.L1.EMT.1010 |  | CMU - Lay Block / L1 - E. Mech Tower | 10d | 2025-08-21 A | 2025-08-27 A | BP4.040.3.100, P2.L1.EMT.1000 | 100% |  |
| P2.L1.EMT.1040 |  | Paint - CMU Block Fill / L1 - E. Mech Tower | 10d | 2025-08-27 A | 2025-09-10 A | P2.L1.EMT.1010 | 100% |  |
| P2.L1.EMT.1100 |  | HVAC Piping Connections to Shaft Riser / L1 - E. Mech Tower | 5d | 2025-09-02 A | 2025-09-15 A | DDD2500, P2.L1.EMT.1200, P2.L1.EMT.1070, DDD2250 | 100% |  |
| P2.L1.EMT.1105 |  | HVAC Duct Connections to Shaft Riser / L1 - E. Mech Tower | 5d | 2025-09-02 A | 2025-09-15 A | DDD2500, P2.L1.EMT.1200, P2.L1.EMT.1070, DDD2250 | 100% |  |
| P2.L1.EMT.1050 |  | CMU - Point & Patch / L1 - E. Mech Tower | 10d | 2025-09-11 A | 2025-09-12 A | P2.L1.EMT.1030, P2.L1.EMT.1020, P2.L1.EMT.1040 | 100% |  |
| P2.L1.EMT.1060 |  | Paint Prime & 1st Coat - CMU / L1 - E. Mech Tower | 10d | 2025-09-11 A | 2025-09-12 A | P2.L1.EMT.1050 SS | 100% |  |
| P2.L1.EMT.1080 |  | Set & Connect - Elect Panels and Equipment / L1 - E. Mech Tower | 5d | 2025-09-15 A | 2025-09-26 A | P2.L1.EMT.1060 | 100% |  |
| P2.L1.EMT.1120 |  | BAS - Equip Tie In / L1 - E. Mech Tower | 5d | 2025-10-01 A | 2025-10-07 A | P2.L1.EMT.1070, P2.L1.EMT.1060 | 100% |  |
| P2.L1.EMT.1140 |  | Pull Wire - In From Distribution Panels / Out to Branch Circuits / L1 - E. Mech Tower | 5d | 2025-10-15 A | 2025-10-30 A | P2.L1.EMT.1090 | 100% |  |
| FRG.P2.L1.EMT.1000 |  | AHU Piping Install / L1 - E. Mech Tower - FRAGNET | 10d | 2025-10-21 A | 2025-11-03 A | P2.L1.EMT.1070 | 100% |  |
| P2.L1.EMT.1250 |  | Flooring Prep - Epoxy Floors / L1 - E. Mech Tower | 3d | 2025-12-01 | 2025-12-03 | P2.L1.EMT.1080, BP7.096.3.200 |  | 48d |
| P2.L1.EMT.1200 |  | Flooring - Epoxy Floors / L1 - E. Mech Tower | 2d | 2025-12-04 | 2025-12-05 | P2.L1.EMT.1250 |  | 48d |
| P2.L1.EMT.1090 |  | Panelboards, Interconnect Wiring, and Remaining Room Buildout of All Elec/FA Systems / L1 - E. Mech Tower | 10d | 2025-12-08 | 2025-12-19 | BP1.262.3.200, BP1.262.3.100, P2.L1.EMT.1200, P2.L1.EMT.1080 |  | 157d |
| P2.L1.EMT.1160 |  | Electrical Tie in to Equipment / L1 - E. Mech Tower | 5d | 2025-12-22 | 2025-12-29 | P2.L1.EMT.1140, P2.L1.EMT.1070 |  | 162d |
| P2.L1.EMT.1170 |  | Test & Terminate / L1 - E. Mech Tower | 5d | 2025-12-22 | 2025-12-29 | P2.L1.EMT.1140 |  | 157d |
| P2.L1.EMT.1180 |  | Paint - Finish Coat / L1 - E. Mech Tower | 2d | 2025-12-30 | 2025-12-31 | P2.L1.EMT.1170 |  | 157d |
| P2.L1.EMT.1210 |  | Doors & Hardware / L1 - E. Mech Tower | 2d | 2025-12-30 | 2025-12-31 | P2.L1.EMT.1200, P2.L1.EMT.1160 |  | 162d |
| P2.L1.EMT.1190 |  | Trim All MEPF Finishes / L1 - E. Mech Tower | 2d | 2026-01-02 | 2026-01-05 | BP1.233.3.410, P2.L1.EMT.1180 |  | 210d |
| P2.L1.EMT.1130 |  | Test/Inspect Duct & Piping / L1 - E. Mech Tower | 5d | 2026-01-23 | 2026-01-29 | P2.L1.EMT.1100, P2.L1.EMT.1105 |  | 137d |
| P2.L1.EMT.1110 |  | HVAC Piping - Equip Tie In / L1 - E. Mech Tower | 10d | 2026-01-28 | 2026-02-10 | P2.L1.EMT.1070, CX.B2.HYDR.1000 |  | 89d |
| P2.L1.EMT.1150 |  | Insulate HVAC / Plumbing Pipe / L1 - E. Mech Tower | 5d | 2026-02-11 | 2026-02-17 | P2.L1.EMT.1130, P2.L1.EMT.1110 |  | 129d |
| P2.L1.EMT.1340 |  | Wall Protection / L1 - E. Mech Tower | 5d | 2026-02-19 | 2026-02-25 | P2.L1.EMT.1180, BP7.102.3.300 |  | 123d |
| P2.L1.EMT.1220 |  | Trades Inspect & Verify R/I Work Completed to Specs / L1 - E. Mech Tower | 5d | 2026-02-26 | 2026-03-04 | P2.L1.EMT.1150, P2.L1.EMT.1210, P2.L1.EMT.1120, P2.L1.EMT.1340 |  | 123d |
| P2.L1.EMT.1240 |  | Energize Elec Panels - Lock Doors and Limit Access / L1 - E. Mech Tower | 5d | 2026-03-05 | 2026-03-11 | P2.L1.EMT.1220, CX.B2.MVEE.1010, CX.B2.SWGR.1010, FRG.P2.L1.EMT.1000 |  | 123d |
| P2.L1.EMT.1230 |  | HVAC System Ready for Start Up / L1 - E. Mech Tower | 0d | 2026-03-11 | 2026-03-11 | P2.L1.EMT.1190 FF, P2.L1.EMT.1160 FF, P2.L1.EMT.1240, FRG.P2.L1.EMT.1000 |  | 163d |
|  | L2 | **L2 / BUILDOUT** |  | 2024-11-20 | 2026-11-04 |  |  |  |
|  | L2 | **CORE & SUPPORT SPACES / LEVEL 2** |  | 2024-11-20 | 2026-11-04 |  |  |  |
|  | 1 | **ROUGH IN - Core & Support Spaces / Level 2** |  | 2024-11-20 | 2026-03-03 |  |  |  |
|  | Z1 | **South (9K SF) / Level 2** |  | 2024-11-20 | 2026-03-03 |  |  |  |
| P2.L2.S.1000 |  | Layout - All Trades / L2 / South | 5d | 2024-11-20 A | 2025-01-20 A | P2.3.03.610, P2.HZ.W.31 SS | 100% |  |
| P2.L2.S.1010 |  | Framing - Top Track / L2 / South | 10d | 2024-12-16 A | 2024-12-31 A | P2.L2.S.1000 SS, P2.L1.S.1010 | 100% |  |
| P2.L2.S.1030 |  | OH - MEPF - Hangers & Supports / L2 / South | 10d | 2025-01-02 A | 2025-03-03 A | P2.L2.S.1000 SS, P2.BIM.L2.40.140 SS | 100% |  |
| P2.L2.S.1170 |  | OH - Fire Suppression / L2 / South | 10d | 2025-01-02 A | 2025-02-18 A | P2.L2.S.1030 FF+2d | 100% |  |
| P2.L2.S.1180 |  | OH - Plumbing Piping / L2 / South | 20d | 2025-01-02 A | 2025-03-03 A | P2.L1.S.1180 SS, P2.L2.S.1030 FF+2d | 100% |  |
| P2.L2.S.1020 |  | OH - Structural Supports (All Trades) / L2 / South | 5d | 2025-01-09 A | 2025-02-07 A | P2.L2.S.1000 FF+3d | 100% |  |
| P2.L2.S.1090 |  | Framing - Priority Walls & Door Frames / L2 / South | 15d | 2025-01-27 A | 2025-02-07 A | P2.L2.S.1030 SS, P2.L1.S.1090 SS, P2.L2.S.1010 | 100% |  |
| P2.L2.S.1130 |  | Framing - Priority Walls - AHJ Inspections / L2 / South | 10d | 2025-01-31 A | 2025-02-14 A | P2.L2.S.1090 FF+2d | 100% |  |
| P2.L2.S.1140 |  | Hang/Tape/Finish - Priority Walls / L2 / South | 10d | 2025-02-12 A | 2025-02-26 A | P2.L2.S.1020, P2.L2.S.1130 | 100% |  |
| P2.L2.S.1220 |  | OH - HVAC Piping (High) / L2 / South | 20d | 2025-02-19 A | 2025-03-14 A | P2.L2.S.1030, P2.L2.S.1170 | 100% |  |
| P2.L2.S.1160 |  | Spray/Seal/Firestop - Head of Wall - Priority Walls / L2 / South | 5d | 2025-03-03 A | 2025-03-03 A | P2.L2.S.1140 | 100% |  |
| P2.L2.S.1190 |  | OH - Electrical - 480/277v Distribution / L2 / South | 10d | 2025-03-17 A | 2025-04-07 A | P2.L2.S.1030 | 100% |  |
| P2.L2.S.1210 |  | OH - Hang Duct - HP Mains / L2 / South | 10d | 2025-03-24 A | 2025-04-21 A | P2.L1.S.1210, P2.L2.S.1030 | 100% |  |
| P2.L2.S.1230 |  | OH - Electrical - 208/120v Branch / L2 / South | 10d | 2025-03-31 A | 2025-04-25 A | P2.L2.S.1190 SS | 100% |  |
| P2.L2.S.1560 |  | OH - HVAC Piping (Low) / L2 / South | 20d | 2025-04-14 A | 2025-05-09 A | P2.L2.S.1220 | 100% |  |
| P2.L2.S.1150 |  | Paint Prime & 1st Coat - Priority Walls / L2 / South | 10d | 2025-05-01 A | 2025-05-14 A | P2.L2.S.1160 SS | 100% |  |
| P2.L2.S.1260 |  | OH - DALT - HP Mains / L2 / South | 10d | 2025-05-01 A | 2025-05-14 A | P2.L2.S.1210 | 100% |  |
| P2.L2.S.1290 |  | OH - Insulate HP Duct / L2 / South | 10d | 2025-05-15 A | 2025-05-29 A | P2.L2.S.1260 | 100% |  |
| P2.L2.S.1300 |  | OH - Hang Duct - LP Branch / L2 / South | 20d | 2025-05-20 A | 2025-06-16 A | P2.L2.S.1260 | 100% |  |
| P2.L2.S.1200 |  | Firestop - Thru Wall - Priority Walls / L2 / South | 5d | 2025-05-30 A | 2025-08-04 A | P2.L2.S.1150, P2.L2.S.1280 | 100% |  |
| P2.L2.S.1240 |  | OH - Plumbing - Test / L2 / South | 10d | 2025-05-30 A | 2025-06-12 A | P2.L2.S.1180 | 100% |  |
| P2.L2.S.1280 |  | OH - Insulate Plumbing / L2 / South | 10d | 2025-06-13 A | 2025-07-08 A | P2.L2.S.1240 | 100% |  |
| P2.L2.S.1350 |  | OH - Insulate LP Duct / L2 / South | 10d | 2025-06-17 A | 2025-09-05 A | P2.L2.S.1300 | 100% |  |
| P2.L2.S.1270 |  | OH - HVAC Piping - Test / L2 / South | 10d | 2025-06-23 A | 2025-07-14 A | P2.L2.S.1560 | 100% |  |
| P2.L2.S.1400 |  | OH - Conduit - Low Volt - Security / L2 / South | 10d | 2025-06-30 A | 2025-08-21 A | P2.L2.S.1340 | 100% |  |
| P2.L2.S.1380 |  | OH - Conduit - Low Volt - Fire Alarm / L2 / South | 10d | 2025-07-09 A | 2025-07-22 A | P2.L2.S.1350 | 100% |  |
| P2.L2.S.1390 |  | OH - Conduit - Low Volt - Telecom / L2 / South | 10d | 2025-07-09 A | 2025-08-08 A | P2.L2.S.1350 | 100% |  |
| FRG.P2.L2.S.1830 |  | HVAC Piping - Hanging Copper Racks / L2 / South - FRAGNET | 20d | 2025-08-01 A | 2025-08-29 A | P2.L2.S.1270 | 100% |  |
| P2.L2.S.1340 |  | OH - Insulate HVAC Pipe / L2 / South | 10d | 2025-08-01 A | 2025-09-15 A | P2.L2.S.1290, P2.L2.S.1270, FRG.P2.L2.S.1830 | 100% |  |
| P2.L2.S.1370 |  | OH - Conduit - Low Volt - BAS/Controls / L2 / South | 10d | 2025-09-01 A | 2025-09-15 A | P2.L2.S.1310, P2.L2.S.1340 | 100% |  |
| P2.L2.S.1420 |  | Framing - Balance of Framing & Door Frames / L2 / South | 10d | 2025-09-01 A | 2025-09-15 A | P2.L2.S.1280, P2.L2.S.1410, P2.L2.S.1370, P2.L2.S.1380, P2.L2.S.1390, P2.L2.S.1400 | 100% |  |

| ID | WBS | Task | Duration | Start | Finish | Predecessors | Complete | Total float |
| --- | --- | --- | --- | --- | --- | --- | --- | --- |
| P2.L2.S.1410 |  | OH - Conduit - Low Volt - Medical Services/Nurse Call (?) / L2 / South | 10d | 2025-09-08 A | 2025-09-19 A | P2.L2.S.1350 | 100% |  |
| P2.L2.S.1310 |  | OH - Set & Connect Mech Equipment / L2 / South | 15d | 2025-09-10 A | 2025-09-22 A | P2.L2.S.1260, P2.L2.S.1270 | 100% |  |
| P2.L2.S.1430 |  | In Wall - Plumbing - Framing / L2 / South | 10d | 2025-09-15 A | 2025-09-26 A | P2.L2.S.1420 | 100% |  |
| P2.L2.S.1440 |  | In Wall - Electrical - Framing / L2 / South | 10d | 2025-10-01 A | 2025-10-14 A | P2.L2.S.1420, P2.L2.S.1230 | 100% |  |
| P2.L2.S.1450 |  | In Wall - Backing/Blocking/Supports / L2 / South | 10d | 2025-10-01 A | 2025-10-14 A | P2.L2.S.1420 | 100% |  |
| P2.L2.S.1250 |  | Pull Wire - Electrical - 480/277v Distribution / L2 / South | 10d | 2025-12-01 | 2025-12-12 | P2.L2.S.1190, P2.2.HE.5959.1050, P2.2.HE.5966.1050 |  | 89d |
| P2.L2.S.1320 |  | OH - Electrical - Equip Tie In / L2 / South | 10d | 2025-12-01 | 2025-12-12 | P2.L2.S.1310 |  | 69d |
| P2.L2.S.1460 |  | AHJ Inspections - Wall Close In / L2 / South | 5d | 2025-12-01 | 2025-12-05 | P2.L2.S.1440, P2.L2.S.1450, P2.L2.S.1430, P2.L2.S.1200 |  | 39d |
| P2.L2.S.1360 |  | Pull Wire - Electrical - 208/120v Branch & Equip / L2 / South | 20d | 2025-12-15 | 2026-01-13 | P2.L2.S.1320, P2.L2.S.1230, P2.L2.S.1440 |  | 69d |
| P2.L2.S.1470 |  | Hang-Tape-Finish - Walls and Hard Lid Ceilings / L2 / South | 15d | 2026-01-21 | 2026-02-10 | P2.SUM.175, P2.L2.S.1460, P2.L1.S.1470, P2.L1.N.1470 |  | 9d |
| P2.L2.S.1330 |  | OH - HVAC Piping - Equip Tie In / L2 / South | 10d | 2026-01-28 | 2026-02-10 | P2.L2.S.1310, P2.L2.S.1270, CX.B2.HYDR.1000 |  | 49d |
| P2.L2.S.1480 |  | Spray/Seal/Firestop - Head of Wall / L2 / South | 10d | 2026-02-11 | 2026-02-24 | P2.L2.S.1470 |  | 39d |
| P2.L2.S.1490 |  | Firestop - Thru Wall / L2 / South | 10d | 2026-02-11 | 2026-02-24 | P2.L2.S.1470 |  | 39d |
| P2.L2.S.1500 |  | Pull Wire - Low Volt - BAS/Controls / L2 / South | 10d | 2026-02-11 | 2026-02-24 | P2.L2.S.1470 |  | 39d |
| P2.L2.S.1510 |  | Pull Wire - Low Volt - Fire Alarm / L2 / South | 10d | 2026-02-11 | 2026-02-24 | P2.L2.S.1470 |  | 39d |
| P2.L2.S.1520 |  | Pull Wire - Low Volt - Telecom / L2 / South | 10d | 2026-02-11 | 2026-02-24 | P2.L2.S.1470 |  | 39d |
| P2.L2.S.1530 |  | Pull Wire - Low Volt - Security / L2 / South | 10d | 2026-02-11 | 2026-02-24 | P2.L2.S.1470 |  | 39d |
| P2.L2.S.1540 |  | Pull Wire - Low Volt - Medical Services/Nurse Call (?) / L2 / South | 10d | 2026-02-11 | 2026-02-24 | P2.L2.S.1470 |  | 39d |
| P2.L2.S.1550 |  | Trades Inspect & Verify R/I Work Completed to Specs / L2 / South | 5d | 2026-02-25 | 2026-03-03 | P2.L2.S.1510, P2.L2.S.1520, P2.L2.S.1530, P2.L2.S.1250, P2.L2.S.1540, P2.L2.S.1360, P2.L2.S.1500, P2.L2.S.1480, P2.L2.S.1490, P2.L2.S.1330 |  | 39d |
|  | Z11 | **North (16K SF) / Level 2** |  | 2025-01-08 | 2026-03-03 |  |  |  |
| P2.L2.N.1000 |  | Layout - All Trades / L2 / North | 5d | 2025-01-08 A | 2025-01-31 A | P2.3.03.620 | 100% |  |
| P2.L2.N.1010 |  | Framing - Top Track / L2 / North | 10d | 2025-01-09 A | 2025-01-20 A | P2.L1.N.1010, P2.L2.N.1000 | 100% |  |
| P2.L2.N.1020 |  | OH - Structural Supports (All Trades) / L2 / North | 5d | 2025-01-09 A | 2025-02-07 A | P2.L2.N.1000 | 100% |  |
| P2.L2.N.1030 |  | OH - MEPF - Hangers & Supports / L2 / North | 10d | 2025-01-09 A | 2025-02-13 A | P2.BIM.L2.40.140, P2.L2.N.1000 | 100% |  |
| P2.L2.N.1100 |  | Framing - Priority Walls & Door Frames / L2 / North | 10d | 2025-01-20 A | 2025-02-11 A | P2.L2.N.1010 FF, P2.L1.N.1090 FF, P2.L2.N.1030 SS | 100% |  |
| P2.L2.N.1070 |  | OH - Plumbing Piping / L2 / North | 20d | 2025-01-23 A | 2025-03-03 A | P2.L2.N.1030 FF+2d, P2.L1.N.1180 SS | 100% |  |
| P2.L2.N.1360 |  | Framing - Priority Walls - AHJ Inspections / L2 / North | 5d | 2025-02-11 A | 2025-02-28 A | P2.L2.N.1100 | 100% |  |
| P2.L2.N.1370 |  | Hang/Tape/Finish - Priority Walls / L2 / North | 10d | 2025-02-11 A | 2025-02-27 A | P2.L2.N.1020, P2.L2.N.1360 | 100% |  |
| P2.L2.N.1400 |  | Spray/Seal/Firestop - Head of Wall - Priority Walls / L2 / North | 5d | 2025-03-03 A | 2025-03-03 A | P2.L2.N.1370 | 100% |  |
| P2.L2.N.1050 |  | OH - Fire Suppression / L2 / North | 10d | 2025-03-17 A | 2025-03-28 A | P2.L2.N.1030 | 100% |  |
| P2.L2.N.1090 |  | OH - HVAC Piping (High) / L2 / North | 20d | 2025-03-26 A | 2025-04-21 A | P2.L2.N.1070, P2.L2.N.1030 | 100% |  |
| P2.L2.N.1080 |  | OH - Electrical - 480/277v Distribution / L2 / North | 10d | 2025-03-31 A | 2025-04-21 A | P2.L2.N.1030 | 100% |  |
| P2.L2.N.1200 |  | OH - Electrical - 208/120v Branch / L2 / North | 10d | 2025-03-31 A | 2025-04-17 A | P2.L2.N.1080 SS | 100% |  |
| P2.L2.N.1060 |  | OH - Hang Duct - HP Mains / L2 / North | 10d | 2025-04-22 A | 2025-05-27 A | P2.L1.N.1210, P2.L2.N.1190, P2.L2.N.1030 | 100% |  |
| P2.L2.N.1380 |  | Paint Prime & 1st Coat - Priority Walls / L2 / North | 10d | 2025-05-01 A | 2025-05-14 A | P2.L2.N.1400 FF | 100% |  |
| P2.L2.N.1560 |  | OH - HVAC Piping (Low) / L2 / North | 20d | 2025-05-20 A | 2025-06-16 A | P2.L2.N.1090 | 100% |  |
| P2.L2.N.1280 |  | OH - Plumbing - Test / L2 / North | 10d | 2025-05-30 A | 2025-06-12 A | P2.L2.N.1070 | 100% |  |
| P2.L2.N.1220 |  | OH - DALT - HP Mains / L2 / North | 10d | 2025-06-09 A | 2025-06-20 A | P2.L2.N.1060 | 100% |  |
| P2.L2.N.1040 |  | OH - Insulate HP Duct / L2 / North | 10d | 2025-06-23 A | 2025-07-18 A | P2.L2.N.1220 | 100% |  |
| P2.L2.N.1120 |  | OH - Hang Duct - LP Branch / L2 / North | 15d | 2025-06-23 A | 2025-09-20 A | P2.L2.N.1220 | 100% |  |
| P2.L2.N.1270 |  | OH - Insulate Plumbing / L2 / North | 10d | 2025-07-01 A | 2025-07-15 A | P2.L2.N.1280 | 100% |  |
| P2.L2.N.1490 |  | OH - Conduit - Low Volt - BAS/Controls / L2 / North | 10d | 2025-08-28 A | 2025-09-15 A | P2.L2.N.1390, P2.L2.N.1250 | 100% |  |
| P2.L2.N.1500 |  | OH - Conduit - Low Volt - Fire Alarm / L2 / North | 10d | 2025-08-28 A | 2025-09-15 A | P2.L2.N.1390, P2.L2.N.1260 | 100% |  |
| P2.L2.N.1510 |  | OH - Conduit - Low Volt - Telecom / L2 / North | 10d | 2025-08-28 A | 2025-09-15 A | P2.L2.N.1260 | 100% |  |
| P2.L2.N.1520 |  | OH - Conduit - Low Volt - Security / L2 / North | 10d | 2025-08-28 A | 2025-09-15 A | P2.L2.N.1250 | 100% |  |
| P2.L2.N.1530 |  | OH - Conduit - Low Volt - Medical Services/Nurse Call (?) / L2 / North | 10d | 2025-08-28 A | 2025-09-15 A | P2.L2.N.1260 | 100% |  |
| P2.L2.N.1240 |  | OH - HVAC Piping - Test / L2 / North | 10d | 2025-09-22 A | 2025-09-26 A | P2.L2.N.1560 | 100% |  |
| P2.L2.N.1250 |  | OH - Insulate HVAC Pipe / L2 / North | 10d | 2025-09-26 A | 2025-09-30 A | P2.L2.N.1240, P2.L2.N.1040 | 100% |  |
| P2.L2.N.1190 |  | Firestop - Thru Wall - Priority Walls / L2 / North | 5d | 2025-10-01 A | 2025-10-07 A | P2.L2.N.1380 | 100% |  |
| P2.L2.N.1410 |  | Framing - Balance of Framing & Door Frames / L2 / North | 10d | 2025-10-27 A | 2025-11-07 A | P2.L7.S.1420, P2.L7.LC.1420, P2.L7.N.1420 | 100% |  |
| P2.L2.N.1110 |  | In Wall - Plumbing - Framing / L2 / North | 10d | 2025-11-01 A | 2025-11-11 A | P2.L2.N.1410 | 100% |  |
| P2.L2.N.1260 |  | OH - Insulate LP Duct / L2 / North | 10d | 2025-11-03 A | 2025-11-14 A | P2.L2.N.1120 | 100% |  |
| P2.L2.N.1390 |  | OH - Set & Connect Mech Equipment / L2 / North | 15d | 2025-11-03 A | 2025-11-14 A | P2.L2.N.1220 | 100% |  |
| P2.L2.N.1140 |  | In Wall - Electrical - Framing / L2 / North | 10d | 2025-11-10 A | 2025-11-21 A | P2.L2.N.1200, P2.L2.N.1410 | 100% |  |
| P2.L2.N.1150 |  | In Wall - Backing/Blocking/Supports / L2 / North | 10d | 2025-11-10 A | 2025-11-21 A | P2.L2.N.1410 | 100% |  |
| P2.L2.N.1170 |  | AHJ Inspections - Wall Close In / L2 / North | 5d | 2025-12-01 | 2025-12-05 | P2.L2.N.1140, P2.L2.N.1150, P2.L2.N.1110 |  | 39d |
| P2.L2.N.1210 |  | OH - Electrical - Equip Tie In / L2 / North | 10d | 2025-12-01 | 2025-12-12 | P2.L2.N.1390 |  | 69d |
| P2.L2.N.1470 |  | Pull Wire - Electrical - 480/277v Distribution / L2 / North | 10d | 2025-12-01 | 2025-12-12 | P2.L2.N.1080, P2.2.HE.2803.1050, P2.2.HE.2949.1050 |  | 89d |
| P2.L2.N.1420 |  | Pull Wire - Electrical - 208/120v Branch & Equip / L2 / North | 20d | 2025-12-15 | 2026-01-13 | P2.L2.N.1200, P2.L2.N.1210, P2.L2.N.1140 |  | 69d |
| P2.L2.N.1180 |  | Hang-Tape-Finish - Walls and Hard Lid Ceilings / L2 / North | 15d | 2026-01-21 | 2026-02-10 | P2.SUM.175, P2.L2.N.1170, P2.L1.S.1470, P2.L1.N.1470 |  | 9d |
| P2.L2.N.1230 |  | OH - HVAC Piping - Equip Tie In / L2 / North | 15d | 2026-01-28 | 2026-02-17 | P2.L2.N.1240, P2.L2.N.1390, CX.B2.HYDR.1000 |  | 44d |
| P2.L2.N.1130 |  | Spray/Seal/Firestop - Head of Wall / L2 / North | 10d | 2026-02-11 | 2026-02-24 | P2.L2.N.1180 |  | 39d |
| P2.L2.N.1160 |  | Firestop - Thru Wall / L2 / North | 10d | 2026-02-11 | 2026-02-24 | P2.L2.N.1180, P2.L2.N.1050, P2.L2.N.1270 |  | 39d |
| P2.L2.N.1430 |  | Pull Wire - Low Volt - BAS/Controls / L2 / North | 10d | 2026-02-11 | 2026-02-24 | P2.L2.N.1180, P2.L2.N.1490 |  | 39d |
| P2.L2.N.1440 |  | Pull Wire - Low Volt - Fire Alarm / L2 / North | 10d | 2026-02-11 | 2026-02-24 | P2.L2.N.1180, P2.L2.N.1500 |  | 39d |
| P2.L2.N.1450 |  | Pull Wire - Low Volt - Telecom / L2 / North | 10d | 2026-02-11 | 2026-02-24 | P2.L2.N.1180, P2.L2.N.1510 |  | 39d |
| P2.L2.N.1460 |  | Pull Wire - Low Volt - Security / L2 / North | 10d | 2026-02-11 | 2026-02-24 | P2.L2.N.1180, P2.L2.N.1520 |  | 39d |
| P2.L2.N.1480 |  | Pull Wire - Low Volt - Medical Services/Nurse Call (?) / L2 / North | 10d | 2026-02-11 | 2026-02-24 | P2.L2.N.1180, P2.L2.N.1530 |  | 39d |
| P2.L2.N.1550 |  | Trades Inspect & Verify R/I Work Completed to Specs / L2 / North | 5d | 2026-02-25 | 2026-03-03 | P2.L2.N.1160, P2.L2.N.1130, P2.L2.N.1480, P2.L2.N.1430, P2.L2.N.1440, P2.L2.N.1450, P2.L2.N.1460, P2.L2.N.1470, P2.L2.N.1420, DDD2800, P2.L2.N.1230 |  | 39d |
|  | 4 | **House Electrical Rooms / Level 2** |  | 2025-01-23 | 2025-12-17 |  |  |  |

| ID | WBS | Task | Duration | Start | Finish | Predecessors | Complete | Total float |
| --- | --- | --- | --- | --- | --- | --- | --- | --- |
|  | 7 | **House Electrical Room / 2-5959** |  | 2025-01-23 | 2025-12-17 |  |  |  |
| P2.2.HE.5959.1000 |  | Framing and Blocking / L2 / South / 5959 | 3d | 2025-01-23 A | 2025-03-03 A | P2.L2.S.1090 FF+2d | 100% |  |
| P2.2.HE.5959.1010 |  | In Wall Rough In / L2 / South / 5959 | 2d | 2025-04-14 A | 2025-04-25 A | P2.2.HE.5959.1000 | 100% |  |
| P2.2.HE.5959.1020 |  | Inspections - Wall Close In / L2 / South / 5959 | 2d | 2025-04-24 A | 2025-04-24 A | P2.2.HE.5959.1010 | 100% |  |
| P2.2.HE.5959.1030 |  | Hang-Tape-Finish / L2 / South / 5959 | 5d | 2025-05-21 A | 2025-05-26 A | P2.2.HE.5959.1020, P2.FAC.2.Z1.180, P2.L11.5-9.140 | 100% |  |
| P2.2.HE.5959.1040 |  | Paint Prime & 1st Coat / L2 / South / 5959 | 2d | 2025-05-26 A | 2025-05-30 A | P2.2.HE.5959.1030 | 100% |  |
| P2.2.HE.5959.1050 |  | Cans/Troughs/Backboxes/XFMRs / L2 / South / 5959 | 5d | 2025-06-17 A | 2025-06-19 A | P2.2.HE.5959.1040 | 100% |  |
| P2.2.HE.5959.1060 |  | Risers and OH Conduit Connections / L2 / South / 5959 | 5d | 2025-06-23 A | 2025-06-30 A | P2.2.HE.5959.1050 | 100% |  |
| P2.2.HE.5959.1070 |  | Pull Wire - In From Distribution Panels / Out to Branch Circuits / L2 / South / 5959 | 5d | 2025-11-03 A | 2025-11-07 A | P2.2.HE.5959.1060 | 100% |  |
| P2.2.HE.5959.1080 |  | Panelboards, Interconnect Wiring, and Remaining Room Buildout of All Systems / L2 / South / 5959 | 10d | 2025-11-03 A | 2025-11-14 A | BP1.262.3.100, BP1.262.3.220, P2.2.HE.5959.1060 | 100% |  |
| P2.2.HE.5959.1090 |  | Test & Terminate / L2 / South / 5959 | 5d | 2025-12-01 | 2025-12-05 | P2.2.HE.5959.1080, P2.2.HE.5959.1070 |  | 36d |
| P2.2.HE.5959.1100 |  | Paint - Finish Coat / L2 / South / 5959 | 2d | 2025-12-08 | 2025-12-09 | P2.2.HE.5959.1090 |  | 36d |
| P2.2.HE.5959.1110 |  | Trim All MEPF Finishes / L2 / South / 5959 | 2d | 2025-12-10 | 2025-12-11 | BP1.233.3.410, P2.2.HE.5959.1100 |  | 36d |
| P2.2.HE.5959.1120 |  | Flooring / L2 / South / 5959 | 2d | 2025-12-12 | 2025-12-15 | P2.2.HE.5959.1110 |  | 36d |
| P2.2.HE.5959.1130 |  | Doors & Hardware / L2 / South / 5959 | 2d | 2025-12-16 | 2025-12-17 | P2.2.HE.5959.1120 |  | 36d |
| P2.2.HE.5959.1140 |  | Panels Ready to Energize - Lock Doors and Limit Access / L2 / South / 5959 | 0d | 2025-12-17 | 2025-12-17 | P2.2.HE.5959.1130 FF, P2.2.HE.5959.1090 |  | 36d |
|  | 3 | **House Electrical Room / 2-2803** |  | 2025-04-10 | 2025-12-17 |  |  |  |
| P2.2.HE.2803.1000 |  | Framing and Blocking / L2 / North / 2803 | 3d | 2025-04-10 A | 2025-04-15 A | P2.L2.N.1100 | 100% |  |
| P2.2.HE.2803.1010 |  | In Wall Rough In / L2 / North / 2803 | 2d | 2025-04-16 A | 2025-04-25 A | P2.2.HE.2803.1000 | 100% |  |
| P2.2.HE.2803.1020 |  | Inspections - Wall Close In / L2 / North / 2803 | 2d | 2025-04-24 A | 2025-04-24 A | P2.2.HE.2803.1010 | 100% |  |
| P2.2.HE.2803.1030 |  | Hang-Tape-Finish / L2 / North / 2803 | 5d | 2025-05-09 A | 2025-05-19 A | P2.2.HE.2803.1020, P2.FAC.2.Z1.190, P2.MR.2-8.140 | 100% |  |
| P2.2.HE.2803.1040 |  | Paint Prime & 1st Coat / L2 / North / 2803 | 2d | 2025-05-26 A | 2025-05-30 A | P2.2.HE.2803.1030 | 100% |  |
| P2.2.HE.2803.1050 |  | Cans/Troughs/Backboxes/XFMRs / L2 / North / 2803 | 5d | 2025-07-14 A | 2025-07-17 A | P2.2.HE.2803.1040 | 100% |  |
| P2.2.HE.2803.1060 |  | Risers and OH Conduit Connections / L2 / North / 2803 | 5d | 2025-07-14 A | 2025-07-17 A | P2.2.HE.2803.1050 | 100% |  |
| P2.2.HE.2803.1070 |  | Pull Wire - In From Distribution Panels / Out to Branch Circuits / L2 / North / 2803 | 5d | 2025-11-05 A | 2025-11-11 A | P2.2.HE.2803.1060 | 100% |  |
| P2.2.HE.2803.1080 |  | Panelboards, Interconnect Wiring, and Remaining Room Buildout of All Systems / L2 / North / 2803 | 10d | 2025-11-05 A | 2025-11-18 A | BP1.262.3.100, BP1.262.3.220, P2.2.HE.2803.1060 | 100% |  |
| P2.2.HE.2803.1090 |  | Test & Terminate / L2 / North / 2803 | 5d | 2025-12-01 | 2025-12-05 | P2.2.HE.2803.1080, P2.2.HE.2803.1070 |  | 36d |
| P2.2.HE.2803.1100 |  | Paint - Finish Coat / L2 / North / 2803 | 2d | 2025-12-08 | 2025-12-09 | P2.2.HE.2803.1090 |  | 36d |
| P2.2.HE.2803.1110 |  | Trim All MEPF Finishes / L2 / North / 2803 | 2d | 2025-12-10 | 2025-12-11 | BP1.233.3.410, P2.2.HE.2803.1100 |  | 36d |
| P2.2.HE.2803.1120 |  | Flooring / L2 / North / 2803 | 2d | 2025-12-12 | 2025-12-15 | P2.2.HE.2803.1110 |  | 36d |
| P2.2.HE.2803.1130 |  | Doors & Hardware / L2 / North / 2803 | 2d | 2025-12-16 | 2025-12-17 | P2.2.HE.2803.1120 |  | 36d |
| P2.2.HE.2803.1140 |  | Panels Ready to Energize - Lock Doors and Limit Access / L2 / North / 2803 | 0d | 2025-12-17 | 2025-12-17 | P2.2.HE.2803.1130 FF, P2.2.HE.2803.1090 |  | 36d |
|  | 2 | **House Electrical Room / 2-2949** |  | 2025-04-10 | 2025-12-17 |  |  |  |
| P2.2.HE.2949.1000 |  | Framing and Blocking / L2 / North / 2949 | 3d | 2025-04-10 A | 2025-04-15 A | P2.L2.N.1100 | 100% |  |
| P2.2.HE.2949.1010 |  | In Wall Rough In / L2 / North / 2949 | 2d | 2025-04-16 A | 2025-04-25 A | P2.2.HE.2949.1000 | 100% |  |
| P2.2.HE.2949.1020 |  | Inspections - Wall Close In / L2 / North / 2949 | 2d | 2025-04-24 A | 2025-04-24 A | P2.2.HE.2949.1010 | 100% |  |
| P2.2.HE.2949.1030 |  | Hang-Tape-Finish / L2 / North / 2949 | 5d | 2025-04-25 A | 2025-05-05 A | P2.2.HE.2949.1020, P2.MR.W.160 | 100% |  |
| P2.2.HE.2949.1040 |  | Paint Prime & 1st Coat / L2 / North / 2949 | 2d | 2025-05-05 A | 2025-05-07 A | P2.2.HE.2949.1030 | 100% |  |
| P2.2.HE.2949.1050 |  | Cans/Troughs/Backboxes/XFMRs / L2 / North / 2949 | 5d | 2025-06-05 A | 2025-06-11 A | P2.2.HE.2949.1040 | 100% |  |
| P2.2.HE.2949.1060 |  | Risers and OH Conduit Connections / L2 / North / 2949 | 5d | 2025-06-05 A | 2025-06-12 A | P2.2.HE.2949.1050 | 100% |  |
| P2.2.HE.2949.1070 |  | Pull Wire - In From Distribution Panels / Out to Branch Circuits / L2 / North / 2949 | 5d | 2025-11-03 A | 2025-11-07 A | P2.2.HE.2949.1060 | 100% |  |
| P2.2.HE.2949.1080 |  | Panelboards, Interconnect Wiring, and Remaining Room Buildout of All Systems / L2 / North / 2949 | 10d | 2025-11-03 A | 2025-11-14 A | BP1.262.3.100, BP1.262.3.220, P2.2.HE.2949.1060 | 100% |  |
| P2.2.HE.2949.1090 |  | Test & Terminate / L2 / North / 2949 | 5d | 2025-12-01 | 2025-12-05 | P2.2.HE.2949.1070, P2.2.HE.2949.1080 |  | 36d |
| P2.2.HE.2949.1100 |  | Paint - Finish Coat / L2 / North / 2949 | 2d | 2025-12-08 | 2025-12-09 | P2.2.HE.2949.1090 |  | 36d |
| P2.2.HE.2949.1110 |  | Trim All MEPF Finishes / L2 / North / 2949 | 2d | 2025-12-10 | 2025-12-11 | P2.2.HE.2949.1100, BP1.233.3.410 |  | 36d |
| P2.2.HE.2949.1120 |  | Flooring / L2 / North / 2949 | 2d | 2025-12-12 | 2025-12-15 | P2.2.HE.2949.1110 |  | 36d |
| P2.2.HE.2949.1130 |  | Doors & Hardware / L2 / North / 2949 | 2d | 2025-12-16 | 2025-12-17 | P2.2.HE.2949.1120 |  | 36d |
| P2.2.HE.2949.1140 |  | Panels Ready to Energize - Lock Doors and Limit Access / L2 / North / 2949 | 0d | 2025-12-17 | 2025-12-17 | P2.2.HE.2949.1130 FF, P2.2.HE.2949.1090 |  | 36d |
|  | 1 | **House Electrical Room / 2-5966** |  | 2025-01-23 | 2025-12-17 |  |  |  |
| P2.2.HE.5966.1000 |  | Framing and Blocking / L2 / South / 5966 | 3d | 2025-01-23 A | 2025-03-15 A | P2.L2.S.1090 SS | 100% |  |
| P2.2.HE.5966.1010 |  | In Wall Rough In / L2 / South / 5966 | 2d | 2025-01-28 A | 2025-03-16 A | P2.2.HE.5966.1000 FF+1d | 100% |  |
| P2.2.HE.5966.1020 |  | Inspections - Wall Close In / L2 / South / 5966 | 2d | 2025-04-24 A | 2025-04-24 A | P2.2.HE.5966.1010 | 100% |  |
| P2.2.HE.5966.1030 |  | Hang-Tape-Finish / L2 / South / 5966 | 5d | 2025-05-19 A | 2025-05-26 A | P2.2.HE.5966.1020, P2.LR.L7.170 | 100% |  |
| P2.2.HE.5966.1040 |  | Paint Prime & 1st Coat / L2 / South / 5966 | 2d | 2025-05-26 A | 2025-05-30 A | P2.2.HE.5966.1030 | 100% |  |
| P2.2.HE.5966.1050 |  | Cans/Troughs/Backboxes/XFMRs / L2 / South / 5966 | 5d | 2025-07-14 A | 2025-07-17 A | P2.2.HE.5966.1040 | 100% |  |
| P2.2.HE.5966.1060 |  | Risers and OH Conduit Connections / L2 / South / 5966 | 5d | 2025-07-14 A | 2025-07-17 A | P2.2.HE.5966.1050 | 100% |  |
| P2.2.HE.5966.1070 |  | Pull Wire - In From Distribution Panels / Out to Branch Circuits / L2 / South / 5966 | 5d | 2025-11-10 A | 2025-11-14 A | P2.2.HE.5966.1060 | 100% |  |
| P2.2.HE.5966.1080 |  | Panelboards, Interconnect Wiring, and Remaining Room Buildout of All Systems / L2 / South / 5966 | 10d | 2025-11-10 A | 2025-11-21 A | P2.2.HE.5966.1060, BP1.262.3.100, BP1.262.3.220 | 100% |  |
| P2.2.HE.5966.1090 |  | Test & Terminate / L2 / South / 5966 | 5d | 2025-12-01 | 2025-12-05 | P2.2.HE.5966.1070, P2.2.HE.5966.1080 |  | 36d |
| P2.2.HE.5966.1100 |  | Paint - Finish Coat / L2 / South / 5966 | 2d | 2025-12-08 | 2025-12-09 | P2.2.HE.5966.1090 |  | 36d |
| P2.2.HE.5966.1110 |  | Trim All MEPF Finishes / L2 / South / 5966 | 2d | 2025-12-10 | 2025-12-11 | P2.2.HE.5966.1100, BP1.233.3.410 |  | 36d |
| P2.2.HE.5966.1120 |  | Flooring / L2 / South / 5966 | 2d | 2025-12-12 | 2025-12-15 | P2.2.HE.5966.1110 |  | 36d |
| P2.2.HE.5966.1130 |  | Doors & Hardware / L2 / South / 5966 | 2d | 2025-12-16 | 2025-12-17 | P2.2.HE.5966.1120 |  | 36d |
| P2.2.HE.5966.1140 |  | Panels Ready to Energize - Lock Doors and Limit Access / L2 / South / 5966 | 0d | 2025-12-17 | 2025-12-17 | P2.2.HE.5966.1090, P2.2.HE.5966.1130 FF |  | 36d |
|  | 2 | **IT Closets / Level 2** |  | 2024-12-24 | 2026-02-10 |  |  |  |
|  | 1 | **IT Closet 2-5957** |  | 2025-07-02 | 2026-02-05 |  |  |  |
| P2.2.IT.5957.100 |  | Hang Plywood Backboards / L2 / South / 5957 | 2d | 2025-07-02 A | 2025-07-03 A | P2.L2.S.1140 | 100% |  |
| P2.2.IT.5957.110 |  | Paint Prime & 1st Coat / L2 / South / 5957 | 2d | 2025-09-16 A | 2025-09-18 A | P2.2.IT.5957.100 | 100% |  |
| P2.2.IT.5957.130 |  | HVAC Equipment & Service Connections / L2 / South / 5957 | 5d | 2025-09-25 A | 2025-09-30 A | P2.2.IT.5957.110, P2.L2.S.1300 | 100% |  |
| P2.2.IT.5957.120 |  | Electrical Panels / Conduit Connections / Wire Terminations / L2 / South / 5957 | 5d | 2025-10-06 A | 2025-10-08 A | P2.2.IT.5957.110, P2.2.HE.5959.1070 FF | 100% |  |

| ID | WBS | Task | Duration | Start | Finish | Predecessors | Complete | Total float |
| --- | --- | --- | --- | --- | --- | --- | --- | --- |
| P2.2.IT.5957.140 |  | Trim all MEPF / L2 / South / 5957 | 2d | 2025-12-01 | 2025-12-02 | P2.2.IT.5957.120, BP1.233.3.410, P2.2.IT.5957.130 |  | 178d |
| P2.2.IT.5957.150 |  | Flooring / L2 / South / 5957 | 5d | 2025-12-03 | 2025-12-09 | P2.2.IT.5957.140 |  | 178d |
| P2.2.IT.5957.180 |  | Grounding and Bonding / L2 / South / 5957 | 2d | 2025-12-10 | 2025-12-11 | P2.2.IT.5957.150 |  | 178d |
| P2.2.IT.5957.170 |  | OH Cable Tray / L2 / South / 5957 | 5d | 2025-12-15 | 2025-12-19 | P2.L2.S.1390, P2.L2.N.1510, P2.L2.INT.S.1340, P2.L2.INT.N.1340 |  | 172d |
| P2.2.IT.5957.260 |  | Room Ready - CIT / L2 / South / 5957 | 5d | 2025-12-22 | 2025-12-29 | P2.2.IT.5957.150, P2.2.IT.5957.170, P2.2.IT.5957.180 |  | 172d |
| P2.2.IT.5957.160 |  | Equipment Racks and Ladders / L2 / South / 5957 | 5d | 2025-12-30 | 2026-01-06 | P2.2.IT.5957.150, P2.2.IT.5957.260 |  | 172d |
| P2.2.IT.5957.190 |  | Pull Wire - Backbone Cabling Into Racks / L2 / South / 5957 | 5d | 2026-01-07 | 2026-01-13 | P2.2.IT.5957.160, P2.2.IT.5957.260 |  | 172d |
| P2.2.IT.5957.200 |  | Pull Wire - Horizontal Cabling Out to Termination Points / L2 / South / 5957 | 5d | 2026-01-07 | 2026-01-13 | P2.2.IT.5957.160, P2.2.IT.5957.260 |  | 172d |
| P2.2.IT.5957.210 |  | Paint - Finish Coat / L2 / South / 5957 | 2d | 2026-01-14 | 2026-01-15 | P2.2.IT.5957.190, P2.2.IT.5957.200 |  | 172d |
| P2.2.IT.5957.220 |  | Terminations and Punch Downs - All Cabling / L2 / South / 5957 | 15d | 2026-01-16 | 2026-02-05 | P2.2.IT.5957.210, P2.2.IT.5957.160, P2.2.IT.5957.260 |  | 172d |
| P2.2.IT.5957.230 |  | Doors & Hardware / L2 / South / 5957 | 2d | 2026-01-16 | 2026-01-19 | P2.2.IT.5957.210 |  | 182d |
| P2.2.IT.5957.240 |  | Energize Elec Panels Serving Comms Racks / L2 / South / 5957 | 3d | 2026-01-20 | 2026-01-22 | P2.2.IT.5957.230, P2.2.HE.5959.1140 |  | 182d |
| P2.2.IT.5957.250 |  | Comms Racks In Service / L2 / South / 5957 | 0d | 2026-02-05 | 2026-02-05 | P2.2.IT.5957.220, P2.2.IT.5957.240 |  | 172d |
|  | 2 | **IT Closet 2-2818** |  | 2025-08-11 | 2026-02-05 |  |  |  |
| P2.2.IT.2818.130 |  | HVAC Equipment / L2 / North / 2818 | 5d | 2025-08-11 A | 2025-08-18 A | P2.2.IT.2818.110, P2.L2.N.1120 | 100% |  |
| P2.2.IT.2818.100 |  | Hang Plywood Backboards / L2 / North / 2818 | 2d | 2025-09-16 A | 2025-09-18 A | P2.L2.N.1370 | 100% |  |
| P2.2.IT.2818.110 |  | Paint Prime & 1st Coat / L2 / North / 2818 | 2d | 2025-09-18 A | 2025-09-22 A | P2.2.IT.2818.100 | 100% |  |
| P2.2.IT.2818.120 |  | Electrical Panels / Conduit Connections / Wire Terminations / L2 / North / 2818 | 5d | 2025-12-01 | 2025-12-05 | P2.2.IT.2818.110, P2.2.HE.2803.1070 FF |  | 173d |
| P2.2.IT.2818.140 |  | Trim all MEPF / L2 / North / 2818 | 2d | 2025-12-08 | 2025-12-09 | P2.2.IT.2818.130, BP1.233.3.410, P2.2.IT.2818.120 |  | 173d |
| P2.2.IT.2818.150 |  | Flooring / L2 / North / 2818 | 5d | 2025-12-10 | 2025-12-16 | P2.2.IT.2818.140 |  | 173d |
| P2.2.IT.2818.170 |  | OH Cable Tray / L2 / North / 2818 | 5d | 2025-12-15 | 2025-12-19 | P2.L2.N.1510, P2.L2.S.1390, P2.L2.INT.S.1340, P2.L2.INT.N.1340 |  | 172d |
| P2.2.IT.2818.180 |  | Grounding and Bonding / L2 / North / 2818 | 2d | 2025-12-17 | 2025-12-18 | P2.2.IT.2818.150 |  | 173d |
| P2.2.IT.2818.260 |  | Room Ready - CIT / L2 / North / 2818 | 5d | 2025-12-22 | 2025-12-29 | P2.2.IT.2818.150, P2.2.IT.2818.170, P2.2.IT.2818.180 |  | 172d |
| P2.2.IT.2818.160 |  | Equipment Racks and Ladders / L2 / North / 2818 | 5d | 2025-12-30 | 2026-01-06 | P2.2.IT.2818.150, P2.2.IT.2818.260 |  | 172d |
| P2.2.IT.2818.190 |  | Pull Wire - Backbone Cabling Into Racks / L2 / North / 2818 | 5d | 2026-01-07 | 2026-01-13 | P2.2.IT.2818.160, P2.2.IT.2818.260 |  | 172d |
| P2.2.IT.2818.200 |  | Pull Wire - Horizontal Cabling Out to Termination Points / L2 / North / 2818 | 5d | 2026-01-07 | 2026-01-13 | P2.2.IT.2818.160, P2.2.IT.2818.260 |  | 172d |
| P2.2.IT.2818.210 |  | Paint - Finish Coat / L2 / North / 2818 | 2d | 2026-01-14 | 2026-01-15 | P2.2.IT.2818.190, P2.2.IT.2818.200 |  | 172d |
| P2.2.IT.2818.220 |  | Terminations and Punch Downs - All Cabling / L2 / North / 2818 | 15d | 2026-01-16 | 2026-02-05 | P2.2.IT.2818.210, P2.2.IT.2818.160, P2.2.IT.2818.260 |  | 172d |
| P2.2.IT.2818.230 |  | Doors & Hardware / L2 / North / 2818 | 2d | 2026-01-16 | 2026-01-19 | P2.2.IT.2818.210 |  | 182d |
| P2.2.IT.2818.240 |  | Energize Elec Panels Serving Comms Racks / L2 / North / 2818 | 3d | 2026-01-20 | 2026-01-22 | P2.2.IT.2818.230, P2.2.HE.2803.1140 |  | 182d |
| P2.2.IT.2818.250 |  | Comms Racks In Service / L2 / North / 2818 | 0d | 2026-02-05 | 2026-02-05 | P2.2.IT.2818.240, P2.2.IT.2818.220 |  | 172d |
|  | 3 | **IT Closet 2-3910** |  | 2024-12-24 | 2026-02-10 |  |  |  |
| P2.2.IT.3910.260 |  | Work-Plan Investigation of Level 2F510-18 Lab Offices for Demo, Utility Re-route, and Temp Partition (IT Closet 2-3910) | 20d | 2024-12-24 A | 2025-01-23 A | P2C.DES.205 | 100% |  |
| P2.2.IT.3910.270 |  | Work-Plan Development for Demo, Utility Re-route, and Temp Partition (IT Closet 2-3910) | 20d | 2025-01-23 A | 2025-02-14 A | P2.2.IT.3910.260 | 100% |  |
| P2.2.IT.3910.280 |  | NIH Notification - Review and Approval of Demo and Temp Partition Work Plan (IT Closet 2-3910) | 20d | 2025-02-19 A | 2025-04-01 A | P2.2.IT.3910.270 | 100% |  |
| P2.2.IT.3910.290 |  | NIH Vacate Lab Offices 2F510, 2F512, 2F514, 2F516, 2F516A & Storage 2F518 | 9d | 2025-05-01 A | 2025-08-04 A | P2.2.IT.3910.280 | 100% |  |
| P2.2.IT.3910.300 |  | Temp Barracades & Opening to SRLM Interstitial (IT Closet 2-3910) | 5d | 2025-08-04 A | 2025-08-11 A | P2.2.IT.3910.290 | 100% |  |
| P2.2.IT.3910.130 |  | HVAC Equipment / L2 / South / 3910 | 5d | 2025-08-11 A | 2025-08-18 A | P2.2.IT.3910.110, P2.L2.S.1300 | 100% |  |
| P2.2.IT.3910.310 |  | Utility Shut-downs and Rerouting (IT Closet 2-3910) | 10d | 2025-08-12 A | 2025-09-30 A | P2.2.IT.3910.300 | 100% |  |
| P2.2.IT.3910.320 |  | Demo Existing Walls and Ceiling | 10d | 2025-09-15 A | 2025-09-23 A | P2.2.IT.3910.310 | 100% |  |
| P2.2.IT.3910.330 |  | Work Plan Completion Inspection | 5d | 2025-09-24 A | 2025-09-30 A | P2.2.IT.3910.320 | 100% |  |
| P2.2.IT.3910.100 |  | Hang Plywood Backboards / L2 / South / 3910 | 2d | 2025-12-01 | 2025-12-02 | P2.2.IT.3910.330, P2.L2.N.1370 |  | 169d |
| P2.2.IT.3910.110 |  | Paint Prime & 1st Coat / L2 / South / 3910 | 2d | 2025-12-03 | 2025-12-04 | P2.2.IT.3910.100 |  | 169d |
| P2.2.IT.3910.120 |  | Electrical Panels / Conduit Connections / Wire Terminations / L2 / South / 3910 | 5d | 2025-12-05 | 2025-12-11 | P2.2.IT.3910.110, P2.2.HE.2949.1070 FF |  | 169d |
| P2.2.IT.3910.140 |  | Trim all MEPF / L2 / South / 3910 | 2d | 2025-12-12 | 2025-12-15 | P2.2.IT.3910.120, BP1.233.3.410, P2.2.IT.3910.130 |  | 169d |
| P2.2.IT.3910.170 |  | OH Cable Tray / L2 / South / 3910 | 5d | 2025-12-15 | 2025-12-19 | P2.L2.S.1390, P2.2.IT.3910.120, P2.L2.N.1510, P2.L2.INT.S.1340, P2.L2.INT.N.1340 |  | 172d |
| P2.2.IT.3910.150 |  | Flooring / L2 / South / 3910 | 5d | 2025-12-16 | 2025-12-22 | P2.2.IT.3910.140 |  | 169d |
| P2.2.IT.3910.180 |  | Grounding and Bonding / L2 / South / 3910 | 2d | 2025-12-23 | 2025-12-24 | P2.2.IT.3910.150 |  | 169d |
| P2.2.IT.3910.340 |  | Room Ready - CIT / L2 / South / 3910 | 5d | 2025-12-26 | 2026-01-02 | P2.2.IT.3910.150, P2.2.IT.3910.170, P2.2.IT.3910.180 |  | 169d |
| P2.2.IT.3910.160 |  | Equipment Racks and Ladders / L2 / South / 3910 | 5d | 2026-01-05 | 2026-01-09 | P2.2.IT.3910.150, P2.2.IT.3910.340 |  | 169d |
| P2.2.IT.3910.190 |  | Pull Wire - Backbone Cabling Into Racks / L2 / South / 3910 | 5d | 2026-01-12 | 2026-01-16 | P2.2.IT.3910.160, P2.2.IT.3910.340 |  | 169d |
| P2.2.IT.3910.200 |  | Pull Wire - Horizontal Cabling Out to Termination Points / L2 / South / 3910 | 5d | 2026-01-12 | 2026-01-16 | P2.2.IT.3910.160, P2.2.IT.3910.340 |  | 169d |
| P2.2.IT.3910.210 |  | Paint - Finish Coat / L2 / South / 3910 | 2d | 2026-01-19 | 2026-01-20 | P2.2.IT.3910.190, P2.2.IT.3910.200 |  | 169d |
| P2.2.IT.3910.220 |  | Terminations and Punch Downs - All Cabling / L2 / South / 3910 | 15d | 2026-01-21 | 2026-02-10 | P2.2.IT.3910.210, P2.2.IT.3910.160, P2.2.IT.3910.340 |  | 169d |
| P2.2.IT.3910.230 |  | Doors & Hardware / L2 / South / 3910 | 2d | 2026-01-21 | 2026-01-22 | P2.2.IT.3910.210 |  | 179d |
| P2.2.IT.3910.240 |  | Energize Elec Panels Serving Comms Racks / L2 / South / 3910 | 3d | 2026-01-23 | 2026-01-27 | P2.2.IT.3910.230, P2.2.HE.2949.1140 |  | 179d |
| P2.2.IT.3910.250 |  | Comms Racks In Service / L2 / South / 3910 | 0d | 2026-02-10 | 2026-02-10 | P2.2.IT.3910.220, P2.2.IT.3910.240 |  | 169d |
|  | 2 | **FINISHES - CORE & SUPPORT SPACES / Level 2** |  | 2025-05-15 | 2026-11-04 |  |  |  |
|  | 7KSF | **DPM/IR Area (5K SF) / Level 2** |  | 2026-03-11 | 2026-10-09 |  |  |  |
|  | 1 | **Finishes** |  | 2026-03-11 | 2026-10-09 |  |  |  |
| P2.L2.F.CS.1000 |  | Paint Prime & 1st Coat Walls / L2 / DPM/IR | 5d | 2026-03-11 | 2026-03-17 | P2.L2.F.CS.2000, P2.L2.S.1550 |  | 63d |
| P2.L2.F.CS.1020 |  | R/I - Ceiling Assemblies & Supports - All Trades (A/V, Oper Part, Glass Part, etc.) / L2 / DPM/IR | 5d | 2026-03-18 | 2026-03-24 | P2.L2.F.CS.1000 |  | 84d |
| P2.L2.F.CS.1010 |  | T-Grid / L2 / DPM/IR | 5d | 2026-03-25 | 2026-03-31 | P2.L2.F.CS.1020 |  | 84d |
| P2.L2.F.CS.1050 |  | Sprinkler Heads in T-Grid / L2 / DPM/IR | 5d | 2026-04-01 | 2026-04-07 | P2.L2.F.CS.1010 |  | 84d |
| P2.L2.F.CS.1030 |  | Diffusers in T-Grid / L2 / DPM/IR | 5d | 2026-04-08 | 2026-04-14 | P2.L2.F.CS.1050, P2.L2.F.CS.1010 |  | 84d |
| P2.L2.F.CS.1040 |  | Lights & Elec Devices in T-Grid / L2 / DPM/IR | 5d | 2026-04-15 | 2026-04-21 | P2.L2.F.CS.1030, P2.L2.F.CS.1010 |  | 84d |
| P2.L2.F.CS.1070 |  | Fire Alarm in T-Grid / L2 / DPM/IR | 5d | 2026-04-22 | 2026-04-28 | P2.L2.F.CS.1010, P2.L2.F.CS.1040 |  | 84d |
| P2.L2.F.CS.1060 |  | Low Voltage in T-Grid / L2 / DPM/IR | 5d | 2026-04-29 | 2026-05-05 | P2.L2.F.CS.1070, P2.L2.F.CS.1010 |  | 84d |
| P2.L2.F.CS.1080 |  | OH Ceiling Signoff / L2 / DPM/IR | 5d | 2026-05-06 | 2026-05-12 | P2.L2.F.CS.1060, P2.L2.F.CS.1070, P2.L2.F.CS.1030, P2.L2.F.CS.1040, P2.L2.F.CS.1050 |  | 84d |
| P2.L2.F.CS.1110 |  | Drop Ceiling Tile / L2 / DPM/IR | 5d | 2026-05-13 | 2026-05-19 | P2.L2.F.CS.1080 |  | 84d |

| ID | WBS | Task | Duration | Start | Finish | Predecessors | Complete | Total float |
| --- | --- | --- | --- | --- | --- | --- | --- | --- |
| P2.L2.F.CS.1090 |  | Millwork / L2 / DPM/IR | 5d | 2026-05-20 | 2026-05-27 | P2.L2.F.CS.1110, P2.L2.F.CS.1080 |  | 84d |
| P2.L2.F.CS.1100 |  | Plumbing Fixtures / L2 / DPM/IR | 5d | 2026-05-28 | 2026-06-03 | P2.L2.F.CS.1090, P2.L2.F.CS.1080, P2.L2.F.CS.1090 FF |  | 84d |
| P2.L2.F.CS.1120 |  | Floor Prep / L2 / DPM/IR | 5d | 2026-06-04 | 2026-06-10 | P2.L2.F.CS.1110, P2.L2.F.CS.1090, P2.L2.F.CS.1100 |  | 84d |
| P2.L2.F.CS.2300 |  | Floor Prep - Epoxy Floors / L2 / Showers & Lockers | 1d | 2026-06-04 | 2026-06-04 | P2.L2.F.CS.1110, P2.L2.F.CS.1090, P2.L2.F.CS.1100 |  | 89d |
| P2.L2.F.CS.2310 |  | Floor - Epoxy Floors / L2 / Showers & Lockers | 4d | 2026-06-05 | 2026-06-10 | P2.L2.F.CS.2300 |  | 89d |
| P2.L2.F.CS.1130 |  | Floor Finishes / L2 / DPM/IR | 5d | 2026-06-11 | 2026-06-17 | P2.L2.F.CS.1120 |  | 84d |
| P2.L2.F.CS.1140 |  | Doors & Hardware / L2 / DPM/IR | 5d | 2026-06-18 | 2026-06-24 | P2.L2.F.CS.1130, P2.L2.F.CS.2310 |  | 84d |
| P2.L2.F.CS.2320 |  | Interior Glazing / L2 / DPM/IR | 1d | 2026-06-18 | 2026-06-18 | P2.L2.F.CS.1130, BP7.088.3.100 |  | 95d |
| P2.L2.F.CS.1150 |  | Paint - Finish Coat / L2 / DPM/IR | 5d | 2026-06-25 | 2026-07-01 | P2.L2.F.CS.1140, P2.L2.F.CS.1130, P2.L2.F.CS.2310, P2.L2.F.CS.2320 |  | 91d |
| P2.L2.F.CS.1200 |  | Floor Base / L2 / DPM/IR | 5d | 2026-07-02 | 2026-07-09 | P2.L2.F.CS.1150 |  | 91d |
| P2.L2.F.CS.1180 |  | Building Specialities / L2 / DPM/IR | 5d | 2026-07-10 | 2026-07-16 | P2.L2.F.CS.1150, P2.L2.F.CS.1200 |  | 91d |
| P2.L2.F.CS.1210 |  | Demountable Partitions / L2 / DPM/IR | 5d | 2026-07-10 | 2026-07-16 | P2.L2.F.CS.1200 |  | 101d |
| P2.L2.F.CS.1170 |  | Trim T-Stats / L2 / DPM/IR | 5d | 2026-07-17 | 2026-07-23 | P2.L2.F.CS.1180, P2.L2.F.CS.1150 |  | 91d |
| P2.L2.F.CS.1160 |  | Set AV/IT Devices and Configure / L2 / DPM/IR | 5d | 2026-07-24 | 2026-07-30 | P2.L2.F.CS.1170, P2.L2.F.CS.1150 |  | 91d |
| P2.L2.F.CS.1220 |  | Trim Electrical / L2 / DPM/IR | 5d | 2026-07-31 | 2026-08-06 | P2.L2.F.CS.1170 SS, P2.L2.F.CS.1160, P2.L2.F.CS.1210 |  | 91d |
| P2.L2.F.CS.1230 |  | Trim Telephone/ Data / L2 / DPM/IR | 5d | 2026-08-07 | 2026-08-13 | P2.L2.F.CS.1220 SS, P2.L2.F.CS.1220 |  | 91d |
| P2.L2.F.CS.1190 |  | Interior Building Signage / L2 / DPM/IR | 5d | 2026-08-14 | 2026-08-20 | P2.L2.F.CS.1230, P2.L2.F.CS.1150 |  | 91d |
| P2.L2.F.CS.1240 |  | Work Completion List - Finishes / L2 / DPM/IR | 5d | 2026-08-21 | 2026-08-27 | P2.L2.F.CS.1140, P2.L2.F.CS.1180, P2.L2.F.CS.1100, P2.L2.F.CS.1230, P2.L2.F.CS.1160, P2.L2.F.CS.1190 |  | 91d |
| P2.L2.F.CS.1250 |  | Rough Clean / L2 / DPM/IR | 5d | 2026-08-28 | 2026-09-03 | P2.L2.F.CS.1240 |  | 91d |
| P2.L2.F.CS.1260 |  | FF&E / L2 / DPM/IR | 5d | 2026-09-04 | 2026-09-11 | P2.L2.F.CS.1250 |  | 91d |
| P2.L2.F.CS.1270 |  | Prepare Punchlist / L2 / DPM/IR | 5d | 2026-09-14 | 2026-09-18 | P2.L2.F.CS.1260 |  | 91d |
| P2.L2.F.CS.1280 |  | Correct Punchlist / L2 / DPM/IR | 10d | 2026-09-21 | 2026-10-02 | P2.L2.F.CS.1270 |  | 91d |
| P2.L2.F.CS.1290 |  | Final Clean / L2 / DPM/IR | 5d | 2026-10-05 | 2026-10-09 | P2.L2.F.CS.1280 |  | 91d |
|  | 7KSF1 | **Shared and Open Offices (6K SF) / Level 2** |  | 2026-03-04 | 2026-09-25 |  |  |  |
|  | 1 | **Finishes** |  | 2026-03-04 | 2026-09-25 |  |  |  |
| P2.L2.F.CS.2000 |  | Paint Prime & 1st Coat Walls / L2 / Offices | 5d | 2026-03-04 | 2026-03-10 | P2.L2.N.1550 |  | 63d |
| P2.L2.F.CS.2020 |  | R/I - Ceiling Assemblies & Supports - All Trades (A/V, Oper Part, Glass Part, etc.) / L2 / Offices | 5d | 2026-03-11 | 2026-03-17 | P2.L2.F.CS.2000 |  | 89d |
| P2.L2.F.CS.2010 |  | T-Grid / L2 / Offices | 5d | 2026-03-18 | 2026-03-24 | P2.L2.F.CS.2020 |  | 89d |
| P2.L2.F.CS.2050 |  | Sprinkler Heads in T-Grid / L2 / Offices | 5d | 2026-03-25 | 2026-03-31 | P2.L2.F.CS.2010 |  | 89d |
| P2.L2.F.CS.2030 |  | Diffusers in T-Grid / L2 / Offices | 5d | 2026-04-01 | 2026-04-07 | P2.L2.F.CS.2050, P2.L2.F.CS.2010 |  | 89d |
| P2.L2.F.CS.2040 |  | Lights & Elec Devices in T-Grid / L2 / Offices | 5d | 2026-04-08 | 2026-04-14 | P2.L2.F.CS.2030, P2.L2.F.CS.2010 |  | 89d |
| P2.L2.F.CS.2070 |  | Fire Alarm in T-Grid / L2 / Offices | 5d | 2026-04-15 | 2026-04-21 | P2.L2.F.CS.2010, P2.L2.F.CS.2040 |  | 89d |
| P2.L2.F.CS.2060 |  | Low Voltage in T-Grid / L2 / Offices | 5d | 2026-04-22 | 2026-04-28 | P2.L2.F.CS.2070, P2.L2.F.CS.2010 |  | 89d |
| P2.L2.F.CS.2080 |  | OH Ceiling Signoff / L2 / Offices | 5d | 2026-04-29 | 2026-05-05 | P2.L2.F.CS.2060, P2.L2.F.CS.2070, P2.L2.F.CS.2030, P2.L2.F.CS.2040, P2.L2.F.CS.2050 |  | 89d |
| P2.L2.F.CS.2110 |  | Drop Ceiling Tile / L2 / Offices | 5d | 2026-05-06 | 2026-05-12 | P2.L2.F.CS.2080 |  | 89d |
| P2.L2.F.CS.2090 |  | Millwork / L2 / Offices | 5d | 2026-05-13 | 2026-05-19 | P2.L2.F.CS.2110, P2.L2.F.CS.2080 |  | 89d |
| P2.L2.F.CS.2100 |  | Plumbing Fixtures / L2 / Offices | 5d | 2026-05-20 | 2026-05-27 | P2.L2.F.CS.2090, P2.L2.F.CS.2080, P2.L2.F.CS.2090 FF |  | 89d |
| P2.L2.F.CS.2120 |  | Floor Prep / L2 / Offices | 5d | 2026-05-28 | 2026-06-03 | P2.L2.F.CS.2110, P2.L2.F.CS.2090, P2.L2.F.CS.2100 |  | 89d |
| P2.L2.F.CS.2130 |  | Floor Finishes / L2 / Offices | 5d | 2026-06-04 | 2026-06-10 | P2.L2.F.CS.2120 |  | 89d |
| P2.L2.F.CS.2140 |  | Doors & Hardware / L2 / Offices | 5d | 2026-06-11 | 2026-06-17 | P2.L2.F.CS.2130 |  | 89d |
| P2.L2.F.CS.2150 |  | Paint - Finish Coat / L2 / Offices | 5d | 2026-06-18 | 2026-06-24 | P2.L2.F.CS.2140, P2.L2.F.CS.2130 |  | 101d |
| P2.L2.F.CS.2200 |  | Floor Base / L2 / Offices | 5d | 2026-06-25 | 2026-07-01 | P2.L2.F.CS.2150 |  | 101d |
| P2.L2.F.CS.2210 |  | Demountable Partitions / L2 / Offices | 5d | 2026-07-02 | 2026-07-09 | P2.L2.F.CS.2200 |  | 101d |
| P2.L2.F.CS.2180 |  | Building Specialities / L2 / Offices | 5d | 2026-07-10 | 2026-07-16 | P2.L2.F.CS.2210, P2.L2.F.CS.2150, P2.L2.F.CS.2200 |  | 101d |
| P2.L2.F.CS.2170 |  | Trim T-Stats / L2 / Offices | 5d | 2026-07-17 | 2026-07-23 | P2.L2.F.CS.2180, P2.L2.F.CS.2150 |  | 101d |
| P2.L2.F.CS.2220 |  | Trim Electrical / L2 / Offices | 5d | 2026-07-17 | 2026-07-23 | P2.L2.F.CS.2210, P2.L2.F.CS.2170 SS |  | 111d |
| P2.L2.F.CS.2160 |  | Set AV/IT Devices and Configure / L2 / Offices | 5d | 2026-07-24 | 2026-07-30 | P2.L2.F.CS.2170, P2.L2.F.CS.2150 |  | 101d |
| P2.L2.F.CS.2230 |  | Trim Telephone/ Data / L2 / Offices | 5d | 2026-07-24 | 2026-07-30 | P2.L2.F.CS.2170, P2.L2.F.CS.2220 SS |  | 106d |
| P2.L2.F.CS.2190 |  | Interior Building Signage / L2 / Offices | 5d | 2026-07-31 | 2026-08-06 | P2.L2.F.CS.2160, P2.L2.F.CS.2150 |  | 101d |
| P2.L2.F.CS.2240 |  | Work Completion List - Finishes / L2 / Offices | 5d | 2026-08-07 | 2026-08-13 | P2.L2.F.CS.2140, P2.L2.F.CS.2180, P2.L2.F.CS.2100, P2.L2.F.CS.2230, P2.L2.F.CS.2160, P2.L2.F.CS.2190 |  | 101d |
| P2.L2.F.CS.2250 |  | Rough Clean / L2 / Offices | 5d | 2026-08-14 | 2026-08-20 | P2.L2.F.CS.2240 |  | 101d |
| P2.L2.F.CS.2260 |  | FF&E / L2 / Offices | 5d | 2026-08-21 | 2026-08-27 | P2.L2.F.CS.2250 |  | 101d |
| P2.L2.F.CS.2270 |  | Prepare Punchlist / L2 / Offices | 5d | 2026-08-28 | 2026-09-03 | P2.L2.F.CS.2260 |  | 101d |
| P2.L2.F.CS.2280 |  | Correct Punchlist / L2 / Offices | 10d | 2026-09-04 | 2026-09-18 | P2.L2.F.CS.2270 |  | 101d |
| P2.L2.F.CS.2290 |  | Final Clean / L2 / Offices | 5d | 2026-09-21 | 2026-09-25 | P2.L2.F.CS.2280 |  | 101d |
|  | 3 | **Bathrooms - Break Rooms - Locker Rooms / Level 2** |  | 2025-05-15 | 2026-05-14 |  |  |  |
|  | 3 | **Toilet 2-2954** |  | 2025-05-15 | 2026-02-05 |  |  |  |
| P2.L2.BR.1000 |  | Plumbing - Set Pipe Carriers / L2 / Toilet 2954 | 3d | 2025-05-15 A | 2025-05-19 A | P2.L1.BR.5000, P2.L2.S.1240 | 100% |  |
| P2.L2.BR.1020 |  | Plumbing - Test Pipe / L2 / Toilet 2954 | 2d | 2025-05-30 A | 2025-06-13 A | P2.L2.BR.1000 | 100% |  |
| P2.L2.BR.1070 |  | In Wall - Insulate Plumbing / L2 / Toilet 2954 | 2d | 2025-09-26 A | 2025-09-30 A | P2.L2.BR.1020 | 100% |  |
| P2.L2.BR.1010 |  | Framing & Blocking - Walls and Hard Lid Ceilings / L2 / Toilet 2954 | 2d | 2025-10-27 A | 2025-12-01 | P2.L2.BR.1000, P2.L1.S.1420 | 100% | 158d |
| P2.L2.BR.1030 |  | R/I - Electrical _ Hard Lids / L2 / Toilet 2954 | 2d | 2025-12-01 | 2025-12-02 | P2.L2.BR.1070, P2.L2.BR.1010 |  | 158d |
| P2.L2.BR.1040 |  | Trim Sprinkler Drops _ Hard Lids / L2 / Toilet 2954 | 2d | 2025-12-01 | 2025-12-02 | P2.L2.BR.1010 |  | 158d |
| P2.L2.BR.1050 |  | Duct Drops _ Hard Lids / L2 / Toilet 2954 | 2d | 2025-12-03 | 2025-12-04 | P2.L2.BR.1010, P2.L2.BR.1040 |  | 158d |
| P2.L2.BR.1060 |  | R/I - Fire Alarm _ Hard Lids / L2 / Toilet 2954 | 2d | 2025-12-03 | 2025-12-04 | P2.L2.BR.1010, P2.L2.BR.1030 |  | 158d |
| P2.L2.BR.1080 |  | Inspection - Close In - Walls and Hard Lid Ceilings / L2 / Toilet 2954 | 3d | 2025-12-05 | 2025-12-09 | P2.L2.BR.1070, P2.L2.BR.1060, P2.L2.BR.1050, P2.L2.BR.1030, P2.L2.BR.1040 |  | 158d |
| P2.L2.BR.1090 |  | Hang-Tape-Finish _ Walls and Hard Lids Ceilings / L2 / Toilet 2954 | 5d | 2025-12-10 | 2025-12-16 | P2.L2.BR.1080, P2.SUM.175 |  | 158d |
| P2.L2.BR.1100 |  | Paint Prime & Final Coat _ Walls & Hard Lid Ceilings / L2 / Toilet 2954 | 2d | 2025-12-17 | 2025-12-18 | P2.L2.BR.1090 |  | 158d |
| P2.L2.BR.1140 |  | Trim - HVAC G/R/D's / L2 / Toilet 2954 | 2d | 2025-12-19 | 2025-12-22 | BP1.233.3.410, P2.L2.BR.1100 |  | 158d |
| P2.L2.BR.1120 |  | Pull Wire & Trim Devices - Electrical / L2 / Toilet 2954 | 2d | 2025-12-23 | 2025-12-24 | P2.L2.BR.1140, P2.L2.BR.1100 |  | 158d |

| ID | WBS | Task | Duration | Start | Finish | Predecessors | Complete | Total float |
| --- | --- | --- | --- | --- | --- | --- | --- | --- |
| P2.L2.BR.1130 |  | Lights - Set & Terminate / L2 / Toilet 2954 | 2d | 2025-12-23 | 2025-12-24 | P2.L2.BR.1120 SS |  | 160d |
| P2.L2.BR.1110 |  | Pull Wire & Trim Devices - Fire Alarm / L2 / Toilet 2954 | 2d | 2025-12-26 | 2025-12-29 | P2.L2.BR.1120, P2.L2.BR.1100 |  | 158d |
| P2.L2.BR.1150 |  | Wall Tile / L2 / Toilet 2954 | 5d | 2025-12-30 | 2026-01-06 | P2.L2.BR.1130, P2.L2.BR.1140, P2.L2.BR.1110 |  | 158d |
| P2.L2.BR.4370 |  | Flooring Prep - Epoxy Floors / L2 / Toilet 2954 | 1d | 2026-01-19 | 2026-01-19 | P2.L2.BR.1150, P2.L2.BR.4310 |  | 150d |
| P2.L2.BR.4380 |  | Flooring - Epoxy Floors / L2 / Toilet 2954 | 2d | 2026-01-20 | 2026-01-21 | P2.L2.BR.4370 |  | 191d |
| P2.L2.BR.1160 |  | Doors & Hardware / L2 / Toilet 2954 | 2d | 2026-01-22 | 2026-01-23 | P2.L2.BR.4380 |  | 191d |
| P2.L2.BR.1170 |  | Plumbing Fixtures / Sinks / Showers / L2 / Toilet 2954 | 2d | 2026-01-26 | 2026-01-27 | P2.L2.BR.4380, P2.L2.BR.1160 |  | 264d |
| P2.L2.BR.1180 |  | Bathroom Accessories / L2 / Toilet 2954 | 2d | 2026-01-28 | 2026-01-29 | P2.L2.BR.1170 |  | 264d |
| P2.L2.BR.1190 |  | Work Completion List - Finishes / L2 / Toilet 2954 | 5d | 2026-01-30 | 2026-02-05 | P2.L2.BR.1160, P2.L2.BR.1180, P2.L2.BR.1110 |  | 264d |
|  | 2 | **Toilets 2-3956 / 2-3958** |  | 2025-05-20 | 2026-02-02 |  |  |  |
| P2.L2.BR.2000 |  | Plumbing - Set Pipe Carriers / L2 / Toilets 395X | 3d | 2025-05-20 A | 2025-05-22 A | P2.L2.BR.1000 | 100% |  |
| P2.L2.BR.2020 |  | Plumbing - Test Pipe / L2 / Toilets 395X | 2d | 2025-05-30 A | 2025-06-13 A | P2.L2.BR.2000 | 100% |  |
| P2.L2.BR.2070 |  | In Wall - Insulate Plumbing / L2 / Toilets 395X | 2d | 2025-09-26 A | 2025-09-30 A | P2.L2.BR.2020 | 100% |  |
| P2.L2.BR.2010 |  | Framing & Blocking - Walls and Hard Lid Ceilings / L2 / Toilets 395X | 2d | 2025-10-27 A | 2025-12-01 | P2.L2.BR.2000, P2.L1.S.1420 | 100% | 157d |
| P2.L2.BR.2030 |  | R/I - Electrical _ Hard Lids / L2 / Toilets 395X | 2d | 2025-12-01 | 2025-12-02 | P2.L2.BR.2070, P2.L2.BR.2010 |  | 157d |
| P2.L2.BR.2040 |  | Trim Sprinkler Drops _ Hard Lids / L2 / Toilets 395X | 2d | 2025-12-01 | 2025-12-02 | P2.L2.BR.2010 |  | 157d |
| P2.L2.BR.2050 |  | Duct Drops _ Hard Lids / L2 / Toilets 395X | 2d | 2025-12-03 | 2025-12-04 | P2.L2.BR.2010, P2.L2.BR.2040 |  | 157d |
| P2.L2.BR.2060 |  | R/I - Fire Alarm _ Hard Lids / L2 / Toilets 395X | 2d | 2025-12-03 | 2025-12-04 | P2.L2.BR.2010, P2.L2.BR.2030 |  | 157d |
| P2.L2.BR.2080 |  | Inspection - Close In - Walls and Hard Lid Ceilings / L2 / Toilets 395X | 3d | 2025-12-05 | 2025-12-09 | P2.L2.BR.2060, P2.L2.BR.2070, P2.L2.BR.2030, P2.L2.BR.2040, P2.L2.BR.2050 |  | 157d |
| P2.L2.BR.2090 |  | Hang-Tape-Finish _ Walls and Hard Lids Ceilings / L2 / Toilets 395X | 5d | 2025-12-10 | 2025-12-16 | P2.L2.BR.2080, P2.SUM.175 |  | 157d |
| P2.L2.BR.2100 |  | Paint Prime & Final Coat _ Walls & Hard Lid Ceilings / L2 / Toilets 395X | 2d | 2025-12-17 | 2025-12-18 | P2.L2.BR.2090 |  | 157d |
| P2.L2.BR.2140 |  | Trim - HVAC G/R/D's / L2 / Toilets 395X | 2d | 2025-12-19 | 2025-12-22 | P2.L2.BR.2100 |  | 157d |
| P2.L2.BR.2120 |  | Pull Wire & Trim Devices - Electrical / L2 / Toilets 395X | 2d | 2025-12-23 | 2025-12-24 | P2.L2.BR.2140, P2.L2.BR.2100 |  | 157d |
| P2.L2.BR.2130 |  | Lights - Set & Terminate / L2 / Toilets 395X | 2d | 2025-12-23 | 2025-12-24 | P2.L2.BR.2120 SS |  | 159d |
| P2.L2.BR.2110 |  | Pull Wire & Trim Devices - Fire Alarm / L2 / Toilets 395X | 2d | 2025-12-26 | 2025-12-29 | P2.L2.BR.2120, P2.L2.BR.2100 |  | 157d |
| P2.L2.BR.2150 |  | Wall Tile / L2 / Toilets 395X | 5d | 2025-12-30 | 2026-01-06 | P2.L2.BR.2130, P2.L2.BR.2140, P2.L2.BR.2110 |  | 157d |
| P2.L2.BR.2170 |  | Plumbing Fixtures / Sinks / Showers / L2 / Toilets 395X | 2d | 2026-01-07 | 2026-01-08 | P2.L2.BR.2150 |  | 277d |
| P2.L2.BR.4310 |  | Flooring Prep - Epoxy Floors / L2 / Toilets 395X | 1d | 2026-01-16 | 2026-01-16 | P2.L2.BR.2150, P2.L1.BR.5230 |  | 150d |
| P2.L2.BR.4320 |  | Flooring - Epoxy Floors / L2 / Toilets 395X | 2d | 2026-01-19 | 2026-01-20 | P2.L2.BR.4310 |  | 192d |
| P2.L2.BR.2160 |  | Doors & Hardware / L2 / Toilets 395X | 2d | 2026-01-21 | 2026-01-22 | P2.L2.BR.4320, P2.L2.BR.2150 |  | 192d |
| P2.L2.BR.2180 |  | Bathroom Accessories / L2 / Toilets 395X | 2d | 2026-01-23 | 2026-01-26 | P2.L2.BR.2170, P2.L2.BR.2160 |  | 267d |
| P2.L2.BR.2190 |  | Work Completion List - Finishes / L2 / Toilets 395X | 5d | 2026-01-27 | 2026-02-02 | P2.L2.BR.2160, P2.L2.BR.2180, P2.L2.BR.2110 |  | 267d |
|  | 4 | **DPM/IR Male Lockers, Toilets, and Showers 2-3931** |  | 2025-05-23 | 2026-05-14 |  |  |  |
| P2.L2.BR.3000 |  | Plumbing - Set Pipe Carriers / L2 / DPM/IR Mens 3931 | 5d | 2025-05-23 A | 2025-05-30 A | P2.L2.BR.2000 | 100% |  |
| P2.L2.BR.3030 |  | Plumbing - Test Pipe @ Chase Walls / L2 / DPM/IR Mens 3931 | 5d | 2025-06-13 A | 2025-06-19 A | P2.L2.BR.3000 | 100% |  |
| P2.L2.BR.3080 |  | In Wall - Insulate Plumbing / L2 / DPM/IR Mens 3931 | 5d | 2025-09-26 A | 2025-12-02 | P2.L2.BR.3030, P2.L2.BR.3020 | 60% | 117d |
| P2.L2.BR.3020 |  | Frame - Chase Walls and Hard Lid Ceilings / L2 / DPM/IR Mens 3931 | 5d | 2025-10-27 A | 2025-12-01 | P2.L2.BR.3000, P2.L2.BR.3010 | 100% | 117d |
| P2.L2.BR.3010 |  | Countertop Support Framing / L2 / DPM/IR Mens 3931 | 5d | 2025-11-03 A | 2025-11-07 A | P2.L2.S.1420 | 100% |  |
| P2.L2.BR.3050 |  | Trim Sprinkler Drops _ Hard Lids / L2 / DPM/IR Mens 3931 | 5d | 2025-12-01 | 2025-12-05 | P2.L2.BR.3020 |  | 119d |
| P2.L2.BR.3040 |  | R/I - Electrical _ Hard Lids / L2 / DPM/IR Mens 3931 | 5d | 2025-12-03 | 2025-12-09 | P2.L2.BR.3080, P2.L2.BR.3020 |  | 117d |
| P2.L2.BR.3060 |  | Duct Drops _ Hard Lids / L2 / DPM/IR Mens 3931 | 5d | 2025-12-08 | 2025-12-12 | P2.L2.BR.3050, P2.L2.BR.3020, P2.L2.BR.3050 FF |  | 119d |
| P2.L2.BR.3070 |  | R/I - Fire Alarm _ Hard Lids / L2 / DPM/IR Mens 3931 | 5d | 2025-12-10 | 2025-12-16 | P2.L2.BR.3040, P2.L2.BR.3020 |  | 117d |
| P2.L2.BR.3090 |  | Inspection - Close In - Chase Walls and Hard Lid Ceilings / L2 / DPM/IR Mens 3931 | 5d | 2025-12-17 | 2025-12-23 | P2.L2.BR.3060, P2.L2.BR.3040, P2.L2.BR.3050, P2.L2.BR.3080, P2.L2.BR.3070 |  | 117d |
| P2.L2.BR.3100 |  | Hang-Tape-Finish _ Chase Walls and Hard Lids Ceilings / L2 / DPM/IR Mens 3931 | 5d | 2025-12-24 | 2025-12-31 | P2.L2.BR.3090, P2.SUM.175 |  | 117d |
| P2.L2.BR.3110 |  | Paint Prime & 1st Coat _ Walls & Hard Lid Ceilings / L2 / DPM/IR Mens 3931 | 5d | 2026-01-02 | 2026-01-08 | P2.L2.BR.3100 |  | 117d |
| P2.L2.BR.3140 |  | Ceiling Grid / L2 / DPM/IR Mens 3931 | 5d | 2026-01-09 | 2026-01-15 | P2.L2.BR.3110 |  | 117d |
| P2.L2.BR.3170 |  | Trim Sprinkler Drops _ Ceiling Tiles / L2 / DPM/IR Mens 3931 | 5d | 2026-01-16 | 2026-01-22 | P2.L2.BR.3140 |  | 117d |
| P2.L2.BR.3160 |  | Trim - HVAC G/R/D's / L2 / DPM/IR Mens 3931 | 5d | 2026-01-23 | 2026-01-29 | BP1.233.3.410, P2.L2.BR.3170, P2.L2.BR.3140 |  | 117d |
| P2.L2.BR.3130 |  | Pull Wire - Electrical / L2 / DPM/IR Mens 3931 | 5d | 2026-01-30 | 2026-02-05 | P2.L2.BR.3110, P2.L2.BR.3140, P2.L2.BR.3160 |  | 117d |
| P2.L2.BR.3120 |  | Pull Wire - Fire Alarm / L2 / DPM/IR Mens 3931 | 5d | 2026-02-06 | 2026-02-12 | P2.L2.BR.3130, P2.L2.BR.3110, P2.L2.BR.3140 |  | 167d |
| P2.L2.BR.3150 |  | Lights - Set & Terminate / L2 / DPM/IR Mens 3931 | 5d | 2026-02-06 | 2026-02-12 | P2.L2.BR.3130, P2.L2.BR.3140 |  | 117d |
| P2.L2.BR.3180 |  | Inspection - Ceiling Close In - ACT Ceilings / L2 / DPM/IR Mens 3931 | 5d | 2026-02-13 | 2026-02-19 | P2.L2.BR.3170, P2.L2.BR.3150, P2.L2.BR.3160 |  | 117d |
| P2.L2.BR.3190 |  | Ceiling Tiles / L2 / DPM/IR Mens 3931 | 5d | 2026-02-20 | 2026-02-26 | P2.L2.BR.3180 |  | 117d |
| P2.L2.BR.3200 |  | Wall Tile / L2 / DPM/IR Mens 3931 | 5d | 2026-02-27 | 2026-03-05 | P2.L2.BR.3190 |  | 117d |
| P2.L2.BR.4330 |  | Flooring Prep - Epoxy Floors / L2 / DPM/IR Mens 3931 | 1d | 2026-03-06 | 2026-03-06 | P2.L2.BR.4370, P2.L2.BR.3200 |  | 117d |
| P2.L2.BR.4340 |  | Flooring - Epoxy Floors / L2 / DPM/IR Mens 3931 | 4d | 2026-03-09 | 2026-03-12 | P2.L2.BR.4330 |  | 117d |
| P2.L2.BR.3210 |  | Paint - Finish Coat / L2 / DPM/IR Mens 3931 | 5d | 2026-03-13 | 2026-03-19 | P2.L2.BR.4340 |  | 117d |
| P2.L2.BR.3220 |  | Countertops / L2 / DPM/IR Mens 3931 | 5d | 2026-03-20 | 2026-03-26 | P2.L2.BR.3210 |  | 117d |
| P2.L2.BR.3260 |  | Lockers & Benches / L2 / DPM/IR Mens 3931 | 5d | 2026-03-27 | 2026-04-02 | P2.L2.BR.3210, P2.L2.BR.3220 |  | 127d |
| P2.L2.BR.3270 |  | Plumbing Fixtures / Sinks / Showers / L2 / DPM/IR Mens 3931 | 5d | 2026-03-27 | 2026-04-02 | P2.L2.BR.3220 |  | 117d |
| P2.L2.BR.3280 |  | Toilet Partitions / L2 / DPM/IR Mens 3931 | 5d | 2026-04-03 | 2026-04-09 | P2.L2.BR.3270 |  | 117d |
| P2.L2.BR.3290 |  | Bathroom Accessories / L2 / DPM/IR Mens 3931 | 5d | 2026-04-10 | 2026-04-16 | P2.L2.BR.3270, P2.L2.BR.3280 |  | 117d |
| P2.L2.BR.3240 |  | Trim - Electrical Devices / L2 / DPM/IR Mens 3931 | 5d | 2026-04-17 | 2026-04-23 | P2.L2.BR.3260, P2.L2.BR.3290, P2.L2.BR.3210 |  | 117d |
| P2.L2.BR.3230 |  | Trim - Fire Alarm Devices / L2 / DPM/IR Mens 3931 | 5d | 2026-04-24 | 2026-04-30 | P2.L2.BR.3120, P2.L2.BR.3240, P2.L2.BR.3210 |  | 117d |
| P2.L2.BR.3250 |  | Doors & Hardware / L2 / DPM/IR Mens 3931 | 5d | 2026-05-01 | 2026-05-07 | P2.L2.BR.3210, P2.L2.BR.3230 |  | 117d |
| P2.L2.BR.3300 |  | Work Completion List - Finishes / L2 / DPM/IR Mens 3931 | 5d | 2026-05-08 | 2026-05-14 | P2.L2.BR.3290, P2.L2.BR.3260, P2.L2.BR.3230, P2.L2.BR.3240, P2.L2.BR.3250, P2.L2.BR.3280 |  | 194d |
|  | 1 | **DPM/IR Female Lockers, Toilets, and Showers 2-2958** |  | 2025-06-13 | 2026-05-05 |  |  |  |
| P2.L2.BR.4000 |  | Plumbing - Set Pipe Carriers / L2 / DPM/IR Womens 3931 | 5d | 2025-06-13 A | 2025-06-19 A | P2.L2.BR.3000 | 100% |  |
| P2.L2.BR.4030 |  | Plumbing - Test Pipe @ Chase Walls / L2 / DPM/IR Womens 3931 | 5d | 2025-06-20 A | 2025-06-26 A | P2.L2.BR.4000 | 100% |  |
| P2.L2.BR.4080 |  | In Wall - Insulate Plumbing / L2 / DPM/IR Womens 3931 | 5d | 2025-09-26 A | 2025-11-18 A | P2.L2.BR.4030, P2.L2.BR.4020 | 100% |  |

| ID | WBS | Task | Duration | Start | Finish | Predecessors | Complete | Total float |
| --- | --- | --- | --- | --- | --- | --- | --- | --- |
| P2.L2.BR.4010 |  | Countertop Support Framing / L2 / DPM/IR Womens 3931 | 5d | 2025-11-03 A | 2025-11-07 A | P2.L2.S.1420 | 100% |  |
| P2.L2.BR.4020 |  | Frame - Chase Walls and Hard Lid Ceilings / L2 / DPM/IR Womens 3931 | 5d | 2025-12-01 | 2025-12-05 | P2.L2.BR.4000, P2.L2.BR.4010 |  | 124d |
| P2.L2.BR.4040 |  | R/I - Electrical _ Hard Lids / L2 / DPM/IR Womens 3931 | 5d | 2025-12-08 | 2025-12-12 | P2.L2.BR.4080, P2.L2.BR.4020 |  | 124d |
| P2.L2.BR.4050 |  | Trim Sprinkler Drops _ Hard Lids / L2 / DPM/IR Womens 3931 | 5d | 2025-12-08 | 2025-12-12 | P2.L2.BR.4020 |  | 124d |
| P2.L2.BR.4060 |  | Duct Drops _ Hard Lids / L2 / DPM/IR Womens 3931 | 5d | 2025-12-15 | 2025-12-19 | P2.L2.BR.4050, P2.L2.BR.4020 |  | 124d |
| P2.L2.BR.4070 |  | R/I - Fire Alarm _ Hard Lids / L2 / DPM/IR Womens 3931 | 5d | 2025-12-15 | 2025-12-19 | P2.L2.BR.4040, P2.L2.BR.4020 |  | 124d |
| P2.L2.BR.4090 |  | Inspection - Close In - Chase Walls and Hard Lid Ceilings / L2 / DPM/IR Womens 3931 | 5d | 2025-12-22 | 2025-12-29 | P2.L2.BR.4050, P2.L2.BR.4060, P2.L2.BR.4040, P2.L2.BR.4070, P2.L2.BR.4080 |  | 124d |
| P2.L2.BR.4100 |  | Hang-Tape-Finish _ Chase Walls and Hard Lids Ceilings / L2 / DPM/IR Womens 3931 | 5d | 2025-12-30 | 2026-01-06 | P2.L2.BR.4090, P2.SUM.175 |  | 124d |
| P2.L2.BR.4110 |  | Paint Prime & 1st Coat _ Walls & Hard Lid Ceilings / L2 / DPM/IR Womens 3931 | 5d | 2026-01-07 | 2026-01-13 | P2.L2.BR.4100 |  | 124d |
| P2.L2.BR.4140 |  | Ceiling Grid / L2 / DPM/IR Womens 3931 | 5d | 2026-01-14 | 2026-01-20 | P2.L2.BR.4110 |  | 124d |
| P2.L2.BR.4170 |  | Trim Sprinkler Drops _ Ceiling Tiles / L2 / DPM/IR Womens 3931 | 5d | 2026-01-21 | 2026-01-27 | P2.L2.BR.4140 |  | 124d |
| P2.L2.BR.4160 |  | Trim - HVAC G/R/D's / L2 / DPM/IR Womens 3931 | 5d | 2026-01-28 | 2026-02-03 | BP1.233.3.410, P2.L2.BR.4170, P2.L2.BR.4140 |  | 124d |
| P2.L2.BR.4130 |  | Pull Wire - Electrical / L2 / DPM/IR Womens 3931 | 5d | 2026-02-04 | 2026-02-10 | P2.L2.BR.4110, P2.L2.BR.4140, P2.L2.BR.4160 |  | 124d |
| P2.L2.BR.4120 |  | Pull Wire - Fire Alarm / L2 / DPM/IR Womens 3931 | 5d | 2026-02-11 | 2026-02-17 | P2.L2.BR.4130, P2.L2.BR.4110, P2.L2.BR.4140 |  | 164d |
| P2.L2.BR.4150 |  | Lights - Set & Terminate / L2 / DPM/IR Womens 3931 | 5d | 2026-02-11 | 2026-02-17 | P2.L2.BR.4140, P2.L2.BR.4130 |  | 124d |
| P2.L2.BR.4180 |  | Inspection - Ceiling Close In - ACT Ceilings / L2 / DPM/IR Womens 3931 | 5d | 2026-02-18 | 2026-02-24 | P2.L2.BR.4170, P2.L2.BR.4150, P2.L2.BR.4160 |  | 124d |
| P2.L2.BR.4190 |  | Ceiling Tiles / L2 / DPM/IR Womens 3931 | 5d | 2026-02-25 | 2026-03-03 | P2.L2.BR.4180 |  | 124d |
| P2.L2.BR.4200 |  | Wall Tile / L2 / DPM/IR Womens 3931 | 5d | 2026-03-04 | 2026-03-10 | P2.L2.BR.4190 |  | 124d |
| P2.L2.BR.4350 |  | Flooring Prep - Epoxy Floors / L2 / DPM/IR Womens 3931 | 1d | 2026-03-11 | 2026-03-11 | P2.L2.BR.4330, P2.L2.BR.4200 |  | 124d |
| P2.L2.BR.4360 |  | Flooring - Epoxy Floors / L2 / DPM/IR Womens 3931 | 4d | 2026-03-12 | 2026-03-17 | P2.L2.BR.4350 |  | 124d |
| P2.L2.BR.4210 |  | Paint - Finish Coat / L2 / DPM/IR Womens 3931 | 5d | 2026-03-18 | 2026-03-24 | P2.L2.BR.4360 |  | 124d |
| P2.L2.BR.4220 |  | Countertops / L2 / DPM/IR Womens 3931 | 5d | 2026-03-25 | 2026-03-31 | P2.L2.BR.4210 |  | 124d |
| P2.L2.BR.4260 |  | Lockers & Benches / L2 / DPM/IR Womens 3931 | 5d | 2026-04-01 | 2026-04-07 | P2.L2.BR.4210, P2.L2.BR.4220 |  | 124d |
| P2.L2.BR.4270 |  | Plumbing Fixtures / Sinks / Showers / L2 / DPM/IR Womens 3931 | 5d | 2026-04-01 | 2026-04-07 | P2.L2.BR.4220 |  | 211d |
| P2.L2.BR.4240 |  | Trim - Electrical Devices / L2 / DPM/IR Womens 3931 | 5d | 2026-04-08 | 2026-04-14 | P2.L2.BR.4260, P2.L2.BR.4210 |  | 124d |
| P2.L2.BR.4280 |  | Toilet Partitions / L2 / DPM/IR Womens 3931 | 5d | 2026-04-08 | 2026-04-14 | P2.L2.BR.4270 |  | 211d |
| P2.L2.BR.4290 |  | Bathroom Accessories / L2 / DPM/IR Womens 3931 | 5d | 2026-04-08 | 2026-04-14 | P2.L2.BR.4270 |  | 211d |
| P2.L2.BR.4230 |  | Trim - Fire Alarm Devices / L2 / DPM/IR Womens 3931 | 5d | 2026-04-15 | 2026-04-21 | P2.L2.BR.4120, P2.L2.BR.4240, P2.L2.BR.4210 |  | 124d |
| P2.L2.BR.4250 |  | Doors & Hardware / L2 / DPM/IR Womens 3931 | 5d | 2026-04-22 | 2026-04-28 | P2.L2.BR.4230, P2.L2.BR.4210 |  | 124d |
| P2.L2.BR.4300 |  | Work Completion List - Finishes / L2 / DPM/IR Womens 3931 | 5d | 2026-04-29 | 2026-05-05 | P2.L2.BR.4260, P2.L2.BR.4280, P2.L2.BR.4290, P2.L2.BR.4230, P2.L2.BR.4240, P2.L2.BR.4250 |  | 201d |
|  | 1 | **Corridors & Lobbies / Level 2** |  | 2026-03-18 | 2026-11-04 |  |  |  |
| P2.L2.CL.1000 |  | Paint Prime & 1st Coat Walls / L2 / Corr & Lobbies | 5d | 2026-03-18 | 2026-03-24 | P2.L2.F.CS.1000, P2.L2.N.1550 |  | 63d |
| P2.L2.CL.1010 |  | Framing - Hard Lid Ceilings / L2 / Corr & Lobbies | 10d | 2026-03-25 | 2026-04-07 | P2.L2.CL.1000 |  | 63d |
| P2.L2.CL.1020 |  | T-Grid / L2 / Corr & Lobbies | 10d | 2026-03-25 | 2026-04-07 | P2.L2.CL.1000 |  | 63d |
| P2.L2.CL.1040 |  | R/I - Trim Sprinkler Heads- All Ceilings / L2 / Corr & Lobbies | 5d | 2026-04-03 | 2026-04-09 | P2.L2.CL.1020 FF+2d, P2.L2.CL.1010 FF+2d |  | 63d |
| P2.L2.CL.1070 |  | Trim - Sprinkler Heads @ T-Grid / L2 / Corr & Lobbies | 5d | 2026-04-03 | 2026-04-09 | P2.L2.CL.1020 FF+2d |  | 146d |
| P2.L2.CL.1050 |  | R/I - HVAC- All Ceilings / L2 / Corr & Lobbies | 5d | 2026-04-10 | 2026-04-16 | P2.L2.CL.1040, P2.L2.CL.1020 FF+2d, P2.L2.CL.1010 FF+2d |  | 63d |
| P2.L2.CL.1030 |  | R/I - Electrical - All Ceilings / L2 / Corr & Lobbies | 5d | 2026-04-17 | 2026-04-23 | P2.L2.CL.1050, P2.L2.CL.1020 FF+2d, P2.L2.CL.1010 FF+2d |  | 63d |
| P2.L2.CL.1060 |  | R/I - All Remaining Low Voltage - All Ceilings / L2 / Corr & Lobbies | 5d | 2026-04-24 | 2026-04-30 | P2.L2.CL.1030, P2.L2.CL.1020 FF+2d, P2.L2.CL.1010 FF+2d |  | 63d |
| P2.L2.CL.1100 |  | Pull Wire - Electrical / L2 / Corr & Lobbies | 10d | 2026-04-24 | 2026-05-07 | P2.L2.CL.1030 |  | 93d |
| P2.L2.CL.1080 |  | R/I - Fire Alarm/Life Safety - All Ceilings / L2 / Corr & Lobbies | 5d | 2026-05-01 | 2026-05-07 | P2.L2.CL.1060, P2.L2.CL.1010 FF+2d |  | 63d |
| P2.L2.CL.1090 |  | Inspections - Close In- All Ceilings / L2 / Corr & Lobbies | 5d | 2026-05-08 | 2026-05-14 | P2.L2.CL.1060, P2.L2.CL.1030, P2.L2.CL.1040, P2.L2.CL.1050, P2.L2.CL.1080 |  | 63d |
| P2.L2.CL.1110 |  | Pull Wire - Fire Alarm / L2 / Corr & Lobbies | 5d | 2026-05-08 | 2026-05-14 | P2.L2.CL.1080, P2.L2.CL.1100 |  | 98d |
| P2.L2.CL.1120 |  | Pull Wire - All Remianing Low Voltage Systems / L2 / Corr & Lobbies | 5d | 2026-05-15 | 2026-05-21 | P2.L2.CL.1060, P2.L2.CL.1110 |  | 103d |
| P2.L2.CL.1130 |  | Hang/Tape/Finish- Hard Lid Ceilings / L2 / Corr & Lobbies | 10d | 2026-05-15 | 2026-05-29 | P2.L2.CL.1090 |  | 63d |
| P2.L2.CL.1140 |  | Drop Ceiling Tiles @ T-Grid / L2 / Corr & Lobbies | 5d | 2026-05-22 | 2026-05-29 | P2.L2.CL.1090, P2.L2.CL.1070, P2.L2.CL.1100, P2.L2.CL.1110, P2.L2.CL.1120 |  | 116d |
| P2.L2.CL.1190 |  | Paint - Hard Lid Ceilings / L2 / Corr & Lobbies | 5d | 2026-06-01 | 2026-06-05 | P2.L2.CL.1130 |  | 63d |
| P2.L2.CL.1180 |  | Ceiling Mounted - HVAC GRD's / L2 / Corr & Lobbies | 15d | 2026-06-08 | 2026-06-26 | P2.L2.CL.1190, P2.L2.CL.1020 |  | 63d |
| P2.L2.CL.1150 |  | Ceiling Mounted - Electrical Devices and Lights / L2 / Corr & Lobbies | 20d | 2026-06-22 | 2026-07-20 | P2.L2.CL.1190, P2.L2.CL.1100, P2.L2.CL.1180 SS+10d |  | 63d |
| P2.L2.CL.1160 |  | Ceiling Mounted - Fire Alarm/Life Saftey Devices / L2 / Corr & Lobbies | 15d | 2026-07-07 | 2026-07-27 | P2.L2.CL.1190, P2.L2.CL.1110, P2.L2.CL.1020, P2.L2.CL.1150 SS+10d |  | 63d |
| P2.L2.CL.1170 |  | Ceiling Mounted - All Low Voltage Devices / L2 / Corr & Lobbies | 15d | 2026-07-21 | 2026-08-10 | P2.L2.CL.1190, P2.L2.CL.1120, P2.L2.CL.1160 SS+10d |  | 63d |
| P2.L2.CL.1320 |  | Prep Flooring / L2 / Corr & Lobbies | 2d | 2026-08-25 | 2026-08-26 | P2.L2.CL.1180, P2.L2.CL.1170, P2.L2.CL.1150, P2.L2.CL.1160, P2.L1.CL.1330, P2.L2.CL.1140 SS+2d |  | 53d |
| P2.L2.CL.1200 |  | Flooring / L2 / Corr & Lobbies | 8d | 2026-08-27 | 2026-09-08 | P2.L2.CL.1320 |  | 53d |
| P2.L2.CL.1210 |  | Final Paint / L2 / Corr & Lobbies | 5d | 2026-09-03 | 2026-09-10 | P2.L2.CL.1140, P2.L2.CL.1200 FF+2d, BP7.097.3.100 |  | 73d |
| P2.L2.CL.1220 |  | Floor Base / L2 / Corr & Lobbies | 5d | 2026-09-11 | 2026-09-17 | P2.L2.CL.1210 |  | 88d |
| P2.L2.CL.1250 |  | Trim - HVAC - Wall Mounted Devices / L2 / Corr & Lobbies | 5d | 2026-09-11 | 2026-09-17 | BP1.233.3.410, P2.L2.CL.1210 |  | 73d |
| P2.L2.CL.1230 |  | Trim - All Electrical - Wall Mounted Devices / L2 / Corr & Lobbies | 5d | 2026-09-18 | 2026-09-24 | P2.L2.CL.1250, P2.L2.CL.1210 |  | 73d |
| P2.L2.CL.1330 |  | Wall Protection / L2 / Corr & Lobbies | 5d | 2026-09-18 | 2026-09-24 | BP7.102.3.300, P2.L2.CL.1220 |  | 88d |
| P2.L2.CL.1240 |  | Trim - Fire Alarm - Wall Mounted Devices / L2 / Corr & Lobbies | 5d | 2026-09-25 | 2026-10-01 | P2.L2.CL.1210, P2.L2.CL.1230 |  | 73d |
| P2.L2.CL.1260 |  | Trim - All Remining Low Voltage Systems - Wall Mounted Devices / L2 / Corr & Lobbies | 5d | 2026-10-02 | 2026-10-08 | P2.L2.CL.1240, P2.L2.CL.1210 |  | 73d |
| P2.L2.CL.1270 |  | Building Signage / L2 / Corr & Lobbies | 5d | 2026-10-09 | 2026-10-15 | P2.L2.CL.1260, P2.L2.CL.1210 |  | 73d |
| P2.L2.CL.1280 |  | Work Completion List / L2 / Corr & Lobbies | 5d | 2026-10-16 | 2026-10-22 | P2.L2.CL.1270, P2.L2.CL.1240, P2.L2.CL.1250, P2.L2.CL.1260, P2.L2.CL.1220, P2.L2.CL.1230, P2.L2.CL.1330 |  | 73d |
| P2.L2.CL.1290 |  | Rough Clean / L2 / Corr & Lobbies | 2d | 2026-10-23 | 2026-10-26 | P2.L2.CL.1280 |  | 73d |
| P2.L2.CL.1300 |  | Punchlist / L2 / Corr & Lobbies | 5d | 2026-10-27 | 2026-11-02 | P2.L2.CL.1290 |  | 73d |
| P2.L2.CL.1310 |  | Final Clean / L2 / Corr & Lobbies | 2d | 2026-11-03 | 2026-11-04 | P2.L2.CL.1300 |  | 73d |
|  | INT | **INTERSTITIAL / LEVEL 2** |  | 2025-01-29 | 2026-04-30 |  |  |  |
|  | 1 | **South Interstitial (9K SF) / 2-3925** |  | 2025-01-29 | 2026-04-30 |  |  |  |
|  | Z1 | **Rough In - South Interstitial / 2-3925** |  | 2025-01-29 | 2026-02-26 |  |  |  |
| P2.L2.INT.S.1000 |  | Layout - All Trades / L2 / South Int | 5d | 2025-01-29 A | 2025-02-14 A | P2.2.I.03.310 | 100% |  |
| P2.L2.INT.S.1130 |  | OH - Fire Suppression / L2 / South Int | 10d | 2025-02-03 A | 2025-02-06 A | P2.L2.INT.S.1030 FF, P2.L2.INT.S.1040 FF+2d | 100% |  |

| ID | WBS | Task | Duration | Start | Finish | Predecessors | Complete | Total float |
| --- | --- | --- | --- | --- | --- | --- | --- | --- |
| P2.L2.INT.S.1020 |  | OH - Structural Supports (All Trades) / L2 / South Int | 5d | 2025-02-10 A | 2025-03-21 A | P2.L2.INT.S.1000 FF | 100% |  |
| P2.L2.INT.S.1030 |  | OH - MEPF - Hangers & Supports / L2 / South Int | 10d | 2025-02-10 A | 2025-03-21 A | P2.BIM.L2.40.140, P2.L2.INT.S.1000 FF | 100% |  |
| P2.L2.INT.S.1040 |  | Fireproof Interstitial Steel / L2 / South Int | 5d | 2025-02-13 A | 2025-03-01 A | P2.L2.INT.S.1020, P2.L2.INT.S.1030, P2.L2.INT.S.1010 | 100% |  |
| P2.L2.INT.S.1010 |  | Framing - Top Track / L2 / South Int | 5d | 2025-02-21 A | 2025-03-13 A | P2.L2.INT.S.1000, P2.L2.N.1010 | 100% |  |
| P2.L2.INT.S.1140 |  | OH - Hang Duct - HP Mains / L2 / South Int | 20d | 2025-03-12 A | 2025-04-18 A | BP1.233.3.100, P2.L2.INT.S.1030, P2.L2.INT.S.1040 | 100% |  |
| P2.L2.INT.S.1150 |  | OH - Plumbing Piping / L2 / South Int | 20d | 2025-03-19 A | 2025-04-16 A | P2.L2.INT.S.1030, P2.L2.INT.S.1040, P2.L2.S.1180 | 100% |  |
| P2.L2.INT.S.1050 |  | In Wall - Electrical - Framing / L2 / South Int | 10d | 2025-04-01 A | 2025-04-14 A | P2.L2.INT.S.1070 SS | 100% |  |
| P2.L2.INT.S.1060 |  | In Wall - Backing/Blocking/Supports / L2 / South Int | 10d | 2025-04-01 A | 2025-04-14 A | P2.L2.INT.S.1070 SS | 100% |  |
| P2.L2.INT.S.1070 |  | Framing - Perimeter Studs and Door Frames / L2 / South Int | 10d | 2025-04-01 A | 2025-04-14 A | P2.L2.INT.S.1040 | 100% |  |
| P2.L2.INT.S.1170 |  | Set & Connect - Mech Equipment / L2 / South Int | 15d | 2025-04-01 A | 2025-04-21 A | P2.L2.INT.S.1040 | 100% |  |
| P2.L2.INT.S.1210 |  | OH - DALT - HP Mains / L2 / South Int | 10d | 2025-04-02 A | 2025-04-30 A | P2.L2.INT.S.1140 | 100% |  |
| P2.L2.INT.S.1160 |  | OH - Electrical - 480/277v Distribution / L2 / South Int | 20d | 2025-04-11 A | 2025-05-30 A | P2.L2.INT.S.1120 FF+2d, P2.L2.INT.S.1100 FF+2d, P2.L2.INT.S.1030, P2.L2.INT.S.1040 | 100% |  |
| P2.L2.INT.S.1180 |  | OH - HVAC Piping / L2 / South Int | 15d | 2025-04-21 A | 2025-06-09 A | P2.L2.INT.S.1030, P2.L2.INT.S.1130, P2.L2.INT.S.1040 | 100% |  |
| P2.L2.INT.S.1190 |  | OH - Electrical - 208/120v Branch / L2 / South Int | 10d | 2025-04-30 A | 2025-05-30 A | P2.L2.INT.S.1160 | 100% |  |
| P2.L2.INT.S.1240 |  | OH - Hang Duct - LP Branch / L2 / South Int | 10d | 2025-04-30 A | 2025-07-31 A | P2.L2.INT.S.1210 | 100% |  |
| P2.L2.INT.S.1220 |  | OH - Plumbing - Test / L2 / South Int | 10d | 2025-05-01 A | 2025-05-01 A | P2.L2.INT.S.1150 | 100% |  |
| P2.L2.INT.S.1230 |  | OH - Insulate HP Duct / L2 / South Int | 10d | 2025-05-01 A | 2025-05-30 A | P2.L2.INT.S.1210 | 100% |  |
| P2.L2.INT.S.1340 |  | OH - Conduit - Low Volt - Telecom / L2 / South Int | 10d | 2025-05-29 A | 2025-06-11 A | P2.L2.INT.S.1310 | 100% |  |
| P2.L2.INT.S.1350 |  | OH - Conduit - Low Volt - Security / L2 / South Int | 10d | 2025-05-29 A | 2025-06-11 A | P2.L2.INT.S.1300 | 100% |  |
| P2.L2.INT.S.1100 |  | Spray/Seal/Firestop - Head of Wall / L2 / South Int | 5d | 2025-06-18 A | 2025-06-24 A | P2.L2.INT.S.1090 FF+2d | 100% |  |
| P2.L2.INT.S.1320 |  | OH - Conduit - Low Volt - BAS/Controls / L2 / South Int | 10d | 2025-07-23 A | 2025-08-26 A | P2.L2.INT.S.1300 | 100% |  |
| P2.L2.INT.S.1330 |  | OH - Conduit - Low Volt - Fire Alarm / L2 / South Int | 10d | 2025-07-23 A | 2025-08-19 A | P2.L2.INT.S.1310 | 100% |  |
| P2.L2.INT.S.1260 |  | OH - Insulate Plumbing / L2 / South Int | 10d | 2025-08-01 A | 2025-08-14 A | P2.L2.INT.S.1220 | 100% |  |
| FRG.P2.L2.INT.S.1780 |  | HVAC Piping - Hang Remaining Steel Racks / L2 / South Int - FRAGNET | 20d | 2025-08-07 A | 2025-09-04 A | P2.L2.INT.S.1180 | 100% |  |
| P2.L2.INT.S.1090 |  | Hang-Tape-Finish - Walls and Hard Lid Ceilings / L2 / South Int | 10d | 2025-08-08 A | 2025-08-21 A | P2.L2.INT.S.1080 | 100% |  |
| P2.L2.INT.S.1080 |  | AHJ Inspections - Wall Close In / | 5d | 2025-08-11 A | 2025-08-11 A | P2.L2.INT.S.1050 FF, P2.L2.INT.S.1060 FF, P2.L2.INT.S.1070 | 100% |  |
| P2.L2.INT.S.1120 |  | Paint Prime & 1st Coat / L2 / South Int | 5d | 2025-08-26 A | 2025-08-31 A | P2.L2.INT.S.1100 SS | 100% |  |
| P2.L2.INT.S.1175 |  | Set & Connect - Elect Panels and Equipment / L2 / South Int | 5d | 2025-09-22 A | 2025-09-27 A | P2.L2.INT.S.1120, P2.L2.INT.S.1100 | 100% |  |
| P2.L2.INT.S.1110 |  | Firestop - Thru Wall / L2 / South Int | 5d | 2025-09-29 A | 2025-11-25 A | P2.L2.INT.S.1130, P2.L2.INT.S.1140, P2.L2.INT.S.1350, P2.L2.INT.S.1320, P2.L2.INT.S.1330, P2.L2.INT.S.1340, P2.L2.INT.S.1150, P2.L2.INT.S.1160, P2.L2.INT.S.1180, P2.L2.INT.S.1120 SS | 100% |  |
| P2.L2.INT.S.1250 |  | OH - HVAC Piping - Test / L2 / South Int | 5d | 2025-10-27 A | 2025-11-26 A | P2.L2.INT.S.1180, FRG.P2.L2.INT.S.1780 | 100% |  |
| P2.L2.INT.S.1200 |  | OH - Electrical - Equip Tie In / L2 / South Int | 10d | 2025-12-01 | 2025-12-12 | P2.L2.INT.S.1160, P2.L2.INT.S.1170, P2.L2.INT.S.1175 |  | 72d |
| P2.L2.INT.S.1300 |  | OH - Insulate HVAC Pipe / L2 / South Int | 10d | 2025-12-01 | 2025-12-12 | P2.L2.INT.S.1230, P2.L2.INT.S.1250 |  | 82d |
| P2.L2.INT.S.1310 |  | OH - Insulate LP Duct / L2 / South Int | 10d | 2025-12-01 | 2025-12-12 | P2.L2.INT.S.1240 |  | 82d |
| P2.L2.INT.S.1270 |  | Pull Wire - Electrical - 208/120v Branch & Equip / L2 / South Int | 20d | 2025-12-15 | 2026-01-13 | P2.L2.INT.S.1050 FF, P2.L2.INT.S.1190, P2.L2.INT.S.1200, P2.L2.INT.S.1050 |  | 72d |
| P2.L2.INT.S.1280 |  | Pull Wire - Electrical - 480/277v Distribution / L2 / South Int | 10d | 2025-12-15 | 2025-12-29 | P2.L2.INT.S.1200 |  | 82d |
| P2.L2.INT.S.1370 |  | Pull Wire - Low Volt - Fire Alarm / L2 / South Int | 10d | 2025-12-15 | 2025-12-29 | P2.L2.INT.S.1330, P2.L2.INT.S.1090 |  | 82d |
| P2.L2.INT.S.1380 |  | Pull Wire - Low Volt - Telecom / L2 / South Int | 10d | 2025-12-15 | 2025-12-29 | P2.L2.INT.S.1340, P2.L2.INT.S.1090 |  | 82d |
| P2.L2.INT.S.1390 |  | Pull Wire - Low Volt - Security / L2 / South Int | 10d | 2025-12-15 | 2025-12-29 | P2.L2.INT.S.1350 |  | 82d |
| P2.L2.INT.S.1290 |  | OH - HVAC Piping - Equip Tie In / L2 / South Int | 10d | 2026-01-28 | 2026-02-10 | P2.L2.INT.S.1250, P2.L2.INT.S.1170, CX.B2.HYDR.1000 |  | 42d |
| P2.L2.INT.S.1360 |  | Pull Wire - Low Volt - BAS/Controls / L2 / South Int | 10d | 2026-02-11 | 2026-02-24 | P2.L2.INT.S.1320, P2.L2.INT.S.1290 |  | 42d |
| P2.L2.INT.S.1400 |  | Trades Inspect & Verify R/I Work Completed to Specs / L2 / South Int | 2d | 2026-02-25 | 2026-02-26 | P2.L2.INT.S.1390, P2.L2.INT.S.1280, P2.L2.INT.S.1270, P2.L2.INT.S.1360, P2.L2.INT.S.1370, P2.L2.INT.S.1380, P2.L2.INT.S.1260, P2.L2.INT.S.1110 |  | 42d |
|  | S | **Finishes - South Interstitial / 2-3925** |  | 2026-02-27 | 2026-04-30 |  |  |  |
| P2.L2.INT.S.2000 |  | Flooring Prep - Epoxy Floors / L2 / South Int | 7d | 2026-02-27 | 2026-03-09 | BP7.096.3.200, P2.L2.INT.S.1400 |  | 152d |
| P2.L2.INT.S.2090 |  | Flooring - Epoxy Floors / L2 / South Int | 3d | 2026-03-10 | 2026-03-12 | P2.L2.INT.S.2000 |  | 152d |
| P2.L2.INT.S.2010 |  | Paint - Finish Coat / L2 / South Int | 5d | 2026-03-13 | 2026-03-19 | P2.L2.INT.S.2090 |  | 204d |
| P2.L2.INT.S.2020 |  | Doors & Hardware / L2 / South Int | 5d | 2026-03-13 | 2026-03-19 | P2.L2.INT.S.2090 |  | 152d |
| P2.L2.INT.S.2030 |  | Trim All MEP Finishes / L2 / South Int | 5d | 2026-03-20 | 2026-03-26 | P2.L2.INT.S.2020, P2.L2.INT.S.2010 |  | 204d |
| P2.L2.INT.S.2040 |  | Building Signage / L2 / South Int | 5d | 2026-03-20 | 2026-03-26 | P2.L2.INT.S.2010 |  | 204d |
| P2.L2.INT.S.2050 |  | Rough Clean / L2 / South Int | 5d | 2026-03-27 | 2026-04-02 | P2.L2.INT.S.2030, P2.L2.INT.S.2040 |  | 204d |
| P2.L2.INT.S.2060 |  | Prepare Punchlist / L2 / South Int | 5d | 2026-04-03 | 2026-04-09 | P2.L2.INT.S.2050 |  | 204d |
| P2.L2.INT.S.2070 |  | Correct Punchlist / L2 / South Int | 10d | 2026-04-10 | 2026-04-23 | P2.L2.INT.S.2060 FF, P2.L2.INT.S.2060 |  | 204d |
| P2.L2.INT.S.2080 |  | Final Clean / L2 / South Int | 5d | 2026-04-24 | 2026-04-30 | P2.L2.INT.S.2070 FF, P2.L2.INT.S.2070 |  | 204d |
|  | INT1 | **North Interstitial (16K SF) / 2-2855** |  | 2025-02-10 | 2026-04-30 |  |  |  |
|  | Z11 | **Rough In - North Interstitial / 2-2855** |  | 2025-02-10 | 2026-02-26 |  |  |  |
| P2.L2.INT.N.1000 |  | Layout - All Trades / L2 / North Int | 5d | 2025-02-10 A | 2025-02-14 A | P2.2.I.03.320 | 100% |  |
| P2.L2.INT.N.1040 |  | Fireproof Interstitial Steel / L2 / North Int | 5d | 2025-02-13 A | 2025-03-01 A | P2.L2.INT.N.1020, P2.L2.INT.N.1030, P2.L2.INT.N.1010 | 100% |  |
| P2.L2.INT.N.1010 |  | Framing - Top Track / L2 / North Int | 5d | 2025-02-26 A | 2025-03-14 A | P2.L2.INT.S.1010, P2.L2.INT.N.1000 | 100% |  |
| P2.L2.INT.N.1020 |  | OH - Structural Supports (All Trades) / L2 / North Int | 5d | 2025-02-26 A | 2025-03-24 A | P2.L2.INT.N.1000 | 100% |  |
| P2.L2.INT.N.1030 |  | OH - MEPF - Hangers & Supports / L2 / North Int | 10d | 2025-02-26 A | 2025-03-24 A | P2.L2.INT.N.1000 | 100% |  |
| P2.L2.INT.N.2150 |  | OH - Quench Vent / L2 / North Int (1-2855) | 20d | 2025-03-31 A | 2025-04-21 A | P2.L2.INT.N.1040 | 100% |  |
| P2.L2.INT.N.1050 |  | In Wall - Electrical - Framing / L2 / North Int | 10d | 2025-04-01 A | 2025-04-14 A | P2.L2.INT.N.1070 SS | 100% |  |
| P2.L2.INT.N.1060 |  | In Wall - Backing/Blocking/Supports / L2 / North Int | 10d | 2025-04-01 A | 2025-04-14 A | P2.L2.INT.N.1070 SS | 100% |  |
| P2.L2.INT.N.1070 |  | Framing - Perimeter Studs and Door Frames / L2 / North Int | 10d | 2025-04-01 A | 2025-04-14 A | P2.L2.INT.N.1040 | 100% |  |
| P2.L2.INT.N.1130 |  | OH - Fire Suppression / L2 / North Int | 10d | 2025-04-01 A | 2025-04-11 A | P2.L2.INT.N.1030, P2.L2.INT.N.1040 | 100% |  |
| P2.L2.INT.N.1170 |  | Set & Connect - Mech Equipment / L2 / North Int | 15d | 2025-04-01 A | 2025-04-21 A | P2.L2.INT.N.1040 | 100% |  |
| P2.L2.INT.N.1160 |  | OH - Electrical - 480/277v Distribution / L2 / North Int | 20d | 2025-04-02 A | 2025-06-18 A | P2.L2.INT.N.1120 FF+2d, P2.L2.INT.N.1100 FF+2d, P2.L2.INT.N.1030, P2.L2.INT.N.1040 | 100% |  |
| P2.L2.INT.N.1150 |  | OH - Plumbing Piping (High) / L2 / North Int | 15d | 2025-04-14 A | 2025-04-30 A | P2.L2.INT.N.1030, P2.L2.INT.N.1040, P2.L2.N.1070 | 100% |  |
| P2.L2.INT.N.2110 |  | OH - Plumbing Piping (Low) / L2 / North Int | 15d | 2025-04-14 A | 2025-05-02 A | P2.L2.INT.N.1150 | 100% |  |
| P2.L2.INT.N.1140 |  | OH - Hang Duct - HP Mains / L2 / North Int | 20d | 2025-04-21 A | 2025-05-30 A | P2.L2.INT.S.1140, P2.L2.INT.N.1030, P2.L2.INT.N.1040 | 100% |  |
| P2.L2.INT.N.1190 |  | OH - Electrical - 208/120v Branch / L2 / North Int | 10d | 2025-04-21 A | 2025-05-27 A | P2.L2.INT.N.1160 | 100% |  |

| ID | WBS | Task | Duration | Start | Finish | Predecessors | Complete | Total float |
| --- | --- | --- | --- | --- | --- | --- | --- | --- |
| P2.L2.INT.N.2130 |  | OH - Quench Vent / L2 / North Int (1-2835) | 20d | 2025-04-29 A | 2025-05-28 A | P2.L2.INT.N.1030, P2.L2.INT.N.2150 | 100% |  |
| P2.L2.INT.N.1180 |  | OH - HVAC Piping / L2 / North Int | 20d | 2025-05-01 A | 2025-05-29 A | P2.L2.INT.N.1030, P2.L2.INT.N.1130, P2.L2.INT.N.1040 | 100% |  |
| P2.L2.INT.N.1220 |  | OH - Plumbing - Test / L2 / North Int | 10d | 2025-05-19 A | 2025-05-30 A | P2.L2.INT.N.2110 | 100% |  |
| P2.L2.INT.N.1210 |  | OH - DALT - HP Mains / L2 / North Int | 15d | 2025-05-30 A | 2025-06-19 A | P2.L2.INT.N.1140 | 100% |  |
| P2.L2.INT.N.2100 |  | OH - MRI Piping / L2 / North Int | 20d | 2025-06-02 A | 2025-06-27 A | P2.L2.INT.N.1150, P2.L2.INT.N.1130 | 100% |  |
| P2.L2.INT.N.1230 |  | OH - Insulate HP Duct / L2 / North Int | 10d | 2025-06-16 A | 2025-07-11 A | P2.L2.INT.N.1210 | 100% |  |
| P2.L2.INT.N.1090 |  | Hang-Tape-Finish - Walls and Hard Lid Ceilings / L2 / North Int | 10d | 2025-06-30 A | 2025-07-18 A | P2.L2.INT.N.1080 | 100% |  |
| P2.L2.INT.N.2170 |  | OH - Quench Vent / L2 / North Int (1-2865) | 15d | 2025-06-30 A | 2025-07-15 A | P2.L2.INT.N.2090 | 100% |  |
| P2.L2.INT.N.2090 |  | OH - Quench Vent / L2 / North Int (1-2815) | 20d | 2025-07-16 A | 2025-08-14 A | P2.L2.INT.N.2130 | 100% |  |
| P2.L2.INT.N.1100 |  | Spray/Seal/Firestop - Head of Wall / L2 / North Int | 5d | 2025-07-21 A | 2025-07-25 A | P2.L2.INT.N.1090 | 100% |  |
| P2.L2.INT.N.1320 |  | OH - Conduit - Low Volt - BAS/Controls / L2 / North Int | 10d | 2025-07-30 A | 2025-08-15 A | P2.L2.INT.N.1300 | 100% |  |
| P2.L2.INT.N.1330 |  | OH - Conduit - Low Volt - Fire Alarm / L2 / North Int | 10d | 2025-07-30 A | 2025-08-15 A | P2.L2.INT.N.1310 | 100% |  |
| P2.L2.INT.N.1340 |  | OH - Conduit - Low Volt - Telecom / L2 / North Int | 10d | 2025-07-30 A | 2025-11-26 A | P2.L2.INT.N.1310 | 100% |  |
| P2.L2.INT.N.1350 |  | OH - Conduit - Low Volt - Security / L2 / North Int | 10d | 2025-07-30 A | 2025-11-26 A | P2.L2.INT.N.1300 | 100% |  |
| P2.L2.INT.N.1260 |  | OH - Insulate Plumbing / L2 / North Int | 10d | 2025-08-01 A | 2025-08-14 A | P2.L2.INT.N.1220 | 100% |  |
| P2.L2.INT.N.2120 |  | OH - Quench Vent / L2 / North Int (1-2805) | 15d | 2025-08-01 A | 2025-08-20 A | P2.L2.INT.N.2140 | 100% |  |
| P2.L2.INT.N.2140 |  | OH - Quench Vent / L2 / North Int (1-2825) | 15d | 2025-08-01 A | 2025-08-20 A | P2.L2.INT.N.2160 | 100% |  |
| P2.L2.INT.N.2160 |  | OH - Quench Vent / L2 / North Int (1-2845) | 15d | 2025-08-01 A | 2025-08-20 A | P2.L2.INT.N.2170 | 100% |  |
| P2.L2.INT.N.1080 |  | AHJ Inspections - Wall Close In / | 5d | 2025-08-11 A | 2025-08-11 A | P2.L2.INT.N.1050 FF, P2.L2.INT.N.1060 FF, P2.L2.INT.N.1070 | 100% |  |
| P2.L2.INT.N.1120 |  | Paint Prime & 1st Coat / L2 / North Int | 5d | 2025-08-18 A | 2025-08-30 A | P2.L2.INT.N.1100 SS | 100% |  |
| P2.L2.INT.N.1175 |  | Set & Connect - Elect Panels and Equipment / L2 / North Int | 5d | 2025-09-22 A | 2025-09-27 A | P2.L2.INT.N.1100, P2.L2.INT.N.1120 | 100% |  |
| P2.L2.INT.N.1240 |  | OH - Hang Duct - LP Branch / L2 / North Int | 10d | 2025-09-29 A | 2025-11-12 A | P2.L2.INT.N.1210 | 100% |  |
| P2.L2.INT.N.1250 |  | OH - HVAC Piping - Test / L2 / North Int | 9d | 2025-10-27 A | 2025-11-26 A | P2.L2.INT.N.1180, P2.L2.INT.N.2100 | 100% |  |
| P2.L2.INT.N.1200 |  | OH - Electrical - Equip Tie In / L2 / North Int | 10d | 2025-12-01 | 2025-12-12 | P2.L2.INT.N.1160, P2.L2.INT.N.1170, P2.L2.INT.N.1175 |  | 72d |
| P2.L2.INT.N.1300 |  | OH - Insulate HVAC Pipe / L2 / North Int | 10d | 2025-12-01 | 2025-12-12 | P2.L2.INT.N.1230, P2.L2.INT.N.1250 |  | 82d |
| P2.L2.INT.N.1310 |  | OH - Insulate LP Duct / L2 / North Int | 10d | 2025-12-01 | 2025-12-12 | P2.L2.INT.N.1240 |  | 82d |
| P2.L2.INT.N.1110 |  | Firestop - Thru Wall / L2 / North Int | 5d | 2025-12-15 | 2025-12-19 | P2.L2.INT.N.2150, P2.L2.INT.N.2160, P2.L2.INT.N.2170, P2.L2.INT.N.2110, P2.L2.INT.N.2120, P2.L2.INT.N.2130, P2.L2.INT.N.2140, P2.L2.INT.N.2090, P2.L2.INT.N.2100, P2.L2.INT.N.1350, P2.L2.INT.N.1320, P2.L2.INT.N.1330, P2.L2.INT.N.1340, P2.L2.INT.N.1120 SS |  | 87d |
| P2.L2.INT.N.1270 |  | Pull Wire - Electrical - 208/120v Branch & Equip / L2 / North Int | 20d | 2025-12-15 | 2026-01-13 | P2.L2.INT.N.1190, P2.L2.INT.N.1200, P2.L2.INT.N.1050 |  | 72d |
| P2.L2.INT.N.1280 |  | Pull Wire - Electrical - 480/277v Distribution / L2 / North Int | 10d | 2025-12-15 | 2025-12-29 | P2.L2.INT.N.1200 |  | 82d |
| P2.L2.INT.N.1370 |  | Pull Wire - Low Volt - Fire Alarm / L2 / North Int | 10d | 2025-12-15 | 2025-12-29 | P2.L2.INT.N.1090, P2.L2.INT.N.1330 |  | 82d |
| P2.L2.INT.N.1380 |  | Pull Wire - Low Volt - Telecom / L2 / North Int | 10d | 2025-12-15 | 2025-12-29 | P2.L2.INT.N.1090, P2.L2.INT.N.1340 |  | 82d |
| P2.L2.INT.N.1390 |  | Pull Wire - Low Volt - Security / L2 / North Int | 10d | 2025-12-15 | 2025-12-29 | P2.L2.INT.N.1350 |  | 82d |
| P2.L2.INT.N.1290 |  | OH - HVAC Piping - Equip Tie In / L2 / North Int | 10d | 2026-01-28 | 2026-02-10 | P2.L2.INT.N.1170, P2.L2.INT.N.1250, CX.B2.HYDR.1000 |  | 42d |
| P2.L2.INT.N.1360 |  | Pull Wire - Low Volt - BAS/Controls / L2 / North Int | 10d | 2026-02-11 | 2026-02-24 | P2.L2.INT.N.1320, P2.L2.INT.N.1290 |  | 42d |
| P2.L2.INT.N.1400 |  | Trades Inspect & Verify R/I Work Completed to Specs / L2 / North Int | 2d | 2026-02-25 | 2026-02-26 | P2.L2.INT.N.1110, P2.L2.INT.N.1390, P2.L2.INT.N.1280, P2.L2.INT.N.1270, P2.L2.INT.N.1360, P2.L2.INT.N.1370, P2.L2.INT.N.1380, P2.L2.INT.N.1260 |  | 42d |
|  | N | **Finishes - North Interstitial / 2-2855** |  | 2026-02-27 | 2026-04-30 |  |  |  |
| P2.L2.INT.N.2270 |  | Flooring Prep - Epoxy Floors / L2 / North Int | 7d | 2026-02-27 | 2026-03-09 | BP7.096.3.200, P2.L2.INT.N.1400 |  | 152d |
| P2.L2.INT.N.2000 |  | Flooring - Epoxy Floors / L2 / North Int | 3d | 2026-03-10 | 2026-03-12 | P2.L2.INT.N.2270 |  | 152d |
| P2.L2.INT.N.2010 |  | Paint - Finish Coat / L2 / North Int | 5d | 2026-03-13 | 2026-03-19 | P2.L2.INT.N.2000 |  | 204d |
| P2.L2.INT.N.2020 |  | Doors & Hardware / L2 / North Int | 5d | 2026-03-13 | 2026-03-19 | P2.L2.INT.N.2000 |  | 152d |
| P2.L2.INT.N.2030 |  | Trim All MEP Finishes / L2 / North Int | 5d | 2026-03-20 | 2026-03-26 | P2.L2.INT.N.2010, P2.L2.INT.N.2020 |  | 204d |
| P2.L2.INT.N.2040 |  | Building Signage / L2 / North Int | 5d | 2026-03-20 | 2026-03-26 | P2.L2.INT.N.2010 |  | 204d |
| P2.L2.INT.N.2050 |  | Rough Clean / L2 / North Int | 5d | 2026-03-27 | 2026-04-02 | P2.L2.INT.N.2040, P2.L2.INT.N.2030 |  | 204d |
| P2.L2.INT.N.2060 |  | Prepare Punchlist / L2 / North Int | 5d | 2026-04-03 | 2026-04-09 | P2.L2.INT.N.1400, P2.L2.INT.N.2050 |  | 204d |
| P2.L2.INT.N.2070 |  | Correct Punchlist / L2 / North Int | 10d | 2026-04-10 | 2026-04-23 | P2.L2.INT.N.2060 FF, P2.L2.INT.N.2060 |  | 204d |
| P2.L2.INT.N.2080 |  | Final Clean / L2 / North Int | 5d | 2026-04-24 | 2026-04-30 | P2.L2.INT.N.2070 FF, P2.L2.INT.N.2070 |  | 204d |
|  | 1 | **MECHANICAL TOWERS / LEVEL 2** |  | 2025-03-18 | 2026-03-17 |  |  |  |
|  | 4 | **South Mechanical Tower (5K SF) / Rough In & Finish / Level 2** |  | 2025-04-14 | 2026-03-11 |  |  |  |
| P2.L2.SMT.1020 |  | In Wall - Electrical - CMU / L2 - S. Mech Tower | 10d | 2025-04-14 A | 2025-04-18 A | P2.L2.SMT.1010 SS | 100% |  |
| P2.L2.SMT.1030 |  | In Wall - Mech/Plumbing - CMU / L2 - S. Mech Tower | 10d | 2025-04-14 A | 2025-04-18 A | P2.L2.SMT.1010 SS | 100% |  |
| P2.L2.SMT.1070 |  | Set & Connect - Mech Equipment / L2 - S. Mech Tower | 10d | 2025-04-22 A | 2025-05-22 A | BP1.237.3.200, P2.L2.INT.S.1170 | 100% |  |
| P2.L2.SMT.1000 |  | Insulation - Exterior Wall Assembly / L2 - S. Mech Tower | 5d | 2025-06-18 A | 2025-07-08 A | P2.FAC.2.Z1.140 | 100% |  |
| P2.L2.SMT.1080 |  | Set & Connect - Elect Panels and Equipment / L2 - S. Mech Tower | 5d | 2025-08-15 A | 2025-09-12 A | P2.L2.SMT.1070 | 100% |  |
| P2.L2.SMT.1105 |  | HVAC Duct Connections to Shaft Riser / L2 - S. Mech Tower | 5d | 2025-09-10 A | 2025-09-15 A | DDD2850, DDD2900, P2.L2.SMT.1070 | 100% |  |
| P2.L2.SMT.1100 |  | HVAC Piping Connections to Shaft Riser / L2 - S. Mech Tower | 5d | 2025-09-22 A | 2025-09-26 A | DDD2850, DDD2900, P2.L2.SMT.1070 | 100% |  |
| P2.L2.SMT.1130 |  | Test/Inspect Duct & Piping / L2 - S. Mech Tower | 5d | 2025-09-22 A | 2025-09-26 A | P2.L2.SMT.1100, P2.L2.SMT.1105 | 100% |  |
| P2.L2.SMT.1010 |  | CMU - Lay Block / L2 - S. Mech Tower | 10d | 2025-09-25 A | 2025-10-03 A | P2.L1.S.1050, P2.L2.SMT.1000 | 100% |  |
| P2.L2.SMT.1090 |  | Panelboards, Interconnect Wiring, and Remaining Room Buildout of All Elec/FA Systems / L2 - S. Mech Tower | 10d | 2025-09-29 A | 2025-11-12 A | BP1.262.3.200, BP1.262.3.100, P2.L2.SMT.1080 | 100% |  |
| P2.L2.SMT.1050 |  | CMU - Point & Patch / L2 - S. Mech Tower | 10d | 2025-10-03 A | 2025-10-06 A | P2.L2.SMT.1020, P2.L2.SMT.1040, P2.L2.SMT.1030 | 100% |  |
| P2.L2.SMT.1040 |  | Paint - CMU Block Fill / L2 - S. Mech Tower | 10d | 2025-10-06 A | 2025-10-17 A | P2.L2.SMT.1010 | 100% |  |
| P2.L2.SMT.1060 |  | Paint Prime & 1st Coat - CMU / L2 - S. Mech Tower | 10d | 2025-10-06 A | 2025-10-17 A | P2.L2.SMT.1050 SS | 100% |  |
| P2.L2.SMT.1140 |  | Pull Wire - In From Distribution Panels / Out to Branch Circuits / L2 - S. Mech Tower | 5d | 2025-10-27 A | 2025-12-05 | P2.L2.SMT.1090 |  | 35d |
| P2.L2.SMT.1160 |  | Electrical Tie in to Equipment / L2 - S. Mech Tower | 5d | 2025-10-27 A | 2025-12-12 | P2.L2.SMT.1140, P2.L2.SMT.1070 |  | 209d |
| P2.L2.SMT.1120 |  | BAS - Equip Tie In / L2 - S. Mech Tower | 5d | 2025-12-01 | 2025-12-05 | P2.L2.SMT.1070, P2.L2.SMT.1060 |  | 104d |
| P2.L2.SMT.1170 |  | Test & Terminate / L2 - S. Mech Tower | 5d | 2025-12-08 | 2025-12-12 | P2.L2.SMT.1140 |  | 35d |
| P2.L2.SMT.1180 |  | Paint - Finish Coat / L2 - S. Mech Tower | 2d | 2025-12-15 | 2025-12-16 | P2.L2.SMT.1170 |  | 35d |
| P2.L2.SMT.1190 |  | Trim All MEPF Finishes / L2 - S. Mech Tower | 2d | 2025-12-17 | 2025-12-18 | BP1.233.3.410, P2.L2.SMT.1180 |  | 35d |
| P2.L2.SMT.1250 |  | Prep Flooring - Epoxy Floors / L2 - S. Mech Tower | 2d | 2025-12-19 | 2025-12-22 | P2.L2.SMT.1190 |  | 35d |
| P2.L2.SMT.1200 |  | Flooring - Epoxy Floors / L2 - S. Mech Tower | 2d | 2025-12-23 | 2025-12-24 | P2.L2.SMT.1190, P2.L2.SMT.1250 |  | 35d |
| P2.L2.SMT.1210 |  | Doors & Hardware / L2 - S. Mech Tower | 2d | 2025-12-26 | 2025-12-29 | P2.L2.SMT.1200 |  | 89d |

| ID | WBS | Task | Duration | Start | Finish | Predecessors | Complete | Total float |
| --- | --- | --- | --- | --- | --- | --- | --- | --- |
| P2.L2.SMT.1110 |  | HVAC Piping - Equip Tie In / L2 - S. Mech Tower | 10d | 2026-01-28 | 2026-02-10 | P2.L2.SMT.1070, CX.B2.HYDR.1000 |  | 54d |
| P2.L2.SMT.1150 |  | Insulate HVAC / Plumbing Pipe / L2 - S. Mech Tower | 5d | 2026-02-11 | 2026-02-17 | P2.L2.SMT.1110, P2.L2.SMT.1130 |  | 54d |
| P2.L2.SMT.1350 |  | Wall Protection / L2 - S. Mech Tower | 5d | 2026-02-19 | 2026-02-25 | P2.L2.SMT.1180, BP7.102.3.300 |  | 48d |
| P2.L2.SMT.1220 |  | Trades Inspect & Verify R/I Work Completed to Specs / L2 - S. Mech Tower | 5d | 2026-02-26 | 2026-03-04 | P2.L2.SMT.1120, P2.L2.SMT.1150, P2.L2.SMT.1210, P2.L2.SMT.1350 |  | 48d |
| P2.L2.SMT.1240 |  | Energize Elec Panels - Lock Doors and Limit Access / L2 - S. Mech Tower | 5d | 2026-03-05 | 2026-03-11 | P2.L2.SMT.1220, CX.B2.SWGR.1010, CX.B2.MVEE.1010 |  | 48d |
| P2.L2.SMT.1230 |  | HVAC System Ready for Start Up / L2 - S. Mech Tower | 0d | 2026-03-11 | 2026-03-11 | P2.L2.SMT.1160 FF, P2.L2.SMT.1240 |  | 148d |
|  | 8 | **East Mechanical Tower (3.5K SF) / Rough In & Finish / Level 2** |  | 2025-03-18 | 2026-03-17 |  |  |  |
| P2.L2.EMT.1250 |  | Quench Vent Piping / L2 - E. Mech Tower | 20d | 2025-03-18 A | 2025-04-09 A | P2.L2.EMT.1060, P2.L2.EMT.1260 | 100% |  |
| P2.L2.EMT.1070 |  | Set & Connect - Mech Equipment / L2 - E. Mech Tower | 10d | 2025-03-24 A | 2025-03-26 A | P2.2.03.630 | 100% |  |
| P2.L2.EMT.1020 |  | In Wall - Electrical - CMU / L2 - E. Mech Tower | 10d | 2025-07-25 A | 2025-07-27 A | P2.L2.EMT.1010 SS | 100% |  |
| P2.L2.EMT.1030 |  | In Wall - Mech/Plumbing - CMU / L2 - E. Mech Tower | 10d | 2025-07-25 A | 2025-07-27 A | P2.L2.EMT.1010 SS | 100% |  |
| P2.L2.EMT.1000 |  | Insulation - Exterior Wall Assembly / L2 - E. Mech Tower | 5d | 2025-08-11 A | 2025-08-15 A | P2.FAC.2.Z3.140 | 100% |  |
| P2.L2.EMT.1010 |  | CMU - Lay Block / L2 - E. Mech Tower | 10d | 2025-09-08 A | 2025-09-12 A | P2.L1.N.1050, P2.L2.EMT.1000 | 100% |  |
| P2.L2.EMT.1040 |  | Paint - CMU Block Fill / L2 - E. Mech Tower | 10d | 2025-09-18 A | 2025-09-25 A | P2.L2.EMT.1010 | 100% |  |
| P2.L2.EMT.1050 |  | CMU - Point & Patch / L2 - E. Mech Tower | 10d | 2025-09-18 A | 2025-09-25 A | P2.L2.EMT.1040, P2.L2.EMT.1030, P2.L2.EMT.1020 | 100% |  |
| P2.L2.EMT.1100 |  | HVAC Piping Connections to Shaft Riser / L2 - E. Mech Tower | 20d | 2025-09-22 A | 2025-09-26 A | DDD2700, DDD2750, DDD2400, P2.L2.EMT.1070 | 100% |  |
| P2.L2.EMT.1105 |  | HVAC Duct Connections to Shaft Riser / L2 - E. Mech Tower | 5d | 2025-09-22 A | 2025-09-26 A | DDD2700, DDD2750, DDD2400, P2.L2.EMT.1070 | 100% |  |
| P2.L2.EMT.1080 |  | Set & Connect - Elect Panels and Equipment / L2 - E. Mech Tower | 5d | 2025-09-29 A | 2025-10-31 A | P2.L2.EMT.1060 | 100% |  |
| P2.L2.EMT.1130 |  | Test/Inspect Duct & Piping / L2 - E. Mech Tower | 5d | 2025-09-29 A | 2025-09-30 A | P2.L2.EMT.1105, P2.L2.EMT.1100 | 100% |  |
| P2.L2.EMT.1060 |  | Paint Prime & 1st Coat - CMU / L2 - E. Mech Tower | 10d | 2025-10-01 A | 2025-10-10 A | P2.L2.EMT.1050 SS | 100% |  |
| P2.L2.EMT.1120 |  | BAS - Equip Tie In / L2 - E. Mech Tower | 5d | 2025-10-15 A | 2025-10-21 A | P2.L2.EMT.1070, P2.L2.EMT.1060 | 100% |  |
| FRG.P2.L2.EMT.1010 |  | AHU Piping Install / L2 - E. Mech Tower - FRAGNET | 10d | 2025-11-14 A | 2025-11-28 A | FRG.P2.L1.EMT.1000 | 100% |  |
| P2.L2.EMT.1140 |  | Pull Wire - In From Distribution Panels / Out to Branch Circuits / L2 - E. Mech Tower | 5d | 2025-11-15 A | 2025-11-30 A | P2.L2.EMT.1090 | 100% |  |
| P2.L2.EMT.1090 |  | Panelboards, Interconnect Wiring, and Remaining Room Buildout of All Elec/FA Systems / L2 - E. Mech Tower | 10d | 2025-12-01 | 2025-12-12 | BP1.262.3.100, BP1.262.3.200, P2.L2.EMT.1080 |  | 87d |
| P2.L2.EMT.1200 |  | Flooring Prep - Epoxy Floors / L2 - E. Mech Tower | 3d | 2025-12-08 | 2025-12-10 | P2.L2.EMT.1080, P2.L1.EMT.1200 |  | 48d |
| P2.L2.EMT.1260 |  | Flooring - Epoxy Floors / L2 - E. Mech Tower | 2d | 2025-12-11 | 2025-12-12 | P2.L2.EMT.1200 |  | 48d |
| P2.L2.EMT.1160 |  | Electrical Tie in to Equipment / L2 - E. Mech Tower | 5d | 2025-12-15 | 2025-12-19 | P2.L2.EMT.1140, P2.L2.EMT.1070 |  | 204d |
| P2.L2.EMT.1170 |  | Test & Terminate / L2 - E. Mech Tower | 5d | 2025-12-15 | 2025-12-19 | P2.L2.EMT.1140 |  | 87d |
| P2.L2.EMT.1180 |  | Paint - Finish Coat / L2 - E. Mech Tower | 2d | 2025-12-22 | 2025-12-23 | P2.L2.EMT.1170 |  | 87d |
| P2.L2.EMT.1190 |  | Trim All MEPF Finishes / L2 - E. Mech Tower | 2d | 2025-12-24 | 2025-12-26 | BP1.233.3.410, P2.L2.EMT.1180 |  | 88d |
| P2.L2.EMT.1210 |  | Doors & Hardware / L2 - E. Mech Tower | 2d | 2025-12-29 | 2025-12-30 | P2.L2.EMT.1190 |  | 88d |
| P2.L2.EMT.1110 |  | HVAC Piping - Equip Tie In / L2 - E. Mech Tower | 20d | 2026-01-28 | 2026-02-24 | P2.L2.EMT.1070, CX.B2.HYDR.1000 |  | 44d |
| P2.L2.EMT.1340 |  | Wall Protection / L2 - E. Mech Tower | 5d | 2026-02-19 | 2026-02-25 | P2.L2.EMT.1180, BP7.102.3.300 |  | 48d |
| P2.L2.EMT.1150 |  | Insulate HVAC / Plumbing Pipe / L2 - E. Mech Tower | 5d | 2026-02-25 | 2026-03-03 | P2.L2.EMT.1110, P2.L2.EMT.1130 |  | 44d |
| P2.L2.EMT.1220 |  | Trades Inspect & Verify R/I Work Completed to Specs / L2 - E. Mech Tower | 5d | 2026-03-04 | 2026-03-10 | P2.L2.EMT.1210, P2.L2.EMT.1120, P2.L2.EMT.1150, P2.L2.EMT.1340 |  | 44d |
| P2.L2.EMT.1240 |  | Energize Elec Panels - Lock Doors and Limit Access / L2 - E. Mech Tower | 5d | 2026-03-11 | 2026-03-17 | P2.L2.EMT.1220, CX.B2.SWGR.1010, CX.B2.MVEE.1010, FRG.P2.L2.EMT.1010 |  | 44d |
| P2.L2.EMT.1230 |  | HVAC System Ready for Start Up / L2 - E. Mech Tower | 0d | 2026-03-17 | 2026-03-17 | P2.L2.EMT.1160 FF, P2.L2.EMT.1240, FRG.P2.L2.EMT.1010 |  | 144d |
|  | L3 | **L3 / BUILDOUT** |  | 2025-01-27 | 2026-11-20 |  |  |  |
|  | L3 | **CORE & SUPPORT SPACES / LEVEL 3** |  | 2025-01-27 | 2026-11-20 |  |  |  |
|  | 2 | **ROUGH IN - Core & Support Spaces / Level 3** |  | 2025-01-27 | 2026-04-01 |  |  |  |
|  | Z11 | **South (12.5K SF) / Level 3** |  | 2025-01-27 | 2026-03-24 |  |  |  |
| P2.L3.S.1000 |  | Layout - All Trades / L3 / South | 5d | 2025-01-27 A | 2025-03-24 A | P2.4.03.610 | 100% |  |
| P2.L3.S.1010 |  | Framing - Top Track / L3 / South | 10d | 2025-01-27 A | 2025-02-07 A | P2.L2.S.1010, P2.L3.S.1000 FF+3d | 100% |  |
| P2.L3.S.1090 |  | Framing - Priority Walls & Door Frames / L3 / South | 10d | 2025-02-11 A | 2025-02-28 A | P2.L3.S.1030, P2.L3.S.1010, P2.L2.S.1090 | 100% |  |
| P2.L3.S.1130 |  | Framing - Priority Walls - AHJ Inspections / | 5d | 2025-02-19 A | 2025-03-31 A | P2.L3.S.1090 | 100% |  |
| P2.L3.S.1160 |  | Spray/Seal/Firestop - Head of Wall - Priority Walls / L3 / South | 5d | 2025-02-24 A | 2025-02-28 A | P2.L3.S.1140 FF | 100% |  |
| P2.L3.S.1020 |  | OH - Structural Supports (All Trades) / L3 / South | 5d | 2025-03-10 A | 2025-03-14 A | P2.L3.S.1000, BP1.149.3.100 | 100% |  |
| P2.L3.S.1030 |  | OH - MEPF - Hangers & Supports / L3 / South | 10d | 2025-03-10 A | 2025-03-21 A | P2.BIM.L3.40.140 FF, P2.L3.S.1000 | 100% |  |
| P2.L3.S.1140 |  | Hang/Tape/Finish - Priority Walls / L3 / South | 10d | 2025-03-28 A | 2025-04-18 A | P2.L3.S.1130, P2.L3.S.1020 | 100% |  |
| P2.L3.S.1170 |  | OH - Fire Suppression / L3 / South | 10d | 2025-04-01 A | 2025-04-16 A | P2.L3.S.1030 | 100% |  |
| P2.L3.S.1180 |  | OH - Plumbing Piping / L3 / South | 20d | 2025-04-10 A | 2025-05-29 A | P2.L3.S.1150, P2.L3.S.1030, P2.L2.S.1180 | 100% |  |
| P2.L3.S.1150 |  | Paint Prime & 1st Coat - Priority Walls / L3 / South | 10d | 2025-05-01 A | 2025-05-14 A | P2.L3.S.1160 SS | 100% |  |
| P2.L3.S.1210 |  | OH - Hang Duct - HP Mains / L3 / South | 15d | 2025-05-08 A | 2025-07-31 A | P2.L3.S.1200, P2.L3.S.1030, P2.L2.S.1210 | 100% |  |
| P2.L3.S.1220 |  | OH - HVAC Piping / L3 / South | 20d | 2025-05-08 A | 2025-05-29 A | P2.L3.S.1030, P2.L3.S.1170 | 100% |  |
| P2.L3.S.1190 |  | OH - Electrical - 480/277v Distribution / L3 / South | 10d | 2025-05-15 A | 2025-06-06 A | P2.L3.S.1150, P2.L3.S.1030 | 100% |  |
| P2.L3.S.1200 |  | Firestop - Thru Wall - Priority Walls / L3 / South | 5d | 2025-05-29 A | 2025-06-30 A | P2.L3.S.1150 | 100% |  |
| P2.L3.S.1230 |  | OH - Electrical - 208/120v Branch / L3 / South | 10d | 2025-05-29 A | 2025-07-15 A | P2.L3.S.1190 | 100% |  |
| P2.L3.S.1240 |  | OH - Plumbing - Test / L3 / South | 10d | 2025-05-29 A | 2025-07-28 A | P2.L3.S.1180 | 100% |  |
| P2.L3.S.1300 |  | OH - Hang Duct - LP Branch / L3 / South | 10d | 2025-06-16 A | 2025-08-28 A | P2.L3.S.1260 | 100% |  |
| P2.L3.S.1390 |  | OH - Conduit - Low Volt - Telecom / L3 / South | 10d | 2025-06-23 A | 2025-07-10 A | P2.L3.S.1350 | 100% |  |
| P2.L3.S.1260 |  | OH - DALT - HP Mains / L3 / South | 10d | 2025-06-30 A | 2025-08-25 A | P2.L3.S.1210 | 100% |  |
| P2.L3.S.1280 |  | OH - Insulate Plumbing / L3 / South | 10d | 2025-07-16 A | 2025-07-29 A | P2.L3.S.1240 | 100% |  |
| P2.L3.S.1270 |  | OH - HVAC Piping - Test / L3 / South | 10d | 2025-07-23 A | 2025-08-18 A | P2.L3.S.1220 | 100% |  |
| P2.L3.S.1310 |  | OH - Set & Connect Mech Equipment / L3 / South | 10d | 2025-07-23 A | 2025-07-29 A | P2.L3.S.1260 | 100% |  |
| P2.L3.S.1290 |  | OH - Insulate HP Duct / L3 / South | 10d | 2025-08-25 A | 2025-08-26 A | P2.L3.S.1260 | 100% |  |
| P2.L3.S.1370 |  | OH - Conduit - Low Volt - BAS/Controls / L3 / South | 10d | 2025-08-29 A | 2025-12-11 | P2.L3.S.1340, P2.L3.S.1310 | 10% | 80d |
| P2.L3.S.1320 |  | OH - Electrical - Equip Tie In / L3 / South | 10d | 2025-09-02 A | 2025-09-16 A | P2.L3.S.1310 | 100% |  |
| P2.L3.S.1380 |  | OH - Conduit - Low Volt - Fire Alarm / L3 / South | 10d | 2025-09-16 A | 2025-10-21 A | P2.L3.S.1350, P2.L3.S.1310 | 100% |  |
| P2.L3.S.1340 |  | OH - Insulate HVAC Pipe / L3 / South | 10d | 2025-09-22 A | 2025-10-13 A | P2.L3.S.1270, P2.L3.S.1290 | 100% |  |
| P2.L3.S.1250 |  | Pull Wire - Electrical - 480/277v Distribution / L3 / South | 10d | 2025-12-01 | 2025-12-12 | P2.L3.S.1190, P2.3.HE.5959.1050, P2.3.HE.5966.1050, P2.3.HE.5968.1050 |  | 89d |

| ID | WBS | Task | Duration | Start | Finish | Predecessors | Complete | Total float |
| --- | --- | --- | --- | --- | --- | --- | --- | --- |
| P2.L3.S.1350 |  | OH - Insulate LP Duct / L3 / South | 10d | 2025-12-01 | 2025-12-12 | P2.L3.S.1300 |  | 24d |
| P2.L3.S.1400 |  | OH - Conduit - Low Volt - Security / L3 / South | 10d | 2025-12-01 | 2025-12-12 | P2.L3.S.1340 |  | 79d |
| P2.L3.S.1410 |  | OH - Conduit - Low Volt - Medical Services/Nurse Call (?) / L3 / South | 10d | 2025-12-15 | 2025-12-29 | P2.L3.S.1350 |  | 69d |
| P2.L3.S.1420 |  | Framing - Balance of Framing & Door Frames / L3 / South | 10d | 2025-12-15 | 2025-12-29 | P2.L3.S.1280, P2.L3.S.1390, P2.L1.LC.1420 |  | 24d |
| P2.L3.S.1430 |  | In Wall - Plumbing - Framing / L3 / South | 10d | 2025-12-30 | 2026-01-13 | P2.L3.S.1420 |  | 24d |
| P2.L3.S.1440 |  | In Wall - Electrical - Framing / L3 / South | 10d | 2025-12-30 | 2026-01-13 | P2.L3.S.1230, P2.L3.S.1420 |  | 24d |
| P2.L3.S.1450 |  | In Wall - Backing/Blocking/Supports / L3 / South | 10d | 2025-12-30 | 2026-01-13 | P2.L3.S.1420 |  | 24d |
| P2.L3.S.1360 |  | Pull Wire - Electrical - 208/120v Branch & Equip / L3 / South | 10d | 2026-01-14 | 2026-01-27 | P2.L3.S.1230, P2.L3.S.1320, P2.L3.S.1440 |  | 59d |
| P2.L3.S.1460 |  | AHJ Inspections - Wall Close In / L3 / South | 5d | 2026-01-14 | 2026-01-20 | P2.L3.S.1450, P2.L3.S.1430, P2.L3.S.1440 |  | 24d |
| P2.L3.S.1330 |  | OH - HVAC Piping - Equip Tie In / L3 / South | 10d | 2026-01-28 | 2026-02-10 | P2.L3.S.1270, P2.L3.S.1310, CX.B2.HYDR.1000 |  | 49d |
| P2.L3.S.1470 |  | Hang-Tape-Finish - Walls and Hard Lid Ceilings / L3 / South | 15d | 2026-02-11 | 2026-03-03 | P2.SUM.175, P2.L3.S.1460, P2.FAC.5.Z1.190, P2.MR.EMT.9030, P2.MR.EMT.1160, P2.L2.N.1180, P2.L2.S.1470 |  | 9d |
| P2.L3.S.1480 |  | Spray/Seal/Firestop - Head of Wall / L3 / South | 10d | 2026-03-04 | 2026-03-17 | P2.L3.S.1470 |  | 24d |
| P2.L3.S.1490 |  | Firestop - Thru Wall / L3 / South | 10d | 2026-03-04 | 2026-03-17 | P2.L3.S.1470 |  | 24d |
| P2.L3.S.1500 |  | Pull Wire - Low Volt - BAS/Controls / L3 / South | 10d | 2026-03-04 | 2026-03-17 | P2.L3.S.1470, P2.L3.S.1370 |  | 24d |
| P2.L3.S.1510 |  | Pull Wire - Low Volt - Fire Alarm / L3 / South | 10d | 2026-03-04 | 2026-03-17 | P2.L3.S.1470, P2.L3.S.1380 |  | 24d |
| P2.L3.S.1520 |  | Pull Wire - Low Volt - Telecom / L3 / South | 10d | 2026-03-04 | 2026-03-17 | P2.L3.S.1470 |  | 24d |
| P2.L3.S.1530 |  | Pull Wire - Low Volt - Security / L3 / South | 10d | 2026-03-04 | 2026-03-17 | P2.L3.S.1470, P2.L3.S.1400 |  | 24d |
| P2.L3.S.1540 |  | Pull Wire - Low Volt - Medical Services/Nurse Call (?) / L3 / South | 10d | 2026-03-04 | 2026-03-17 | P2.L3.S.1470, P2.L3.S.1410 |  | 24d |
| P2.L3.S.1550 |  | Trades Inspect & Verify R/I Work Completed to Specs / L3 / South | 5d | 2026-03-18 | 2026-03-24 | P2.L3.S.1490, P2.L3.S.1480, P2.L3.S.1530, P2.L3.S.1250, P2.L3.S.1540, P2.L3.S.1360, P2.L3.S.1500, P2.L3.S.1510, P2.L3.S.1520, P2.L3.S.1330 |  | 24d |
|  | Z111 | **North (15K SF) / Level 3** |  | 2025-02-24 | 2026-04-01 |  |  |  |
| P2.L3.N.1000 |  | Layout - All Trades / L3 / North | 5d | 2025-02-24 A | 2025-03-28 A | P2.4.03.630 | 100% |  |
| P2.L3.N.1010 |  | Framing - Top Track / L3 / North | 10d | 2025-02-27 A | 2025-03-31 A | P2.L3.N.1000, P2.L2.N.1010 | 100% |  |
| P2.L3.N.1020 |  | OH - Structural Supports (All Trades) / L3 / North | 5d | 2025-03-06 A | 2025-03-12 A | P2.L3.N.1000 | 100% |  |
| P2.L3.N.1030 |  | OH - MEPF - Hangers & Supports / L3 / North | 10d | 2025-03-06 A | 2025-03-19 A | P2.L3.N.1000, P2.BIM.L3.40.140 | 100% |  |
| P2.L3.N.1090 |  | Framing - Priority Walls & Door Frames / L3 / North | 10d | 2025-03-28 A | 2025-04-25 A | P2.L3.N.1030, P2.L3.N.1010, P2.L2.N.1100 | 100% |  |
| P2.L3.N.1130 |  | Framing - Priority Walls - AHJ Inspections / L3 / North | 5d | 2025-04-09 A | 2025-04-29 A | P2.L3.N.1090 | 100% |  |
| P2.L3.N.1170 |  | OH - Fire Suppression / L3 / North | 10d | 2025-04-09 A | 2025-04-23 A | P2.L3.N.1030 | 100% |  |
| P2.L3.N.1160 |  | Spray/Seal/Firestop - Head of Wall - Priority Walls / L3 / North | 5d | 2025-04-21 A | 2025-04-25 A | P2.L3.N.1130 | 100% |  |
| P2.L3.N.1140 |  | Hang/Tape/Finish - Priority Walls / L3 / North | 10d | 2025-04-23 A | 2025-05-30 A | P2.L3.N.1020, P2.L3.N.1130, P2.L3.N.1160 FF | 100% |  |
| P2.L3.N.1180 |  | OH - Plumbing Piping / L3 / North | 20d | 2025-05-05 A | 2025-05-16 A | P2.L3.N.1030 SS+5d, P2.L2.N.1070 | 100% |  |
| P2.L3.N.1230 |  | OH - Electrical - 208/120v Branch / L3 / North | 10d | 2025-05-12 A | 2025-06-26 A | P2.L3.N.1190 | 100% |  |
| P2.L3.N.1190 |  | OH - Electrical - 480/277v Distribution / L3 / North | 10d | 2025-05-15 A | 2025-06-27 A | P2.L3.N.1030, P2.L3.N.1150 | 100% |  |
| P2.L3.N.1220 |  | OH - HVAC Piping / L3 / North | 20d | 2025-05-15 A | 2025-06-30 A | P2.L3.N.1030, P2.L3.N.1170 | 100% |  |
| P2.L3.N.1210 |  | OH - Hang Duct - HP Mains / L3 / North | 10d | 2025-05-21 A | 2025-06-30 A | P2.L3.N.1030, P2.L2.N.1060 | 100% |  |
| P2.L3.N.1240 |  | OH - Plumbing - Test / L3 / North | 10d | 2025-05-27 A | 2025-07-31 A | P2.L3.N.1180 | 100% |  |
| P2.L3.N.1150 |  | Paint Prime & 1st Coat - Priority Walls / L3 / North | 10d | 2025-06-04 A | 2025-06-18 A | P2.L3.N.1160 SS | 100% |  |
| P2.L3.N.1200 |  | Firestop - Thru Wall - Priority Walls / L3 / North | 5d | 2025-06-30 A | 2025-07-21 A | P2.L3.N.1150, P2.L3.N.1210 | 100% |  |
| P2.L3.N.1260 |  | OH - DALT - HP Mains / L3 / North | 10d | 2025-06-30 A | 2025-07-31 A | P2.L3.N.1210 | 100% |  |
| P2.L3.N.1270 |  | OH - HVAC Piping - Test / L3 / North | 5d | 2025-07-01 A | 2025-07-31 A | P2.L3.N.1220 | 100% |  |
| P2.L3.N.1280 |  | OH - Insulate Plumbing / L3 / North | 10d | 2025-07-15 A | 2025-07-25 A | P2.L3.N.1240, P2.L3.N.1200 | 100% |  |
| P2.L3.N.1290 |  | OH - Insulate HP Duct / L3 / North | 10d | 2025-07-16 A | 2025-07-29 A | P2.L3.N.1260 | 100% |  |
| P2.L3.N.1300 |  | OH - Hang Duct - LP Branch / L3 / North | 10d | 2025-07-21 A | 2025-08-28 A | P2.L3.N.1260 | 100% |  |
| P2.L3.N.1340 |  | OH - Insulate HVAC Pipe / L3 / North | 10d | 2025-07-21 A | 2025-08-01 A | P2.L3.N.1290, P2.L3.N.1270 | 100% |  |
| P2.L3.N.1310 |  | OH - Set & Connect Mech Equipment / L3 / North | 10d | 2025-07-23 A | 2025-08-04 A | P2.L3.N.1260 | 100% |  |
| P2.L3.N.1390 |  | OH - Conduit - Low Volt - Telecom / L3 / North | 10d | 2025-08-29 A | 2025-09-15 A | P2.L3.N.1350 | 100% |  |
| P2.L3.N.1320 |  | OH - Electrical - Equip Tie In / L3 / North | 10d | 2025-09-02 A | 2025-09-16 A | P2.L3.N.1310 | 100% |  |
| P2.L3.N.1380 |  | OH - Conduit - Low Volt - Fire Alarm / L3 / North | 10d | 2025-09-23 A | 2025-10-13 A | P2.L3.N.1310, P2.L3.N.1350 | 100% |  |
| P2.L3.N.1250 |  | Pull Wire - Electrical - 480/277v Distribution / L3 / North | 10d | 2025-12-01 | 2025-12-12 | P2.L3.N.1190, P2.3.HE.2937.1050, P2.3.HE.2803.1050 |  | 89d |
| P2.L3.N.1350 |  | OH - Insulate LP Duct / L3 / North | 10d | 2025-12-01 | 2025-12-12 | P2.L3.N.1300 |  | 39d |
| P2.L3.N.1370 |  | OH - Conduit - Low Volt - BAS/Controls / L3 / North | 10d | 2025-12-01 | 2025-12-12 | P2.L3.N.1310, P2.L3.N.1340 |  | 79d |
| P2.L3.N.1400 |  | OH - Conduit - Low Volt - Security / L3 / North | 10d | 2025-12-01 | 2025-12-12 | P2.L3.N.1340 |  | 79d |
| P2.L3.N.1410 |  | OH - Conduit - Low Volt - Medical Services/Nurse Call (?) / L3 / North | 10d | 2025-12-15 | 2025-12-29 | P2.L3.N.1350 |  | 69d |
| P2.L3.N.1420 |  | Framing - Balance of Framing & Door Frames / L3 / North | 10d | 2025-12-15 | 2025-12-29 | P2.L3.N.1390, P2.L3.N.1280, P2.L1.LC.1420 |  | 39d |
| P2.L3.N.1630 |  | Chair Carrier - In Wall Rough-in / L3 / North | 1d | 2025-12-29 | 2025-12-29 | P2.L3.N.1420 FF |  | 39d |
| P2.L3.N.1440 |  | In Wall - Electrical - Framing / L3 / North | 10d | 2025-12-30 | 2026-01-13 | P2.L3.N.1420, P2.L3.N.1230, P2.L3.N.1630 |  | 39d |
| P2.L3.N.1450 |  | In Wall - Backing/Blocking/Supports / L3 / North | 10d | 2025-12-30 | 2026-01-13 | P2.L3.N.1420, P2.L3.N.1630 |  | 39d |
| P2.L3.N.1360 |  | Pull Wire - Electrical - 208/120v Branch & Equip / L3 / North | 20d | 2026-01-14 | 2026-02-10 | P2.L3.N.1230, P2.L3.N.1320, P2.L3.N.1440 |  | 49d |
| P2.L3.N.1330 |  | OH - HVAC Piping - Equip Tie In / L3 / North | 10d | 2026-01-28 | 2026-02-10 | P2.L3.N.1310, P2.L3.N.1270, CX.B2.HYDR.1000 |  | 49d |
| P2.L3.N.1430 |  | In Wall - Plumbing - Framing / L3 / North | 10d | 2026-01-29 | 2026-02-11 | P2.L3.N.1420, P2.L3.N.1630, PCO.824.1170 |  | 18d |
| P2.L3.N.1460 |  | AHJ Inspections - Wall Close In / L3 / North | 5d | 2026-02-12 | 2026-02-18 | P2.L3.N.1430, P2.L3.N.1440, P2.L3.N.1450, P2.L3.N.1630 |  | 18d |
| P2.L3.N.1470 |  | Hang-Tape-Finish - Walls and Hard Lid Ceilings / L3 / North | 15d | 2026-02-19 | 2026-03-11 | P2.SUM.175, P2.L3.N.1460, P2.LR.L7.9030, P2.MR.2-8.9030, P2.MR.5-8.9030, P2.PR.EMMR.2.9030, P2.L11.EMMR.3.9030, P2.L11.5-9.9030, P2.L2.N.1180, P2.L2.S.1470 |  | 18d |
| P2.L3.N.1480 |  | Spray/Seal/Firestop - Head of Wall / L3 / North | 10d | 2026-03-12 | 2026-03-25 | P2.L3.N.1470 |  | 18d |
| P2.L3.N.1490 |  | Firestop - Thru Wall / L3 / North | 10d | 2026-03-12 | 2026-03-25 | P2.L3.N.1470 |  | 18d |
| P2.L3.N.1500 |  | Pull Wire - Low Volt - BAS/Controls / L3 / North | 10d | 2026-03-12 | 2026-03-25 | P2.L3.N.1470, P2.L3.N.1370 |  | 18d |
| P2.L3.N.1510 |  | Pull Wire - Low Volt - Fire Alarm / L3 / North | 10d | 2026-03-12 | 2026-03-25 | P2.L3.N.1470, P2.L3.N.1380 |  | 18d |
| P2.L3.N.1520 |  | Pull Wire - Low Volt - Telecom / L3 / North | 10d | 2026-03-12 | 2026-03-25 | P2.L3.N.1470, P2.L3.N.1390 |  | 18d |
| P2.L3.N.1530 |  | Pull Wire - Low Volt - Security / L3 / North | 10d | 2026-03-12 | 2026-03-25 | P2.L3.N.1470, P2.L3.N.1400 |  | 18d |
| P2.L3.N.1540 |  | Pull Wire - Low Volt - Medical Services/Nurse Call (?) / L3 / North | 10d | 2026-03-12 | 2026-03-25 | P2.L3.N.1470, P2.L3.N.1410 |  | 18d |
| P2.L3.N.1550 |  | Trades Inspect & Verify R/I Work Completed to Specs / L3 / North | 5d | 2026-03-26 | 2026-04-01 | P2.L3.N.1480, P2.L3.N.1530, P2.L3.N.1250, P2.L3.N.1540, P2.L3.N.1360, P2.L3.N.1500, P2.L3.N.1510, P2.L3.N.1520, P2.L3.N.1490, P2.L3.N.1330 |  | 18d |
|  | 1 | **House Electrical Rooms / Level 3** |  | 2025-04-21 | 2026-01-02 |  |  |  |

| ID | WBS | Task | Duration | Start | Finish | Predecessors | Complete | Total float |
| --- | --- | --- | --- | --- | --- | --- | --- | --- |
|  | 9 | **House Electrical Room - 3-5959** |  | 2025-05-12 | 2026-01-02 |  |  |  |
| P2.3.HE.5959.1010 |  | In Wall Rough In / L3 / South / 5959 | 2d | 2025-05-12 A | 2025-05-16 A | P2.3.HE.5959.1000 | 100% |  |
| P2.3.HE.5959.1000 |  | Framing and Blocking / L3 / South / 5959 | 3d | 2025-05-19 A | 2025-05-21 A | P2.L3.S.1090 | 100% |  |
| P2.3.HE.5959.1020 |  | Inspections - Wall Close In / L3 / South / 5959 | 2d | 2025-05-21 A | 2025-05-21 A | P2.3.HE.5959.1010 | 100% |  |
| P2.3.HE.5959.1030 |  | Hang-Tape-Finish / L3 / South / 5959 | 5d | 2025-05-21 A | 2025-05-26 A | P2.3.HE.5959.1020, P2.FAC.2.Z1.180, P2.L11.5-9.140 | 100% |  |
| P2.3.HE.5959.1040 |  | Paint Prime & 1st Coat / L3 / South / 5959 | 2d | 2025-06-10 A | 2025-06-12 A | P2.3.HE.5959.1030 | 100% |  |
| P2.3.HE.5959.1050 |  | Cans/Troughs/Backboxes/XFMRs / L3 / South / 5959 | 5d | 2025-06-17 A | 2025-06-24 A | P2.3.HE.5959.1040 | 100% |  |
| P2.3.HE.5959.1060 |  | Risers and OH Conduit Connections / L3 / South / 5959 | 5d | 2025-06-24 A | 2025-06-30 A | P2.3.HE.5959.1050 | 100% |  |
| P2.3.HE.5959.1070 |  | Pull Wire - In From Distribution Panels / Out to Branch Circuits / L3 / South / 5959 | 5d | 2025-11-03 A | 2025-11-07 A | P2.3.HE.5959.1060 | 100% |  |
| P2.3.HE.5959.1080 |  | Panelboards, Interconnect Wiring, and Remaining Room Buildout of All Systems / L3 / South / 5959 | 10d | 2025-12-01 | 2025-12-12 | BP1.262.3.100, BP1.262.3.220, P2.3.HE.5959.1060 |  | 26d |
| P2.3.HE.5959.1090 |  | Test & Terminate / L3 / South / 5959 | 5d | 2025-12-15 | 2025-12-19 | P2.3.HE.5959.1070, P2.3.HE.5959.1080 |  | 26d |
| P2.3.HE.5959.1100 |  | Paint - Finish Coat / L3 / South / 5959 | 2d | 2025-12-22 | 2025-12-23 | P2.3.HE.5959.1090 |  | 26d |
| P2.3.HE.5959.1110 |  | Trim All MEPF Finishes / L3 / South / 5959 | 2d | 2025-12-24 | 2025-12-26 | BP1.233.3.410, P2.3.HE.5959.1100 |  | 26d |
| P2.3.HE.5959.1120 |  | Flooring / L3 / South / 5959 | 2d | 2025-12-29 | 2025-12-30 | P2.3.HE.5959.1110 |  | 26d |
| P2.3.HE.5959.1130 |  | Doors & Hardware / L3 / South / 5959 | 2d | 2025-12-31 | 2026-01-02 | P2.3.HE.5959.1120 |  | 26d |
| P2.3.HE.5959.1140 |  | Panels Ready to Energize - Lock Doors and Limit Access / L3 / South / 5959 | 0d | 2026-01-02 | 2026-01-02 | P2.3.HE.5959.1130 FF, P2.3.HE.5959.1090 |  | 26d |
|  | 1 | **House Electrical Room - 3-2937** |  | 2025-04-21 | 2026-01-02 |  |  |  |
| P2.3.HE.2937.1010 |  | In Wall Rough In / L3 / North / 2937 | 2d | 2025-04-21 A | 2025-04-28 A | P2.3.HE.2937.1000 | 100% |  |
| P2.3.HE.2937.1020 |  | Inspections - Wall Close In / L3 / North / 2937 | 2d | 2025-04-24 A | 2025-04-24 A | P2.3.HE.2937.1010 | 100% |  |
| P2.3.HE.2937.1000 |  | Framing and Blocking / L3 / North / 2937 | 3d | 2025-04-28 A | 2025-04-29 A | P2.L3.N.1090 | 100% |  |
| P2.3.HE.2937.1030 |  | Hang-Tape-Finish / L3 / North / 2937 | 5d | 2025-04-28 A | 2025-05-07 A | P2.3.HE.2937.1020, P2.MR.W.160 | 100% |  |
| P2.3.HE.2937.1040 |  | Paint Prime & 1st Coat / L3 / North / 2937 | 2d | 2025-05-08 A | 2025-05-09 A | P2.3.HE.2937.1030 | 100% |  |
| P2.3.HE.2937.1050 |  | Cans/Troughs/Backboxes/XFMRs / L3 / North / 2937 | 5d | 2025-06-16 A | 2025-06-23 A | P2.3.HE.2937.1040 | 100% |  |
| P2.3.HE.2937.1060 |  | Risers and OH Conduit Connections / L3 / North / 2937 | 5d | 2025-06-18 A | 2025-06-26 A | P2.3.HE.2937.1050 | 100% |  |
| P2.3.HE.2937.1070 |  | Pull Wire - In From Distribution Panels / Out to Branch Circuits / L3 / North / 2937 | 5d | 2025-11-03 A | 2025-11-07 A | P2.3.HE.2937.1060 | 100% |  |
| P2.3.HE.2937.1080 |  | Panelboards, Interconnect Wiring, and Remaining Room Buildout of All Systems / L3 / North / 2937 | 10d | 2025-12-01 | 2025-12-12 | P2.3.HE.2937.1060, BP1.262.3.100, BP1.262.3.220 |  | 26d |
| P2.3.HE.2937.1090 |  | Test & Terminate / L3 / North / 2937 | 5d | 2025-12-15 | 2025-12-19 | P2.3.HE.2937.1070, P2.3.HE.2937.1080 |  | 26d |
| P2.3.HE.2937.1100 |  | Paint - Finish Coat / L3 / North / 2937 | 2d | 2025-12-22 | 2025-12-23 | P2.3.HE.2937.1090 |  | 26d |
| P2.3.HE.2937.1110 |  | Trim All MEPF Finishes / L3 / North / 2937 | 2d | 2025-12-24 | 2025-12-26 | P2.3.HE.2937.1100, BP1.233.3.410 |  | 26d |
| P2.3.HE.2937.1120 |  | Flooring / L3 / North / 2937 | 2d | 2025-12-29 | 2025-12-30 | P2.3.HE.2937.1110 |  | 26d |
| P2.3.HE.2937.1130 |  | Doors & Hardware / L3 / North / 2937 | 2d | 2025-12-31 | 2026-01-02 | P2.3.HE.2937.1120 |  | 26d |
| P2.3.HE.2937.1140 |  | Panels Ready to Energize - Lock Doors and Limit Access / L3 / North / 2937 | 0d | 2026-01-02 | 2026-01-02 | P2.3.HE.2937.1090, P2.3.HE.2937.1130 FF |  | 26d |
|  | 8 | **House Electrical Room - 3-2803** |  | 2025-05-05 | 2026-01-02 |  |  |  |
| P2.3.HE.2803.1010 |  | In Wall Rough In / L3 / North / 2803 | 2d | 2025-05-05 A | 2025-05-09 A | P2.3.HE.2803.1000 | 100% |  |
| P2.3.HE.2803.1000 |  | Framing and Blocking / L3 / North / 2803 | 3d | 2025-05-12 A | 2025-05-16 A | P2.L3.N.1090 | 100% |  |
| P2.3.HE.2803.1020 |  | Inspections - Wall Close In / L3 / North / 2803 | 2d | 2025-05-12 A | 2025-05-15 A | P2.3.HE.2803.1010 | 100% |  |
| P2.3.HE.2803.1030 |  | Hang-Tape-Finish / L3 / North / 2803 | 5d | 2025-05-16 A | 2025-05-26 A | P2.3.HE.2803.1020, P2.FAC.2.Z1.190, P2.MR.2-8.140 | 100% |  |
| P2.3.HE.2803.1040 |  | Paint Prime & 1st Coat / L3 / North / 2803 | 2d | 2025-05-26 A | 2025-05-30 A | P2.3.HE.2803.1030 | 100% |  |
| P2.3.HE.2803.1050 |  | Cans/Troughs/Backboxes/XFMRs / L3 / North / 2803 | 5d | 2025-07-21 A | 2025-07-24 A | P2.3.HE.2803.1040 | 100% |  |
| P2.3.HE.2803.1060 |  | Risers and OH Conduit Connections / L3 / North / 2803 | 5d | 2025-08-18 A | 2025-08-21 A | P2.3.HE.2803.1050 | 100% |  |
| P2.3.HE.2803.1070 |  | Pull Wire - In From Distribution Panels / Out to Branch Circuits / L3 / North / 2803 | 5d | 2025-11-05 A | 2025-11-11 A | P2.3.HE.2803.1060 | 100% |  |
| P2.3.HE.2803.1080 |  | Panelboards, Interconnect Wiring, and Remaining Room Buildout of All Systems / L3 / North / 2803 | 10d | 2025-12-01 | 2025-12-12 | BP1.262.3.100, BP1.262.3.220, P2.3.HE.2803.1060 |  | 26d |
| P2.3.HE.2803.1090 |  | Test & Terminate / L3 / North / 2803 | 5d | 2025-12-15 | 2025-12-19 | P2.3.HE.2803.1070, P2.3.HE.2803.1080 |  | 26d |
| P2.3.HE.2803.1100 |  | Paint - Finish Coat / L3 / North / 2803 | 2d | 2025-12-22 | 2025-12-23 | P2.3.HE.2803.1090 |  | 26d |
| P2.3.HE.2803.1110 |  | Trim All MEPF Finishes / L3 / North / 2803 | 2d | 2025-12-24 | 2025-12-26 | BP1.233.3.410, P2.3.HE.2803.1100 |  | 26d |
| P2.3.HE.2803.1120 |  | Flooring / L3 / North / 2803 | 2d | 2025-12-29 | 2025-12-30 | P2.3.HE.2803.1110 |  | 26d |
| P2.3.HE.2803.1130 |  | Doors & Hardware / L3 / North / 2803 | 2d | 2025-12-31 | 2026-01-02 | P2.3.HE.2803.1120 |  | 26d |
| P2.3.HE.2803.1140 |  | Panels Ready to Energize - Lock Doors and Limit Access / L3 / North / 2803 | 0d | 2026-01-02 | 2026-01-02 | P2.3.HE.2803.1130 FF, P2.3.HE.2803.1090 |  | 26d |
|  | 7 | **House Electrical Room - 3-2845** |  | 2025-05-02 | 2026-01-02 |  |  |  |
| P2.3.HE.5966.1010 |  | In Wall Rough In / L3 / South / 5966 | 2d | 2025-05-02 A | 2025-05-09 A | P2.3.HE.5966.1000 | 100% |  |
| P2.3.HE.5966.1000 |  | Framing and Blocking / L3 / South / 5966 | 3d | 2025-05-14 A | 2025-05-21 A | P2.L3.N.1090 | 100% |  |
| P2.3.HE.59661020 |  | Inspections - Wall Close In / L3 / South / 5966 | 2d | 2025-05-21 A | 2025-05-21 A | P2.3.HE.5966.1010 | 100% |  |
| P2.3.HE.5966.1030 |  | Hang-Tape-Finish / L3 / South / 5966 | 5d | 2025-05-22 A | 2025-05-26 A | P2.3.HE.59661020, P2.MR.C.160 | 100% |  |
| P2.3.HE.5966.1040 |  | Paint Prime & 1st Coat / L3 / South / 5966 | 2d | 2025-06-05 A | 2025-06-09 A | P2.3.HE.5966.1030 | 100% |  |
| P2.3.HE.5966.1050 |  | Cans/Troughs/Backboxes/XFMRs / L3 / South / 5966 | 5d | 2025-06-16 A | 2025-06-24 A | P2.3.HE.5966.1040 | 100% |  |
| P2.3.HE.5966.1060 |  | Risers and OH Conduit Connections / L3 / South / 5966 | 5d | 2025-06-23 A | 2025-06-30 A | P2.3.HE.5966.1050 | 100% |  |
| P2.3.HE.5966.1070 |  | Pull Wire - In From Distribution Panels / Out to Branch Circuits / L3 / South / 5966 | 5d | 2025-11-03 A | 2025-11-07 A | P2.3.HE.5966.1060 | 100% |  |
| P2.3.HE.5966.1080 |  | Panelboards, Interconnect Wiring, and Remaining Room Buildout of All Systems / L3 / South / 5966 | 10d | 2025-12-01 | 2025-12-12 | BP1.262.3.100, BP1.262.3.220, P2.3.HE.5966.1060 |  | 26d |
| P2.3.HE.5966.1090 |  | Test & Terminate / L3 / South / 5966 | 5d | 2025-12-15 | 2025-12-19 | P2.3.HE.5966.1080, P2.3.HE.5966.1070 |  | 26d |
| P2.3.HE.5966.1100 |  | Paint - Finish Coat / L3 / South / 5966 | 2d | 2025-12-22 | 2025-12-23 | P2.3.HE.5966.1090 |  | 26d |
| P2.3.HE.5966.1110 |  | Trim All MEPF Finishes / L3 / South / 5966 | 2d | 2025-12-24 | 2025-12-26 | BP1.233.3.410, P2.3.HE.5966.1100 |  | 26d |
| P2.3.HE.5966.1120 |  | Flooring / L3 / South / 5966 | 2d | 2025-12-29 | 2025-12-30 | P2.3.HE.5966.1110 |  | 26d |
| P2.3.HE.5966.1130 |  | Doors & Hardware / L3 / South / 5966 | 2d | 2025-12-31 | 2026-01-02 | P2.3.HE.5966.1120 |  | 26d |
| P2.3.HE.5966.1140 |  | Panels Ready to Energize - Lock Doors and Limit Access / L3 / South / 5966 | 0d | 2026-01-02 | 2026-01-02 | P2.3.HE.5966.1130 FF, P2.3.HE.5966.1090 |  | 26d |
|  | 6 | **House Electrical Room - Panel Closet 3-5968** |  | 2025-05-07 | 2026-01-02 |  |  |  |
| P2.3.HE.5968.1010 |  | In Wall Rough In / L3 / South / 5968 | 2d | 2025-05-07 A | 2025-05-14 A | P2.3.HE.5968.1000 | 100% |  |
| P2.3.HE.5968.1000 |  | Framing and Blocking / L3 / South / 5968 | 3d | 2025-05-15 A | 2025-05-20 A | P2.L3.S.1090 | 100% |  |
| P2.3.HE.5968.1030 |  | Hang-Tape-Finish / L3 / South / 5968 | 5d | 2025-05-20 A | 2025-05-23 A | P2.3.HE.5968.1020, P2.LR.L7.170 | 100% |  |
| P2.3.HE.5968.1020 |  | Inspections - Wall Close In / L3 / South / 5968 | 2d | 2025-05-22 A | 2025-05-22 A | P2.3.HE.5968.1010 | 100% |  |
| P2.3.HE.5968.1040 |  | Paint Prime & 1st Coat / L3 / South / 5968 | 2d | 2025-05-26 A | 2025-05-30 A | P2.3.HE.5968.1030 | 100% |  |

| ID | WBS | Task | Duration | Start | Finish | Predecessors | Complete | Total float |
| --- | --- | --- | --- | --- | --- | --- | --- | --- |
| P2.3.HE.5968.1050 |  | Cans/Troughs/Backboxes/XFMRs / L3 / South / 5968 | 5d | 2025-06-16 A | 2025-06-23 A | P2.3.HE.5968.1040 | 100% |  |
| P2.3.HE.5968.1060 |  | Risers and OH Conduit Connections / L3 / South / 5968 | 5d | 2025-06-25 A | 2025-06-27 A | P2.3.HE.5968.1050 | 100% |  |
| P2.3.HE.5968.1070 |  | Pull Wire - In From Distribution Panels / Out to Branch Circuits / L3 / South / 5968 | 5d | 2025-11-10 A | 2025-11-14 A | P2.3.HE.5968.1060 | 100% |  |
| P2.3.HE.5968.1080 |  | Panelboards, Interconnect Wiring, and Remaining Room Buildout of All Systems / L3 / South / 5968 | 10d | 2025-12-01 | 2025-12-12 | BP1.262.3.100, BP1.262.3.220, P2.3.HE.5968.1060 |  | 26d |
| P2.3.HE.5968.1090 |  | Test & Terminate / L3 / South / 5968 | 5d | 2025-12-15 | 2025-12-19 | P2.3.HE.5968.1080, P2.3.HE.5968.1070 |  | 26d |
| P2.3.HE.5968.1100 |  | Paint - Finish Coat / L3 / South / 5968 | 2d | 2025-12-22 | 2025-12-23 | P2.3.HE.5968.1090 |  | 26d |
| P2.3.HE.5968.1110 |  | Trim All MEPF Finishes / L3 / South / 5968 | 2d | 2025-12-24 | 2025-12-26 | BP1.233.3.410, P2.3.HE.5968.1100 |  | 26d |
| P2.3.HE.5968.1120 |  | Flooring / L3 / South / 5968 | 2d | 2025-12-29 | 2025-12-30 | P2.3.HE.5968.1110 |  | 26d |
| P2.3.HE.5968.1130 |  | Doors & Hardware / L3 / South / 5968 | 2d | 2025-12-31 | 2026-01-02 | P2.3.HE.5968.1120 |  | 26d |
| P2.3.HE.5968.1140 |  | Panels Ready to Energize - Lock Doors and Limit Access / L3 / South / 5968 | 0d | 2026-01-02 | 2026-01-02 | P2.3.HE.5968.1130 FF, P2.3.HE.5968.1090 |  | 26d |
|  | 1 | **FINISHES - Core & Support Spaces / Level 3** |  | 2025-05-06 | 2026-11-20 |  |  |  |
|  | 7KSF1 | **OR Support - Freezer - Gas - Blood Area (2.5K SF) / Level 3** |  | 2026-04-09 | 2026-11-20 |  |  |  |
|  | 1 | **Finishes** |  | 2026-04-09 | 2026-11-20 |  |  |  |
| P2.L3.F.CS.1000 |  | Paint Prime & 1st Coat Walls / L3 / South / OR Support | 5d | 2026-04-09 | 2026-04-15 | P2.L3.S.1550, P2.L3.F.CS.2000 |  | 52d |
| P2.L3.F.CS.1020 |  | R/I - Ceiling Assemblies & Supports - All Trades (A/V, Oper Part, Glass Part, etc.) / L3 / South / OR Support | 5d | 2026-04-16 | 2026-04-22 | P2.L3.F.CS.1000 |  | 61d |
| P2.L3.F.CS.1010 |  | T-Grid / L3 / South / OR Support | 5d | 2026-04-23 | 2026-04-29 | P2.L3.F.CS.1020 |  | 61d |
| P2.L3.F.CS.1050 |  | Sprinkler Heads in T-Grid / L3 / South / OR Support | 5d | 2026-04-30 | 2026-05-06 | P2.L3.F.CS.1010 |  | 61d |
| P2.L3.F.CS.1030 |  | Diffusers in T-Grid / L3 / South / OR Support | 5d | 2026-05-07 | 2026-05-13 | P2.L3.F.CS.1050, P2.L3.F.CS.1010 |  | 61d |
| P2.L3.F.CS.1040 |  | Lights & Elec Devices in T-Grid / L3 / South / OR Support | 5d | 2026-05-14 | 2026-05-20 | P2.L3.F.CS.1010, P2.L3.F.CS.1030 |  | 61d |
| P2.L3.F.CS.1070 |  | Fire Alarm in T-Grid / L3 / South / OR Support | 5d | 2026-05-21 | 2026-05-28 | P2.L3.F.CS.1010, P2.L3.F.CS.1040 |  | 61d |
| P2.L3.F.CS.1060 |  | Low Voltage in T-Grid / L3 / South / OR Support | 5d | 2026-05-29 | 2026-06-04 | P2.L3.F.CS.1070, P2.L3.F.CS.1010 |  | 61d |
| P2.L3.F.CS.1300 |  | Fumehood Equipment Install / L3 / South / OR Support | 1d | 2026-06-05 | 2026-06-05 | P2.L3.F.CS.2300 FF |  | 61d |
| P2.L3.F.CS.2300 |  | Casework (Before Flooring) / L3 / South / OR Support | 1d | 2026-06-05 | 2026-06-05 | P2.L3.S.1470, P2.L3.F.CS.1060 |  | 61d |
| P2.L3.F.CS.1310 |  | Fumehood Equipment MEP Connection / L3 / South / OR Support | 1d | 2026-06-08 | 2026-06-08 | P2.L3.F.CS.1300 |  | 61d |
| P2.L3.F.CS.1080 |  | OH Ceiling Signoff / L3 / South / OR Support | 5d | 2026-06-09 | 2026-06-15 | P2.L3.F.CS.1310 FF, P2.L3.F.CS.1310, P2.L3.F.CS.1060, P2.L3.F.CS.1070, P2.L3.F.CS.1040, P2.L3.F.CS.1050, P2.L3.F.CS.1030 |  | 61d |
| P2.L3.F.CS.1110 |  | Drop Ceiling Tile / L3 / South / OR Support | 5d | 2026-06-16 | 2026-06-22 | P2.L3.F.CS.1310, P2.L3.F.CS.1080 |  | 61d |
| P2.L3.F.CS.1090 |  | Millwork / L3 / South / OR Support | 5d | 2026-06-23 | 2026-06-29 | P2.L3.F.CS.1080, P2.L3.F.CS.1110 |  | 61d |
| P2.L3.F.CS.1100 |  | Plumbing Fixtures / L3 / South / OR Support | 5d | 2026-06-30 | 2026-07-07 | P2.L3.F.CS.1090 FF, P2.L3.F.CS.2300, P2.L3.F.CS.1080, P2.L3.F.CS.1090 |  | 61d |
| P2.L3.F.CS.1120 |  | Floor Prep / L3 / South / OR Support | 5d | 2026-07-08 | 2026-07-14 | P2.L3.F.CS.2300, P2.L3.F.CS.1110, P2.L3.F.CS.1090, P2.L3.F.CS.1100 |  | 61d |
| P2.L3.F.CS.1130 |  | Floor Finishes / L3 / South / OR Support | 5d | 2026-07-15 | 2026-07-21 | P2.L3.F.CS.1120 |  | 61d |
| P2.L3.F.CS.2310 |  | Casework (After Flooring) / L3 / South / OR Support | 1d | 2026-07-22 | 2026-07-22 | P2.L3.F.CS.1130 |  | 61d |
| P2.L3.F.CS.1140 |  | Doors & Hardware / L3 / South / OR Support | 5d | 2026-07-23 | 2026-07-29 | P2.L3.F.CS.2310, P2.L3.F.CS.1130 |  | 61d |
| P2.L3.F.CS.1150 |  | Paint - Finish Coat / L3 / South / OR Support | 5d | 2026-07-30 | 2026-08-05 | P2.L3.F.CS.1130, P2.L3.F.CS.1140 |  | 61d |
| P2.L3.F.CS.1200 |  | Floor Base / L3 / South / OR Support | 5d | 2026-08-06 | 2026-08-12 | P2.L3.F.CS.1150 |  | 61d |
| P2.L3.F.CS.1210 |  | Demountable Partitions / L3 / South / OR Support | 5d | 2026-08-13 | 2026-08-19 | P2.L3.F.CS.1200 |  | 61d |
| P2.L3.F.CS.1180 |  | Building Specialities / L3 / South / OR Support | 5d | 2026-08-20 | 2026-08-26 | P2.L3.F.CS.1150, P2.L3.F.CS.1200, P2.L3.F.CS.1210 |  | 61d |
| P2.L3.F.CS.1170 |  | Trim T-Stats / L3 / South / OR Support | 5d | 2026-08-27 | 2026-09-02 | P2.L3.F.CS.1150, P2.L3.F.CS.1180 |  | 61d |
| P2.L3.F.CS.1160 |  | Set AV/IT Devices and Configure / L3 / South / OR Support | 5d | 2026-09-03 | 2026-09-10 | P2.L3.F.CS.1150, P2.L3.F.CS.1170 |  | 61d |
| P2.L3.F.CS.1220 |  | Trim Electrical / L3 / South / OR Support | 5d | 2026-09-11 | 2026-09-17 | P2.L3.F.CS.1170 SS, P2.L3.F.CS.1160, P2.L3.F.CS.1210 |  | 61d |
| P2.L3.F.CS.1230 |  | Trim Telephone/ Data / L3 / South / OR Support | 5d | 2026-09-18 | 2026-09-24 | P2.L3.F.CS.1220 SS, P2.L3.F.CS.1220 |  | 61d |
| P2.L3.F.CS.1190 |  | Interior Building Signage / L3 / South / OR Support | 5d | 2026-09-25 | 2026-10-01 | P2.L3.F.CS.1150, P2.L3.F.CS.1230 |  | 61d |
| P2.L3.F.CS.2320 |  | Remaining Equipment Post Flooring / L3 / South / OR Support | 1d | 2026-10-02 | 2026-10-02 | BP6.115.3.140, P2.L3.F.CS.2310, P2.L3.F.CS.1200, P2.L3.F.CS.1190, P2.L3.F.CS.1220, P2.L3.F.CS.1180 |  | 61d |
| P2.L3.F.CS.1240 |  | Work Completion List - Finishes / L3 / South / OR Support | 5d | 2026-10-05 | 2026-10-09 | P2.L3.F.CS.1160, P2.L3.F.CS.1190, P2.L3.F.CS.1140, P2.L3.F.CS.1230, P2.L3.F.CS.1180, P2.L3.F.CS.1100, P2.L3.F.CS.2320 |  | 61d |
| P2.L3.F.CS.1250 |  | Rough Clean / L3 / South / OR Support | 5d | 2026-10-12 | 2026-10-16 | P2.L3.F.CS.1240, P2.L3.F.CS.2320 |  | 61d |
| P2.L3.F.CS.1260 |  | FF&E / L3 / South / OR Support | 5d | 2026-10-19 | 2026-10-23 | P2.L3.F.CS.1250 |  | 61d |
| P2.L3.F.CS.1270 |  | Prepare Punchlist / L3 / South / OR Support | 5d | 2026-10-26 | 2026-10-30 | P2.L3.F.CS.1260 |  | 61d |
| P2.L3.F.CS.1280 |  | Correct Punchlist / L3 / South / OR Support | 10d | 2026-11-02 | 2026-11-13 | P2.L3.F.CS.1270 |  | 61d |
| P2.L3.F.CS.1290 |  | Final Clean / L3 / South / OR Support | 5d | 2026-11-16 | 2026-11-20 | P2.L3.F.CS.1280 |  | 61d |
|  | 2 | **Closeout** |  |  |  |  |  |  |
|  | 7KSF | **OR/IR / IR Teaming Support (1K SF) / Level 3** |  | 2026-04-02 | 2026-11-09 |  |  |  |
|  | 1 | **Finishes** |  | 2026-04-02 | 2026-11-09 |  |  |  |
| P2.L3.F.CS.2000 |  | Paint Prime & 1st Coat Walls / L3 / North / OR/IR Teaming | 5d | 2026-04-02 | 2026-04-08 | P2.L3.N.1550 |  | 52d |
| P2.L3.F.CS.2020 |  | R/I - Ceiling Assemblies & Supports - All Trades (A/V, Oper Part, Glass Part, etc.) / L3 / North / OR/IR Teaming | 5d | 2026-04-09 | 2026-04-15 | P2.L3.F.CS.2000 |  | 70d |
| P2.L3.F.CS.2010 |  | T-Grid / L3 / North / OR/IR Teaming | 5d | 2026-04-16 | 2026-04-22 | P2.L3.F.CS.2020 |  | 70d |
| P2.L3.F.CS.2050 |  | Sprinkler Heads in T-Grid / L3 / North / OR/IR Teaming | 5d | 2026-04-23 | 2026-04-29 | P2.L3.F.CS.2010 |  | 70d |
| P2.L3.F.CS.2030 |  | Diffusers in T-Grid / L3 / North / OR/IR Teaming | 5d | 2026-04-30 | 2026-05-06 | P2.L3.F.CS.2010, P2.L3.F.CS.2050 |  | 70d |
| P2.L3.F.CS.2040 |  | Lights & Elec Devices in T-Grid / L3 / North / OR/IR Teaming | 5d | 2026-05-07 | 2026-05-13 | P2.L3.F.CS.2010, P2.L3.F.CS.2030 |  | 70d |
| P2.L3.F.CS.2070 |  | Fire Alarm in T-Grid / L3 / North / OR/IR Teaming | 5d | 2026-05-14 | 2026-05-20 | P2.L3.F.CS.2010, P2.L3.F.CS.2040 |  | 70d |
| P2.L3.F.CS.2060 |  | Low Voltage in T-Grid / L3 / North / OR/IR Teaming | 5d | 2026-05-21 | 2026-05-28 | P2.L3.F.CS.2070, P2.L3.F.CS.2010 |  | 70d |
| P2.L3.F.CS.2080 |  | OH Ceiling Signoff / L3 / North / OR/IR Teaming | 5d | 2026-05-29 | 2026-06-04 | P2.L3.F.CS.2070, P2.L3.F.CS.2060, P2.L3.F.CS.2050, P2.L3.F.CS.2030, P2.L3.F.CS.2040 |  | 70d |
| P2.L3.F.CS.2110 |  | Drop Ceiling Tile / L3 / North / OR/IR Teaming | 5d | 2026-06-05 | 2026-06-11 | P2.L3.F.CS.2080 |  | 70d |
| P2.L3.F.CS.2090 |  | Millwork / L3 / North / OR/IR Teaming | 5d | 2026-06-12 | 2026-06-18 | P2.L3.F.CS.2080, P2.L3.F.CS.2110 |  | 70d |
| P2.L3.F.CS.2100 |  | Plumbing Fixtures / L3 / North / OR/IR Teaming | 5d | 2026-06-19 | 2026-06-25 | P2.L3.F.CS.2090 FF, P2.L3.F.CS.2080, P2.L3.F.CS.2090 |  | 70d |
| P2.L3.F.CS.2120 |  | Floor Prep / L3 / North / OR/IR Teaming | 5d | 2026-06-26 | 2026-07-02 | P2.L3.F.CS.2110, P2.L3.F.CS.2090, P2.L3.F.CS.2100 |  | 70d |
| P2.L3.F.CS.2130 |  | Floor Finishes / L3 / North / OR/IR Teaming | 5d | 2026-07-06 | 2026-07-10 | P2.L3.F.CS.2120 |  | 70d |
| P2.L3.F.CS.2140 |  | Doors & Hardware / L3 / North / OR/IR Teaming | 5d | 2026-07-13 | 2026-07-17 | P2.L3.F.CS.2130 |  | 70d |
| P2.L3.F.CS.2150 |  | Paint - Finish Coat / L3 / North / OR/IR Teaming | 5d | 2026-07-20 | 2026-07-24 | P2.L3.F.CS.2130, P2.L3.F.CS.2140 |  | 70d |
| P2.L3.F.CS.2200 |  | Floor Base / L3 / North / OR/IR Teaming | 5d | 2026-07-27 | 2026-07-31 | P2.L3.F.CS.2150 |  | 70d |
| P2.L3.F.CS.2210 |  | Demountable Partitions / L3 / North / OR/IR Teaming | 5d | 2026-08-03 | 2026-08-07 | P2.L3.F.CS.2200 |  | 70d |
| P2.L3.F.CS.2170 |  | Trim T-Stats / L3 / North / OR/IR Teaming | 5d | 2026-08-10 | 2026-08-14 | P2.L3.F.CS.2150, P2.L3.F.CS.2200, P2.L3.F.CS.2210 |  | 70d |

| ID | WBS | Task | Duration | Start | Finish | Predecessors | Complete | Total float |
| --- | --- | --- | --- | --- | --- | --- | --- | --- |
| P2.L3.F.CS.2160 |  | Set AV/IT Devices and Configure / L3 / North / OR/IR Teaming | 5d | 2026-08-17 | 2026-08-21 | P2.L3.F.CS.2150, P2.L3.F.CS.2170 |  | 70d |
| P2.L3.F.CS.2220 |  | Trim Electrical / L3 / North / OR/IR Teaming | 5d | 2026-08-24 | 2026-08-28 | P2.L3.F.CS.2170 SS, P2.L3.F.CS.2160, P2.L3.F.CS.2210 |  | 70d |
| P2.L3.F.CS.2230 |  | Trim Telephone/ Data / L3 / North / OR/IR Teaming | 5d | 2026-08-31 | 2026-09-04 | P2.L3.F.CS.2220 SS, P2.L3.F.CS.2220 |  | 70d |
| P2.L3.F.CS.2180 |  | Building Specialities / L3 / North / OR/IR Teaming | 5d | 2026-09-08 | 2026-09-14 | P2.L3.F.CS.2150, P2.L3.F.CS.2230 |  | 70d |
| P2.L3.F.CS.2190 |  | Interior Building Signage / L3 / North / OR/IR Teaming | 5d | 2026-09-15 | 2026-09-21 | P2.L3.F.CS.2150, P2.L3.F.CS.2180 |  | 70d |
| P2.L3.F.CS.2240 |  | Work Completion List - Finishes / L3 / North / OR/IR Teaming | 5d | 2026-09-22 | 2026-09-28 | P2.L3.F.CS.2190, P2.L3.F.CS.2140, P2.L3.F.CS.2230, P2.L3.F.CS.2180, P2.L3.F.CS.2100, P2.L3.F.CS.2160 |  | 70d |
| P2.L3.F.CS.2250 |  | Rough Clean / L3 / North / OR/IR Teaming | 5d | 2026-09-29 | 2026-10-05 | P2.L3.F.CS.2240 |  | 70d |
| P2.L3.F.CS.2260 |  | FF&E / L3 / North / OR/IR Teaming | 5d | 2026-10-06 | 2026-10-12 | P2.L3.F.CS.2250 |  | 70d |
| P2.L3.F.CS.2270 |  | Prepare Punchlist / L3 / North / OR/IR Teaming | 5d | 2026-10-13 | 2026-10-19 | P2.L3.F.CS.2260 |  | 70d |
| P2.L3.F.CS.2280 |  | Correct Punchlist / L3 / North / OR/IR Teaming | 10d | 2026-10-20 | 2026-11-02 | P2.L3.F.CS.2270 |  | 70d |
| P2.L3.F.CS.2290 |  | Final Clean / L3 / North / OR/IR Teaming | 5d | 2026-11-03 | 2026-11-09 | P2.L3.F.CS.2280 |  | 70d |
|  | 2 | **Closeout** |  |  |  |  |  |  |
|  | 5 | **Bathrooms - Break Rooms - Locker Rooms / Level 3** |  | 2025-05-06 | 2026-04-03 |  |  |  |
|  | 3 | **3 Gang Toilet Area Z1 - No Room Tag. 3-59??** |  | 2025-05-06 | 2026-03-31 |  |  |  |
| P2.L3.BR.1000 |  | Plumbing - Set Pipe Carriers / L3 / South / Toilets 59XX | 3d | 2025-05-06 A | 2025-05-08 A | P2.L2.BR.4000, P2.L3.S.1240 | 100% |  |
| P2.L3.BR.1010 |  | Framing & Blocking - Walls and Hard Lid Ceilings / L3 / South / Toilets 59XX | 2d | 2025-06-25 A | 2025-07-16 A | P2.L3.BR.1000 | 100% |  |
| P2.L3.BR.1020 |  | Plumbing - Test Pipe / L3 / South / Toilets 59XX | 2d | 2025-07-16 A | 2025-07-17 A | P2.L3.BR.1000 | 100% |  |
| P2.L3.BR.1040 |  | Trim Sprinkler Drops _ Hard Lids / L3 / South / Toilets 59XX | 2d | 2025-12-01 | 2025-12-02 | P2.L3.BR.1010 |  | 171d |
| P2.L3.BR.1050 |  | Duct Drops _ Hard Lids / L3 / South / Toilets 59XX | 2d | 2025-12-03 | 2025-12-04 | P2.L3.BR.1010, P2.L3.BR.1040 |  | 171d |
| P2.L3.BR.1070 |  | In Wall - Insulate Plumbing / L3 / South / Toilets 59XX | 2d | 2025-12-05 | 2025-12-08 | P2.L3.BR.1020, P2.L3.BR.1050 |  | 171d |
| P2.L3.BR.1030 |  | R/I - Electrical _ Hard Lids / L3 / South / Toilets 59XX | 2d | 2025-12-09 | 2025-12-10 | P2.L3.BR.1070, P2.L3.BR.1010 |  | 171d |
| P2.L3.BR.1060 |  | R/I - Fire Alarm _ Hard Lids / L3 / South / Toilets 59XX | 2d | 2025-12-11 | 2025-12-12 | P2.L3.BR.1010, P2.L3.BR.1030 |  | 171d |
| P2.L3.BR.1080 |  | Inspection - Close In - Walls and Hard Lid Ceilings / L3 / South / Toilets 59XX | 3d | 2025-12-15 | 2025-12-17 | P2.L3.BR.1070, P2.L3.BR.1060, P2.L3.BR.1040, P2.L3.BR.1050, P2.L3.BR.1030 |  | 171d |
| P2.L3.BR.1090 |  | Hang-Tape-Finish _ Walls and Hard Lids Ceilings / L3 / South / Toilets 59XX | 5d | 2025-12-18 | 2025-12-24 | P2.SUM.175, P2.L3.BR.1080 |  | 171d |
| P2.L3.BR.1100 |  | Paint Prime & Final Coat _ Walls & Hard Lid Ceilings / L3 / South / Toilets 59XX | 2d | 2025-12-26 | 2025-12-29 | P2.L3.BR.1090 |  | 171d |
| P2.L3.BR.1140 |  | Trim - HVAC G/R/D's / L3 / South / Toilets 59XX | 2d | 2025-12-30 | 2025-12-31 | BP1.233.3.410, P2.L3.BR.1100 |  | 171d |
| P2.L3.BR.1120 |  | Pull Wire & Trim Devices - Electrical / L3 / South / Toilets 59XX | 2d | 2026-01-02 | 2026-01-05 | P2.L3.BR.1140, P2.L3.BR.1100 |  | 171d |
| P2.L3.BR.1130 |  | Lights - Set & Terminate / L3 / South / Toilets 59XX | 2d | 2026-01-02 | 2026-01-05 | P2.L3.BR.1120 SS |  | 173d |
| P2.L3.BR.1110 |  | Pull Wire & Trim Devices - Fire Alarm / L3 / South / Toilets 59XX | 2d | 2026-01-06 | 2026-01-07 | P2.L3.BR.1120, P2.L3.BR.1100 |  | 171d |
| P2.L3.BR.1150 |  | Wall Tile / L3 / South / Toilets 59XX | 5d | 2026-01-08 | 2026-01-14 | P2.L3.BR.1140, P2.L3.BR.1130, P2.L3.BR.1110 |  | 171d |
| P2.L3.BR.4260 |  | Flooring Prep - Epoxy Floors / L3 / South / Toilets 59XX | 1d | 2026-03-12 | 2026-03-12 | P2.L2.BR.4350, P2.L3.BR.1150 |  | 131d |
| P2.L3.BR.4270 |  | Flooring - Epoxy Floors / L3 / South / Toilets 59XX | 2d | 2026-03-13 | 2026-03-16 | P2.L3.BR.4260 |  | 218d |
| P2.L3.BR.1160 |  | Doors & Hardware / L3 / South / Toilets 59XX | 2d | 2026-03-17 | 2026-03-18 | P2.L3.BR.4270, P2.L3.BR.1150 |  | 218d |
| P2.L3.BR.1170 |  | Plumbing Fixtures / Sinks / Showers / L3 / South / Toilets 59XX | 2d | 2026-03-19 | 2026-03-20 | P2.L3.BR.4270, P2.L3.BR.1150, P2.L3.BR.1160 |  | 226d |
| P2.L3.BR.1180 |  | Bathroom Accessories / L3 / South / Toilets 59XX | 2d | 2026-03-23 | 2026-03-24 | P2.L3.BR.1170 |  | 226d |
| P2.L3.BR.1190 |  | Work Completion List - Finishes / L3 / South / Toilets 59XX | 5d | 2026-03-25 | 2026-03-31 | P2.L3.BR.1160, P2.L3.BR.1180, P2.L3.BR.1110 |  | 226d |
|  | 1 | **Toilet 3-2867** |  | 2025-05-12 | 2026-04-02 |  |  |  |
| P2.L3.BR.2000 |  | Plumbing - Set Pipe Carriers / L3 / North / Toilet 2867 | 3d | 2025-05-12 A | 2025-05-14 A | P2.L3.N.1240, P2.L3.BR.1000 | 100% |  |
| P2.L3.BR.2010 |  | Framing & Blocking - Walls and Hard Lid Ceilings / L3 / North / Toilet 2867 | 2d | 2025-06-25 A | 2025-07-23 A | P2.L3.BR.2000 | 100% |  |
| P2.L3.BR.2020 |  | Plumbing - Test Pipe / L3 / North / Toilet 2867 | 2d | 2025-09-02 A | 2025-09-03 A | P2.L3.BR.2000 | 100% |  |
| P2.L3.BR.2040 |  | Trim Sprinkler Drops _ Hard Lids / L3 / North / Toilet 2867 | 2d | 2025-12-01 | 2025-12-02 | P2.L3.BR.2010 |  | 173d |
| P2.L3.BR.2050 |  | Duct Drops _ Hard Lids / L3 / North / Toilet 2867 | 2d | 2025-12-03 | 2025-12-04 | P2.L3.BR.2040, P2.L3.BR.2010 |  | 173d |
| P2.L3.BR.2070 |  | In Wall - Insulate Plumbing / L3 / North / Toilet 2867 | 2d | 2025-12-05 | 2025-12-08 | P2.L3.BR.2050, P2.L3.BR.2020 |  | 173d |
| P2.L3.BR.2030 |  | R/I - Electrical _ Hard Lids / L3 / North / Toilet 2867 | 2d | 2025-12-09 | 2025-12-10 | P2.L3.BR.2010, P2.L3.BR.2070 |  | 173d |
| P2.L3.BR.2060 |  | R/I - Fire Alarm _ Hard Lids / L3 / North / Toilet 2867 | 2d | 2025-12-11 | 2025-12-12 | P2.L3.BR.2030, P2.L3.BR.2010 |  | 173d |
| P2.L3.BR.2080 |  | Inspection - Close In - Walls and Hard Lid Ceilings / L3 / North / Toilet 2867 | 3d | 2025-12-15 | 2025-12-17 | P2.L3.BR.2030, P2.L3.BR.2040, P2.L3.BR.2050, P2.L3.BR.2060, P2.L3.BR.2070 |  | 173d |
| P2.L3.BR.2090 |  | Hang-Tape-Finish _ Walls and Hard Lids Ceilings / L3 / North / Toilet 2867 | 5d | 2025-12-18 | 2025-12-24 | P2.SUM.175, P2.L3.BR.2080 |  | 173d |
| P2.L3.BR.2100 |  | Paint Prime & Final Coat _ Walls & Hard Lid Ceilings / L3 / North / Toilet 2867 | 2d | 2025-12-26 | 2025-12-29 | P2.L3.BR.2090 |  | 173d |
| P2.L3.BR.2140 |  | Trim - HVAC G/R/D's / L3 / North / Toilet 2867 | 2d | 2025-12-30 | 2025-12-31 | BP1.233.3.410, P2.L3.BR.2100 |  | 173d |
| P2.L3.BR.2120 |  | Pull Wire & Trim Devices - Electrical / L3 / North / Toilet 2867 | 2d | 2026-01-02 | 2026-01-05 | P2.L3.BR.2100, P2.L3.BR.2140 |  | 173d |
| P2.L3.BR.2130 |  | Lights - Set & Terminate / L3 / North / Toilet 2867 | 2d | 2026-01-02 | 2026-01-05 | P2.L3.BR.2120 SS |  | 175d |
| P2.L3.BR.2110 |  | Pull Wire & Trim Devices - Fire Alarm / L3 / North / Toilet 2867 | 2d | 2026-01-06 | 2026-01-07 | P2.L3.BR.2120, P2.L3.BR.2100 |  | 173d |
| P2.L3.BR.2150 |  | Wall Tile / L3 / North / Toilet 2867 | 5d | 2026-01-08 | 2026-01-14 | P2.L3.BR.2110, P2.L3.BR.2130, P2.L3.BR.2140 |  | 173d |
| P2.L3.BR.4240 |  | Flooring Prep - Epoxy Floors / L3 / North / Toilet 2867 | 1d | 2026-03-16 | 2026-03-16 | P2.L3.BR.2150, P2.L3.BR.4200 |  | 131d |
| P2.L3.BR.4250 |  | Flooring - Epoxy Floors / L3 / North / Toilet 2867 | 2d | 2026-03-17 | 2026-03-18 | P2.L3.BR.4240 |  | 216d |
| P2.L3.BR.2160 |  | Doors & Hardware / L3 / North / Toilet 2867 | 2d | 2026-03-19 | 2026-03-20 | P2.L3.BR.2150, P2.L3.BR.4250 |  | 216d |
| P2.L3.BR.2170 |  | Plumbing Fixtures / Sinks / Showers / L3 / North / Toilet 2867 | 2d | 2026-03-23 | 2026-03-24 | P2.L3.BR.2150, P2.L3.BR.2160, P2.L3.BR.4250 |  | 224d |
| P2.L3.BR.2180 |  | Bathroom Accessories / L3 / North / Toilet 2867 | 2d | 2026-03-25 | 2026-03-26 | P2.L3.BR.2170 |  | 224d |
| P2.L3.BR.2190 |  | Work Completion List - Finishes / L3 / North / Toilet 2867 | 5d | 2026-03-27 | 2026-04-02 | P2.L3.BR.2160, P2.L3.BR.2110, P2.L3.BR.2180 |  | 224d |
|  | 2 | **Toilet 3-2933** |  | 2025-05-15 | 2026-04-01 |  |  |  |
| P2.L3.BR.3000 |  | Plumbing - Set Pipe Carriers / L3 / North / Toilet 2933 | 3d | 2025-05-15 A | 2025-05-20 A | P2.L3.BR.2000 | 100% |  |
| P2.L3.BR.3010 |  | Framing & Blocking - Walls and Hard Lid Ceilings / L3 / North / Toilet 2933 | 2d | 2025-06-25 A | 2025-07-23 A | P2.L3.BR.3000 | 100% |  |
| P2.L3.BR.3020 |  | Plumbing - Test Pipe / L3 / North / Toilet 2933 | 2d | 2025-12-01 | 2025-12-02 | P2.L3.BR.3000 |  | 174d |
| P2.L3.BR.3040 |  | Trim Sprinkler Drops _ Hard Lids / L3 / North / Toilet 2933 | 2d | 2025-12-01 | 2025-12-02 | P2.L3.BR.3010 |  | 172d |
| P2.L3.BR.3050 |  | Duct Drops _ Hard Lids / L3 / North / Toilet 2933 | 2d | 2025-12-03 | 2025-12-04 | P2.L3.BR.3010, P2.L3.BR.3040 |  | 172d |
| P2.L3.BR.3070 |  | In Wall - Insulate Plumbing / L3 / North / Toilet 2933 | 2d | 2025-12-05 | 2025-12-08 | P2.L3.BR.3020, P2.L3.BR.3050 |  | 172d |
| P2.L3.BR.3030 |  | R/I - Electrical _ Hard Lids / L3 / North / Toilet 2933 | 2d | 2025-12-09 | 2025-12-10 | P2.L3.BR.3070, P2.L3.BR.3010 |  | 172d |
| P2.L3.BR.3060 |  | R/I - Fire Alarm _ Hard Lids / L3 / North / Toilet 2933 | 2d | 2025-12-11 | 2025-12-12 | P2.L3.BR.3010, P2.L3.BR.3030 |  | 172d |
| P2.L3.BR.3080 |  | Inspection - Close In - Walls and Hard Lid Ceilings / L3 / North / Toilet 2933 | 3d | 2025-12-15 | 2025-12-17 | P2.L3.BR.3070, P2.L3.BR.3060, P2.L3.BR.3040, P2.L3.BR.3050, P2.L3.BR.3030 |  | 172d |
| P2.L3.BR.3090 |  | Hang-Tape-Finish _ Walls and Hard Lids Ceilings / L3 / North / Toilet 2933 | 5d | 2025-12-18 | 2025-12-24 | P2.SUM.175, P2.L3.BR.3080 |  | 172d |

| ID | WBS | Task | Duration | Start | Finish | Predecessors | Complete | Total float |
| --- | --- | --- | --- | --- | --- | --- | --- | --- |
| P2.L3.BR.3100 |  | Paint Prime & Final Coat _ Walls & Hard Lid Ceilings / L3 / North / Toilet 2933 | 2d | 2025-12-26 | 2025-12-29 | P2.L3.BR.3090 |  | 172d |
| P2.L3.BR.3140 |  | Trim - HVAC G/R/D's / L3 / North / Toilet 2933 | 2d | 2025-12-30 | 2025-12-31 | BP1.233.3.410, P2.L3.BR.3100 |  | 172d |
| P2.L3.BR.3120 |  | Pull Wire & Trim Devices - Electrical / L3 / North / Toilet 2933 | 2d | 2026-01-02 | 2026-01-05 | P2.L3.BR.3140, P2.L3.BR.3100 |  | 172d |
| P2.L3.BR.3130 |  | Lights - Set & Terminate / L3 / North / Toilet 2933 | 2d | 2026-01-02 | 2026-01-05 | P2.L3.BR.3120 SS |  | 174d |
| P2.L3.BR.3110 |  | Pull Wire & Trim Devices - Fire Alarm / L3 / North / Toilet 2933 | 2d | 2026-01-06 | 2026-01-07 | P2.L3.BR.3120, P2.L3.BR.3100 |  | 172d |
| P2.L3.BR.3150 |  | Wall Tile / L3 / North / Toilet 2933 | 5d | 2026-01-08 | 2026-01-14 | P2.L3.BR.3140, P2.L3.BR.3130, P2.L3.BR.3110 |  | 172d |
| P2.L3.BR.4200 |  | Flooring Prep - Epoxy Floors / L3 / North / Toilet 2933 | 1d | 2026-03-13 | 2026-03-13 | P2.L3.BR.4260, P2.L3.BR.3150 |  | 131d |
| P2.L3.BR.4210 |  | Flooring - Epoxy Floors / L3 / North / Toilet 2933 | 2d | 2026-03-16 | 2026-03-17 | P2.L3.BR.4200 |  | 217d |
| P2.L3.BR.3160 |  | Doors & Hardware / L3 / North / Toilet 2933 | 2d | 2026-03-18 | 2026-03-19 | P2.L3.BR.4210 FF, P2.L3.BR.3150, P2.L3.BR.4210 |  | 217d |
| P2.L3.BR.3170 |  | Plumbing Fixtures / Sinks / Showers / L3 / North / Toilet 2933 | 2d | 2026-03-20 | 2026-03-23 | P2.L3.BR.3150, P2.L3.BR.3160, P2.L3.BR.4210 |  | 225d |
| P2.L3.BR.3180 |  | Bathroom Accessories / L3 / North / Toilet 2933 | 2d | 2026-03-24 | 2026-03-25 | P2.L3.BR.3170 |  | 225d |
| P2.L3.BR.3190 |  | Work Completion List - Finishes / L3 / North / Toilet 2933 | 5d | 2026-03-26 | 2026-04-01 | P2.L3.BR.3160, P2.L3.BR.3180, P2.L3.BR.3110 |  | 225d |
|  | 4 | **Toilets 3-2804 / 3-2806** |  | 2025-05-21 | 2026-04-03 |  |  |  |
| P2.L3.BR.4000 |  | Plumbing - Set Pipe Carriers / L3 / North / Toilets 280X | 3d | 2025-05-21 A | 2025-05-26 A | P2.L3.BR.3000 | 100% |  |
| P2.L3.BR.4020 |  | Plumbing - Test Pipe / L3 / North / Toilets 280X | 2d | 2025-09-02 A | 2025-09-03 A | P2.L3.BR.4000 | 100% |  |
| P2.L3.BR.4010 |  | Framing & Blocking - Walls and Hard Lid Ceilings / L3 / North / Toilets 280X | 1d | 2025-12-01 | 2025-12-01 | P2.L3.BR.4000 |  | 173d |
| P2.L3.BR.4040 |  | Trim Sprinkler Drops _ Hard Lids / L3 / North / Toilets 280X | 2d | 2025-12-02 | 2025-12-03 | P2.L3.BR.4010 |  | 173d |
| P2.L3.BR.4050 |  | Duct Drops _ Hard Lids / L3 / North / Toilets 280X | 2d | 2025-12-04 | 2025-12-05 | P2.L3.BR.4010, P2.L3.BR.4040 |  | 173d |
| P2.L3.BR.4070 |  | In Wall - Insulate Plumbing / L3 / North / Toilets 280X | 2d | 2025-12-08 | 2025-12-09 | P2.L3.BR.4020, P2.L3.BR.4050 |  | 173d |
| P2.L3.BR.4030 |  | R/I - Electrical _ Hard Lids / L3 / North / Toilets 280X | 2d | 2025-12-10 | 2025-12-11 | P2.L3.BR.4010, P2.L3.BR.4070 |  | 173d |
| P2.L3.BR.4060 |  | R/I - Fire Alarm _ Hard Lids / L3 / North / Toilets 280X | 2d | 2025-12-12 | 2025-12-15 | P2.L3.BR.4010, P2.L3.BR.4030 |  | 173d |
| P2.L3.BR.4080 |  | Inspection - Close In - Walls and Hard Lid Ceilings / L3 / North / Toilets 280X | 3d | 2025-12-16 | 2025-12-18 | P2.L3.BR.4060, P2.L3.BR.4070, P2.L3.BR.4030, P2.L3.BR.4040, P2.L3.BR.4050 |  | 173d |
| P2.L3.BR.4090 |  | Hang-Tape-Finish _ Walls and Hard Lids Ceilings / L3 / North / Toilets 280X | 5d | 2025-12-19 | 2025-12-26 | P2.SUM.175, P2.L3.BR.4080 |  | 173d |
| P2.L3.BR.4100 |  | Paint Prime & Final Coat _ Walls & Hard Lid Ceilings / L3 / North / Toilets 280X | 2d | 2025-12-29 | 2025-12-30 | P2.L3.BR.4090 |  | 173d |
| P2.L3.BR.4140 |  | Trim - HVAC G/R/D's / L3 / North / Toilets 280X | 2d | 2025-12-31 | 2026-01-02 | BP1.233.3.410, P2.L3.BR.4100 |  | 173d |
| P2.L3.BR.4120 |  | Pull Wire & Trim Devices - Electrical / L3 / North / Toilets 280X | 2d | 2026-01-05 | 2026-01-06 | P2.L3.BR.4140, P2.L3.BR.4100 |  | 173d |
| P2.L3.BR.4130 |  | Lights - Set & Terminate / L3 / North / Toilets 280X | 2d | 2026-01-05 | 2026-01-06 | P2.L3.BR.4120 SS |  | 175d |
| P2.L3.BR.4110 |  | Pull Wire & Trim Devices - Fire Alarm / L3 / North / Toilets 280X | 2d | 2026-01-07 | 2026-01-08 | P2.L3.BR.4120, P2.L3.BR.4100 |  | 173d |
| P2.L3.BR.4150 |  | Wall Tile / L3 / North / Toilets 280X | 5d | 2026-01-09 | 2026-01-15 | P2.L3.BR.4130, P2.L3.BR.4140, P2.L3.BR.4110 |  | 173d |
| P2.L3.BR.4220 |  | Flooring Prep - Epoxy Floors / L3 / North / Toilets 280X | 1d | 2026-03-17 | 2026-03-17 | P2.L3.BR.4240, P2.L3.BR.4150 |  | 131d |
| P2.L3.BR.4230 |  | Flooring - Epoxy Floors / L3 / North / Toilets 280X | 2d | 2026-03-18 | 2026-03-19 | P2.L3.BR.4220 |  | 215d |
| P2.L3.BR.4160 |  | Doors & Hardware / L3 / North / Toilets 280X | 2d | 2026-03-20 | 2026-03-23 | P2.L3.BR.4230, P2.L3.BR.4150 |  | 215d |
| P2.L3.BR.4170 |  | Plumbing Fixtures / Sinks / Showers / L3 / North / Toilets 280X | 2d | 2026-03-24 | 2026-03-25 | P2.L3.BR.4230, P2.L3.BR.4150, P2.L3.BR.4160 |  | 223d |
| P2.L3.BR.4180 |  | Bathroom Accessories / L3 / North / Toilets 280X | 2d | 2026-03-26 | 2026-03-27 | P2.L3.BR.4170 |  | 223d |
| P2.L3.BR.4190 |  | Work Completion List - Finishes / L3 / North / Toilets 280X | 5d | 2026-03-30 | 2026-04-03 | P2.L3.BR.4180, P2.L3.BR.4160, P2.L3.BR.4110 |  | 223d |
|  | 1 | **Corridors & Lobbies / Level 3** |  | 2026-04-16 | 2026-11-19 |  |  |  |
| P2.L3.CL.1000 |  | Paint Prime & 1st Coat Walls / L3 / Corr & Lobbies | 5d | 2026-04-16 | 2026-04-22 | P2.L3.S.1550, P2.L3.N.1550, P2.L3.F.CS.1000 |  | 52d |
| P2.L3.CL.1010 |  | Framing - Hard Lid Ceilings / L3 / Corr & Lobbies | 10d | 2026-04-23 | 2026-05-06 | P2.L3.CL.1000 |  | 52d |
| P2.L3.CL.1020 |  | T-Grid / L3 / Corr & Lobbies | 10d | 2026-04-23 | 2026-05-06 | P2.L3.CL.1000 |  | 52d |
| P2.L3.CL.1040 |  | R/I - Trim Sprinkler Heads- All Ceilings / L3 / Corr & Lobbies | 5d | 2026-05-04 | 2026-05-08 | P2.L3.CL.1020 FF+2d, P2.L3.CL.1010 FF+2d |  | 52d |
| P2.L3.CL.1070 |  | Trim - Sprinkler Heads @ T-Grid / L3 / Corr & Lobbies | 5d | 2026-05-04 | 2026-05-08 | P2.L3.CL.1020 FF+2d |  | 135d |
| P2.L3.CL.1050 |  | R/I - HVAC- All Ceilings / L3 / Corr & Lobbies | 5d | 2026-05-11 | 2026-05-15 | P2.L3.CL.1020 FF+2d, P2.L3.CL.1010 FF+2d, P2.L3.CL.1040 |  | 52d |
| P2.L3.CL.1030 |  | R/I - Electrical - All Ceilings / L3 / Corr & Lobbies | 5d | 2026-05-18 | 2026-05-22 | P2.L3.CL.1020 FF+2d, P2.L3.CL.1010 FF+2d, P2.L3.CL.1050 |  | 52d |
| P2.L3.CL.1060 |  | R/I - All Remaining Low Voltage - All Ceilings / L3 / Corr & Lobbies | 5d | 2026-05-26 | 2026-06-01 | P2.L3.CL.1020 FF+2d, P2.L3.CL.1010 FF+2d, P2.L3.CL.1030 |  | 52d |
| P2.L3.CL.1100 |  | Pull Wire - Electrical / L3 / Corr & Lobbies | 10d | 2026-05-26 | 2026-06-08 | P2.L3.CL.1030 |  | 82d |
| P2.L3.CL.1080 |  | R/I - Fire Alarm/Life Safety - All Ceilings / L3 / Corr & Lobbies | 5d | 2026-06-02 | 2026-06-08 | P2.L3.CL.1010 FF+2d, P2.L3.CL.1060 |  | 52d |
| P2.L3.CL.1090 |  | Inspections - Close In- All Ceilings / L3 / Corr & Lobbies | 5d | 2026-06-09 | 2026-06-15 | P2.L3.CL.1030, P2.L3.CL.1040, P2.L3.CL.1050, P2.L3.CL.1060, P2.L3.CL.1080 |  | 52d |
| P2.L3.CL.1110 |  | Pull Wire - Fire Alarm / L3 / Corr & Lobbies | 5d | 2026-06-09 | 2026-06-15 | P2.L3.CL.1100, P2.L3.CL.1080 |  | 87d |
| P2.L3.CL.1120 |  | Pull Wire - All Remianing Low Voltage Systems / L3 / Corr & Lobbies | 5d | 2026-06-16 | 2026-06-22 | P2.L3.CL.1060, P2.L3.CL.1110 |  | 92d |
| P2.L3.CL.1130 |  | Hang/Tape/Finish- Hard Lid Ceilings / L3 / Corr & Lobbies | 10d | 2026-06-16 | 2026-06-29 | P2.L3.CL.1090 |  | 52d |
| P2.L3.CL.1140 |  | Drop Ceiling Tiles @ T-Grid / L3 / Corr & Lobbies | 5d | 2026-06-23 | 2026-06-29 | P2.L3.CL.1100, P2.L3.CL.1110, P2.L3.CL.1120, P2.L3.CL.1070 |  | 105d |
| P2.L3.CL.1190 |  | Paint - Hard Lid Ceilings / L3 / Corr & Lobbies | 5d | 2026-06-30 | 2026-07-07 | P2.L3.CL.1130 |  | 52d |
| P2.L3.CL.1180 |  | Ceiling Mounted - HVAC GRD's / L3 / Corr & Lobbies | 15d | 2026-07-08 | 2026-07-28 | P2.L3.CL.1190, P2.L3.CL.1020 |  | 52d |
| P2.L3.CL.1150 |  | Ceiling Mounted - Electrical Devices and Lights / L3 / Corr & Lobbies | 20d | 2026-07-22 | 2026-08-18 | P2.L3.CL.1180 SS+10d, P2.L3.CL.1100, P2.L3.CL.1190 |  | 52d |
| P2.L3.CL.1160 |  | Ceiling Mounted - Fire Alarm/Life Saftey Devices / L3 / Corr & Lobbies | 15d | 2026-08-05 | 2026-08-25 | P2.L3.CL.1150 SS+10d, P2.L3.CL.1190, P2.L3.CL.1110, P2.L3.CL.1020 |  | 52d |
| P2.L3.CL.1170 |  | Ceiling Mounted - All Low Voltage Devices / L3 / Corr & Lobbies | 15d | 2026-08-19 | 2026-09-09 | P2.L3.CL.1160 SS+10d, P2.L3.CL.1190, P2.L3.CL.1120 |  | 52d |
| P2.L3.CL.1320 |  | Prep Flooring / L3 / Corr & Lobbies | 2d | 2026-09-10 | 2026-09-11 | P2.L2.CL.1200, P2.L3.CL.1140 SS+2d, P2.L3.CL.1170, P2.L3.CL.1180, P2.L3.CL.1150, P2.L3.CL.1160 |  | 52d |
| P2.L3.CL.1200 |  | Flooring / L3 / Corr & Lobbies | 8d | 2026-09-14 | 2026-09-23 | P2.L3.CL.1140 SS+2d, P2.L3.CL.1320, P2.L3.CL.1170, P2.L3.CL.1180, P2.L3.CL.1150, P2.L3.CL.1160 |  | 52d |
| P2.L3.CL.1210 |  | Final Paint / L3 / Corr & Lobbies | 5d | 2026-09-21 | 2026-09-25 | P2.L3.CL.1200 FF+2d, P2.L3.CL.1140, BP7.097.3.100 |  | 62d |
| P2.L3.CL.1220 |  | Floor Base / L3 / Corr & Lobbies | 5d | 2026-09-28 | 2026-10-02 | P2.L3.CL.1210 |  | 82d |
| P2.L3.CL.1250 |  | Trim - HVAC - Wall Mounted Devices / L3 / Corr & Lobbies | 5d | 2026-09-28 | 2026-10-02 | P2.L3.CL.1210 |  | 62d |
| P2.L3.CL.1230 |  | Trim - All Electrical - Wall Mounted Devices / L3 / Corr & Lobbies | 5d | 2026-10-05 | 2026-10-09 | P2.L3.CL.1250, P2.L3.CL.1210 |  | 62d |
| P2.L3.CL.1240 |  | Trim - Fire Alarm - Wall Mounted Devices / L3 / Corr & Lobbies | 5d | 2026-10-12 | 2026-10-16 | P2.L3.CL.1230, P2.L3.CL.1210 |  | 62d |
| P2.L3.CL.1260 |  | Trim - All Remining Low Voltage Systems - Wall Mounted Devices / L3 / Corr & Lobbies | 5d | 2026-10-19 | 2026-10-23 | P2.L3.CL.1240, P2.L3.CL.1210 |  | 62d |
| P2.L3.CL.1270 |  | Building Signage / L3 / Corr & Lobbies | 5d | 2026-10-26 | 2026-10-30 | P2.L3.CL.1260, P2.L3.CL.1210 |  | 62d |
| P2.L3.CL.1280 |  | Work Completion List / L3 / Corr & Lobbies | 5d | 2026-11-02 | 2026-11-06 | P2.L3.CL.1270, P2.L3.CL.1250, P2.L3.CL.1260, P2.L3.CL.1220, P2.L3.CL.1230, P2.L3.CL.1240 |  | 62d |
| P2.L3.CL.1290 |  | Rough Clean / L3 / Corr & Lobbies | 2d | 2026-11-09 | 2026-11-10 | P2.L3.CL.1280 |  | 62d |
| P2.L3.CL.1300 |  | Punchlist / L3 / Corr & Lobbies | 5d | 2026-11-11 | 2026-11-17 | P2.L3.CL.1290 |  | 62d |
| P2.L3.CL.1310 |  | Final Clean / L3 / Corr & Lobbies | 2d | 2026-11-18 | 2026-11-19 | P2.L3.CL.1300 |  | 62d |
|  | L3F | **LAB & CLINICAL SPACES / LEVEL 3** |  | 2025-03-03 | 2026-11-11 |  |  |  |

| ID | WBS | Task | Duration | Start | Finish | Predecessors | Complete | Total float |
| --- | --- | --- | --- | --- | --- | --- | --- | --- |
|  | 3 | **ROUGH IN - Lab & Clinical Spaces (Below Interstitials) / Level 3** |  | 2025-03-03 | 2026-04-08 |  |  |  |
| P2.L3.LC.1000 |  | Layout - All Trades / L3 / Lab & Clinical | 5d | 2025-03-03 A | 2025-03-15 A | P2.4.I.05.220, P2.4.I.03.310, P2.5.03.660 SS | 100% |  |
| P2.L3.LC.1020 |  | OH - Structural Supports (All Trades) / L3 / Lab & Clinical | 10d | 2025-03-17 A | 2025-03-31 A | P2.L3.LC.1000 | 100% |  |
| P2.L3.LC.1030 |  | OH - MEPF - Hangers & Supports / L3 / Lab & Clinical | 10d | 2025-03-17 A | 2025-04-07 A | P2.BIM.L3.40.140, P2.L3.LC.1000 | 100% |  |
| P2.L3.LC.1610 |  | OH - Integrated Ceilings Structural Supports ( Supports) / L3 / Lab & Clinical | 10d | 2025-03-17 A | 2025-04-01 A | BP1.095.2.100, P2.L3.LC.1000 | 100% |  |
| P2.L3.LC.1010 |  | Framing - Top Track / L3 / Lab & Clinical | 10d | 2025-03-24 A | 2025-03-31 A | P2.L3.N.1010, P2.L3.LC.1000 | 100% |  |
| P2.L3.LC.1540 |  | OH - Fireproof Interstitial Steel Above / L3 / Lab & Clinical | 10d | 2025-03-31 A | 2025-04-28 A | P2.4.I.03.320, P2.L3.LC.1610 SS+3d, P2.L3.LC.1020, P2.L3.LC.1030 SS | 100% |  |
| P2.L3.LC.1050 |  | OH - Fire Suppression / L3 / Lab & Clinical | 10d | 2025-04-21 A | 2025-05-15 A | P2.L3.LC.1380, P2.L3.LC.1540 | 100% |  |
| P2.L3.LC.1100 |  | Framing - Priority Walls & Door Frames / L3 / Lab & Clinical | 10d | 2025-05-05 A | 2025-05-23 A | P2.L3.N.1090, P2.L3.LC.1010, P2.L3.LC.1540 | 100% |  |
| P2.L3.LC.1360 |  | Framing - Priority Walls - AHJ Inspections / L3 / Lab & Clinical | 5d | 2025-05-15 A | 2025-05-30 A | P2.L3.LC.1100 | 100% |  |
| P2.L3.LC.1370 |  | Hang/Tape/Finish - Priority Walls / L3 / Lab & Clinical | 10d | 2025-05-19 A | 2025-06-27 A | P2.L3.N.1140, P2.L3.LC.1360 | 100% |  |
| P2.L3.LC.1400 |  | Spray/Seal/Firestop - Head of Wall - Priority Walls / L3 / Lab & Clinical | 5d | 2025-05-19 A | 2025-05-23 A | P2.L3.LC.1370 | 100% |  |
| P2.L3.LC.1200 |  | OH - Electrical - 208/120v Branch / L3 / Lab & Clinical | 10d | 2025-06-09 A | 2025-08-21 A | P2.L3.LC.1080 | 100% |  |
| P2.L3.LC.1060 |  | OH - Hang Duct - HP Mains (South) / L3 / Lab & Clinical | 20d | 2025-06-16 A | 2025-07-31 A | P2.L3.N.1210, P2.L3.LC.1190, P2.L3.LC.1540 | 100% |  |
| P2.L3.LC.1570 |  | OH - Hang Duct - HP Mains (North) / L3 / Lab & Clinical | 20d | 2025-06-16 A | 2025-08-21 A | P2.L3.LC.1060 | 100% |  |
| P2.L3.LC.1080 |  | OH - Electrical - 480/277v Distribution / L3 / Lab & Clinical | 20d | 2025-06-17 A | 2025-08-14 A | P2.L3.LC.1380, P2.L3.LC.1540 | 100% |  |
| P2.L3.LC.1560 |  | OH - Plumbing Piping (Low) / L3 / Lab & Clinical | 20d | 2025-06-17 A | 2025-08-07 A | P2.L3.LC.1070 | 100% |  |
| P2.L3.LC.1070 |  | OH - Plumbing Piping (High) / L3 / Lab & Clinical | 20d | 2025-06-18 A | 2025-07-22 A | P2.L3.LC.1380, P2.L3.LC.1540 | 100% |  |
| P2.L3.LC.1090 |  | OH - HVAC Piping / L3 / Lab & Clinical | 5d | 2025-06-19 A | 2025-08-01 A | P2.L3.LC.1050, P2.L3.LC.1540 | 100% |  |
| P2.L3.LC.1380 |  | Paint Prime & 1st Coat - Priority Walls / L3 / Lab & Clinical | 10d | 2025-06-27 A | 2025-06-27 A | P2.L3.LC.1400 SS | 100% |  |
| P2.L3.LC.1190 |  | Firestop - Thru Wall - Priority Walls / L3 / Lab & Clinical | 5d | 2025-07-01 A | 2025-07-08 A | P2.L3.LC.1380 | 100% |  |
| P2.L3.LC.1390 |  | OH - Set & Connect Mech Equipment / L3 / Lab & Clinical | 10d | 2025-07-23 A | 2025-08-01 A | P2.L3.LC.1220 | 100% |  |
| P2.L3.LC.1240 |  | OH - HVAC Piping - Test / L3 / Lab & Clinical | 5d | 2025-07-29 A | 2025-08-07 A | P2.L3.LC.1090 | 100% |  |
| P2.L3.LC.1040 |  | OH - Insulate HP Duct / L3 / Lab & Clinical | 10d | 2025-08-18 A | 2025-08-28 A | P2.L3.LC.1220 | 100% |  |
| P2.L3.LC.1220 |  | OH - DALT - HP Mains / L3 / Lab & Clinical | 10d | 2025-08-18 A | 2025-08-27 A | P2.L3.LC.1570 | 100% |  |
| P2.L3.LC.1250 |  | OH - Insulate HVAC Pipe / L3 / Lab & Clinical | 10d | 2025-10-08 A | 2025-10-21 A | P2.L3.LC.1040, P2.L3.LC.1240 | 100% |  |
| P2.L3.LC.1280 |  | OH - Plumbing - Test / L3 / Lab & Clinical | 20d | 2025-10-08 A | 2025-10-16 A | P2.L3.LC.1560 | 100% |  |
| P2.L3.LC.1270 |  | OH - Insulate Plumbing / L3 / Lab & Clinical | 10d | 2025-10-20 A | 2025-10-31 A | P2.L3.LC.1280 | 100% |  |
| P2.L3.LC.1640 |  | Chair Carrier - In Wall Rough-in / L3 / Lab & Clinical | 3d | 2025-11-03 A | 2025-11-10 A | P2.L3.LC.1410 FF | 100% |  |
| P2.L3.LC.1120 |  | OH - Hang Duct - LP Branch / L3 / Lab & Clinical | 20d | 2025-12-01 | 2025-12-29 | P2.L3.LC.1220 |  | 49d |
| P2.L3.LC.1210 |  | OH - Electrical - Equip Tie In / L3 / Lab & Clinical | 10d | 2025-12-01 | 2025-12-12 | P2.L3.LC.1390 |  | 69d |
| P2.L3.LC.1410 |  | Framing - Balance of Framing & Door Frames / L3 / Lab & Clinical | 10d | 2025-12-01 | 2025-12-12 | P2.L1.LC.1420 |  | 49d |
| P2.L3.LC.1470 |  | Pull Wire - Electrical - 480/277v Distribution / L3 / Lab & Clinical | 10d | 2025-12-01 | 2025-12-12 | P2.L3.LC.1080 |  | 89d |
| P2.L3.LC.1490 |  | OH - Conduit - Low Volt - BAS/Controls / L3 / Lab & Clinical | 10d | 2025-12-01 | 2025-12-12 | P2.L3.LC.1390, P2.L3.LC.1250 |  | 79d |
| P2.L3.LC.1520 |  | OH - Conduit - Low Volt - Security / L3 / Lab & Clinical | 10d | 2025-12-01 | 2025-12-12 | P2.L3.LC.1250 |  | 79d |
| P2.L3.LC.2480 |  | OH - Integrated Ceilings MEP Infrastructure (Trunkline, monotrack, Etc.) / L3 / Lab & Clinical | 5d | 2025-12-01 | 2025-12-05 | P2.L3.LC.1610, P2.L3.LC.1120 SS |  | 216d |
| P2.L3.LC.1260 |  | OH - Insulate LP Duct / L3 / Lab & Clinical | 10d | 2025-12-30 | 2026-01-13 | P2.L3.LC.1120 |  | 49d |
| P2.L3.LC.1500 |  | OH - Conduit - Low Volt - Fire Alarm / L3 / Lab & Clinical | 10d | 2026-01-14 | 2026-01-27 | P2.L3.LC.1390, P2.L3.LC.1260 |  | 49d |
| P2.L3.LC.1510 |  | OH - Conduit - Low Volt - Telecom / L3 / Lab & Clinical | 10d | 2026-01-14 | 2026-01-27 | P2.L3.LC.1260 |  | 49d |
| P2.L3.LC.1530 |  | OH - Conduit - Low Volt - Medical Services/Nurse Call (?) / L3 / Lab & Clinical | 10d | 2026-01-14 | 2026-01-27 | P2.L3.LC.1260 |  | 49d |
| P2.L3.LC.1140 |  | In Wall - Electrical - Framing / L3 / Lab & Clinical | 10d | 2026-01-15 | 2026-01-28 | P2.L3.LC.1410 FF+2d, P2.L3.LC.1200, OFOI.PWS.1240, P2.L3.LC.1640, RFP.014.1040 |  | 28d |
| P2.L3.LC.1150 |  | In Wall - Backing/Blocking/Supports / L3 / Lab & Clinical | 10d | 2026-01-15 | 2026-01-28 | P2.L3.LC.1410, OFOI.PWS.1240, P2.L3.LC.1640, RFP.014.1040 |  | 28d |
| P2.L3.LC.1230 |  | OH - HVAC Piping - Equip Tie In / L3 / Lab & Clinical | 10d | 2026-01-28 | 2026-02-10 | P2.L3.LC.1390, P2.L3.LC.1240, CX.B2.HYDR.1000 |  | 49d |
| P2.L3.LC.1110 |  | In Wall - Plumbing - Framing / L3 / Lab & Clinical | 10d | 2026-01-29 | 2026-02-11 | P2.L3.LC.1410, OFOI.PWS.1240, P2.L3.LC.1640, RFP.014.1040, PCO.824.1170 |  | 18d |
| P2.L3.LC.1420 |  | Pull Wire - Electrical - 208/120v Branch & Equip / L3 / Lab & Clinical | 20d | 2026-01-29 | 2026-02-25 | P2.L3.LC.1200, P2.L3.LC.1210, P2.L3.LC.1140 |  | 38d |
| P2.L3.LC.1170 |  | AHJ Inspections - Wall Close In / L3 / Lab & Clinical | 5d | 2026-02-19 | 2026-02-25 | PCO.225.1280, P2.L3.LC.1140, P2.L3.LC.1150, P2.L3.LC.1110, P2.L3.LC.1640, RFP.014.1040 |  | 13d |
| P2.L3.LC.1180 |  | Hang-Tape-Finish - Walls and Hard Lid Ceilings / L3 / Lab & Clinical | 15d | 2026-02-26 | 2026-03-18 | P2.SUM.175, P2.L3.LC.1170, BP4.134.3.130, P2.L2.N.1180, P2.L2.S.1470 |  | 13d |
| P2.L3.LC.1130 |  | Spray/Seal/Firestop - Head of Wall / L3 / Lab & Clinical | 10d | 2026-03-19 | 2026-04-01 | P2.L3.LC.1180 |  | 13d |
| P2.L3.LC.1160 |  | Firestop - Thru Wall / L3 / Lab & Clinical | 10d | 2026-03-19 | 2026-04-01 | P2.L3.LC.1180, P2.L3.LC.1270 |  | 13d |
| P2.L3.LC.1430 |  | Pull Wire - Low Volt - BAS/Controls / L3 / Lab & Clinical | 10d | 2026-03-19 | 2026-04-01 | P2.L3.LC.1180, P2.L3.LC.1490 |  | 13d |
| P2.L3.LC.1440 |  | Pull Wire - Low Volt - Fire Alarm / L3 / Lab & Clinical | 10d | 2026-03-19 | 2026-04-01 | P2.L3.LC.1180, P2.L3.LC.1500 |  | 13d |
| P2.L3.LC.1450 |  | Pull Wire - Low Volt - Telecom / L3 / Lab & Clinical | 10d | 2026-03-19 | 2026-04-01 | P2.L3.LC.1180, P2.L3.LC.1510 |  | 13d |
| P2.L3.LC.1460 |  | Pull Wire - Low Volt - Security / L3 / Lab & Clinical | 10d | 2026-03-19 | 2026-04-01 | P2.L3.LC.1180, P2.L3.LC.1520 |  | 13d |
| P2.L3.LC.1480 |  | Pull Wire - Low Volt - Medical Services/Nurse Call (?) / L3 / Lab & Clinical | 10d | 2026-03-19 | 2026-04-01 | P2.L3.LC.1180, P2.L3.LC.1530 |  | 13d |
| P2.L3.LC.1550 |  | Trades Inspect & Verify R/I Work Completed to Specs / L3 / Lab & Clinical | 5d | 2026-04-02 | 2026-04-08 | P2.L3.LC.1420, P2.L3.LC.1430, P2.L3.LC.1440, P2.L3.LC.1450, P2.L3.LC.1460, P2.L3.LC.1160, P2.L3.LC.1130, P2.L3.LC.1470, P2.L3.LC.1480, P2.L3.LC.1230 |  | 13d |
|  | 13 | **FINISHES - Lab & Clinical Spaces (Below Interstitials) / Level 3** |  | 2026-03-19 | 2026-11-11 |  |  |  |
|  | 2 | **ORs 2-6 / Minor Procedure Suites - Room Blocks 3-39.. & 3-29.. / Level 3** |  | 2026-03-19 | 2026-11-11 |  |  |  |
| P2.L3.F.LC.3460 |  | Casework (Before Flooring) / L3 / ORs 2-6 & Procedures | 1d | 2026-03-19 | 2026-03-19 | P2.L3.LC.1180, BP6.123.3.100 |  | 174d |
| P2.L3.F.LC.3470 |  | Equipment (Before Flooring) / L3 / ORs 2-6 & Procedures | 3d | 2026-03-19 | 2026-03-23 | P2.L3.LC.1180 |  | 177d |
| P2.L3.F.LC.1000 |  | Paint - Walls / L3 / ORs 2-6 & Procedures | 5d | 2026-04-09 | 2026-04-15 | P2.L3.LC.1550 |  | 60d |
| P2.L3.F.LC.1010 |  | R/I - Ceiling Assemblies & Supports - Med Equip / L3 / ORs 2-6 & Procedures | 5d | 2026-04-16 | 2026-04-22 | CW.FD-MU -210, P2.L3.F.LC.1000 |  | 60d |
| P2.L3.F.LC.1020 |  | Framing - Hard Lid Ceilings / L3 / ORs 2-6 & Procedures | 5d | 2026-04-23 | 2026-04-29 | P2.L3.F.LC.1010 |  | 60d |
| P2.L3.F.LC.1030 |  | R/I - Lights & Devices - Hard Lids Ceilings / L3 / ORs 2-6 & Procedures | 10d | 2026-04-30 | 2026-05-13 | P2.L3.F.LC.1020 |  | 60d |
| P2.L3.F.LC.1040 |  | R/I - Diffusers - Hard Lid Ceilings / L3 / ORs 2-6 & Procedures | 5d | 2026-04-30 | 2026-05-06 | P2.L3.F.LC.1020 |  | 65d |
| P2.L3.F.LC.1050 |  | R/I - Sprinkler Heads - Hard Lid Ceilings / L3 / ORs 2-6 & Procedures | 5d | 2026-04-30 | 2026-05-06 | P2.L3.F.LC.1020 |  | 65d |
| P2.L3.F.LC.1060 |  | R/I - Fire Alarm - Hard Lid Ceilings / L3 / ORs 2-6 & Procedures | 5d | 2026-04-30 | 2026-05-06 | P2.L3.F.LC.1020 |  | 65d |
| P2.L3.F.LC.1070 |  | OH Ceiling Inspection & Signoff - Hard Lid Ceilings / L3 / ORs 2-6 & Procedures | 5d | 2026-05-14 | 2026-05-20 | P2.L3.F.LC.1040, P2.L3.F.LC.1050, P2.L3.F.LC.1060, P2.L3.F.LC.1030 |  | 60d |
| P2.L3.F.LC.1080 |  | Hang-Tape-Finish _Hard Lid Ceilings / L3 / ORs 2-6 & Procedures | 5d | 2026-05-21 | 2026-05-28 | P2.L3.F.LC.1070 |  | 60d |
| P2.L3.F.LC.1090 |  | Paint Ceilings / L3 / ORs 2-6 & Procedures | 5d | 2026-05-29 | 2026-06-04 | P2.L3.F.LC.1080 |  | 60d |
| P2.L3.F.LC.1100 |  | Waterproof Ceramic Tile / L3 / ORs 2-6 & Procedures | 5d | 2026-06-05 | 2026-06-11 | P2.L3.F.LC.1090 |  | 60d |

| ID | WBS | Task | Duration | Start | Finish | Predecessors | Total float |
| --- | --- | --- | --- | --- | --- | --- | --- |
| P2.L3.F.LC.1110 |  | Ceramic Tile / L3 / ORs 2-6 & Procedures | 5d | 2026-06-12 | 2026-06-18 | P2.L3.F.LC.1100 | 60d |
| P2.L3.F.LC.1120 |  | T-Grid / L3 / ORs 2-6 & Procedures | 5d | 2026-06-19 | 2026-06-25 | P2.L3.F.LC.1110 | 60d |
| P2.L3.F.LC.1130 |  | Diffusers in T-Grid / L3 / ORs 2-6 & Procedures | 5d | 2026-06-26 | 2026-07-02 | P2.L3.F.LC.1120 | 60d |
| P2.L3.F.LC.1140 |  | Lights & Devices / L3 / ORs 2-6 & Procedures | 5d | 2026-06-26 | 2026-07-02 | P2.L3.F.LC.1120 | 60d |
| P2.L3.F.LC.1150 |  | Sprinkler Heads / L3 / ORs 2-6 & Procedures | 5d | 2026-06-26 | 2026-07-02 | P2.L3.F.LC.1120 | 60d |
| P2.L3.F.LC.1160 |  | Trim Low Voltage / L3 / ORs 2-6 & Procedures | 5d | 2026-06-26 | 2026-07-02 | P2.L3.F.LC.1120 | 60d |
| P2.L3.F.LC.1170 |  | Trim Fire Alarm / L3 / ORs 2-6 & Procedures | 5d | 2026-06-26 | 2026-07-02 | P2.L3.F.LC.1120 | 60d |
| P2.L3.F.LC.1180 |  | OH Ceiling Signoff / L3 / ORs 2-6 & Procedures | 10d | 2026-07-06 | 2026-07-17 | P2.L3.F.LC.1160, P2.L3.F.LC.1170, P2.L3.F.LC.1150, P2.L3.F.LC.1130, P2.L3.F.LC.1140 | 60d |
| P2.L3.F.LC.1200 |  | Drop Ceiling Tile / L3 / ORs 2-6 & Procedures | 5d | 2026-07-20 | 2026-07-24 | P2.L3.F.LC.1180 | 60d |
| P2.L3.F.LC.3400 |  | Floor Prep - Epoxy Floors / L3 / ORs 2-6 | 5d | 2026-07-20 | 2026-07-24 | P2.L3.F.LC.2180 | 58d |
| P2.L3.F.LC.3410 |  | Flooring - Epoxy Floors / L3 / ORs 2-6 | 2d | 2026-07-27 | 2026-07-28 | P2.L3.F.LC.3400 | 58d |
| P2.L3.F.LC.1190 |  | Casework (After Flooring) / L3 / ORs 2-6 & Procedures | 2d | 2026-07-29 | 2026-07-30 | P2.L3.F.LC.3410 | 76d |
| P2.L3.F.LC.2400 |  | Integrated Ceilings Panel Install (Finishes) / L3 / Lab & Clinical | 15d | 2026-07-29 | 2026-08-18 | P2.L3.F.LC.1200, P2.L3.LC.1610, P2.L3.F.LC.3410, P2.B2.LC.2470, P2.L3.LC.2480, BP1.095.3.220 | 58d |
| P2.L3.F.LC.1210 |  | Wall Protection / L3 / ORs 2-6 & Procedures | 5d | 2026-07-31 | 2026-08-06 | P2.L3.F.LC.1190, BP7.102.3.300 | 76d |
| P2.L3.F.LC.1220 |  | Plumbing Fixtures & Drinking Fountains / L3 / ORs 2-6 & Procedures | 5d | 2026-07-31 | 2026-08-06 | P2.L3.F.LC.1190, P2.L3.F.LC.3460 | 81d |
| P2.L3.F.LC.1260 |  | Doors & Hardware / L3 / ORs 2-6 & Procedures | 5d | 2026-07-31 | 2026-08-06 | P2.L3.F.LC.1190 | 81d |
| P2.L3.F.LC.1230 |  | Trim T-Stats / L3 / ORs 2-6 & Procedures | 5d | 2026-08-19 | 2026-08-25 | P2.L3.F.LC.1210, P2.L3.F.LC.2400 | 68d |
| P2.L3.F.LC.1240 |  | Trim Electrical / L3 / ORs 2-6 & Procedures | 5d | 2026-08-19 | 2026-08-25 | P2.L3.F.LC.1230 SS, P2.L3.F.LC.2400 | 68d |
| P2.L3.F.LC.1250 |  | Trim Telephone/ Data / L3 / ORs 2-6 & Procedures | 5d | 2026-08-19 | 2026-08-25 | P2.L3.F.LC.1240 SS, P2.L3.F.LC.2400 | 68d |
| P2.L3.F.LC.1270 |  | Trim Med Gas / L3 / ORs 2-6 & Procedures | 5d | 2026-08-19 | 2026-08-25 | P2.L3.F.LC.1190, P2.L3.F.LC.1210, P2.L3.F.LC.2400 | 68d |
| P2.L3.F.LC.1280 |  | Floor Prep / L3 / Procedures | 5d | 2026-08-26 | 2026-09-01 | P2.L3.F.LC.1200, P2.L3.F.LC.1260, P2.L3.F.LC.1240, P2.L3.F.LC.1250, P2.L3.F.LC.1220, P2.L3.F.LC.1230, P2.L3.F.LC.3470, P2.L3.F.LC.3460, P2.L3.F.LC.1270 | 68d |
| P2.L3.F.LC.1290 |  | Flooring / L3 / Procedures | 5d | 2026-09-02 | 2026-09-09 | P2.L3.F.LC.1280 | 68d |
| P2.L3.F.LC.1300 |  | Building Specialities / L3 / ORs 2-6 & Procedures | 5d | 2026-09-10 | 2026-09-16 | P2.L3.F.LC.1290 | 68d |
| P2.L3.F.LC.1310 |  | Interior Building Signage / L3 / ORs 2-6 & Procedures | 5d | 2026-09-10 | 2026-09-16 | P2.L3.F.LC.1290 | 68d |
| P2.L3.F.LC.1320 |  | Work Completion List - Finishes / L3 / ORs 2-6 & Procedures | 5d | 2026-09-17 | 2026-09-23 | P2.L3.F.LC.1300, P2.L3.F.LC.1310 | 68d |
| P2.L3.F.LC.1330 |  | Remaining Equipment Post Flooring / L3 / ORs 2-6 & Procedures | 5d | 2026-09-24 | 2026-09-30 | P2.L3.F.LC.1190, P2.L3.F.LC.1320 | 68d |
| P2.L3.F.LC.1340 |  | Remaining MEP Hook-Ups / L3 / ORs 2-6 & Procedures | 5d | 2026-10-01 | 2026-10-07 | P2.L3.F.LC.1330 | 68d |
| P2.L3.F.LC.1350 |  | OFOI Furniture & Equipment / L3 / ORs 2-6 & Procedures | 5d | 2026-10-01 | 2026-10-07 | P2.L3.F.LC.1340 SS, OFOI.EQUIP.L3.1160, OFOI.EQUIP.L3.1170, OFOI.EQUIP.L3.1180, OFOI.EQUIP.L3.1090, OFOI.EQUIP.L3.1100, OFOI.EQUIP.L3.1110, OFOI.EQUIP.L3.1150, OFOI.EQUIP.L3.1070, OFOI.EQUIP.L3.1080, OFOI.EQUIP.L3.1060 | 78d |
| P2.L3.F.LC.1360 |  | Rough Clean / L3 / ORs 2-6 & Procedures | 5d | 2026-10-08 | 2026-10-14 | P2.L3.F.LC.1340 | 68d |
| P2.L3.F.LC.1370 |  | Prepare Punchlist / L3 / ORs 2-6 & Procedures | 5d | 2026-10-15 | 2026-10-21 | P2.L3.F.LC.1340 SS, P2.L3.F.LC.1360 | 68d |
| P2.L3.F.LC.1380 |  | Correct Punchlist / L3 / ORs 2-6 & Procedures | 10d | 2026-10-22 | 2026-11-04 | P2.L3.F.LC.1370, P2.L3.F.LC.1350 | 68d |
| P2.L3.F.LC.1390 |  | Final Clean / L3 / ORs 2-6 & Procedures | 5d | 2026-11-05 | 2026-11-11 | P2.L3.F.LC.1380 | 68d |
|  | 3 | **IR Procedure / Anesth Suites - Room Blocks 3-29.. / Level 3** |  | 2026-03-19 | 2026-11-05 |  |  |
| P2.L3.F.LC.3480 |  | Equipment (Before Flooring) / L3 / IR Procedures | 1d | 2026-03-19 | 2026-03-19 | P2.L3.LC.1180, PCO.824.1150 | 179d |
| P2.L3.F.LC.2000 |  | Paint - Walls / L3 / IR Procedures | 5d | 2026-04-09 | 2026-04-15 | P2.L3.LC.1550 | 58d |
| P2.L3.F.LC.2010 |  | R/I - Ceiling Assemblies & Supports - Med Equip / L3 / IR Procedures | 5d | 2026-04-16 | 2026-04-22 | P2.L3.F.LC.2000 | 58d |
| P2.L3.F.LC.2020 |  | Framing - Hard Lid Ceilings / L3 / IR Procedures | 5d | 2026-04-23 | 2026-04-29 | P2.L3.F.LC.2010 | 58d |
| P2.L3.F.LC.2030 |  | R/I - Lights & Devices - Hard Lids Ceilings / L3 / IR Procedures | 10d | 2026-04-30 | 2026-05-13 | P2.L3.F.LC.2020 | 58d |
| P2.L3.F.LC.2040 |  | R/I - Diffusers - Hard Lid Ceilings / L3 / IR Procedures | 5d | 2026-04-30 | 2026-05-06 | P2.L3.F.LC.2020 | 63d |
| P2.L3.F.LC.2050 |  | R/I - Sprinkler Heads - Hard Lid Ceilings / L3 / IR Procedures | 5d | 2026-04-30 | 2026-05-06 | P2.L3.F.LC.2020 | 63d |
| P2.L3.F.LC.2060 |  | R/I - Fire Alarm - Hard Lid Ceilings / L3 / IR Procedures | 5d | 2026-04-30 | 2026-05-06 | P2.L3.F.LC.2020 | 63d |
| P2.L3.F.LC.2070 |  | OH Ceiling Inspection & Signoff - Hard Lid Ceilings / L3 / IR Procedures | 5d | 2026-05-14 | 2026-05-20 | P2.L3.F.LC.2040, P2.L3.F.LC.2050, P2.L3.F.LC.2030, P2.L3.F.LC.2060 | 58d |
| P2.L3.F.LC.2080 |  | Hang-Tape-Finish _Hard Lid Ceilings / L3 / IR Procedures | 5d | 2026-05-21 | 2026-05-28 | P2.L3.F.LC.2070 | 58d |
| P2.L3.F.LC.2090 |  | Paint Ceilings / L3 / IR Procedures | 5d | 2026-05-29 | 2026-06-04 | P2.L3.F.LC.2080 | 58d |
| P2.L3.F.LC.2100 |  | Waterproof Ceramic Tile / L3 / IR Procedures | 5d | 2026-06-05 | 2026-06-11 | P2.L3.F.LC.2090 | 58d |
| P2.L3.F.LC.2110 |  | Ceramic Tile / L3 / IR Procedures | 5d | 2026-06-12 | 2026-06-18 | P2.L3.F.LC.2100 | 58d |
| P2.L3.F.LC.2120 |  | T-Grid / L3 / IR Procedures | 5d | 2026-06-19 | 2026-06-25 | P2.L3.F.LC.2110 | 58d |
| P2.L3.F.LC.2130 |  | Diffusers in T-Grid / L3 / IR Procedures | 5d | 2026-06-26 | 2026-07-02 | P2.L3.F.LC.2120 | 58d |
| P2.L3.F.LC.2140 |  | Lights & Devices / L3 / IR Procedures | 5d | 2026-06-26 | 2026-07-02 | P2.L3.F.LC.2120 | 58d |
| P2.L3.F.LC.2150 |  | Sprinkler Heads / L3 / IR Procedures | 5d | 2026-06-26 | 2026-07-02 | P2.L3.F.LC.2120 | 58d |
| P2.L3.F.LC.2160 |  | Trim Low Voltage / L3 / IR Procedures | 5d | 2026-06-26 | 2026-07-02 | P2.L3.F.LC.2120 | 58d |
| P2.L3.F.LC.2170 |  | Trim Fire Alarm / L3 / IR Procedures | 5d | 2026-06-26 | 2026-07-02 | P2.L3.F.LC.2120 | 58d |
| P2.L3.F.LC.2180 |  | OH Ceiling Signoff / L3 / IR Procedures | 10d | 2026-07-06 | 2026-07-17 | P2.L3.F.LC.2130, P2.L3.F.LC.2160, P2.L3.F.LC.2170, P2.L3.F.LC.2140, P2.L3.F.LC.2150 | 58d |
| P2.L3.F.LC.2200 |  | Drop Ceiling Tile / L3 / IR Procedures | 5d | 2026-07-20 | 2026-07-24 | P2.L3.F.LC.2180 | 75d |
| P2.L3.F.LC.2280 |  | Floor Prep - Epoxy Floors / L3 / IR Procedures | 5d | 2026-07-20 | 2026-07-24 | P2.L3.F.LC.2180 | 72d |
| P2.L3.F.LC.2290 |  | Flooring - Epoxy Floors / L3 / IR Procedures | 2d | 2026-07-27 | 2026-07-28 | P2.L3.F.LC.2280 | 72d |
| P2.L3.F.LC.2190 |  | Casework (After Flooring) / L3 / IR Procedures | 1d | 2026-07-29 | 2026-07-29 | P2.L3.F.LC.2290 | 72d |
| P2.L3.F.LC.2210 |  | Wall Protection / L3 / IR Procedures | 5d | 2026-07-30 | 2026-08-05 | P2.L3.F.LC.2190, BP7.102.3.300 | 77d |
| P2.L3.F.LC.2220 |  | Plumbing Fixtures & Drinking Fountains / L3 / IR Procedures | 5d | 2026-07-30 | 2026-08-05 | P2.L3.F.LC.2190, PCO.824.1150 | 82d |
| P2.L3.F.LC.2260 |  | Doors & Hardware / L3 / IR Procedures | 5d | 2026-07-30 | 2026-08-05 | P2.L3.F.LC.2190 | 82d |
| P2.L3.F.LC.2520 |  | Integrated Ceilings Panel Install (Finishes) / L3 / IR Procedures | 10d | 2026-07-30 | 2026-08-12 | P2.L3.LC.1610, P2.L3.F.LC.2290, P2.L3.F.LC.2200, P2.L3.F.LC.2190, P2.L3.LC.2480, BP1.095.3.220 | 72d |
| P2.L3.F.LC.2230 |  | Trim T-Stats / L3 / IR Procedures | 5d | 2026-08-13 | 2026-08-19 | P2.L3.F.LC.2210, P2.L3.F.LC.2520 | 72d |
| P2.L3.F.LC.2240 |  | Trim Electrical / L3 / IR Procedures | 5d | 2026-08-13 | 2026-08-19 | P2.L3.F.LC.2230 SS, P2.L3.F.LC.2520 | 72d |
| P2.L3.F.LC.2250 |  | Trim Telephone/ Data / L3 / IR Procedures | 5d | 2026-08-13 | 2026-08-19 | P2.L3.F.LC.2240 SS, P2.L3.F.LC.2520 | 72d |
| P2.L3.F.LC.2270 |  | Trim Med Gas / L3 / IR Procedures | 5d | 2026-08-13 | 2026-08-19 | P2.L3.F.LC.2190, P2.L3.F.LC.2210, P2.L3.F.LC.2520 | 72d |
| P2.L3.F.LC.3420 |  | Floor Prep / L3 / IR Control, Storage & Anesth | 5d | 2026-08-20 | 2026-08-26 | P2.L3.F.LC.2270, P2.L3.F.LC.2260, P2.L3.F.LC.2200, P2.L3.F.LC.2220, P2.L3.F.LC.2230, P2.L3.F.LC.2240, P2.L3.F.LC.2250, P2.L3.F.LC.3480 | 72d |
| P2.L3.F.LC.3430 |  | Flooring / L3 / IR Control, Storage & Anesth | 5d | 2026-08-27 | 2026-09-02 | P2.L3.F.LC.3420 | 72d |
| P2.L3.F.LC.2300 |  | Building Specialities / L3 / IR Procedures | 5d | 2026-09-03 | 2026-09-10 | P2.L3.F.LC.3430 | 72d |
| P2.L3.F.LC.2310 |  | Interior Building Signage / L3 / IR Procedures | 5d | 2026-09-03 | 2026-09-10 | P2.L3.F.LC.3430 | 72d |
| P2.L3.F.LC.2320 |  | Work Completion List - Finishes / L3 / IR Procedures | 5d | 2026-09-11 | 2026-09-17 | P2.L3.F.LC.2310, P2.L3.F.LC.2300 | 72d |

| ID | WBS | Task | Duration | Start | Finish | Predecessors | Complete | Total float |
| --- | --- | --- | --- | --- | --- | --- | --- | --- |
| P2.L3.F.LC.2330 |  | Remaining Equipment Post Flooring / L3 / IR Procedures | 5d | 2026-09-18 | 2026-09-24 | P2.L3.F.LC.2320, P2.L3.F.LC.2190, PCO.824.1150 |  | 72d |
| P2.L3.F.LC.2340 |  | Remaining MEP Hook-Ups / L3 / IR Procedures | 5d | 2026-09-25 | 2026-10-01 | P2.L3.F.LC.2330 |  | 72d |
| P2.L3.F.LC.2350 |  | OFOI Furniture & Equipment / L3 / IR Procedures | 5d | 2026-09-25 | 2026-10-01 | P2.L3.F.LC.2340 SS, OFOI.EQUIP.L3.1120, OFOI.EQUIP.L3.1130, OFOI.EQUIP.L3.1140 |  | 82d |
| P2.L3.F.LC.2360 |  | Rough Clean / L3 / IR Procedures | 5d | 2026-10-02 | 2026-10-08 | P2.L3.F.LC.2340 |  | 72d |
| P2.L3.F.LC.2370 |  | Prepare Punchlist / L3 / IR Procedures | 5d | 2026-10-09 | 2026-10-15 | P2.L3.F.LC.2340 SS, P2.L3.F.LC.2360 |  | 72d |
| P2.L3.F.LC.2380 |  | Correct Punchlist / L3 / IR Procedures | 10d | 2026-10-16 | 2026-10-29 | P2.L3.F.LC.2350, P2.L3.F.LC.2370 |  | 72d |
| P2.L3.F.LC.2390 |  | Final Clean / L3 / IR Procedures | 5d | 2026-10-30 | 2026-11-05 | P2.L3.F.LC.2380 |  | 72d |
|  | 4 | **Hybrid OR / MRI Suites - Room Blocks 3-28.. / Level 3** |  | 2026-03-19 | 2026-10-29 |  |  |  |
| P2.L3.F.LC.3490 |  | Casework (Before Flooring) / L3 / Hybrid OR, MRI | 1d | 2026-03-19 | 2026-03-19 | P2.L3.LC.1180, BP6.123.3.100 |  | 159d |
| P2.L3.F.LC.3500 |  | Equipment (Before Flooring) / L3 / Hybrid OR, MRI | 2d | 2026-03-19 | 2026-03-20 | P2.L3.LC.1180 |  | 158d |
| P2.L3.F.LC.3000 |  | Paint - Walls / L3 / Hybrid OR, MRI | 5d | 2026-04-09 | 2026-04-15 | P2.L3.LC.1550 |  | 75d |
| P2.L3.F.LC.3010 |  | R/I - Ceiling Assemblies & Supports - Med Equip / L3 / Hybrid OR, MRI | 5d | 2026-04-16 | 2026-04-22 | CW.INTMU -300, CW.FD-MU -210, P2.L3.F.LC.3000 |  | 75d |
| P2.L3.F.LC.3020 |  | Framing - Hard Lid Ceilings / L3 / Hybrid OR, MRI | 5d | 2026-04-23 | 2026-04-29 | P2.L3.F.LC.3010 |  | 75d |
| P2.L3.F.LC.3030 |  | R/I - Lights & Devices - Hard Lids Ceilings / L3 / Hybrid OR, MRI | 10d | 2026-04-30 | 2026-05-13 | P2.L3.F.LC.3020 |  | 75d |
| P2.L3.F.LC.3040 |  | R/I - Diffusers - Hard Lid Ceilings / L3 / Hybrid OR, MRI | 5d | 2026-04-30 | 2026-05-06 | P2.L3.F.LC.3020 |  | 80d |
| P2.L3.F.LC.3050 |  | R/I - Sprinkler Heads - Hard Lid Ceilings / L3 / Hybrid OR, MRI | 5d | 2026-04-30 | 2026-05-06 | P2.L3.F.LC.3020 |  | 80d |
| P2.L3.F.LC.3060 |  | R/I - Fire Alarm - Hard Lid Ceilings / L3 / Hybrid OR, MRI | 5d | 2026-04-30 | 2026-05-06 | P2.L3.F.LC.3020 |  | 80d |
| P2.L3.F.LC.3070 |  | OH Ceiling Inspection & Signoff - Hard Lid Ceilings / L3 / Hybrid OR, MRI | 5d | 2026-05-14 | 2026-05-20 | P2.L3.F.LC.3060, P2.L3.F.LC.3040, P2.L3.F.LC.3050, P2.L3.F.LC.3030 |  | 75d |
| P2.L3.F.LC.3080 |  | Hang-Tape-Finish _Hard Lid Ceilings / L3 / Hybrid OR, MRI | 5d | 2026-05-21 | 2026-05-28 | P2.L3.F.LC.3070 |  | 75d |
| P2.L3.F.LC.3090 |  | Paint Ceilings / L3 / Hybrid OR, MRI | 5d | 2026-05-29 | 2026-06-04 | P2.L3.F.LC.3080 |  | 75d |
| P2.L3.F.LC.3100 |  | Waterproof Ceramic Tile / L3 / Hybrid OR, MRI | 5d | 2026-06-05 | 2026-06-11 | P2.L3.F.LC.3090 |  | 75d |
| P2.L3.F.LC.3110 |  | Ceramic Tile / L3 / Hybrid OR, MRI | 5d | 2026-06-12 | 2026-06-18 | P2.L3.F.LC.3100 |  | 75d |
| P2.L3.F.LC.3120 |  | T-Grid / L3 / Hybrid OR, MRI | 5d | 2026-06-19 | 2026-06-25 | RFP.014.1040, P2.L3.F.LC.3110 |  | 75d |
| P2.L3.F.LC.3130 |  | Diffusers in T-Grid / L3 / Hybrid OR, MRI | 5d | 2026-06-26 | 2026-07-02 | P2.L3.F.LC.3120 |  | 75d |
| P2.L3.F.LC.3140 |  | Lights & Devices / L3 / Hybrid OR, MRI | 5d | 2026-06-26 | 2026-07-02 | P2.L3.F.LC.3120 |  | 75d |
| P2.L3.F.LC.3150 |  | Sprinkler Heads / L3 / Hybrid OR, MRI | 5d | 2026-06-26 | 2026-07-02 | P2.L3.F.LC.3120 |  | 75d |
| P2.L3.F.LC.3160 |  | Trim Low Voltage / L3 / Hybrid OR, MRI | 5d | 2026-06-26 | 2026-07-02 | P2.L3.F.LC.3120 |  | 75d |
| P2.L3.F.LC.3170 |  | Trim Fire Alarm / L3 / Hybrid OR, MRI | 5d | 2026-06-26 | 2026-07-02 | P2.L3.F.LC.3120 |  | 75d |
| P2.L3.F.LC.3180 |  | OH Ceiling Signoff / L3 / Hybrid OR, MRI | 10d | 2026-07-06 | 2026-07-17 | P2.L3.F.LC.3160, P2.L3.F.LC.3170, P2.L3.F.LC.3140, P2.L3.F.LC.3150, P2.L3.F.LC.3130 |  | 75d |
| P2.L3.F.LC.3200 |  | Drop Ceiling Tile / L3 / Hybrid OR, MRI | 5d | 2026-07-20 | 2026-07-24 | P2.L3.F.LC.3180 |  | 78d |
| P2.L3.F.LC.3440 |  | Floor Prep - Epoxy Floors / L3 / Hybrid OR | 5d | 2026-07-20 | 2026-07-24 | P2.L3.F.LC.3490, P2.L3.F.LC.3500, P2.L3.F.LC.3180 |  | 75d |
| P2.L3.F.LC.3450 |  | Flooring - Epoxy Floors / L3 / Hybrid OR | 2d | 2026-07-27 | 2026-07-28 | P2.L3.F.LC.3440 |  | 75d |
| P2.L3.F.LC.3190 |  | Casework (After Flooring) / L3 / Hybrid OR, MRI | 1d | 2026-07-29 | 2026-07-29 | P2.L3.F.LC.3450 |  | 75d |
| P2.L3.F.LC.2530 |  | Integrated Ceilings Panel Install (Finishes) / L3 / Hybrid OR, MRI | 15d | 2026-07-30 | 2026-08-19 | P2.L3.LC.1610, P2.L3.F.LC.3200, P2.L3.F.LC.3190, P2.L3.F.LC.3450, P2.L3.LC.2480, BP1.095.3.220 |  | 75d |
| P2.L3.F.LC.3210 |  | Wall Protection / L3 / Hybrid OR, MRI | 5d | 2026-07-30 | 2026-08-05 | P2.L3.F.LC.3190, BP7.102.3.300 |  | 85d |
| P2.L3.F.LC.3220 |  | Plumbing Fixtures & Drinking Fountains / L3 / Hybrid OR, MRI | 5d | 2026-07-30 | 2026-08-05 | P2.L3.F.LC.3190, P2.L3.F.LC.3490 |  | 92d |
| P2.L3.F.LC.3260 |  | Doors & Hardware / L3 / Hybrid OR, MRI | 5d | 2026-07-30 | 2026-08-05 | P2.L3.F.LC.3190 |  | 92d |
| P2.L3.F.LC.3230 |  | Trim T-Stats / L3 / Hybrid OR, MRI | 5d | 2026-08-20 | 2026-08-26 | P2.L3.F.LC.3210, P2.L3.F.LC.2530 |  | 77d |
| P2.L3.F.LC.3240 |  | Trim Electrical / L3 / Hybrid OR, MRI | 5d | 2026-08-20 | 2026-08-26 | P2.L3.F.LC.3230 SS, P2.L3.F.LC.2530 |  | 77d |
| P2.L3.F.LC.3250 |  | Trim Telephone/ Data / L3 / Hybrid OR, MRI | 5d | 2026-08-20 | 2026-08-26 | P2.L3.F.LC.3240 SS, P2.L3.F.LC.2530 |  | 77d |
| P2.L3.F.LC.3270 |  | Trim Med Gas / L3 / Hybrid OR, MRI | 5d | 2026-08-20 | 2026-08-26 | P2.L3.F.LC.3190, P2.L3.F.LC.3210, P2.L3.F.LC.2530 |  | 75d |
| P2.L3.F.LC.3280 |  | Floor Prep / L3 / MRI | 5d | 2026-08-27 | 2026-09-02 | P2.L3.F.LC.3200, P2.L3.F.LC.3260, P2.L3.F.LC.3230, P2.L3.F.LC.3240, P2.L3.F.LC.3250, P2.L3.F.LC.3220, P2.L3.F.LC.3270 |  | 77d |
| P2.L3.F.LC.3290 |  | Flooring / L3 / MRI | 5d | 2026-09-03 | 2026-09-10 | P2.L3.F.LC.3280 |  | 77d |
| P2.L3.F.LC.3300 |  | Building Specialities / L3 / Hybrid OR, MRI | 5d | 2026-09-11 | 2026-09-17 | P2.L3.F.LC.3290 |  | 77d |
| P2.L3.F.LC.3310 |  | Interior Building Signage / L3 / Hybrid OR, MRI | 5d | 2026-09-11 | 2026-09-17 | P2.L3.F.LC.3290 |  | 77d |
| P2.L3.F.LC.3330 |  | Remaining Equipment Post Flooring / L3 / Hybrid OR, MRI | 5d | 2026-09-11 | 2026-09-17 | P2.L3.F.LC.3290, P2.L3.F.LC.3190, P2.L3.F.LC.3450 |  | 77d |
| P2.L3.F.LC.3320 |  | Work Completion List - Finishes / L3 / Hybrid OR, MRI | 5d | 2026-09-18 | 2026-09-24 | P2.L3.F.LC.3310, P2.L3.F.LC.3300 |  | 77d |
| P2.L3.F.LC.3340 |  | Remaining MEP Hook-Ups / L3 / Hybrid OR, MRI | 5d | 2026-09-18 | 2026-09-24 | P2.L3.F.LC.3330, P2.L3.F.LC.3500 |  | 77d |
| P2.L3.F.LC.3350 |  | OFOI Furniture & Equipment / L3 / Hybrid OR, MRI | 5d | 2026-09-18 | 2026-09-24 | P2.L3.F.LC.3340 SS, OFOI.EQUIP.L3.1050, OFOI.EQUIP.L3.1010, OFOI.EQUIP.L3.1020, OFOI.EQUIP.L3.1030, OFOI.EQUIP.L3.1040, OFOI.EQUIP.L3.1000 |  | 87d |
| P2.L3.F.LC.3360 |  | Rough Clean / L3 / Hybrid OR, MRI | 5d | 2026-09-25 | 2026-10-01 | P2.L3.F.LC.3340, P2.L3.F.LC.3320 |  | 77d |
| P2.L3.F.LC.3370 |  | Prepare Punchlist / L3 / Hybrid OR, MRI | 5d | 2026-10-02 | 2026-10-08 | P2.L3.F.LC.3340 SS, P2.L3.F.LC.3360 |  | 77d |
| P2.L3.F.LC.3380 |  | Correct Punchlist / L3 / Hybrid OR, MRI | 10d | 2026-10-09 | 2026-10-22 | P2.L3.F.LC.3370, P2.L3.F.LC.3350 |  | 77d |
| P2.L3.F.LC.3390 |  | Final Clean / L3 / Hybrid OR, MRI | 5d | 2026-10-23 | 2026-10-29 | P2.L3.F.LC.3380 |  | 77d |
|  | 1 | **MECHANICAL TOWERS / LEVEL 3** |  | 2025-03-27 | 2026-03-11 |  |  |  |
|  | 4 | **South Mechanical Tower / Rough In & Finish / Level 3** |  | 2025-05-12 | 2026-03-11 |  |  |  |
| P2.L3.SMT.1105 |  | HVAC Duct Connections to Shaft Riser / L3 - S. Mech Tower | 5d | 2025-05-12 A | 2025-05-16 A | P2.L3.SMT.1070 | 100% |  |
| P2.L3.SMT.1070 |  | Set & Connect - Mech Equipment / L3 - S. Mech Tower | 10d | 2025-06-02 A | 2025-06-13 A | P2.L2.SMT.1070 | 100% |  |
| P2.L3.SMT.1020 |  | In Wall - Electrical - CMU / L3 - S. Mech Tower | 10d | 2025-06-30 A | 2025-07-05 A | P2.L3.SMT.1010 SS | 100% |  |
| P2.L3.SMT.1030 |  | In Wall - Mech/Plumbing - CMU / L3 - S. Mech Tower | 10d | 2025-06-30 A | 2025-07-05 A | P2.L3.SMT.1010 SS | 100% |  |
| P2.L3.SMT.1000 |  | Insulation - Exterior Wall Assembly / L3 - S. Mech Tower | 5d | 2025-07-01 A | 2025-07-08 A | P2.FAC.2.Z1.140 | 100% |  |
| P2.L3.SMT.1130 |  | Test/Inspect Duct & Piping / L3 - S. Mech Tower | 5d | 2025-08-08 A | 2025-08-14 A | P2.L3.SMT.1100, P2.L3.SMT.1105 | 100% |  |
| P2.L3.SMT.1100 |  | HVAC Piping Connections to Shaft Riser / L3 - S. Mech Tower | 5d | 2025-09-02 A | 2025-09-08 A | P2.L3.SMT.1070 | 100% |  |
| P2.L3.SMT.1010 |  | CMU - Lay Block / L3 - S. Mech Tower | 10d | 2025-09-18 A | 2025-09-24 A | P2.L2.SMT.1010, P2.L3.SMT.1000 | 100% |  |
| P2.L3.SMT.1040 |  | Paint - CMU Block Fill / L3 - S. Mech Tower | 10d | 2025-09-25 A | 2025-10-10 A | P2.L3.SMT.1010 | 100% |  |
| P2.L3.SMT.1050 |  | CMU - Point & Patch / L3 - S. Mech Tower | 10d | 2025-10-13 A | 2025-10-15 A | P2.L3.SMT.1030, P2.L3.SMT.1020, P2.L3.SMT.1040 | 100% |  |
| P2.L3.SMT.1060 |  | Paint Prime & 1st Coat - CMU / L3 - S. Mech Tower | 10d | 2025-10-15 A | 2025-10-17 A | P2.L3.SMT.1050 SS | 100% |  |
| P2.L3.SMT.1080 |  | Set & Connect - Elect Panels and Equipment / L3 - S. Mech Tower | 5d | 2025-10-27 A | 2025-11-07 A | P2.L3.SMT.1060 | 100% |  |
| P2.L3.SMT.1120 |  | BAS - Equip Tie In / L3 - S. Mech Tower | 5d | 2025-10-27 A | 2025-11-07 A | P2.L3.SMT.1070, P2.L3.SMT.1060 | 100% |  |
| P2.L3.SMT.1090 |  | Panelboards, Interconnect Wiring, and Remaining Room Buildout of All Elec/FA Systems / L3 - S. Mech Tower | 10d | 2025-12-01 | 2025-12-12 | BP1.262.3.200, BP1.262.3.100, P2.L3.SMT.1080 |  | 29d |
| P2.L3.SMT.1140 |  | Pull Wire - In From Distribution Panels / Out to Branch Circuits / L3 - S. Mech Tower | 5d | 2025-12-15 | 2025-12-19 | P2.L3.SMT.1090 |  | 29d |

| ID | WBS | Task | Duration | Start | Finish | Predecessors | Complete | Total float |
| --- | --- | --- | --- | --- | --- | --- | --- | --- |
| P2.L3.SMT.1160 |  | Electrical Tie in to Equipment / L3 - S. Mech Tower | 5d | 2025-12-22 | 2025-12-29 | P2.L3.SMT.1070, P2.L3.SMT.1140 |  | 222d |
| P2.L3.SMT.1170 |  | Test & Terminate / L3 - S. Mech Tower | 5d | 2025-12-22 | 2025-12-29 | P2.L3.SMT.1140 |  | 29d |
| P2.L3.SMT.1180 |  | Paint - Finish Coat / L3 - S. Mech Tower | 2d | 2025-12-30 | 2025-12-31 | P2.L3.SMT.1170 |  | 29d |
| P2.L3.SMT.1190 |  | Trim All MEPF Finishes / L3 - S. Mech Tower | 2d | 2026-01-02 | 2026-01-05 | P2.L3.SMT.1180 |  | 29d |
| P2.L3.SMT.1250 |  | Prep Flooring - Epoxy Floors / L3 - S. Mech Tower | 2d | 2026-01-06 | 2026-01-07 | P2.L2.SMT.1200, P2.L3.SMT.1190 |  | 29d |
| P2.L3.SMT.1200 |  | Flooring - Epoxy Floors / L3 - S. Mech Tower | 2d | 2026-01-08 | 2026-01-09 | P2.L3.SMT.1250 |  | 29d |
| P2.L3.SMT.1210 |  | Doors & Hardware / L3 - S. Mech Tower | 2d | 2026-01-12 | 2026-01-13 | P2.L3.SMT.1200 |  | 79d |
| P2.L3.SMT.1110 |  | HVAC Piping - Equip Tie In / L3 - S. Mech Tower | 10d | 2026-01-28 | 2026-02-10 | P2.L3.SMT.1070, CX.B2.HYDR.1000 |  | 54d |
| P2.L3.SMT.1150 |  | Insulate HVAC / Plumbing Pipe / L3 - S. Mech Tower | 5d | 2026-02-11 | 2026-02-17 | P2.L3.SMT.1130, P2.L3.SMT.1110 |  | 54d |
| P2.L3.SMT.1340 |  | Wall Protection / L3 - S. Mech Tower | 5d | 2026-02-19 | 2026-02-25 | P2.L3.SMT.1180, BP7.102.3.300 |  | 48d |
| P2.L3.SMT.1220 |  | Trades Inspect & Verify R/I Work Completed to Specs / L3 - S. Mech Tower | 5d | 2026-02-26 | 2026-03-04 | P2.L3.SMT.1150, P2.L3.SMT.1210, P2.L3.SMT.1120, P2.L3.SMT.1340 |  | 48d |
| P2.L3.SMT.1240 |  | Energize Elec Panels - Lock Doors and Limit Access / L3 - S. Mech Tower | 5d | 2026-03-05 | 2026-03-11 | CX.B2.SWGR.1010, CX.B2.MVEE.1010, P2.L3.SMT.1220 |  | 48d |
| P2.L3.SMT.1230 |  | HVAC System Ready for Start Up / L3 - S. Mech Tower | 0d | 2026-03-11 | 2026-03-11 | P2.L3.SMT.1160 FF, P2.L3.SMT.1240 |  | 171d |
|  | 8 | **East Mechanical Tower / Rough In & Finish / Level 3** |  | 2025-03-27 | 2026-03-04 |  |  |  |
| P2.L3.EMT.1070 |  | Set & Connect - Mech Equipment / L3 - E. Mech Tower | 10d | 2025-03-27 A | 2025-03-31 A | P2.3.03.620, P2.L2.EMT.1070 | 100% |  |
| P2.L3.EMT.1020 |  | In Wall - Electrical - CMU / L3 - E. Mech Tower | 10d | 2025-07-25 A | 2025-07-27 A | P2.L3.EMT.1010 SS | 100% |  |
| P2.L3.EMT.1030 |  | In Wall - Mech/Plumbing - CMU / L3 - E. Mech Tower | 10d | 2025-07-25 A | 2025-07-27 A | P2.L3.EMT.1010 SS | 100% |  |
| P2.L3.EMT.1270 |  | OH - Elevator Priority Conduit / L3 - E. Mech Tower | 5d | 2025-07-25 A | 2025-07-30 A | P2.3.03.620, P2.L4.N.1030 | 100% |  |
| P2.L3.EMT.1000 |  | Insulation - Exterior Wall Assembly / L3 - E. Mech Tower | 5d | 2025-08-18 A | 2025-08-22 A | P2.FAC.2.Z3.140 | 100% |  |
| P2.L3.EMT.1100 |  | HVAC Piping Connections to Shaft Riser / L3 - E. Mech Tower | 5d | 2025-09-03 A | 2025-09-19 A | P2.L3.EMT.1070 | 100% |  |
| P2.L3.EMT.1010 |  | CMU - Lay Block / L3 - E. Mech Tower | 10d | 2025-09-10 A | 2025-09-24 A | BP4.040.3.100, P2.L3.EMT.1000 | 100% |  |
| P2.L3.EMT.1040 |  | Paint - CMU Block Fill / L3 - E. Mech Tower | 10d | 2025-09-29 A | 2025-10-14 A | P2.L3.EMT.1010 | 100% |  |
| P2.L3.EMT.1050 |  | CMU - Point & Patch / L3 - E. Mech Tower | 10d | 2025-09-29 A | 2025-10-14 A | P2.L3.EMT.1020, P2.L3.EMT.1040, P2.L3.EMT.1030 | 100% |  |
| P2.L3.EMT.1060 |  | Paint Prime & 1st Coat - CMU / L3 - E. Mech Tower | 10d | 2025-09-29 A | 2025-10-14 A | P2.L3.EMT.1050 SS | 100% |  |
| P2.L3.EMT.1280 |  | Pull Wire - Elevator Priority Conduit / L3 - E. Mech Tower | 5d | 2025-10-01 A | 2025-10-07 A | P2.L3.EMT.1270 | 100% |  |
| P2.L3.EMT.1080 |  | Set & Connect - Elect Panels and Equipment / L3 - E. Mech Tower | 5d | 2025-10-15 A | 2025-10-21 A | P2.L3.EMT.1060 | 100% |  |
| P2.L3.EMT.1120 |  | BAS - Equip Tie In / L3 - E. Mech Tower | 5d | 2025-10-15 A | 2025-10-21 A | P2.L3.EMT.1070, P2.L3.EMT.1060 | 100% |  |
| P2.L3.EMT.1200 |  | Flooring Prep - Epoxy Floors / L3 - E. Mech Tower | 3d | 2025-11-17 A | 2025-11-19 A | P2.L2.EMT.1260, P2.L3.EMT.1080 | 100% |  |
| P2.L3.EMT.1140 |  | Pull Wire - In From Distribution Panels / Out to Branch Circuits / L3 - E. Mech Tower | 5d | 2025-11-18 A | 2025-12-01 | P2.L3.EMT.1080 | 80% | 102d |
| FRG.P2.L3.EMT.1010 |  | AHU Piping Install / L3 - E. Mech Tower - FRAGNET | 15d | 2025-12-01 | 2025-12-19 | FRG.P2.L2.EMT.1010 |  | 39d |
| P2.L3.EMT.1105 |  | HVAC Duct Connections to Shaft Riser / L3 - E. Mech Tower | 5d | 2025-12-01 | 2025-12-05 | P2.L3.EMT.1070 |  | 222d |
| P2.L3.EMT.1260 |  | Energize Elec Panels - Elevator Priority / L3 - E. Mech Tower | 0d | 2025-12-01 | 2025-12-01 | BP1.262.3.100, P2.L3.EMT.1280 |  | 246d |
| P2.L3.EMT.1160 |  | Electrical Tie in to Equipment / L3 - E. Mech Tower | 5d | 2025-12-02 | 2025-12-08 | P2.L3.EMT.1140, P2.L3.EMT.1070 |  | 108d |
| P2.L3.EMT.1170 |  | Test & Terminate / L3 - E. Mech Tower | 5d | 2025-12-02 | 2025-12-08 | P2.L3.EMT.1140 |  | 102d |
| P2.L3.EMT.1130 |  | Test/Inspect Duct & Piping / L3 - E. Mech Tower | 5d | 2025-12-08 | 2025-12-12 | P2.L3.EMT.1105, P2.L3.EMT.1100 |  | 222d |
| P2.L3.EMT.1180 |  | Paint - Finish Coat / L3 - E. Mech Tower | 2d | 2025-12-09 | 2025-12-10 | P2.L3.EMT.1170 |  | 102d |
| P2.L3.EMT.1190 |  | Trim All MEPF Finishes / L3 - E. Mech Tower | 2d | 2025-12-11 | 2025-12-12 | P2.L3.EMT.1180 |  | 102d |
| P2.L3.EMT.1210 |  | Doors & Hardware / L3 - E. Mech Tower | 2d | 2025-12-15 | 2025-12-16 | P2.L3.EMT.1190 |  | 102d |
| P2.L3.EMT.1250 |  | Flooring - Epoxy Floors / L3 - E. Mech Tower | 2d | 2025-12-15 | 2025-12-16 | P2.L3.EMT.1200 |  | 48d |
| P2.L3.EMT.1090 |  | Panelboards, Interconnect Wiring, and Remaining Room Buildout of All Elec/FA Systems / L3 - E. Mech Tower | 10d | 2025-12-17 | 2025-12-31 | P2.L3.EMT.1250, BP1.262.3.200, BP1.262.3.100, P2.L3.EMT.1080, P2.L3.EMT.1140 |  | 92d |
| P2.L3.EMT.1110 |  | HVAC Piping - Equip Tie In / L3 - E. Mech Tower | 10d | 2026-01-28 | 2026-02-10 | P2.L3.EMT.1070, CX.B2.HYDR.1000 |  | 182d |
| P2.L3.EMT.1240 |  | Energize Elec Panels - Lock Doors and Limit Access / L3 - E. Mech Tower | 5d | 2026-02-02 | 2026-02-06 | CX.B2.SWGR.1010, CX.B2.MVEE.1010, P2.L3.EMT.1090, P2.L3.EMT.1140, P2.L3.EMT.1160, P2.L3.EMT.1170, P2.L3.EMT.1190, P2.L3.EMT.1210 |  | 71d |
| P2.L3.EMT.1150 |  | Insulate HVAC / Plumbing Pipe / L3 - E. Mech Tower | 5d | 2026-02-11 | 2026-02-17 | P2.L3.EMT.1110, P2.L3.EMT.1130 |  | 182d |
| P2.L3.EMT.1340 |  | Wall Protection / L3 - E. Mech Tower | 5d | 2026-02-19 | 2026-02-25 | P2.L3.EMT.1180, BP7.102.3.300 |  | 176d |
| P2.L3.EMT.1220 |  | Trades Inspect & Verify R/I Work Completed to Specs / L3 - E. Mech Tower | 5d | 2026-02-26 | 2026-03-04 | P2.L3.EMT.1210, P2.L3.EMT.1120, P2.L3.EMT.1150, P2.L3.EMT.1340, FRG.P2.L3.EMT.1010 |  | 176d |
| P2.L3.EMT.1230 |  | HVAC System Ready for Start Up / L3 - E. Mech Tower | 0d | 2026-03-04 | 2026-03-04 | P2.L3.EMT.1240, P2.L3.EMT.1160 FF, P2.L3.EMT.1220 FF, FRG.P2.L3.EMT.1010 |  | 176d |
|  | L4 | **L4 / BUILDOUT** |  | 2024-12-24 | 2026-12-18 |  |  |  |
|  | L4 | **CORE & SUPPORT SPACES / LEVEL 4** |  | 2024-12-24 | 2026-12-18 |  |  |  |
|  | 2 | **ROUGH IN - Core & Support Spaces / Level 4** |  | 2024-12-24 | 2026-04-14 |  |  |  |
|  | Z112 | **South / Level 4** |  | 2025-02-17 | 2026-04-14 |  |  |  |
| P2.L4.S.1000 |  | Layout - All Trades / L4 / South | 5d | 2025-02-17 A | 2025-03-03 A | P2.5.03.610 | 100% |  |
| P2.L4.S.1010 |  | Framing - Top Track / L4 / South | 10d | 2025-02-26 A | 2025-03-10 A | P2.L4.S.1000, P2.L3.S.1010 | 100% |  |
| P2.L4.S.1020 |  | OH - Structural Supports (All Trades) / L4 / South | 5d | 2025-03-10 A | 2025-03-17 A | P2.L4.S.1000 | 100% |  |
| P2.L4.S.1030 |  | OH - MEPF - Hangers & Supports / L4 / South | 10d | 2025-03-10 A | 2025-03-21 A | P2.L4.S.1000, P2.BIM.L4.40.140 | 100% |  |
| P2.L4.S.1170 |  | OH - Fire Suppression / L4 / South | 10d | 2025-05-05 A | 2025-05-23 A | P2.L4.S.1030, P2.L4.S.1150 | 100% |  |
| P2.L4.S.1090 |  | Framing - Priority Walls & Door Frames / L4 / South | 10d | 2025-05-21 A | 2025-05-30 A | P2.L4.S.1010, P2.L3.S.1090 | 100% |  |
| P2.L4.S.1130 |  | Framing - Priority Walls - AHJ Inspections / L4 / South | 5d | 2025-05-22 A | 2025-06-19 A | P2.L4.S.1090 | 100% |  |
| P2.L4.S.1160 |  | Spray/Seal/Firestop - Head of Wall - Priority Walls / L4 / South | 5d | 2025-05-27 A | 2025-06-19 A | P2.L4.S.1140 FF | 100% |  |
| P2.L4.S.1180 |  | OH - Plumbing Piping / L4 / South | 10d | 2025-05-30 A | 2025-06-30 A | P2.L4.S.1030, P2.L4.S.1150, P2.L3.S.1180 | 100% |  |
| P2.L4.S.1190 |  | OH - Electrical - 480/277v Distribution / L4 / South | 10d | 2025-05-30 A | 2025-06-30 A | P2.L4.S.1030, P2.L4.S.1150 | 100% |  |
| P2.L4.S.1140 |  | Hang/Tape/Finish - Priority Walls / L4 / South | 5d | 2025-06-09 A | 2025-06-30 A | P2.L4.S.1020, P2.L4.S.1130 | 100% |  |
| P2.L4.S.1150 |  | Paint Prime & 1st Coat - Priority Walls / L4 / South | 10d | 2025-06-10 A | 2025-06-25 A | P2.L4.S.1160 SS | 100% |  |
| P2.L4.S.1220 |  | OH - HVAC Piping (High) / L4 / South | 20d | 2025-06-12 A | 2025-07-31 A | P2.L4.S.1030, P2.L4.S.1170 | 100% |  |
| P2.L4.S.1230 |  | OH - Electrical - 208/120v Branch / L4 / South | 10d | 2025-06-23 A | 2025-08-04 A | P2.L4.S.1190 | 100% |  |
| P2.L4.S.1200 |  | Firestop - Thru Wall - Priority Walls / L4 / South | 5d | 2025-07-01 A | 2025-07-08 A | P2.L4.S.1150 | 100% |  |
| P2.L4.S.1210 |  | OH - Hang Duct - HP Mains / L4 / South | 10d | 2025-07-21 A | 2025-08-26 A | P2.L4.S.1200, P2.L4.S.1030, P2.L3.S.1210 FF+5d | 100% |  |
| P2.L4.S.1310 |  | OH - Set & Connect Mech Equipment / L4 / South | 10d | 2025-07-22 A | 2025-08-04 A | P2.L4.S.1260 | 100% |  |
| P2.L4.S.1560 |  | OH - HVAC Piping (Low) / L4 / South | 20d | 2025-07-22 A | 2025-08-07 A | P2.L4.S.1220 | 100% |  |
| P2.L4.S.1270 |  | OH - HVAC Piping - Test / L4 / South | 20d | 2025-08-07 A | 2025-08-27 A | P2.L4.S.1560 | 100% |  |
| FRG.P2.L4.S.1820 |  | HVAC Piping - Hanging Copper Racks / L4 / South - FRAGNET | 20d | 2025-08-14 A | 2025-09-18 A | P2.L4.S.1560 | 100% |  |

| ID | WBS | Task | Duration | Start | Finish | Predecessors | Complete | Total float |
| --- | --- | --- | --- | --- | --- | --- | --- | --- |
| P2.L4.S.1290 |  | OH - Insulate HP Duct / L4 / South | 10d | 2025-08-22 A | 2025-10-02 A | P2.L4.S.1260 | 100% |  |
| P2.L4.S.1260 |  | OH - DALT - HP Mains / L4 / South | 10d | 2025-08-27 A | 2025-09-30 A | P2.L4.S.1210 | 100% |  |
| P2.L4.S.1340 |  | OH - Insulate HVAC Pipe / L4 / South | 10d | 2025-08-28 A | 2025-10-06 A | P2.L4.S.1290, P2.L4.S.1270, FRG.P2.L4.S.1820 | 100% |  |
| P2.L4.S.1380 |  | OH - Conduit - Low Volt - Fire Alarm / L4 / South | 10d | 2025-09-01 A | 2025-09-11 A | P2.L4.S.1310, P2.L4.S.1350 | 100% |  |
| P2.L4.S.1370 |  | OH - Conduit - Low Volt - BAS/Controls / L4 / South | 10d | 2025-09-08 A | 2025-10-13 A | P2.L4.S.1310, P2.L4.S.1340 | 100% |  |
| P2.L4.S.1300 |  | OH - Hang Duct - LP Branch / L4 / South | 20d | 2025-09-16 A | 2025-12-09 | P2.L4.S.1260 | 65% | 60d |
| P2.L4.S.1390 |  | OH - Conduit - Low Volt - Telecom / L4 / South | 10d | 2025-09-22 A | 2025-10-27 A | P2.L4.S.1350 | 100% |  |
| P2.L4.S.1240 |  | OH - Plumbing - Test / L4 / South | 10d | 2025-10-08 A | 2025-10-16 A | P2.L4.S.1180 | 100% |  |
| P2.L4.S.1280 |  | OH - Insulate Plumbing / L4 / South | 10d | 2025-10-17 A | 2025-10-28 A | P2.L4.S.1240 | 100% |  |
| P2.L4.S.1420 |  | Framing - Balance of Framing & Door Frames / L4 / South | 10d | 2025-11-17 A | 2025-11-20 A | P2.L2.N.1410 | 100% |  |
| P2.L4.S.1250 |  | Pull Wire - Electrical - 480/277v Distribution / L4 / South | 10d | 2025-12-01 | 2025-12-12 | P2.L4.S.1190, P2.4.HE.3959.1050, P2.4.HE.5966.1050 |  | 89d |
| P2.L4.S.1320 |  | OH - Electrical - Equip Tie In / L4 / South | 10d | 2025-12-01 | 2025-12-12 | P2.L4.S.1310 |  | 69d |
| P2.L4.S.1400 |  | OH - Conduit - Low Volt - Security / L4 / South | 10d | 2025-12-01 | 2025-12-12 | P2.L4.S.1340 |  | 79d |
| P2.L4.S.1430 |  | In Wall - Plumbing - Framing / L4 / South | 10d | 2025-12-01 | 2025-12-12 | P2.L4.S.1420 |  | 59d |
| P2.L4.S.1440 |  | In Wall - Electrical - Framing / L4 / South | 10d | 2025-12-01 | 2025-12-12 | P2.L4.S.1230, P2.L4.S.1420 |  | 59d |
| P2.L4.S.1450 |  | In Wall - Backing/Blocking/Supports / L4 / South | 10d | 2025-12-01 | 2025-12-12 | P2.L4.S.1420 |  | 59d |
| P2.L4.S.1480 |  | Spray/Seal/Firestop - Head of Wall / L4 / South | 10d | 2025-12-01 | 2025-12-12 | P2.L4.S.1420 FF |  | 89d |
| P2.L4.S.1350 |  | OH - Insulate LP Duct / L4 / South | 10d | 2025-12-10 | 2025-12-23 | P2.L4.S.1300 |  | 60d |
| P2.L4.S.1360 |  | Pull Wire - Electrical - 208/120v Branch & Equip / L4 / South | 20d | 2025-12-15 | 2026-01-13 | P2.L4.S.1230, P2.L4.S.1320, P2.L4.S.1440 |  | 69d |
| P2.L4.S.1460 |  | AHJ Inspections - Wall Close In / L4 / South | 5d | 2025-12-15 | 2025-12-19 | P2.L4.S.1450, P2.L4.S.1430, P2.L4.S.1440 |  | 59d |
| P2.L4.S.1410 |  | OH - Conduit - Low Volt - Medical Services/Nurse Call (?) / L4 / South | 10d | 2025-12-24 | 2026-01-08 | P2.L4.S.1350 |  | 62d |
| P2.L4.S.1330 |  | OH - HVAC Piping - Equip Tie In / L4 / South | 15d | 2026-01-28 | 2026-02-17 | P2.L4.S.1310, P2.L4.S.1270, CX.B2.HYDR.1000 |  | 44d |
| P2.L4.S.1470 |  | Hang-Tape-Finish - Walls and Hard Lid Ceilings / L4 / South | 15d | 2026-03-04 | 2026-03-24 | P2.L4.S.1460, P2.SUM.175, P2.MR.W.9030, P2.L3.S.1470 |  | 9d |
| P2.L4.S.1490 |  | Firestop - Thru Wall / L4 / South | 10d | 2026-03-25 | 2026-04-07 | P2.L4.S.1470, P2.L4.S.1280 |  | 9d |
| P2.L4.S.1500 |  | Pull Wire - Low Volt - BAS/Controls / L4 / South | 10d | 2026-03-25 | 2026-04-07 | P2.L4.S.1470, P2.L4.S.1370 |  | 9d |
| P2.L4.S.1510 |  | Pull Wire - Low Volt - Fire Alarm / L4 / South | 10d | 2026-03-25 | 2026-04-07 | P2.L4.S.1470, P2.L4.S.1380 |  | 9d |
| P2.L4.S.1520 |  | Pull Wire - Low Volt - Telecom / L4 / South | 10d | 2026-03-25 | 2026-04-07 | P2.L4.S.1470, P2.L4.S.1390 |  | 9d |
| P2.L4.S.1530 |  | Pull Wire - Low Volt - Security / L4 / South | 10d | 2026-03-25 | 2026-04-07 | P2.L4.S.1470, P2.L4.S.1400 |  | 9d |
| P2.L4.S.1540 |  | Pull Wire - Low Volt - Medical Services/Nurse Call (?) / L4 / South | 10d | 2026-03-25 | 2026-04-07 | P2.L4.S.1470, P2.L4.S.1410 |  | 9d |
| P2.L4.S.1550 |  | Trades Inspect & Verify R/I Work Completed to Specs / L4 / South | 5d | 2026-04-08 | 2026-04-14 | P2.L4.S.1490, P2.L4.S.1480, P2.L4.S.1530, P2.L4.S.1250, P2.L4.S.1540, P2.L4.S.1360, P2.L4.S.1500, P2.L4.S.1510, P2.L4.S.1520, P2.L4.S.1330 |  | 9d |
|  | Z1111 | **North / Level 4** |  | 2025-03-03 | 2026-04-14 |  |  |  |
| P2.L4.N.1000 |  | Layout - All Trades / L4 / North | 5d | 2025-03-03 A | 2025-03-07 A | P2.5.03.630 | 100% |  |
| P2.L4.N.1010 |  | Framing - Top Track / L4 / North | 10d | 2025-03-03 A | 2025-03-07 A | P2.L3.N.1010, P2.L4.N.1000 FF+5d | 100% |  |
| P2.L4.N.1030 |  | OH - MEPF - Hangers & Supports / L4 / North | 10d | 2025-03-10 A | 2025-03-22 A | P2.L4.N.1000, P2.BIM.L4.40.140 | 100% |  |
| P2.L4.N.1090 |  | Framing - Priority Walls & Door Frames / L4 / North | 10d | 2025-03-25 A | 2025-04-04 A | P2.L4.N.1030, P2.L4.N.1010, P2.L3.N.1090 SS | 100% |  |
| P2.L4.N.1130 |  | Framing - Priority Walls - AHJ Inspections / L4 / North | 5d | 2025-04-07 A | 2025-04-11 A | P2.L4.N.1090 | 100% |  |
| P2.L4.N.1020 |  | OH - Structural Supports (All Trades) / L4 / North | 5d | 2025-04-28 A | 2025-04-30 A | P2.L4.N.1000 | 100% |  |
| P2.L4.N.1160 |  | Spray/Seal/Firestop - Head of Wall - Priority Walls / L4 / North | 5d | 2025-04-28 A | 2025-05-01 A | P2.L4.N.1140 FF | 100% |  |
| P2.L4.N.1170 |  | OH - Fire Suppression / L4 / North | 10d | 2025-05-12 A | 2025-05-23 A | P2.L4.N.1030, P2.L4.N.1150 | 100% |  |
| P2.L4.N.1180 |  | OH - Plumbing Piping / L4 / North | 10d | 2025-05-19 A | 2025-05-30 A | P2.L4.N.1030, P2.L3.N.1180 | 100% |  |
| P2.L4.N.1190 |  | OH - Electrical - 480/277v Distribution / L4 / North | 10d | 2025-05-22 A | 2025-08-07 A | P2.L4.N.1030, P2.L4.N.1150 | 100% |  |
| P2.L4.N.1220 |  | OH - HVAC Piping (High) / L4 / North | 20d | 2025-06-02 A | 2025-06-30 A | P2.L4.N.1030, P2.L4.N.1170 | 100% |  |
| P2.L4.N.1140 |  | Hang/Tape/Finish - Priority Walls / L4 / North | 10d | 2025-06-12 A | 2025-06-30 A | P2.L4.N.1020, P2.L4.N.1130 | 100% |  |
| P2.L4.N.1150 |  | Paint Prime & 1st Coat - Priority Walls / L4 / North | 10d | 2025-06-16 A | 2025-06-27 A | P2.L4.N.1160 SS | 100% |  |
| P2.L4.N.1230 |  | OH - Electrical - 208/120v Branch / L4 / North | 10d | 2025-06-16 A | 2025-06-27 A | P2.L4.N.1190 | 100% |  |
| P2.L4.N.1560 |  | OH - HVAC Piping (Low) / L4 / North | 20d | 2025-06-23 A | 2025-08-14 A | P2.L4.N.1220 | 100% |  |
| P2.L4.N.1200 |  | Firestop - Thru Wall - Priority Walls / L4 / North | 5d | 2025-06-30 A | 2025-07-07 A | P2.L4.N.1150 | 100% |  |
| P2.L4.N.1210 |  | OH - Hang Duct - HP Mains / L4 / North | 10d | 2025-08-01 A | 2025-08-14 A | P2.L4.N.1030, P2.L4.N.1200, P2.L3.N.1210 FF | 100% |  |
| FRG.P2.L4.N.1810 |  | HVAC Piping - Hanging Copper Racks / L4 / North - FRAGNET | 20d | 2025-08-14 A | 2025-09-18 A | P2.L4.N.1560 | 100% |  |
| P2.L4.N.1260 |  | OH - DALT - HP Mains / L4 / North | 10d | 2025-08-15 A | 2025-08-28 A | P2.L4.N.1210 | 100% |  |
| P2.L4.N.1270 |  | OH - HVAC Piping - Test / L4 / North | 20d | 2025-08-15 A | 2025-10-03 A | P2.L4.N.1560, FRG.P2.L4.N.1810 | 100% |  |
| P2.L4.N.1310 |  | OH - Set & Connect Mech Equipment / L4 / North | 10d | 2025-08-15 A | 2025-08-29 A | P2.L4.N.1260 | 100% |  |
| P2.L4.N.1290 |  | OH - Insulate HP Duct / L4 / North | 10d | 2025-08-29 A | 2025-10-13 A | P2.L4.N.1260 | 100% |  |
| P2.L4.N.1340 |  | OH - Insulate HVAC Pipe / L4 / North | 10d | 2025-08-29 A | 2025-12-05 | P2.L4.N.1290, P2.L4.N.1270 | 50% | 74d |
| P2.L4.N.1380 |  | OH - Conduit - Low Volt - Fire Alarm / L4 / North | 10d | 2025-09-01 A | 2025-09-11 A | P2.L4.N.1310, P2.L4.N.1350 | 100% |  |
| P2.L4.N.1300 |  | OH - Hang Duct - LP Branch / L4 / North | 15d | 2025-09-22 A | 2025-12-12 | P2.L4.N.1260 | 33% | 48d |
| P2.L4.N.1350 |  | OH - Insulate LP Duct / L4 / North | 10d | 2025-09-29 A | 2025-12-29 | P2.L4.N.1300 |  | 48d |
| P2.L4.N.1390 |  | OH - Conduit - Low Volt - Telecom / L4 / North | 10d | 2025-09-29 A | 2026-01-12 | P2.L4.N.1350 | 10% | 48d |
| P2.L4.N.1240 |  | OH - Plumbing - Test / L4 / North | 15d | 2025-12-01 | 2025-12-19 | P2.L4.N.1180 |  | 64d |
| P2.L4.N.1250 |  | Pull Wire - Electrical - 480/277v Distribution / L4 / North | 10d | 2025-12-01 | 2025-12-12 | P2.L4.N.1190, P2.4.HE.2948.1050, P2.4.HE.2803.1050 |  | 89d |
| P2.L4.N.1320 |  | OH - Electrical - Equip Tie In / L4 / North | 10d | 2025-12-01 | 2025-12-12 | P2.L4.N.1310 |  | 69d |
| P2.L4.N.1420 |  | Framing - Balance of Framing & Door Frames / L4 / North | 10d | 2025-12-01 | 2025-12-12 | P2.L2.N.1410 |  | 49d |
| P2.L4.N.1480 |  | Spray/Seal/Firestop - Head of Wall / L4 / North | 10d | 2025-12-01 | 2025-12-12 | P2.L4.N.1420 FF |  | 89d |
| P2.L4.N.1370 |  | OH - Conduit - Low Volt - BAS/Controls / L4 / North | 10d | 2025-12-08 | 2025-12-19 | P2.L4.N.1310, P2.L4.N.1340 |  | 74d |
| P2.L4.N.1400 |  | OH - Conduit - Low Volt - Security / L4 / North | 10d | 2025-12-08 | 2025-12-19 | P2.L4.N.1340 |  | 74d |
| P2.L4.N.1430 |  | In Wall - Plumbing - Framing / L4 / North | 10d | 2025-12-15 | 2025-12-29 | P2.L4.N.1420 |  | 49d |
| P2.L4.N.1440 |  | In Wall - Electrical - Framing / L4 / North | 10d | 2025-12-15 | 2025-12-29 | P2.L4.N.1420, P2.L4.N.1230 |  | 49d |
| P2.L4.N.1450 |  | In Wall - Backing/Blocking/Supports / L4 / North | 10d | 2025-12-15 | 2025-12-29 | P2.L4.N.1420 |  | 49d |
| P2.L4.N.1280 |  | OH - Insulate Plumbing / L4 / North | 10d | 2025-12-22 | 2026-01-06 | P2.L4.N.1240 |  | 64d |
| P2.L4.N.1360 |  | Pull Wire - Electrical - 208/120v Branch & Equip / L4 / North | 20d | 2025-12-30 | 2026-01-27 | P2.L4.N.1320, P2.L4.N.1230, P2.L4.N.1440 |  | 59d |

| ID | WBS | Task | Duration | Start | Finish | Predecessors | Complete | Total float |
| --- | --- | --- | --- | --- | --- | --- | --- | --- |
| P2.L4.N.1410 |  | OH - Conduit - Low Volt - Medical Services/Nurse Call (?) / L4 / North | 10d | 2025-12-30 | 2026-01-13 | P2.L4.N.1350 |  | 59d |
| P2.L4.N.1460 |  | AHJ Inspections - Wall Close In / L4 / North | 5d | 2025-12-30 | 2026-01-06 | P2.L4.N.1440, P2.L4.N.1450, P2.L4.N.1430 |  | 49d |
| P2.L4.N.1330 |  | OH - HVAC Piping - Equip Tie In / L4 / North | 15d | 2026-01-28 | 2026-02-17 | P2.L4.N.1310, P2.L4.N.1270, CX.B2.HYDR.1000 |  | 44d |
| P2.L4.N.1470 |  | Hang-Tape-Finish - Walls and Hard Lid Ceilings / L4 / North | 15d | 2026-03-04 | 2026-03-24 | P2.L4.N.1460, P2.SUM.175, P2.FAC.5.Z2.220, P2.FAC.5.Z3.150, P2.L3.S.1470 |  | 9d |
| P2.L4.N.1490 |  | Firestop - Thru Wall / L4 / North | 10d | 2026-03-25 | 2026-04-07 | P2.L4.N.1470, P2.L4.N.1280 |  | 9d |
| P2.L4.N.1500 |  | Pull Wire - Low Volt - BAS/Controls / L4 / North | 10d | 2026-03-25 | 2026-04-07 | P2.L4.N.1470, P2.L4.N.1370 |  | 9d |
| P2.L4.N.1510 |  | Pull Wire - Low Volt - Fire Alarm / L4 / North | 10d | 2026-03-25 | 2026-04-07 | P2.L4.N.1470, P2.L4.N.1380 |  | 9d |
| P2.L4.N.1520 |  | Pull Wire - Low Volt - Telecom / L4 / North | 10d | 2026-03-25 | 2026-04-07 | P2.L4.N.1470, P2.L4.N.1390 |  | 9d |
| P2.L4.N.1530 |  | Pull Wire - Low Volt - Security / L4 / North | 10d | 2026-03-25 | 2026-04-07 | P2.L4.N.1470, P2.L4.N.1400 |  | 9d |
| P2.L4.N.1540 |  | Pull Wire - Low Volt - Medical Services/Nurse Call (?) / L4 / North | 10d | 2026-03-25 | 2026-04-07 | P2.L4.N.1470, P2.L4.N.1410 |  | 9d |
| P2.L4.N.1550 |  | Trades Inspect & Verify R/I Work Completed to Specs / L4 / North | 5d | 2026-04-08 | 2026-04-14 | P2.L4.N.1360, P2.L4.N.1500, P2.L4.N.1480, P2.L4.N.1490, P2.L4.N.1510, P2.L4.N.1520, P2.L4.N.1530, P2.L4.N.1250, P2.L4.N.1540, P2.L4.N.1330 |  | 9d |
|  | 1 | **House Electrical Rooms / Level 4** |  | 2025-05-19 | 2026-01-02 |  |  |  |
|  | 9 | **House Electrical Room 4-3959** |  | 2025-05-19 | 2026-01-02 |  |  |  |
| P2.4.HE.3959.1000 |  | Framing and Blocking / L4 / South / 3959 | 3d | 2025-05-19 A | 2025-05-23 A | P2.L4.S.1090 | 100% |  |
| P2.4.HE.3959.1010 |  | In Wall Rough In / L4 / South / 3959 | 2d | 2025-06-02 A | 2025-06-04 A | P2.4.HE.3959.1000 | 100% |  |
| P2.4.HE.3959.1020 |  | Inspections - Wall Close In / L4 / South / 3959 | 2d | 2025-06-06 A | 2025-06-13 A | P2.4.HE.3959.1010 | 100% |  |
| P2.4.HE.3959.1030 |  | Hang-Tape-Finish / L4 / South / 3959 | 5d | 2025-06-16 A | 2025-06-23 A | P2.4.HE.3959.1020, P2.FAC.2.Z1.180, P2.L11.5-9.140 | 100% |  |
| P2.4.HE.3959.1040 |  | Paint Prime & 1st Coat / L4 / South / 3959 | 2d | 2025-06-23 A | 2025-06-30 A | P2.4.HE.3959.1030 | 100% |  |
| P2.4.HE.3959.1050 |  | Cans/Troughs/Backboxes/XFMRs / L4 / South / 3959 | 5d | 2025-07-09 A | 2025-07-15 A | P2.4.HE.3959.1040 | 100% |  |
| P2.4.HE.3959.1060 |  | Risers and OH Conduit Connections / L4 / South / 3959 | 5d | 2025-08-01 A | 2025-08-08 A | P2.4.HE.3959.1050 | 100% |  |
| P2.4.HE.3959.1070 |  | Pull Wire - In From Distribution Panels / Out to Branch Circuits / L4 / South / 3959 | 5d | 2025-11-03 A | 2025-11-07 A | P2.4.HE.3959.1060 | 100% |  |
| P2.4.HE.3959.1080 |  | Panelboards, Interconnect Wiring, and Remaining Room Buildout of All Systems / L4 / South / 3959 | 10d | 2025-12-01 | 2025-12-12 | P2.4.HE.3959.1060, BP1.262.3.100, BP1.262.3.220 |  | 26d |
| P2.4.HE.3959.1090 |  | Test & Terminate / L4 / South / 3959 | 5d | 2025-12-15 | 2025-12-19 | P2.4.HE.3959.1080, P2.4.HE.3959.1070 |  | 26d |
| P2.4.HE.3959.1100 |  | Paint - Finish Coat / L4 / South / 3959 | 2d | 2025-12-22 | 2025-12-23 | P2.4.HE.3959.1090 |  | 26d |
| P2.4.HE.3959.1110 |  | Trim All MEPF Finishes / L4 / South / 3959 | 2d | 2025-12-24 | 2025-12-26 | P2.4.HE.3959.1100 |  | 26d |
| P2.4.HE.3959.1120 |  | Flooring / L4 / South / 3959 | 2d | 2025-12-29 | 2025-12-30 | P2.4.HE.3959.1110 |  | 26d |
| P2.4.HE.3959.1130 |  | Doors & Hardware / L4 / South / 3959 | 2d | 2025-12-31 | 2026-01-02 | P2.4.HE.3959.1120 |  | 26d |
| P2.4.HE.3959.1140 |  | Panels Ready to Energize - Lock Doors and Limit Access / L4 / South / 3959 | 0d | 2026-01-02 | 2026-01-02 | P2.4.HE.3959.1090, P2.4.HE.3959.1130 FF |  | 26d |
|  | 8 | **House Electrical Room 4-2948** |  | 2025-05-21 | 2026-01-02 |  |  |  |
| P2.4.HE.2948.1000 |  | Framing and Blocking / L4 / North / 2948 | 3d | 2025-05-21 A | 2025-05-28 A | P2.L4.N.1090 | 100% |  |
| P2.4.HE.2948.1010 |  | In Wall Rough In / L4 / North / 2948 | 2d | 2025-06-02 A | 2025-06-04 A | P2.4.HE.2948.1000 | 100% |  |
| P2.4.HE.2948.1020 |  | Inspections - Wall Close In / L4 / North / 2948 | 2d | 2025-06-04 A | 2025-06-06 A | P2.4.HE.2948.1010 | 100% |  |
| P2.4.HE.2948.1030 |  | Hang-Tape-Finish / L4 / North / 2948 | 5d | 2025-06-09 A | 2025-06-17 A | P2.4.HE.2948.1020, P2.MR.W.160 | 100% |  |
| P2.4.HE.2948.1040 |  | Paint Prime & 1st Coat / L4 / North / 2948 | 2d | 2025-06-23 A | 2025-06-30 A | P2.4.HE.2948.1030 | 100% |  |
| P2.4.HE.2948.1050 |  | Cans/Troughs/Backboxes/XFMRs / L4 / North / 2948 | 5d | 2025-07-07 A | 2025-07-09 A | P2.4.HE.2948.1040 | 100% |  |
| P2.4.HE.2948.1060 |  | Risers and OH Conduit Connections / L4 / North / 2948 | 5d | 2025-08-11 A | 2025-08-14 A | P2.4.HE.2948.1050 | 100% |  |
| P2.4.HE.2948.1070 |  | Pull Wire - In From Distribution Panels / Out to Branch Circuits / L4 / North / 2948 | 5d | 2025-11-03 A | 2025-11-07 A | P2.4.HE.2948.1060 | 100% |  |
| P2.4.HE.2948.1080 |  | Panelboards, Interconnect Wiring, and Remaining Room Buildout of All Systems / L4 / North / 2948 | 10d | 2025-12-01 | 2025-12-12 | P2.4.HE.2948.1060, BP1.262.3.100, BP1.262.3.220 |  | 26d |
| P2.4.HE.2948.1090 |  | Test & Terminate / L4 / North / 2948 | 5d | 2025-12-15 | 2025-12-19 | P2.4.HE.2948.1070, P2.4.HE.2948.1080 |  | 26d |
| P2.4.HE.2948.1100 |  | Paint - Finish Coat / L4 / North / 2948 | 2d | 2025-12-22 | 2025-12-23 | P2.4.HE.2948.1090 |  | 26d |
| P2.4.HE.2948.1110 |  | Trim All MEPF Finishes / L4 / North / 2948 | 2d | 2025-12-24 | 2025-12-26 | P2.4.HE.2948.1100 |  | 26d |
| P2.4.HE.2948.1120 |  | Flooring / L4 / North / 2948 | 2d | 2025-12-29 | 2025-12-30 | P2.4.HE.2948.1110 |  | 26d |
| P2.4.HE.2948.1130 |  | Doors & Hardware / L4 / North / 2948 | 2d | 2025-12-31 | 2026-01-02 | P2.4.HE.2948.1120 |  | 26d |
| P2.4.HE.2948.1140 |  | Panels Ready to Energize - Lock Doors and Limit Access / L4 / North / 2948 | 0d | 2026-01-02 | 2026-01-02 | P2.4.HE.2948.1090, P2.4.HE.2948.1130 FF |  | 26d |
|  | 7 | **House Electrical Room 4-2803** |  | 2025-05-19 | 2026-01-02 |  |  |  |
| P2.4.HE.2803.1010 |  | In Wall Rough In / L4 / North / 2803 | 2d | 2025-05-19 A | 2025-06-04 A | P2.4.HE.2803.1000 | 100% |  |
| P2.4.HE.2803.1000 |  | Framing and Blocking / L4 / North / 2803 | 3d | 2025-05-21 A | 2025-05-28 A | P2.L4.N.1090 | 100% |  |
| P2.4.HE.2803.1020 |  | Inspections - Wall Close In / L4 / North / 2803 | 2d | 2025-06-04 A | 2025-06-05 A | P2.4.HE.2803.1010 | 100% |  |
| P2.4.HE.2803.1030 |  | Hang-Tape-Finish / L4 / North / 2803 | 5d | 2025-06-11 A | 2025-06-19 A | P2.4.HE.2803.1020, P2.FAC.2.Z1.190, P2.MR.2-8.140 | 100% |  |
| P2.4.HE.2803.1040 |  | Paint Prime & 1st Coat / L4 / North / 2803 | 2d | 2025-06-23 A | 2025-06-30 A | P2.4.HE.2803.1030 | 100% |  |
| P2.4.HE.2803.1050 |  | Cans/Troughs/Backboxes/XFMRs / L4 / North / 2803 | 5d | 2025-07-21 A | 2025-07-24 A | P2.4.HE.2803.1040 | 100% |  |
| P2.4.HE.2803.1060 |  | Risers and OH Conduit Connections / L4 / North / 2803 | 5d | 2025-08-14 A | 2025-08-18 A | P2.4.HE.2803.1050 | 100% |  |
| P2.4.HE.2803.1070 |  | Pull Wire - In From Distribution Panels / Out to Branch Circuits / L4 / North / 2803 | 5d | 2025-11-05 A | 2025-11-11 A | P2.4.HE.2803.1060 | 100% |  |
| P2.4.HE.2803.1080 |  | Panelboards, Interconnect Wiring, and Remaining Room Buildout of All Systems / L4 / North / 2803 | 10d | 2025-12-01 | 2025-12-12 | P2.4.HE.2803.1060, BP1.262.3.100, BP1.262.3.220 |  | 26d |
| P2.4.HE.2803.1090 |  | Test & Terminate / L4 / North / 2803 | 5d | 2025-12-15 | 2025-12-19 | P2.4.HE.2803.1070, P2.4.HE.2803.1080 |  | 26d |
| P2.4.HE.2803.1100 |  | Paint - Finish Coat / L4 / North / 2803 | 2d | 2025-12-22 | 2025-12-23 | P2.4.HE.2803.1090 |  | 26d |
| P2.4.HE.2803.1110 |  | Trim All MEPF Finishes / L4 / North / 2803 | 2d | 2025-12-24 | 2025-12-26 | P2.4.HE.2803.1100 |  | 26d |
| P2.4.HE.2803.1120 |  | Flooring / L4 / North / 2803 | 2d | 2025-12-29 | 2025-12-30 | P2.4.HE.2803.1110 |  | 26d |
| P2.4.HE.2803.1130 |  | Doors & Hardware / L4 / North / 2803 | 2d | 2025-12-31 | 2026-01-02 | P2.4.HE.2803.1120 |  | 26d |
| P2.4.HE.2803.1140 |  | Panels Ready to Energize - Lock Doors and Limit Access / L4 / North / 2803 | 0d | 2026-01-02 | 2026-01-02 | P2.4.HE.2803.1090, P2.4.HE.2803.1130 FF |  | 26d |
|  | 6 | **House Electrical Room 4-5966** |  | 2025-05-21 | 2026-01-02 |  |  |  |
| P2.4.HE.5966.1000 |  | Framing and Blocking / L4 / South / 5966 | 3d | 2025-05-21 A | 2025-05-30 A | P2.L4.S.1090 | 100% |  |
| P2.4.HE.5966.1010 |  | In Wall Rough In / L4 / South / 5966 | 2d | 2025-06-04 A | 2025-06-13 A | P2.4.HE.5966.1000 | 100% |  |
| P2.4.HE.5966.1020 |  | Inspections - Wall Close In / L4 / South / 5966 | 2d | 2025-06-13 A | 2025-06-18 A | P2.4.HE.5966.1010 | 100% |  |
| P2.4.HE.5966.1030 |  | Hang-Tape-Finish / L4 / South / 5966 | 5d | 2025-06-18 A | 2025-06-23 A | P2.4.HE.5966.1020, P2.LR.L7.170 | 100% |  |
| P2.4.HE.5966.1040 |  | Paint Prime & 1st Coat / L4 / South / 5966 | 2d | 2025-06-25 A | 2025-06-30 A | P2.4.HE.5966.1030 | 100% |  |
| P2.4.HE.5966.1050 |  | Cans/Troughs/Backboxes/XFMRs / L4 / South / 5966 | 5d | 2025-07-14 A | 2025-07-17 A | P2.4.HE.5966.1040 | 100% |  |
| P2.4.HE.5966.1060 |  | Risers and OH Conduit Connections / L4 / South / 5966 | 5d | 2025-08-11 A | 2025-08-19 A | P2.4.HE.5966.1050 | 100% |  |
| P2.4.HE.5966.1070 |  | Pull Wire - In From Distribution Panels / Out to Branch Circuits / L4 / South / 5966 | 5d | 2025-11-10 A | 2025-11-14 A | P2.4.HE.5966.1060 | 100% |  |
| P2.4.HE.5966.1080 |  | Panelboards, Interconnect Wiring, and Remaining Room Buildout of All Systems / L4 / South / 5966 | 10d | 2025-12-01 | 2025-12-12 | P2.4.HE.5966.1060, BP1.262.3.100, BP1.262.3.220 |  | 26d |

| ID | WBS | Task | Duration | Start | Finish | Predecessors | Complete | Total float |
| --- | --- | --- | --- | --- | --- | --- | --- | --- |
| P2.4.HE.5966.1090 |  | Test & Terminate / L4 / South / 5966 | 5d | 2025-12-15 | 2025-12-19 | P2.4.HE.5966.1080, P2.4.HE.5966.1070 |  | 26d |
| P2.4.HE.5966.1100 |  | Paint - Finish Coat / L4 / South / 5966 | 2d | 2025-12-22 | 2025-12-23 | P2.4.HE.5966.1090 |  | 26d |
| P2.4.HE.5966.1110 |  | Trim All MEPF Finishes / L4 / South / 5966 | 2d | 2025-12-24 | 2025-12-26 | P2.4.HE.5966.1100 |  | 26d |
| P2.4.HE.5966.1120 |  | Flooring / L4 / South / 5966 | 2d | 2025-12-29 | 2025-12-30 | P2.4.HE.5966.1110 |  | 26d |
| P2.4.HE.5966.1130 |  | Doors & Hardware / L4 / South / 5966 | 2d | 2025-12-31 | 2026-01-02 | P2.4.HE.5966.1120 |  | 26d |
| P2.4.HE.5966.1140 |  | Panels Ready to Energize - Lock Doors and Limit Access / L4 / South / 5966 | 0d | 2026-01-02 | 2026-01-02 | P2.4.HE.5966.1090, P2.4.HE.5966.1130 FF |  | 26d |
|  | 2 | **L4 / IT CLOSETS** |  | 2024-12-24 | 2026-03-05 |  |  |  |
|  | 1 | **IT Closet 4-3930** |  | 2025-08-08 | 2026-03-05 |  |  |  |
| P2.4.IT.3930.130 |  | HVAC Equipment / L4 / South / 3930 | 5d | 2025-08-08 A | 2025-09-18 A | P2.4.IT.3930.110 | 100% |  |
| P2.4.IT.3930.100 |  | Hang Plywood Backboards / L4 / South / 3930 | 2d | 2025-09-15 A | 2025-09-17 A | P2.L4.S.1140 | 100% |  |
| P2.4.IT.3930.110 |  | Paint Prime & 1st Coat / L4 / South / 3930 | 2d | 2025-09-22 A | 2025-09-25 A | P2.4.IT.3930.100 | 100% |  |
| P2.4.IT.3930.120 |  | Electrical Panels / Conduit Connections / Wire Terminations / L4 / South / 3930 | 5d | 2025-10-08 A | 2025-10-14 A | P2.4.IT.3930.110, P2.4.HE.3959.1070 FF | 100% |  |
| P2.4.IT.3930.140 |  | Trim all MEPF / L4 / South / 3930 | 2d | 2025-12-01 | 2025-12-02 | P2.4.IT.3930.130, P2.4.IT.3930.120 |  | 73d |
| P2.4.IT.3930.150 |  | Flooring / L4 / South / 3930 | 5d | 2025-12-03 | 2025-12-09 | P2.4.IT.3930.140 |  | 73d |
| P2.4.IT.3930.180 |  | Grounding and Bonding / L4 / South / 3930 | 2d | 2025-12-10 | 2025-12-11 | P2.4.IT.3930.150 |  | 73d |
| P2.4.IT.3930.170 |  | OH Cable Tray / L4 / South / 3930 | 5d | 2026-01-14 | 2026-01-20 | P2.L4.S.1390, P2.L4.N.1390, P2.L4.INT.S.1340, P2.L4.INT.N.1340 |  | 47d |
| P2.4.IT.3930.350 |  | Room Ready - CIT / L4 / South / 3930 | 5d | 2026-01-21 | 2026-01-27 | P2.4.IT.3930.150, P2.4.IT.3930.170, P2.4.IT.3930.180 |  | 47d |
| P2.4.IT.3930.160 |  | Equipment Racks and Ladders / L4 / South / 3930 | 5d | 2026-01-28 | 2026-02-03 | P2.4.IT.3930.150, P2.4.IT.3930.350 |  | 47d |
| P2.4.IT.3930.190 |  | Pull Wire - Backbone Cabling Into Racks / L4 / South / 3930 | 5d | 2026-02-04 | 2026-02-10 | P2.4.IT.3930.160, P2.4.IT.3930.350 |  | 47d |
| P2.4.IT.3930.200 |  | Pull Wire - Horizontal Cabling Out to Termination Points / L4 / South / 3930 | 5d | 2026-02-04 | 2026-02-10 | P2.4.IT.3930.160, P2.4.IT.3930.350 |  | 47d |
| P2.4.IT.3930.210 |  | Paint - Finish Coat / L4 / South / 3930 | 2d | 2026-02-11 | 2026-02-12 | P2.4.IT.3930.190, P2.4.IT.3930.200 |  | 47d |
| P2.4.IT.3930.220 |  | Terminations and Punch Downs - All Cabling / L4 / South / 3930 | 15d | 2026-02-13 | 2026-03-05 | P2.4.IT.3930.210, P2.4.IT.3930.160, P2.4.IT.3930.350 |  | 167d |
| P2.4.IT.3930.230 |  | Doors & Hardware / L4 / South / 3930 | 2d | 2026-02-13 | 2026-02-16 | P2.4.IT.3930.210 |  | 47d |
| P2.4.IT.3930.240 |  | Energize Elec Panels Serving Comms Racks / L4 / South / 3930 | 3d | 2026-02-17 | 2026-02-19 | P2.4.HE.3959.1140, P2.4.IT.3930.230, CX.B2.SWGR.1010, CX.B2.MVEE.1010 |  | 47d |
| P2.4.IT.3930.250 |  | Comms Racks In Service / L4 / South / 3930 | 0d | 2026-03-05 | 2026-03-05 | P2.4.IT.3930.240, P2.4.IT.3930.220 |  | 167d |
|  | 2 | **IT Closet 4-2818** |  | 2025-08-08 | 2026-03-05 |  |  |  |
| P2.4.IT.2818.130 |  | HVAC Equipment / L4 / North / 2818 | 5d | 2025-08-08 A | 2025-09-18 A | P2.4.IT.2818.110 | 100% |  |
| P2.4.IT.2818.100 |  | Hang Plywood Backboards / L4 / North / 2818 | 2d | 2025-09-15 A | 2025-09-17 A | P2.L4.N.1140 | 100% |  |
| P2.4.IT.2818.110 |  | Paint Prime & 1st Coat / L4 / North / 2818 | 2d | 2025-09-22 A | 2025-09-25 A | P2.4.IT.2818.100 | 100% |  |
| P2.4.IT.2818.120 |  | Electrical Panels / Conduit Connections / Wire Terminations / L4 / North / 2818 | 5d | 2025-12-01 | 2025-12-05 | P2.4.IT.2818.110, P2.4.HE.2803.1070 FF |  | 68d |
| P2.4.IT.2818.140 |  | Trim all MEPF / L4 / North / 2818 | 2d | 2025-12-08 | 2025-12-09 | P2.4.IT.2818.120, P2.4.IT.2818.130 |  | 68d |
| P2.4.IT.2818.150 |  | Flooring / L4 / North / 2818 | 5d | 2025-12-10 | 2025-12-16 | P2.4.IT.2818.140 |  | 68d |
| P2.4.IT.2818.180 |  | Grounding and Bonding / L4 / North / 2818 | 2d | 2025-12-17 | 2025-12-18 | P2.4.IT.2818.150 |  | 68d |
| P2.4.IT.2818.170 |  | OH Cable Tray / L4 / North / 2818 | 5d | 2026-01-14 | 2026-01-20 | P2.L4.N.1390, P2.L4.S.1390, P2.L4.INT.N.1340, P2.L4.INT.S.1340 |  | 47d |
| P2.4.IT.2818.360 |  | Room Ready - CIT / L4 / North / 2818 | 5d | 2026-01-21 | 2026-01-27 | P2.4.IT.2818.150, P2.4.IT.2818.170, P2.4.IT.2818.180 |  | 47d |
| P2.4.IT.2818.160 |  | Equipment Racks and Ladders / L4 / North / 2818 | 5d | 2026-01-28 | 2026-02-03 | P2.4.IT.2818.150, P2.4.IT.2818.360 |  | 47d |
| P2.4.IT.2818.190 |  | Pull Wire - Backbone Cabling Into Racks / L4 / North / 2818 | 5d | 2026-02-04 | 2026-02-10 | P2.4.IT.2818.160, P2.4.IT.2818.360 |  | 47d |
| P2.4.IT.2818.200 |  | Pull Wire - Horizontal Cabling Out to Termination Points / L4 / North / 2818 | 5d | 2026-02-04 | 2026-02-10 | P2.4.IT.2818.160, P2.4.IT.2818.360 |  | 47d |
| P2.4.IT.2818.210 |  | Paint - Finish Coat / L4 / North / 2818 | 2d | 2026-02-11 | 2026-02-12 | P2.4.IT.2818.190, P2.4.IT.2818.200 |  | 47d |
| P2.4.IT.2818.220 |  | Terminations and Punch Downs - All Cabling / L4 / North / 2818 | 15d | 2026-02-13 | 2026-03-05 | P2.4.IT.2818.210, P2.4.IT.2818.160, P2.4.IT.2818.360 |  | 167d |
| P2.4.IT.2818.230 |  | Doors & Hardware / L4 / North / 2818 | 2d | 2026-02-13 | 2026-02-16 | P2.4.IT.2818.210 |  | 47d |
| P2.4.IT.2818.240 |  | Energize Elec Panels Serving Comms Racks / L4 / North / 2818 | 3d | 2026-02-17 | 2026-02-19 | P2.4.HE.2803.1140, P2.4.IT.2818.230, CX.B2.SWGR.1010, CX.B2.MVEE.1010 |  | 47d |
| P2.4.IT.2818.250 |  | Comms Racks In Service / L4 / North / 2818 | 0d | 2026-03-05 | 2026-03-05 | P2.4.IT.2818.240, P2.4.IT.2818.220 |  | 167d |
|  | 3 | **IT Closet 4-3875** |  | 2024-12-24 | 2026-03-05 |  |  |  |
| P2.2.IT.3875.260 |  | Work-Plan Investigation of Level 4F510-18 Lab Offices for Demo, Utility Re-route, and Temp Partition (IT Closet 4-3875) | 20d | 2024-12-24 A | 2025-01-23 A | P2C.DES.205 | 100% |  |
| P2.2.IT.3875.270 |  | Work-Plan Development for Demo, Utility Re-route, and Temp Partition (IT Closet 4-3875) | 20d | 2025-01-24 A | 2025-02-10 A | P2.2.IT.3875.260 | 100% |  |
| P2.2.IT.3875.280 |  | NIH Notification - Review and Approval of Demo and Temp Partition Work Plan (IT Closet 4-3875) | 20d | 2025-02-19 A | 2025-04-01 A | P2.2.IT.3875.270 | 100% |  |
| P2.2.IT.3875.290 |  | NIH Vacate Lab Offices 4F510, 4F512, 4F514, 4F516, & Storage 4F518 | 20d | 2025-05-01 A | 2025-08-04 A | P2.2.IT.3875.280 | 100% |  |
| P2.2.IT.3875.300 |  | Temp Barracades (IT Closet 4-3875) | 5d | 2025-08-04 A | 2025-08-11 A | P2.2.IT.3875.290 | 100% |  |
| P2.2.IT.3875.310 |  | Utility Shut-downs and Rerouting (IT Closet 4-3875) | 10d | 2025-08-12 A | 2025-09-30 A | P2.2.IT.3875.300 | 100% |  |
| P2.2.IT.3875.320 |  | Demo Existing Walls and Ceiling | 10d | 2025-10-01 A | 2025-10-10 A | P2.2.IT.3875.310 | 100% |  |
| P2.2.IT.3875.330 |  | Work Plan Completion Inspection | 5d | 2025-10-01 A | 2025-10-08 A | P2.2.IT.3875.320 | 100% |  |
| P2.4.IT.3875.100 |  | Hang Plywood Backboards / L4 / South / 3875 | 2d | 2025-12-01 | 2025-12-02 | P2.L4.S.1140, P2.2.IT.3875.330 |  | 184d |
| P2.4.IT.3875.110 |  | Paint Prime & 1st Coat / L4 / South / 3875 | 2d | 2025-12-03 | 2025-12-04 | P2.4.IT.3875.100 |  | 184d |
| P2.4.IT.3875.120 |  | Electrical Panels / Conduit Connections / Wire Terminations / L4 / South / 3875 | 5d | 2025-12-05 | 2025-12-11 | P2.4.IT.3875.110, P2.4.HE.2948.1070 FF |  | 184d |
| P2.4.IT.3875.130 |  | HVAC Equipment / L4 / South / 3875 | 5d | 2025-12-05 | 2025-12-11 | P2.4.IT.3875.110 |  | 184d |
| P2.4.IT.3875.140 |  | Trim all MEPF / L4 / South / 3875 | 2d | 2025-12-12 | 2025-12-15 | P2.4.IT.3875.130, P2.4.IT.3875.120 |  | 184d |
| P2.4.IT.3875.150 |  | Flooring / L4 / South / 3875 | 5d | 2025-12-16 | 2025-12-22 | P2.4.IT.3875.140 |  | 184d |
| P2.4.IT.3875.180 |  | Grounding and Bonding / L4 / South / 3875 | 2d | 2025-12-23 | 2025-12-24 | P2.4.IT.3875.150 |  | 184d |
| P2.4.IT.3875.170 |  | OH Cable Tray / L4 / South / 3875 | 5d | 2026-01-14 | 2026-01-20 | P2.L4.S.1390, P2.4.IT.3875.120, P2.L4.N.1390, P2.L4.INT.S.1340, P2.L4.INT.N.1340 |  | 167d |
| P2.4.IT.3875.370 |  | Room Ready - CIT / L4 / South / 3875 | 5d | 2026-01-21 | 2026-01-27 | P2.4.IT.3875.150, P2.4.IT.3875.170, P2.4.IT.3875.180 |  | 167d |
| P2.4.IT.3875.160 |  | Equipment Racks and Ladders / L4 / South / 3875 | 5d | 2026-01-28 | 2026-02-03 | P2.4.IT.3875.150, P2.4.IT.3875.370 |  | 167d |
| P2.4.IT.3875.190 |  | Pull Wire - Backbone Cabling Into Racks / L4 / South / 3875 | 5d | 2026-02-04 | 2026-02-10 | P2.4.IT.3875.160, P2.4.IT.3875.370 |  | 167d |
| P2.4.IT.3875.200 |  | Pull Wire - Horizontal Cabling Out to Termination Points / L4 / South / 3875 | 5d | 2026-02-04 | 2026-02-10 | P2.4.IT.3875.160, P2.4.IT.3875.370 |  | 167d |
| P2.4.IT.3875.210 |  | Paint - Finish Coat / L4 / South / 3875 | 2d | 2026-02-11 | 2026-02-12 | P2.4.IT.3875.190, P2.4.IT.3875.200 |  | 167d |
| P2.4.IT.3875.220 |  | Terminations and Punch Downs - All Cabling / L4 / South / 3875 | 15d | 2026-02-13 | 2026-03-05 | P2.4.IT.3875.210, P2.4.IT.3875.160, P2.4.IT.3875.370 |  | 167d |
| P2.4.IT.3875.230 |  | Doors & Hardware / L4 / South / 3875 | 2d | 2026-02-13 | 2026-02-16 | P2.4.IT.3875.210 |  | 177d |
| P2.4.IT.3875.240 |  | Energize Elec Panels Serving Comms Racks / L4 / South / 3875 | 3d | 2026-02-17 | 2026-02-19 | P2.4.HE.2948.1140, P2.4.IT.3875.230, CX.B2.SWGR.1010, CX.B2.MVEE.1010 |  | 177d |
| P2.4.IT.3875.250 |  | Comms Racks In Service / L4 / South / 3875 | 0d | 2026-03-05 | 2026-03-05 | P2.4.IT.3875.240, P2.4.IT.3875.220 |  | 167d |
|  | 6 | **FINISHES - Core & Support Spaces / Level 4** |  | 2025-06-02 | 2026-12-18 |  |  |  |

| ID | WBS | Task | Duration | Start | Finish | Predecessors | Total float |
| --- | --- | --- | --- | --- | --- | --- | --- |
|  | 7KSF1 | **Office Spaces - Z1 (2,429 sf) / Level 4** |  | 2026-04-15 | 2026-10-23 |  |  |
|  | 1 | **Finishes** |  | 2026-04-15 | 2026-10-23 |  |  |
| P2.L4.F.CS.1000 |  | Paint Prime & 1st Coat Walls / L4 / South / Z1 | 5d | 2026-04-15 | 2026-04-21 | P2.L4.S.1550 | 43d |
| P2.L4.F.CS.1020 |  | R/I - Ceiling Assemblies & Supports - All Trades (A/V, Oper Part, Glass Part, etc.) / L4 / South / Z1 | 5d | 2026-04-22 | 2026-04-28 | P2.L4.F.CS.1000 | 81d |
| P2.L4.F.CS.1010 |  | T-Grid / L4 / South / Z1 | 5d | 2026-04-29 | 2026-05-05 | P2.L4.F.CS.1020 | 81d |
| P2.L4.F.CS.1050 |  | Sprinkler Heads in T-Grid / L4 / South / Z1 | 5d | 2026-05-06 | 2026-05-12 | P2.L4.F.CS.1010 | 81d |
| P2.L4.F.CS.1030 |  | Diffusers in T-Grid / L4 / South / Z1 | 5d | 2026-05-13 | 2026-05-19 | P2.L4.F.CS.1050, P2.L4.F.CS.1010 | 81d |
| P2.L4.F.CS.1040 |  | Lights & Elec Devices in T-Grid / L4 / South / Z1 | 10d | 2026-05-20 | 2026-06-03 | P2.L4.F.CS.1010, P2.L4.F.CS.1030 | 81d |
| P2.L4.F.CS.1070 |  | Fire Alarm in T-Grid / L4 / South / Z1 | 5d | 2026-06-04 | 2026-06-10 | P2.L4.F.CS.1040, P2.L4.F.CS.1010 | 81d |
| P2.L4.F.CS.1060 |  | Low Voltage in T-Grid / L4 / South / Z1 | 5d | 2026-06-11 | 2026-06-17 | P2.L4.F.CS.1070, P2.L4.F.CS.1010 | 81d |
| P2.L4.F.CS.1080 |  | OH Ceiling Signoff / L4 / South / Z1 | 5d | 2026-06-18 | 2026-06-24 | P2.L4.F.CS.1060, P2.L4.F.CS.1070, P2.L4.F.CS.1030, P2.L4.F.CS.1040, P2.L4.F.CS.1050 | 81d |
| P2.L4.F.CS.1090 |  | Millwork / L4 / South / Z1 | 5d | 2026-06-25 | 2026-07-01 | P2.L4.F.CS.1080 | 81d |
| P2.L4.F.CS.1100 |  | Plumbing Fixtures / L4 / South / Z1 | 5d | 2026-06-25 | 2026-07-01 | P2.L4.F.CS.1080, P2.L4.F.CS.1090 FF | 81d |
| P2.L4.F.CS.1110 |  | Drop Ceiling Tile / L4 / South / Z1 | 5d | 2026-07-02 | 2026-07-09 | P2.L4.F.CS.1080, P2.L4.F.CS.1100 | 81d |
| P2.L4.F.CS.1120 |  | Floor Prep / L4 / South / Z1 | 5d | 2026-07-10 | 2026-07-16 | P2.L4.F.CS.1110, P2.L4.F.CS.1090 | 81d |
| P2.L4.F.CS.1130 |  | Floor Finishes / L4 / South / Z1 | 5d | 2026-07-17 | 2026-07-23 | P2.L4.F.CS.1120 | 81d |
| P2.L4.F.CS.1140 |  | Doors & Hardware / L4 / South / Z1 | 5d | 2026-07-24 | 2026-07-30 | P2.L4.F.CS.1130 | 81d |
| P2.L4.F.CS.1150 |  | Paint - Finish Coat / L4 / South / Z1 | 5d | 2026-07-31 | 2026-08-06 | P2.L4.F.CS.1140, P2.L4.F.CS.1130 | 81d |
| P2.L4.F.CS.1180 |  | Building Specialities / L4 / South / Z1 | 5d | 2026-08-07 | 2026-08-13 | P2.L4.F.CS.1150 | 81d |
| P2.L4.F.CS.1200 |  | Floor Base / L4 / South / Z1 | 5d | 2026-08-07 | 2026-08-13 | P2.L4.F.CS.1150 | 86d |
| P2.L4.F.CS.1190 |  | Interior Building Signage / L4 / South / Z1 | 5d | 2026-08-14 | 2026-08-20 | P2.L4.F.CS.1150, P2.L4.F.CS.1180 | 81d |
| P2.L4.F.CS.1210 |  | Demountable Partitions / L4 / South / Z1 | 5d | 2026-08-14 | 2026-08-20 | P2.L4.F.CS.1200 | 86d |
| P2.L4.F.CS.1170 |  | Trim T-Stats / L4 / South / Z1 | 5d | 2026-08-21 | 2026-08-27 | P2.L4.F.CS.1150, P2.L4.F.CS.1190 | 81d |
| P2.L4.F.CS.1220 |  | Trim Electrical / L4 / South / Z1 | 5d | 2026-08-21 | 2026-08-27 | P2.L4.F.CS.1210, P2.L4.F.CS.1170 SS | 86d |
| P2.L4.F.CS.1160 |  | Set AV/IT Devices and Configure / L4 / South / Z1 | 5d | 2026-08-28 | 2026-09-03 | P2.L4.F.CS.1150, P2.L4.F.CS.1170 | 81d |
| P2.L4.F.CS.1230 |  | Trim Telephone/ Data / L4 / South / Z1 | 5d | 2026-08-28 | 2026-09-03 | P2.L4.F.CS.1170, P2.L4.F.CS.1220 SS | 81d |
| P2.L4.F.CS.1240 |  | Work Completion List - Finishes / L4 / South / Z1 | 5d | 2026-09-04 | 2026-09-11 | P2.L4.F.CS.1190, P2.L4.F.CS.1140, P2.L4.F.CS.1100, P2.L4.F.CS.1230, P2.L4.F.CS.1180, P2.L4.F.CS.1160 | 81d |
| P2.L4.F.CS.1250 |  | Rough Clean / L4 / South / Z1 | 5d | 2026-09-14 | 2026-09-18 | P2.L4.F.CS.1240 | 81d |
| P2.L4.F.CS.1260 |  | FF&E / L4 / South / Z1 | 5d | 2026-09-21 | 2026-09-25 | P2.L4.F.CS.1250 | 81d |
| P2.L4.F.CS.1270 |  | Prepare Punchlist / L4 / South / Z1 | 5d | 2026-09-28 | 2026-10-02 | P2.L4.F.CS.1260 | 81d |
| P2.L4.F.CS.1280 |  | Correct Punchlist / L4 / South / Z1 | 10d | 2026-10-05 | 2026-10-16 | P2.L4.F.CS.1270 | 81d |
| P2.L4.F.CS.1290 |  | Final Clean / L4 / South / Z1 | 5d | 2026-10-19 | 2026-10-23 | P2.L4.F.CS.1280 | 81d |
|  | 2 | **Closeout** |  |  |  |  |  |
|  | 7KSF | **Office Spaces - Z2 (2,300 sf) / Level 4** |  | 2026-04-22 | 2026-11-13 |  |  |
|  | 1 | **Finishes** |  | 2026-04-22 | 2026-11-13 |  |  |
| P2.L4.F.CS.2000 |  | Paint Prime & 1st Coat Walls / L4 / North / Z2 | 5d | 2026-04-22 | 2026-04-28 | P2.L4.N.1550, P2.L4.F.CS.1000 | 43d |
| P2.L4.F.CS.2020 |  | R/I - Ceiling Assemblies & Supports - All Trades (A/V, Oper Part, Glass Part, etc.) / L4 / North / Z2 | 5d | 2026-04-29 | 2026-05-05 | P2.L4.F.CS.2000 | 66d |
| P2.L4.F.CS.2010 |  | T-Grid / L4 / North / Z2 | 5d | 2026-05-06 | 2026-05-12 | P2.L4.F.CS.2020 | 66d |
| P2.L4.F.CS.2050 |  | Sprinkler Heads in T-Grid / L4 / North / Z2 | 5d | 2026-05-13 | 2026-05-19 | P2.L4.F.CS.2010 | 66d |
| P2.L4.F.CS.2030 |  | Diffusers in T-Grid / L4 / North / Z2 | 5d | 2026-05-20 | 2026-05-27 | P2.L4.F.CS.2010, P2.L4.F.CS.2050 | 66d |
| P2.L4.F.CS.2040 |  | Lights & Elec Devices in T-Grid / L4 / North / Z2 | 10d | 2026-05-28 | 2026-06-10 | P2.L4.F.CS.2010, P2.L4.F.CS.2030 | 66d |
| P2.L4.F.CS.2070 |  | Fire Alarm in T-Grid / L4 / North / Z2 | 5d | 2026-06-11 | 2026-06-17 | P2.L4.F.CS.2010, P2.L4.F.CS.2040 | 66d |
| P2.L4.F.CS.2060 |  | Low Voltage in T-Grid / L4 / North / Z2 | 5d | 2026-06-18 | 2026-06-24 | P2.L4.F.CS.2070, P2.L4.F.CS.2010 | 66d |
| P2.L4.F.CS.2080 |  | OH Ceiling Signoff / L4 / North / Z2 | 5d | 2026-06-25 | 2026-07-01 | P2.L4.F.CS.2070, P2.L4.F.CS.2060, P2.L4.F.CS.2050, P2.L4.F.CS.2030, P2.L4.F.CS.2040 | 66d |
| P2.L4.F.CS.2110 |  | Drop Ceiling Tile / L4 / North / Z2 | 5d | 2026-07-02 | 2026-07-09 | P2.L4.F.CS.2080 | 66d |
| P2.L4.F.CS.2090 |  | Millwork / L4 / North / Z2 | 5d | 2026-07-10 | 2026-07-16 | P2.L4.F.CS.2080, P2.L4.F.CS.2110 | 66d |
| P2.L4.F.CS.2100 |  | Plumbing Fixtures / L4 / North / Z2 | 5d | 2026-07-17 | 2026-07-23 | P2.L4.F.CS.2080, P2.L4.F.CS.2090, P2.L4.F.CS.2090 FF | 111d |
| P2.L4.F.CS.2120 |  | Floor Prep / L4 / North / Z2 | 5d | 2026-07-17 | 2026-07-23 | P2.L4.F.CS.2110, P2.L4.F.CS.2090 | 66d |
| P2.L4.F.CS.2130 |  | Floor Finishes / L4 / North / Z2 | 5d | 2026-07-24 | 2026-07-30 | P2.L4.F.CS.2120 | 66d |
| P2.L4.F.CS.2140 |  | Doors & Hardware / L4 / North / Z2 | 5d | 2026-07-31 | 2026-08-06 | P2.L4.F.CS.2130 | 66d |
| P2.L4.F.CS.2150 |  | Paint - Finish Coat / L4 / North / Z2 | 5d | 2026-08-07 | 2026-08-13 | P2.L4.F.CS.2130, P2.L4.F.CS.2140 | 66d |
| P2.L4.F.CS.2200 |  | Floor Base / L4 / North / Z2 | 5d | 2026-08-14 | 2026-08-20 | P2.L4.F.CS.2150 | 66d |
| P2.L4.F.CS.2180 |  | Building Specialities / L4 / North / Z2 | 5d | 2026-08-21 | 2026-08-27 | P2.L4.F.CS.2150, P2.L4.F.CS.2200 | 66d |
| P2.L4.F.CS.2210 |  | Demountable Partitions / L4 / North / Z2 | 5d | 2026-08-21 | 2026-08-27 | P2.L4.F.CS.2200 | 76d |
| P2.L4.F.CS.2190 |  | Interior Building Signage / L4 / North / Z2 | 5d | 2026-08-28 | 2026-09-03 | P2.L4.F.CS.2150, P2.L4.F.CS.2180 | 66d |
| P2.L4.F.CS.2170 |  | Trim T-Stats / L4 / North / Z2 | 5d | 2026-09-04 | 2026-09-11 | P2.L4.F.CS.2150, P2.L4.F.CS.2190 | 66d |
| P2.L4.F.CS.2160 |  | Set AV/IT Devices and Configure / L4 / North / Z2 | 5d | 2026-09-14 | 2026-09-18 | P2.L4.F.CS.2150, P2.L4.F.CS.2170 | 71d |
| P2.L4.F.CS.2220 |  | Trim Electrical / L4 / North / Z2 | 5d | 2026-09-14 | 2026-09-18 | P2.L4.F.CS.2210, P2.L4.F.CS.2170, P2.L4.F.CS.2170 SS | 66d |
| P2.L4.F.CS.2230 |  | Trim Telephone/ Data / L4 / North / Z2 | 5d | 2026-09-21 | 2026-09-25 | P2.L4.F.CS.2220, P2.L4.F.CS.2220 SS | 66d |
| P2.L4.F.CS.2240 |  | Work Completion List - Finishes / L4 / North / Z2 | 5d | 2026-09-28 | 2026-10-02 | P2.L4.F.CS.2160, P2.L4.F.CS.2190, P2.L4.F.CS.2140, P2.L4.F.CS.2230, P2.L4.F.CS.2180, P2.L4.F.CS.2100 | 66d |
| P2.L4.F.CS.2250 |  | Rough Clean / L4 / North / Z2 | 5d | 2026-10-05 | 2026-10-09 | P2.L4.F.CS.2240 | 66d |
| P2.L4.F.CS.2260 |  | FF&E / L4 / North / Z2 | 5d | 2026-10-12 | 2026-10-16 | P2.L4.F.CS.2250 | 66d |
| P2.L4.F.CS.2270 |  | Prepare Punchlist / L4 / North / Z2 | 5d | 2026-10-19 | 2026-10-23 | P2.L4.F.CS.2260 | 66d |
| P2.L4.F.CS.2280 |  | Correct Punchlist / L4 / North / Z2 | 10d | 2026-10-26 | 2026-11-06 | P2.L4.F.CS.2270 | 66d |
| P2.L4.F.CS.2290 |  | Final Clean / L4 / North / Z2 | 5d | 2026-11-09 | 2026-11-13 | P2.L4.F.CS.2280 | 66d |
|  | 2 | **Closeout** |  |  |  |  |  |
|  | 7KSF11 | **Office Spaces - Z3 (1,943 sf) / Level 4** |  | 2026-04-29 | 2026-11-13 |  |  |
|  | 1 | **Finishes** |  | 2026-04-29 | 2026-11-13 |  |  |
| P2.L4.F.CS.3000 |  | Paint Prime & 1st Coat Walls / L4 / North / Z3 | 5d | 2026-04-29 | 2026-05-05 | P2.L4.N.1550, P2.L4.F.CS.2000 | 43d |
| P2.L4.F.CS.3020 |  | R/I - Ceiling Assemblies & Supports - All Trades (A/V, Oper Part, Glass Part, etc.) / L4 / North / Z3 | 5d | 2026-05-06 | 2026-05-12 | P2.L4.F.CS.3000 | 66d |

| ID | WBS | Task | Duration | Start | Finish | Predecessors | Complete | Total float |
| --- | --- | --- | --- | --- | --- | --- | --- | --- |
| P2.L4.F.CS.3010 |  | T-Grid / L4 / North / Z3 | 5d | 2026-05-13 | 2026-05-19 | P2.L4.F.CS.3020 |  | 66d |
| P2.L4.F.CS.3050 |  | Sprinkler Heads in T-Grid / L4 / North / Z3 | 5d | 2026-05-20 | 2026-05-27 | P2.L4.F.CS.3010 |  | 66d |
| P2.L4.F.CS.3030 |  | Diffusers in T-Grid / L4 / North / Z3 | 5d | 2026-05-28 | 2026-06-03 | P2.L4.F.CS.3010, P2.L4.F.CS.3050 |  | 66d |
| P2.L4.F.CS.3040 |  | Lights & Elec Devices in T-Grid / L4 / North / Z3 | 10d | 2026-06-04 | 2026-06-17 | P2.L4.F.CS.3010, P2.L4.F.CS.3030 |  | 66d |
| P2.L4.F.CS.3070 |  | Fire Alarm in T-Grid / L4 / North / Z3 | 5d | 2026-06-18 | 2026-06-24 | P2.L4.F.CS.3010, P2.L4.F.CS.3040 |  | 66d |
| P2.L4.F.CS.3060 |  | Low Voltage in T-Grid / L4 / North / Z3 | 5d | 2026-06-25 | 2026-07-01 | P2.L4.F.CS.3010, P2.L4.F.CS.3070 |  | 66d |
| P2.L4.F.CS.3080 |  | OH Ceiling Signoff / L4 / North / Z3 | 5d | 2026-07-02 | 2026-07-09 | P2.L4.F.CS.3060, P2.L4.F.CS.3070, P2.L4.F.CS.3030, P2.L4.F.CS.3040, P2.L4.F.CS.3050 |  | 66d |
| P2.L4.F.CS.3110 |  | Drop Ceiling Tile / L4 / North / Z3 | 5d | 2026-07-10 | 2026-07-16 | P2.L4.F.CS.3080 |  | 66d |
| P2.L4.F.CS.3090 |  | Millwork / L4 / North / Z3 | 5d | 2026-07-17 | 2026-07-23 | P2.L4.F.CS.3080, P2.L4.F.CS.3110 |  | 66d |
| P2.L4.F.CS.3100 |  | Plumbing Fixtures / L4 / North / Z3 | 5d | 2026-07-17 | 2026-07-23 | P2.L4.F.CS.3090 FF, P2.L4.F.CS.3080 |  | 66d |
| P2.L4.F.CS.3120 |  | Floor Prep / L4 / North / Z3 | 5d | 2026-07-24 | 2026-07-30 | P2.L4.F.CS.3110, P2.L4.F.CS.3090, P2.L4.F.CS.3100 |  | 66d |
| P2.L4.F.CS.3130 |  | Floor Finishes / L4 / North / Z3 | 5d | 2026-07-31 | 2026-08-06 | P2.L4.F.CS.3120 |  | 66d |
| P2.L4.F.CS.3140 |  | Doors & Hardware / L4 / North / Z3 | 5d | 2026-08-07 | 2026-08-13 | P2.L4.F.CS.3130 |  | 66d |
| P2.L4.F.CS.3150 |  | Paint - Finish Coat / L4 / North / Z3 | 5d | 2026-08-14 | 2026-08-20 | P2.L4.F.CS.3140, P2.L4.F.CS.3130 |  | 66d |
| P2.L4.F.CS.3200 |  | Floor Base / L4 / North / Z3 | 5d | 2026-08-21 | 2026-08-27 | P2.L4.F.CS.3150 |  | 66d |
| P2.L4.F.CS.3180 |  | Building Specialities / L4 / North / Z3 | 5d | 2026-08-28 | 2026-09-03 | P2.L4.F.CS.3200, P2.L4.F.CS.3150 |  | 66d |
| P2.L4.F.CS.3210 |  | Demountable Partitions / L4 / North / Z3 | 5d | 2026-08-28 | 2026-09-03 | P2.L4.F.CS.3200 |  | 71d |
| P2.L4.F.CS.3170 |  | Trim T-Stats / L4 / North / Z3 | 5d | 2026-09-04 | 2026-09-11 | P2.L4.F.CS.3150, P2.L4.F.CS.3180 |  | 66d |
| P2.L4.F.CS.3220 |  | Trim Electrical / L4 / North / Z3 | 5d | 2026-09-04 | 2026-09-11 | P2.L4.F.CS.3210, P2.L4.F.CS.3170 SS |  | 71d |
| P2.L4.F.CS.3160 |  | Set AV/IT Devices and Configure / L4 / North / Z3 | 5d | 2026-09-14 | 2026-09-18 | P2.L4.F.CS.3150, P2.L4.F.CS.3170 |  | 66d |
| P2.L4.F.CS.3230 |  | Trim Telephone/ Data / L4 / North / Z3 | 5d | 2026-09-14 | 2026-09-18 | P2.L4.F.CS.3220, P2.L4.F.CS.3220 SS |  | 71d |
| P2.L4.F.CS.3190 |  | Interior Building Signage / L4 / North / Z3 | 5d | 2026-09-21 | 2026-09-25 | P2.L4.F.CS.3160, P2.L4.F.CS.3150 |  | 66d |
| P2.L4.F.CS.3240 |  | Work Completion List - Finishes / L4 / North / Z3 | 5d | 2026-09-28 | 2026-10-02 | P2.L4.F.CS.3160, P2.L4.F.CS.3190, P2.L4.F.CS.3140, P2.L4.F.CS.3100, P2.L4.F.CS.3230, P2.L4.F.CS.3180 |  | 66d |
| P2.L4.F.CS.3250 |  | Rough Clean / L4 / North / Z3 | 5d | 2026-10-05 | 2026-10-09 | P2.L4.F.CS.3240 |  | 66d |
| P2.L4.F.CS.3260 |  | FF&E / L4 / North / Z3 | 5d | 2026-10-12 | 2026-10-16 | P2.L4.F.CS.3250 |  | 66d |
| P2.L4.F.CS.3270 |  | Prepare Punchlist / L4 / North / Z3 | 5d | 2026-10-19 | 2026-10-23 | P2.L4.F.CS.3260 |  | 66d |
| P2.L4.F.CS.3280 |  | Correct Punchlist / L4 / North / Z3 | 10d | 2026-10-26 | 2026-11-06 | P2.L4.F.CS.3270 |  | 66d |
| P2.L4.F.CS.3290 |  | Final Clean / L4 / North / Z3 | 5d | 2026-11-09 | 2026-11-13 | P2.L4.F.CS.3280 |  | 66d |
|  | 2 | **Closeout** |  |  |  |  |  |  |
|  | 5 | **Bathrooms - Break Rooms - Locker Rooms / Level 4** |  | 2025-06-02 | 2026-04-06 |  |  |  |
|  | 4 | **Toilets 4-2802A / 4-2802B** |  | 2025-06-02 | 2026-04-06 |  |  |  |
| P2.L4.BR.1000 |  | Plumbing - Set Pipe Carriers / L4 / Toilets 2802X | 3d | 2025-06-02 A | 2025-06-05 A | P2.L4.N.1240, P2.L3.BR.4000 | 100% |  |
| P2.L4.BR.1050 |  | Duct Drops _ Hard Lids / L4 / Toilets 2802X | 2d | 2025-09-29 A | 2025-09-30 A | P2.L4.BR.1010 | 100% |  |
| P2.L4.BR.1010 |  | Framing & Blocking - Walls and Hard Lid Ceilings / L4 / Toilets 2802X | 2d | 2025-12-22 | 2025-12-23 | P2.L4.BR.1000 |  | 153d |
| P2.L4.BR.1020 |  | Plumbing - Test Pipe / L4 / Toilets 2802X | 2d | 2025-12-22 | 2025-12-23 | P2.L4.BR.1000 |  | 153d |
| P2.L4.BR.1040 |  | Trim Sprinkler Drops _ Hard Lids / L4 / Toilets 2802X | 2d | 2025-12-24 | 2025-12-26 | P2.L4.BR.1010 |  | 163d |
| P2.L4.BR.1070 |  | In Wall - Insulate Plumbing / L4 / Toilets 2802X | 2d | 2025-12-24 | 2025-12-26 | P2.L4.BR.1020, P2.L4.BR.1050 |  | 153d |
| P2.L4.BR.1030 |  | R/I - Electrical _ Hard Lids / L4 / Toilets 2802X | 5d | 2025-12-29 | 2026-01-05 | P2.L4.BR.1010, P2.L4.BR.1070 |  | 153d |
| P2.L4.BR.1060 |  | R/I - Fire Alarm _ Hard Lids / L4 / Toilets 2802X | 5d | 2026-01-06 | 2026-01-12 | P2.L4.BR.1030, P2.L4.BR.1010 |  | 153d |
| P2.L4.BR.1080 |  | Inspection - Close In - Walls and Hard Lid Ceilings / L4 / Toilets 2802X | 3d | 2026-01-13 | 2026-01-15 | P2.L4.BR.1030, P2.L4.BR.1040, P2.L4.BR.1050, P2.L4.BR.1060, P2.L4.BR.1070 |  | 153d |
| P2.L4.BR.1090 |  | Hang-Tape-Finish _ Walls and Hard Lids Ceilings / L4 / Toilets 2802X | 5d | 2026-01-16 | 2026-01-22 | P2.L4.BR.1080, P2.SUM.175 |  | 153d |
| P2.L4.BR.1100 |  | Paint Prime & Final Coat _ Walls & Hard Lid Ceilings / L4 / Toilets 2802X | 2d | 2026-01-23 | 2026-01-26 | P2.L4.BR.1090 |  | 153d |
| P2.L4.BR.1140 |  | Trim - HVAC G/R/D's / L4 / Toilets 2802X | 2d | 2026-01-27 | 2026-01-28 | BP1.233.3.410, P2.L4.BR.1100 |  | 153d |
| P2.L4.BR.1120 |  | Pull Wire & Trim Devices - Electrical / L4 / Toilets 2802X | 2d | 2026-01-29 | 2026-01-30 | P2.L4.BR.1100, P2.L4.BR.1140 |  | 153d |
| P2.L4.BR.1130 |  | Lights - Set & Terminate / L4 / Toilets 2802X | 2d | 2026-01-29 | 2026-01-30 | P2.L4.BR.1120 SS |  | 158d |
| P2.L4.BR.1110 |  | Pull Wire & Trim Devices - Fire Alarm / L4 / Toilets 2802X | 5d | 2026-02-02 | 2026-02-06 | P2.L4.BR.1100, P2.L4.BR.1120 |  | 153d |
| P2.L4.BR.1150 |  | Wall Tile / L4 / Toilets 2802X | 5d | 2026-02-09 | 2026-02-13 | P2.L4.BR.1110, P2.L4.BR.1130, P2.L4.BR.1140 |  | 153d |
| P2.L4.BR.1200 |  | Flooring Prep - Epoxy Floors / L4 / Toilets 2802X | 1d | 2026-03-18 | 2026-03-18 | P2.L4.BR.1150, P2.L3.BR.4220 |  | 131d |
| P2.L4.BR.1210 |  | Flooring - Epoxy Floors / L4 / Toilets 2802X | 2d | 2026-03-19 | 2026-03-20 | P2.L4.BR.1200 |  | 174d |
| P2.L4.BR.1160 |  | Doors & Hardware / L4 / Toilets 2802X | 2d | 2026-03-23 | 2026-03-24 | P2.L4.BR.1210, P2.L4.BR.1150 |  | 174d |
| P2.L4.BR.1170 |  | Plumbing Fixtures / Sinks / Showers / L4 / Toilets 2802X | 2d | 2026-03-25 | 2026-03-26 | P2.L4.BR.1210, P2.L4.BR.1150, P2.L4.BR.1160 |  | 222d |
| P2.L4.BR.1180 |  | Bathroom Accessories / L4 / Toilets 2802X | 2d | 2026-03-27 | 2026-03-30 | P2.L4.BR.1170 |  | 222d |
| P2.L4.BR.1190 |  | Work Completion List - Finishes / L4 / Toilets 2802X | 5d | 2026-03-31 | 2026-04-06 | P2.L4.BR.1110, P2.L4.BR.1180, P2.L4.BR.1160 |  | 222d |
|  | 1 | **Corridors & Lobbies / Level 4** |  | 2026-05-06 | 2026-12-18 |  |  |  |
| P2.L4.CL.1000 |  | Paint Prime & 1st Coat Walls / L4 / Corr & Lobbies | 5d | 2026-05-06 | 2026-05-12 | P2.L4.N.1550, P2.L4.F.CS.3000 |  | 43d |
| P2.L4.CL.1010 |  | Framing - Hard Lid Ceilings / L4 / Corr & Lobbies | 10d | 2026-05-13 | 2026-05-27 | P2.L4.CL.1000 |  | 43d |
| P2.L4.CL.1020 |  | T-Grid / L4 / Corr & Lobbies | 10d | 2026-05-13 | 2026-05-27 | P2.L4.CL.1000 |  | 43d |
| P2.L4.CL.1040 |  | R/I - Trim Sprinkler Heads- All Ceilings / L4 / Corr & Lobbies | 5d | 2026-05-22 | 2026-05-29 | P2.L4.CL.1010 FF+2d, P2.L4.CL.1020 FF+2d |  | 43d |
| P2.L4.CL.1070 |  | Trim - Sprinkler Heads @ T-Grid / L4 / Corr & Lobbies | 5d | 2026-05-22 | 2026-05-29 | P2.L4.CL.1020 FF+2d |  | 131d |
| P2.L4.CL.1050 |  | R/I - HVAC- All Ceilings / L4 / Corr & Lobbies | 5d | 2026-06-01 | 2026-06-05 | P2.L4.CL.1010 FF+2d, P2.L4.CL.1020 FF+2d, P2.L4.CL.1040 |  | 43d |
| P2.L4.CL.1030 |  | R/I - Electrical - All Ceilings / L4 / Corr & Lobbies | 15d | 2026-06-08 | 2026-06-26 | P2.L4.CL.1010 FF+2d, P2.L4.CL.1020 FF+2d, P2.L4.CL.1050 |  | 43d |
| P2.L4.CL.1060 |  | R/I - All Remaining Low Voltage - All Ceilings / L4 / Corr & Lobbies | 5d | 2026-06-29 | 2026-07-06 | P2.L4.CL.1010 FF+2d, P2.L4.CL.1020 FF+2d, P2.L4.CL.1030 |  | 43d |
| P2.L4.CL.1100 |  | Pull Wire - Electrical / L4 / Corr & Lobbies | 10d | 2026-06-29 | 2026-07-13 | P2.L4.CL.1030 |  | 73d |
| P2.L4.CL.1080 |  | R/I - Fire Alarm/Life Safety - All Ceilings / L4 / Corr & Lobbies | 5d | 2026-07-07 | 2026-07-13 | P2.L4.CL.1010 FF+2d, P2.L4.CL.1060 |  | 43d |
| P2.L4.CL.1090 |  | Inspections - Close In- All Ceilings / L4 / Corr & Lobbies | 5d | 2026-07-14 | 2026-07-20 | P2.L4.CL.1030, P2.L4.CL.1040, P2.L4.CL.1050, P2.L4.CL.1060, P2.L4.CL.1080 |  | 43d |
| P2.L4.CL.1110 |  | Pull Wire - Fire Alarm / L4 / Corr & Lobbies | 5d | 2026-07-14 | 2026-07-20 | P2.L4.CL.1100, P2.L4.CL.1080 |  | 73d |
| P2.L4.CL.1120 |  | Pull Wire - All Remianing Low Voltage Systems / L4 / Corr & Lobbies | 5d | 2026-07-21 | 2026-07-27 | P2.L4.CL.1110, P2.L4.CL.1060 |  | 78d |
| P2.L4.CL.1130 |  | Hang/Tape/Finish- Hard Lid Ceilings / L4 / Corr & Lobbies | 10d | 2026-07-21 | 2026-08-03 | P2.L4.CL.1090 |  | 43d |
| P2.L4.CL.1140 |  | Drop Ceiling Tiles @ T-Grid / L4 / Corr & Lobbies | 5d | 2026-07-28 | 2026-08-03 | P2.L4.CL.1110, P2.L4.CL.1120, P2.L4.CL.1070, P2.L4.CL.1100 |  | 91d |
| P2.L4.CL.1190 |  | Paint - Hard Lid Ceilings / L4 / Corr & Lobbies | 5d | 2026-08-04 | 2026-08-10 | P2.L4.CL.1130 |  | 43d |

| ID | WBS | Task | Duration | Start | Finish | Predecessors | Complete | Total float |
| --- | --- | --- | --- | --- | --- | --- | --- | --- |
| P2.L4.CL.1180 |  | Ceiling Mounted - HVAC GRD's / L4 / Corr & Lobbies | 15d | 2026-08-11 | 2026-08-31 | P2.L4.CL.1020, P2.L4.CL.1190 |  | 43d |
| P2.L4.CL.1150 |  | Ceiling Mounted - Electrical Devices and Lights / L4 / Corr & Lobbies | 20d | 2026-08-25 | 2026-09-22 | P2.L4.CL.1100, P2.L4.CL.1190, P2.L4.CL.1180 SS+10d |  | 43d |
| P2.L4.CL.1160 |  | Ceiling Mounted - Fire Alarm/Life Saftey Devices / L4 / Corr & Lobbies | 15d | 2026-09-01 | 2026-09-22 | P2.L4.CL.1110, P2.L4.CL.1020, P2.L4.CL.1190, P2.L4.CL.1150 FF |  | 43d |
| P2.L4.CL.1170 |  | Ceiling Mounted - All Low Voltage Devices / L4 / Corr & Lobbies | 15d | 2026-09-16 | 2026-10-06 | P2.L4.CL.1120, P2.L4.CL.1190, P2.L4.CL.1160 SS+10d |  | 43d |
| P2.L4.CL.1320 |  | Prep Flooring / L4 / Corr & Lobbies | 2d | 2026-10-07 | 2026-10-08 | P2.L4.CL.1150, P2.L4.CL.1160, P2.L4.CL.1170, P2.L4.CL.1180, P2.L4.CL.1140 SS+2d, P2.L3.CL.1200 |  | 43d |
| P2.L4.CL.1200 |  | Flooring / L4 / Corr & Lobbies | 8d | 2026-10-09 | 2026-10-20 | P2.L4.CL.1320 |  | 43d |
| P2.L4.CL.1210 |  | Final Paint / L4 / Corr & Lobbies | 5d | 2026-10-16 | 2026-10-22 | P2.L4.CL.1200 FF+2d, P2.L4.CL.1140, BP7.097.3.100 |  | 43d |
| P2.L4.CL.1220 |  | Floor Base / L4 / Corr & Lobbies | 5d | 2026-10-23 | 2026-10-29 | P2.L4.CL.1210 |  | 58d |
| P2.L4.CL.1250 |  | Trim - HVAC - Wall Mounted Devices / L4 / Corr & Lobbies | 5d | 2026-10-23 | 2026-10-29 | P2.L4.CL.1210 |  | 43d |
| P2.L4.CL.1230 |  | Trim - All Electrical - Wall Mounted Devices / L4 / Corr & Lobbies | 5d | 2026-10-30 | 2026-11-05 | P2.L4.CL.1210, P2.L4.CL.1250 |  | 43d |
| P2.L4.CL.1330 |  | Wall Protection / L4 / Corr & Lobbies | 5d | 2026-10-30 | 2026-11-05 | BP7.102.3.300, P2.L4.CL.1220 |  | 58d |
| P2.L4.CL.1240 |  | Trim - Fire Alarm - Wall Mounted Devices / L4 / Corr & Lobbies | 5d | 2026-11-06 | 2026-11-12 | P2.L4.CL.1210, P2.L4.CL.1230 |  | 43d |
| P2.L4.CL.1260 |  | Trim - All Remining Low Voltage Systems - Wall Mounted Devices / L4 / Corr & Lobbies | 5d | 2026-11-13 | 2026-11-19 | P2.L4.CL.1210, P2.L4.CL.1240 |  | 43d |
| P2.L4.CL.1270 |  | Building Signage / L4 / Corr & Lobbies | 5d | 2026-11-20 | 2026-11-30 | P2.L4.CL.1260, P2.L4.CL.1210 |  | 43d |
| P2.L4.CL.1280 |  | Work Completion List / L4 / Corr & Lobbies | 5d | 2026-12-01 | 2026-12-07 | P2.L4.CL.1270, P2.L4.CL.1250, P2.L4.CL.1260, P2.L4.CL.1220, P2.L4.CL.1230, P2.L4.CL.1240, P2.L4.CL.1330 |  | 43d |
| P2.L4.CL.1290 |  | Rough Clean / L4 / Corr & Lobbies | 2d | 2026-12-08 | 2026-12-09 | P2.L4.CL.1280 |  | 43d |
| P2.L4.CL.1300 |  | Punchlist / L4 / Corr & Lobbies | 5d | 2026-12-10 | 2026-12-16 | P2.L4.CL.1290 |  | 43d |
| P2.L4.CL.1310 |  | Final Clean / L4 / Corr & Lobbies | 2d | 2026-12-17 | 2026-12-18 | P2.L4.CL.1300 |  | 43d |
|  | INT | **INTERSTITIAL / LEVEL 4** |  | 2025-03-31 | 2026-05-11 |  |  |  |
|  | 1 | **South Interstitial 4-3905** |  | 2025-03-31 | 2026-05-11 |  |  |  |
|  | Z1 | **Rough In - South Interstitial 4-3905** |  | 2025-03-31 | 2026-03-05 |  |  |  |
| P2.L4.INT.S.1000 |  | Layout - All Trades / L4 / South Int | 5d | 2025-03-31 A | 2025-04-18 A | P2.4.I.03.310 | 100% |  |
| P2.L4.INT.S.1040 |  | Fireproof Interstitial Steel / L4 / South Int | 5d | 2025-03-31 A | 2025-04-04 A | P2.L4.INT.S.1030, P2.L4.INT.S.1010, P2.L4.INT.S.1020 | 100% |  |
| P2.L4.INT.S.1010 |  | Framing - Top Track / L4 / South Int | 5d | 2025-04-14 A | 2025-04-18 A | P2.L4.N.1010, P2.L4.INT.S.1000 | 100% |  |
| P2.L4.INT.S.1020 |  | OH - Structural Supports (All Trades) / L4 / South Int | 5d | 2025-04-14 A | 2025-04-18 A | P2.L4.INT.S.1000 | 100% |  |
| P2.L4.INT.S.1030 |  | OH - MEPF - Hangers & Supports / L4 / South Int | 10d | 2025-04-14 A | 2025-04-30 A | P2.L4.INT.S.1000, P2.BIM.L4.40.140 | 100% |  |
| P2.L4.INT.S.1130 |  | OH - Fire Suppression / L4 / South Int | 10d | 2025-05-07 A | 2025-05-30 A | P2.L4.INT.S.1040 | 100% |  |
| P2.L4.INT.S.1160 |  | OH - Electrical - 480/277v Distribution / L4 / South Int | 20d | 2025-05-19 A | 2025-06-15 A | P2.L4.INT.S.1120 FF+2d, P2.L4.INT.S.1100 FF+2d, P2.L4.INT.S.1040 | 100% |  |
| P2.L4.INT.S.1140 |  | OH - Hang Duct - HP Mains / L4 / South Int | 15d | 2025-05-30 A | 2025-06-30 A | P2.L4.INT.S.1040 | 100% |  |
| P2.L4.INT.S.1050 |  | In Wall - Electrical - Framing / L4 / South Int | 10d | 2025-06-02 A | 2025-06-13 A | P2.L4.INT.S.1070 SS | 100% |  |
| P2.L4.INT.S.1060 |  | In Wall - Backing/Blocking/Supports / L4 / South Int | 10d | 2025-06-02 A | 2025-06-13 A | P2.L4.INT.S.1070 SS | 100% |  |
| P2.L4.INT.S.1190 |  | OH - Electrical - 208/120v Branch / L4 / South Int | 10d | 2025-06-02 A | 2025-06-30 A | P2.L4.INT.S.1160 | 100% |  |
| P2.L4.INT.S.1070 |  | Framing - Perimeter Studs and Door Frames / L4 / South Int | 10d | 2025-06-09 A | 2025-06-20 A | P2.L4.INT.S.1040 | 100% |  |
| P2.L4.INT.S.1150 |  | OH - Plumbing Piping (High) / L4 / South Int | 15d | 2025-06-09 A | 2025-07-31 A | P2.L4.S.1180, P2.L4.INT.S.1120 FF+2d, P2.L4.INT.S.1100 FF+2d, P2.L4.INT.S.1040 | 100% |  |
| P2.L4.INT.S.1180 |  | OH - HVAC Piping / L4 / South Int | 20d | 2025-06-09 A | 2025-08-15 A | P2.L4.INT.S.1130, P2.L4.INT.S.1040 | 100% |  |
| P2.L4.INT.S.1210 |  | OH - DALT - HP Mains / L4 / South Int | 10d | 2025-06-30 A | 2025-09-26 A | P2.L4.INT.S.1140 | 100% |  |
| P2.L4.INT.S.1080 |  | AHJ Inspections - Wall Close In / | 5d | 2025-08-18 A | 2025-09-12 A | P2.L4.INT.S.1050 FF, P2.L4.INT.S.1060 FF, P2.L4.INT.S.1070 | 100% |  |
| P2.L4.INT.S.2090 |  | OH - Plumbing Piping (Low) / L4 / South Int | 15d | 2025-08-18 A | 2025-09-12 A | P2.L4.INT.S.1150 | 100% |  |
| FRG.P2.L4.INT.S.1770 |  | HVAC Piping - Hang Remaining Steel Racks / L4 / South Int - FRAGNET | 18d | 2025-09-02 A | 2025-09-30 A | P2.L4.INT.S.1180 | 100% |  |
| P2.L4.INT.S.1090 |  | Hang-Tape-Finish - Walls and Hard Lid Ceilings / L4 / South Int | 10d | 2025-09-23 A | 2025-10-07 A | P2.L4.INT.S.1080 | 100% |  |
| P2.L4.INT.S.1120 |  | Paint Prime & 1st Coat / L4 / South Int | 5d | 2025-10-08 A | 2025-10-14 A | P2.L4.INT.S.1100 SS, P2.L4.INT.S.1090 | 100% |  |
| P2.L4.INT.S.1220 |  | OH - Plumbing - Test / L4 / South Int | 10d | 2025-10-13 A | 2025-10-17 A | P2.L4.INT.S.2090 | 100% |  |
| P2.L4.INT.S.1175 |  | Set & Connect - Elect Panels and Equipment / L4 / South Int | 5d | 2025-10-27 A | 2025-11-14 A | P2.L4.INT.S.1100, P2.L4.INT.S.1120 | 100% |  |
| P2.L4.INT.S.1230 |  | OH - Insulate HP Duct / L4 / South Int | 10d | 2025-10-27 A | 2025-12-05 | P2.L4.INT.S.1210 | 50% | 72d |
| P2.L4.INT.S.1240 |  | OH - Hang Duct - LP Branch / L4 / South Int | 20d | 2025-10-27 A | 2025-12-12 | P2.L4.INT.S.1210 | 50% | 47d |
| P2.L4.INT.S.1250 |  | OH - HVAC Piping - Test / L4 / South Int | 10d | 2025-10-27 A | 2025-12-05 | P2.L4.INT.S.1180, FRG.P2.L4.INT.S.1770 | 50% | 72d |
| P2.L4.INT.S.1300 |  | OH - Insulate HVAC Pipe / L4 / South Int | 10d | 2025-10-27 A | 2025-12-12 | P2.L4.INT.S.1230, P2.L4.INT.S.1250 | 50% | 72d |
| P2.L4.INT.S.1260 |  | OH - Insulate Plumbing / L4 / South Int | 10d | 2025-10-31 A | 2025-12-22 | P2.L4.INT.S.1220 | 10% | 86d |
| P2.L4.INT.S.1100 |  | Spray/Seal/Firestop - Head of Wall / L4 / South Int | 5d | 2025-12-01 | 2025-12-05 | P2.L4.INT.S.1070 |  | 75d |
| P2.L4.INT.S.1170 |  | Set & Connect - Mech Equipment / L4 / South Int | 20d | 2025-12-01 | 2025-12-29 | P2.L4.INT.S.1040 |  | 57d |
| P2.L4.INT.S.1310 |  | OH - Insulate LP Duct / L4 / South Int | 10d | 2025-12-01 A | 2025-12-29 | P2.L4.INT.S.1240 |  | 47d |
| P2.L4.INT.S.1270 |  | Pull Wire - Electrical - 208/120v Branch & Equip / L4 / South Int | 20d | 2025-12-10 | 2026-01-08 | P2.L4.INT.S.1050, P2.L4.INT.S.1190 |  | 75d |
| P2.L4.INT.S.1320 |  | OH - Conduit - Low Volt - BAS/Controls / L4 / South Int | 10d | 2025-12-15 | 2025-12-29 | P2.L4.INT.S.1300 |  | 72d |
| P2.L4.INT.S.1350 |  | OH - Conduit - Low Volt - Security / L4 / South Int | 10d | 2025-12-15 | 2025-12-29 | P2.L4.INT.S.1300 |  | 72d |
| P2.L4.INT.S.1200 |  | OH - Electrical - Equip Tie In / L4 / South Int | 10d | 2025-12-30 | 2026-01-13 | P2.L4.INT.S.1160, P2.L4.INT.S.1175, P2.L4.INT.S.1170 |  | 62d |
| P2.L4.INT.S.1330 |  | OH - Conduit - Low Volt - Fire Alarm / L4 / South Int | 10d | 2025-12-30 | 2026-01-13 | P2.L4.INT.S.1310 |  | 62d |
| P2.L4.INT.S.1340 |  | OH - Conduit - Low Volt - Telecom / L4 / South Int | 10d | 2025-12-30 | 2026-01-13 | P2.L4.INT.S.1310 |  | 47d |
| P2.L4.INT.S.1390 |  | Pull Wire - Low Volt - Security / L4 / South Int | 10d | 2025-12-30 | 2026-01-13 | P2.L4.INT.S.1350 |  | 72d |
| P2.L4.INT.S.1110 |  | Firestop - Thru Wall / L4 / South Int | 5d | 2026-01-14 | 2026-01-20 | P2.L4.INT.S.1160, P2.L4.INT.S.1180, P2.L4.INT.S.1130, P2.L4.INT.S.1150, P2.L4.INT.S.2090, P2.L4.INT.S.1320, P2.L4.INT.S.1330, P2.L4.INT.S.1340, P2.L4.INT.S.1350, P2.L4.INT.S.1120 SS |  | 67d |
| P2.L4.INT.S.1280 |  | Pull Wire - Electrical - 480/277v Distribution / L4 / South Int | 10d | 2026-01-14 | 2026-01-27 | P2.L4.INT.S.1200 |  | 62d |
| P2.L4.INT.S.1370 |  | Pull Wire - Low Volt - Fire Alarm / L4 / South Int | 10d | 2026-01-14 | 2026-01-27 | P2.L4.INT.S.1330, P2.L4.INT.S.1090 |  | 62d |
| P2.L4.INT.S.1380 |  | Pull Wire - Low Volt - Telecom / L4 / South Int | 10d | 2026-01-14 | 2026-01-27 | P2.L4.INT.S.1340, P2.L4.INT.S.1090 |  | 62d |
| P2.L4.INT.S.1290 |  | OH - HVAC Piping - Equip Tie In / L4 / South Int | 15d | 2026-01-28 | 2026-02-17 | P2.L4.INT.S.1170, P2.L4.INT.S.1250, CX.B2.HYDR.1000 |  | 37d |
| P2.L4.INT.S.1360 |  | Pull Wire - Low Volt - BAS/Controls / L4 / South Int | 10d | 2026-02-18 | 2026-03-03 | P2.L4.INT.S.1320, P2.L4.INT.S.1290 |  | 37d |
| P2.L4.INT.S.1400 |  | Trades Inspect & Verify R/I Work Completed to Specs / L4 / South Int | 2d | 2026-03-04 | 2026-03-05 | P2.L4.INT.S.1110, P2.L4.INT.S.1360, P2.L4.INT.S.1370, P2.L4.INT.S.1380, P2.L4.INT.S.1390, P2.L4.INT.S.1280, P2.L4.INT.S.1260, P2.L4.INT.S.1270 |  | 37d |
|  | 2 | **Finishes - South Interstitial 4-3905 (8,384 sf) / Level 4** |  | 2026-03-06 | 2026-05-11 |  |  |  |
| P2.L4.INT.S.2100 |  | Flooring Prep - Epoxy Floors / L4 / South Int | 5d | 2026-03-06 | 2026-03-12 | P2.L4.INT.S.1400 |  | 170d |
| P2.L4.INT.S.2000 |  | Flooring - Epoxy Floors / L4 / South Int | 2d | 2026-03-13 | 2026-03-16 | P2.L4.INT.S.2100 |  | 170d |
| P2.L4.INT.S.2010 |  | Paint - Finish Coat / L4 / South Int | 5d | 2026-03-17 | 2026-03-23 | P2.L4.INT.S.2000 |  | 170d |
| P2.L4.INT.S.2020 |  | Doors & Hardware / L4 / South Int | 5d | 2026-03-24 | 2026-03-30 | P2.L4.INT.S.2010 |  | 170d |

| ID | WBS | Task | Duration | Start | Finish | Predecessors | Complete | Total float |
| --- | --- | --- | --- | --- | --- | --- | --- | --- |
| P2.L4.INT.S.2040 |  | Building Signage / L4 / South Int | 5d | 2026-03-24 | 2026-03-30 | P2.L4.INT.S.2010 |  | 202d |
| P2.L4.INT.S.2030 |  | Trim All MEP Finishes / L4 / South Int | 5d | 2026-03-31 | 2026-04-06 | P2.L4.INT.S.2020, P2.L4.INT.S.2010 |  | 197d |
| P2.L4.INT.S.2050 |  | Rough Clean / L4 / South Int | 5d | 2026-04-07 | 2026-04-13 | P2.L4.INT.S.2030, P2.L4.INT.S.2040 |  | 197d |
| P2.L4.INT.S.2060 |  | Prepare Punchlist / L4 / South Int | 5d | 2026-04-14 | 2026-04-20 | P2.L4.INT.S.1400, P2.L4.INT.S.2050 |  | 197d |
| P2.L4.INT.S.2070 |  | Correct Punchlist / L4 / South Int | 10d | 2026-04-21 | 2026-05-04 | P2.L4.INT.S.2060 FF, P2.L4.INT.S.2060 |  | 197d |
| P2.L4.INT.S.2080 |  | Final Clean / L4 / South Int | 5d | 2026-05-05 | 2026-05-11 | P2.L4.INT.S.2070 FF, P2.L4.INT.S.2070 |  | 197d |
|  | 2 | **North Interstitial 4-2835** |  | 2025-04-07 | 2026-05-07 |  |  |  |
|  | Z11 | **Rough In - North Interstitial 4-2835** |  | 2025-04-07 | 2026-02-26 |  |  |  |
| P2.L4.INT.N.1040 |  | Fireproof Interstitial Steel / L4 / North Int | 5d | 2025-04-07 A | 2025-04-11 A | P2.L4.INT.N.1020, P2.L4.INT.N.1030, P2.L4.INT.N.1010 | 100% |  |
| P2.L4.INT.N.1000 |  | Layout - All Trades / L4 / North Int | 5d | 2025-04-21 A | 2025-04-28 A | P2.4.I.03.320 | 100% |  |
| P2.L4.INT.N.1010 |  | Framing - Top Track / L4 / North Int | 5d | 2025-04-21 A | 2025-04-26 A | P2.L4.INT.S.1010, P2.L4.INT.N.1000 | 100% |  |
| P2.L4.INT.N.1020 |  | OH - Structural Supports (All Trades) / L4 / North Int | 5d | 2025-04-21 A | 2025-04-30 A | P2.L4.INT.N.1000 | 100% |  |
| P2.L4.INT.N.1030 |  | OH - MEPF - Hangers & Supports / L4 / North Int | 10d | 2025-04-21 A | 2025-04-30 A | P2.L4.INT.N.1000 | 100% |  |
| P2.L4.INT.N.1130 |  | OH - Fire Suppression / L4 / North Int | 10d | 2025-04-23 A | 2025-05-05 A | P2.L4.INT.N.1040 | 100% |  |
| P2.L4.INT.N.1050 |  | In Wall - Electrical - Framing / L4 / North Int | 10d | 2025-06-02 A | 2025-06-13 A | P2.L4.INT.N.1070 SS | 100% |  |
| P2.L4.INT.N.1060 |  | In Wall - Backing/Blocking/Supports / L4 / North Int | 10d | 2025-06-02 A | 2025-06-13 A | P2.L4.INT.N.1070 SS | 100% |  |
| P2.L4.INT.N.1180 |  | OH - HVAC Piping (Chilled Water) West / L4 / North Int | 20d | 2025-06-02 A | 2025-06-27 A | P2.L4.INT.N.1130, P2.L4.INT.N.1040 | 100% |  |
| P2.L4.INT.N.1070 |  | Framing - Perimeter Studs and Door Frames / L4 / North Int | 10d | 2025-06-16 A | 2025-06-30 A | P2.L4.INT.N.1040 | 100% |  |
| P2.L4.INT.N.1140 |  | OH - Hang Duct - HP Mains (Supply) / L4 / North Int | 20d | 2025-06-18 A | 2025-07-22 A | P2.L4.INT.S.1140, P2.L4.INT.N.1040 | 100% |  |
| P2.L4.INT.N.1280 |  | Pull Wire - Electrical - 480/277v Distribution / L4 / North Int | 10d | 2025-06-20 A | 2025-07-25 A | P2.L4.INT.N.1200 | 100% |  |
| P2.L4.INT.N.2130 |  | OH - HVAC Piping (Chilled Water) East / L4 / North Int | 20d | 2025-06-20 A | 2025-07-25 A | P2.L4.INT.N.2120 | 100% |  |
| P2.L4.INT.N.1160 |  | OH - Electrical - 480/277v Distribution / L4 / North Int | 20d | 2025-06-23 A | 2025-07-25 A | P2.L4.INT.N.1100, P2.L4.INT.N.1040, P2.L4.INT.N.1120 | 100% |  |
| P2.L4.INT.N.2120 |  | OH - HVAC Piping (Reheat) West / L4 / North Int | 20d | 2025-06-30 A | 2025-07-28 A | P2.L4.INT.N.1180 | 100% |  |
| P2.L4.INT.N.2100 |  | OH - Hang Duct - HP Mains (Return) / L4 / North Int | 20d | 2025-07-23 A | 2025-09-08 A | P2.L4.INT.N.1140 | 100% |  |
| P2.L4.INT.N.1150 |  | OH - Plumbing Piping (High) / L4 / North Int | 20d | 2025-07-30 A | 2025-08-30 A | P2.L4.N.1180, P2.L4.INT.N.1100, P2.L4.INT.N.1040, P2.L4.INT.N.1120 | 100% |  |
| P2.L4.INT.N.2140 |  | OH - HVAC Piping (Reheat) / L4 / North Int | 20d | 2025-08-01 A | 2025-08-28 A | P2.L4.INT.N.2130 | 100% |  |
| P2.L4.INT.N.2090 |  | OH - Plumbing Piping (Low) / L4 / North Int | 20d | 2025-08-11 A | 2025-09-24 A | P2.L4.INT.N.1150 | 100% |  |
| P2.L4.INT.N.1080 |  | AHJ Inspections - Wall Close In / L4 / North Int | 5d | 2025-08-18 A | 2025-09-13 A | P2.L4.INT.N.1050 FF, P2.L4.INT.N.1060 FF, P2.L4.INT.N.1070 | 100% |  |
| P2.L4.INT.N.1190 |  | OH - Electrical - 208/120v Branch / L4 / North Int | 10d | 2025-08-29 A | 2025-09-08 A | P2.L4.INT.N.1160 | 100% |  |
| FRG.P2.L4.INT.N.1760 |  | HVAC Piping - Hang Remaining Steel Racks / L4 / North Int - FRAGNET | 18d | 2025-09-02 A | 2025-09-30 A | P2.L4.INT.N.2140 | 100% |  |
| P2.L4.INT.N.1210 |  | OH - DALT - HP Mains / L4 / North Int | 10d | 2025-09-15 A | 2025-09-26 A | P2.L4.INT.N.2100 | 100% |  |
| P2.L4.INT.N.1090 |  | Hang-Tape-Finish / L4 / North Int | 10d | 2025-09-23 A | 2025-10-07 A | P2.L4.INT.N.1080 | 100% |  |
| P2.L4.INT.N.1240 |  | OH - Hang Duct - LP Branch (Supply) / L4 / North Int | 20d | 2025-09-30 A | 2025-12-05 | P2.L4.INT.N.1210 | 75% | 47d |
| P2.L4.INT.N.2110 |  | OH - Hang Duct - LP Branch (Return) / L4 / North Int | 20d | 2025-09-30 A | 2025-12-05 | P2.L4.INT.N.1210 | 75% | 52d |
| P2.L4.INT.N.1120 |  | Paint Prime & 1st Coat / L4 / North Int | 5d | 2025-10-08 A | 2025-10-14 A | P2.L4.INT.N.1100 SS | 100% |  |
| P2.L4.INT.N.1220 |  | OH - Plumbing - Test / L4 / North Int | 10d | 2025-10-13 A | 2025-10-17 A | P2.L4.INT.N.2090 | 100% |  |
| P2.L4.INT.N.1100 |  | Spray/Seal/Firestop - Head of Wall / L4 / North Int | 5d | 2025-11-03 A | 2025-11-07 A | P2.L4.INT.N.1090 | 100% |  |
| P2.L4.INT.N.1110 |  | Firestop - Thru Wall / L4 / North Int | 5d | 2025-12-01 | 2025-12-05 | P2.L4.INT.N.1120 SS |  | 97d |
| P2.L4.INT.N.1175 |  | Set & Connect - Elect Panels and Equipment / L4 / North Int | 5d | 2025-12-01 | 2025-12-05 | P2.L4.INT.N.1100, P2.L4.INT.N.1120 |  | 67d |
| P2.L4.INT.N.1230 |  | OH - Insulate HP Duct / L4 / North Int | 10d | 2025-12-01 | 2025-12-12 | P2.L4.INT.N.1210 |  | 47d |
| P2.L4.INT.N.1250 |  | OH - HVAC Piping - Test / L4 / North Int | 10d | 2025-12-01 | 2025-12-12 | P2.L4.INT.N.2140, FRG.P2.L4.INT.N.1760 |  | 62d |
| P2.L4.INT.N.1260 |  | OH - Insulate Plumbing / L4 / North Int | 10d | 2025-12-01 | 2025-12-12 | P2.L4.INT.N.1220 |  | 92d |
| P2.L4.INT.N.1170 |  | Set & Connect - Mech Equipment / L4 / North Int | 20d | 2025-12-08 | 2026-01-06 | P2.L4.INT.N.1040, P2.L4.INT.N.1240 |  | 47d |
| P2.L4.INT.N.1300 |  | OH - Insulate HVAC Pipe / L4 / North Int | 10d | 2025-12-15 | 2025-12-29 | P2.L4.INT.N.1250, P2.L4.INT.N.1230 |  | 62d |
| P2.L4.INT.N.1310 |  | OH - Insulate LP Duct / L4 / North Int | 10d | 2025-12-15 | 2025-12-29 | P2.L4.INT.N.2110, P2.L4.INT.N.1230 |  | 47d |
| P2.L4.INT.N.1320 |  | OH - Conduit - Low Volt - BAS/Controls / L4 / North Int | 10d | 2025-12-30 | 2026-01-13 | P2.L4.INT.N.1300 |  | 62d |
| P2.L4.INT.N.1330 |  | OH - Conduit - Low Volt - Fire Alarm / L4 / North Int | 10d | 2025-12-30 | 2026-01-13 | P2.L4.INT.N.1310 |  | 62d |
| P2.L4.INT.N.1340 |  | OH - Conduit - Low Volt - Telecom / L4 / North Int | 10d | 2025-12-30 | 2026-01-13 | P2.L4.INT.N.1310 |  | 47d |
| P2.L4.INT.N.1350 |  | OH - Conduit - Low Volt - Security / L4 / North Int | 10d | 2025-12-30 | 2026-01-13 | P2.L4.INT.N.1300 |  | 62d |
| P2.L4.INT.N.1200 |  | OH - Electrical - Equip Tie In / L4 / North Int | 10d | 2026-01-07 | 2026-01-20 | P2.L4.INT.N.1160, P2.L4.INT.N.1170, P2.L4.INT.N.1175 |  | 47d |
| P2.L4.INT.N.1370 |  | Pull Wire - Low Volt - Fire Alarm / L4 / North Int | 10d | 2026-01-14 | 2026-01-27 | P2.L4.INT.N.1090, P2.L4.INT.N.1330 |  | 62d |
| P2.L4.INT.N.1380 |  | Pull Wire - Low Volt - Telecom / L4 / North Int | 10d | 2026-01-14 | 2026-01-27 | P2.L4.INT.N.1090, P2.L4.INT.N.1340 |  | 62d |
| P2.L4.INT.N.1390 |  | Pull Wire - Low Volt - Security / L4 / North Int | 10d | 2026-01-14 | 2026-01-27 | P2.L4.INT.N.1350 |  | 62d |
| P2.L4.INT.N.1270 |  | Pull Wire - Electrical - 208/120v Branch & Equip / L4 / North Int | 20d | 2026-01-21 | 2026-02-17 | P2.L4.INT.N.1190, P2.L4.INT.N.1200, P2.L4.INT.N.1050 |  | 47d |
| P2.L4.INT.N.1290 |  | OH - HVAC Piping - Equip Tie In / L4 / North Int | 10d | 2026-01-28 | 2026-02-10 | P2.L4.INT.N.1170, P2.L4.INT.N.1250 FF+3d, CX.B2.HYDR.1000 |  | 42d |
| P2.L4.INT.N.1360 |  | Pull Wire - Low Volt - BAS/Controls / L4 / North Int | 10d | 2026-02-11 | 2026-02-24 | P2.L4.INT.N.1290, P2.L4.INT.N.1320 |  | 42d |
| P2.L4.INT.N.1400 |  | Trades Inspect & Verify R/I Work Completed to Specs / L4 / North Int | 2d | 2026-02-25 | 2026-02-26 | P2.L4.INT.N.1260, P2.L4.INT.N.1110, P2.L4.INT.N.1390, P2.L4.INT.N.1280, P2.L4.INT.N.1270, P2.L4.INT.N.1360, P2.L4.INT.N.1370, P2.L4.INT.N.1380 |  | 42d |
|  | 1 | **Finishes - North Interstitial 4-2835 (21,357 sf) / Level 4** |  | 2026-02-27 | 2026-05-07 |  |  |  |
| P2.L4.INT.N.2000 |  | Flooring Prep - Epoxy Floors / L4 / North Int | 7d | 2026-02-27 | 2026-03-09 | P2.L4.INT.N.1400 |  | 172d |
| P2.L4.INT.N.2150 |  | Flooring - Epoxy Floors / L4 / North Int | 3d | 2026-03-10 | 2026-03-12 | P2.L4.INT.N.2000 |  | 172d |
| P2.L4.INT.N.2010 |  | Paint - Finish Coat / L4 / North Int | 5d | 2026-03-13 | 2026-03-19 | P2.L4.INT.N.1400, P2.L4.INT.N.2150 |  | 172d |
| P2.L4.INT.N.2020 |  | Doors & Hardware / L4 / North Int | 5d | 2026-03-20 | 2026-03-26 | P2.L4.INT.N.2010 |  | 172d |
| P2.L4.INT.N.2040 |  | Building Signage / L4 / North Int | 5d | 2026-03-20 | 2026-03-26 | P2.L4.INT.N.2010 |  | 204d |
| P2.L4.INT.N.2030 |  | Trim All MEP Finishes / L4 / North Int | 5d | 2026-03-27 | 2026-04-02 | P2.L4.INT.N.2020, P2.L4.INT.N.2010 |  | 199d |
| P2.L4.INT.N.2050 |  | Rough Clean / L4 / North Int | 5d | 2026-04-03 | 2026-04-09 | P2.L4.INT.N.2040, P2.L4.INT.N.2030 |  | 199d |
| P2.L4.INT.N.2060 |  | Prepare Punchlist / L4 / North Int | 5d | 2026-04-10 | 2026-04-16 | P2.L4.INT.N.2050 |  | 199d |
| P2.L4.INT.N.2070 |  | Correct Punchlist / L4 / North Int | 10d | 2026-04-17 | 2026-04-30 | P2.L4.INT.N.2060 FF, P2.L4.INT.N.2060 |  | 199d |
| P2.L4.INT.N.2080 |  | Final Clean / L4 / North Int | 5d | 2026-05-01 | 2026-05-07 | P2.L4.INT.N.2070 FF, P2.L4.INT.N.2070 |  | 199d |
|  | 1 | **MECHANICAL TOWERS / LEVEL 4** |  | 2025-03-18 | 2026-04-14 |  |  |  |
|  | 4 | **South Mechanical Tower / Rough In & Finish / Level 4** |  | 2025-06-16 | 2026-04-14 |  |  |  |

| ID | WBS | Task | Duration | Start | Finish | Predecessors | Complete | Total float |
| --- | --- | --- | --- | --- | --- | --- | --- | --- |
| P2.L4.SMT.1070 |  | Set & Connect - Mech Equipment / L4 - S. Mech Tower | 10d | 2025-06-16 A | 2025-06-27 A | P2.4.03.610, P2.L3.SMT.1070 | 100% |  |
| P2.L4.SMT.1000 |  | Insulation - Exterior Wall Assembly / L4 - S. Mech Tower | 5d | 2025-07-02 A | 2025-07-09 A | P2.FAC.2.Z1.150 | 100% |  |
| P2.L4.SMT.1020 |  | In Wall - Electrical - CMU / L4 - S. Mech Tower | 10d | 2025-07-10 A | 2025-07-23 A | P2.L4.SMT.1010 SS | 100% |  |
| P2.L4.SMT.1030 |  | In Wall - Mech/Plumbing - CMU / L4 - S. Mech Tower | 10d | 2025-07-10 A | 2025-07-23 A | P2.L4.SMT.1010 SS | 100% |  |
| P2.L4.SMT.1105 |  | HVAC Duct Connections to Shaft Riser / L4 - S. Mech Tower | 20d | 2025-08-04 A | 2025-08-28 A | DDD2650, P2.L4.SMT.1070 | 100% |  |
| P2.L4.SMT.1130 |  | Test/Inspect Duct & Piping / L4 - S. Mech Tower | 5d | 2025-08-29 A | 2025-09-29 A | P2.L4.SMT.1260, P2.L4.SMT.1105 | 100% |  |
| P2.L4.SMT.1010 |  | CMU - Lay Block / L4 - S. Mech Tower | 10d | 2025-09-01 A | 2025-09-04 A | BP4.040.3.100, P2.L4.SMT.1000 | 100% |  |
| P2.L4.SMT.1050 |  | CMU - Point & Patch / L4 - S. Mech Tower | 10d | 2025-09-04 A | 2025-09-08 A | P2.L4.SMT.1030, P2.L4.SMT.1020, P2.L4.SMT.1040 | 100% |  |
| P2.L4.SMT.1040 |  | Paint - CMU Block Fill / L4 - S. Mech Tower | 10d | 2025-09-08 A | 2025-09-12 A | P2.L4.SMT.1010 | 100% |  |
| P2.L4.SMT.1060 |  | Paint Prime & 1st Coat - CMU / L4 - S. Mech Tower | 10d | 2025-09-08 A | 2025-09-12 A | P2.L4.SMT.1050 SS | 100% |  |
| P2.L4.SMT.1100 |  | HVAC Piping Connections to Shaft Riser (Chilled Water) / L4 - S. Mech Tower | 20d | 2025-09-15 A | 2025-09-26 A | DDD2650, P2.L4.SMT.1070 | 100% |  |
| FRG.P2.L4.SMT.1030 |  | AHU Piping Install / L4 - S. Mech Tower - FRAGNET | 18d | 2025-09-18 A | 2025-11-12 A | P2.L4.SMT.1030, P2.L4.SMT.1010 | 100% |  |
| P2.L4.SMT.1260 |  | HVAC Piping Connections to Shaft Riser (Reheat) / L4 - S. Mech Tower | 20d | 2025-09-22 A | 2025-09-26 A | P2.L4.SMT.1100 | 100% |  |
| P2.L4.SMT.1080 |  | Set & Connect - Elect Panels and Equipment / L4 - S. Mech Tower | 5d | 2025-11-24 A | 2025-11-26 A | P2.L4.SMT.1060 | 100% |  |
| P2.L4.SMT.1110 |  | HVAC Piping - Equip Tie In (Chilled Water) / L4 - S. Mech Tower | 20d | 2025-12-01 A | 2026-02-24 | P2.L4.SMT.1070, CX.B2.HYDR.1000, FRG.P2.L4.SMT.1030 |  | 9d |
| P2.L4.SMT.1120 |  | BAS - Equip Tie In / L4 - S. Mech Tower | 5d | 2025-12-01 | 2025-12-05 | P2.L4.SMT.1070, P2.L4.SMT.1060 |  | 89d |
| P2.L4.SMT.1270 |  | Flooring Prep - Epoxy Floors / L4 - S. Mech Tower | 3d | 2026-01-12 | 2026-01-14 | P2.L4.SMT.1080, P2.L3.SMT.1200 |  | 29d |
| P2.L4.SMT.1200 |  | Flooring - Epoxy Floors / L4 - S. Mech Tower | 2d | 2026-01-15 | 2026-01-16 | P2.L4.SMT.1270 |  | 29d |
| P2.L4.SMT.1090 |  | Panelboards, Interconnect Wiring, and Remaining Room Buildout of All Elec/FA Systems / L4 - S. Mech Tower | 10d | 2026-01-19 | 2026-01-30 | BP1.262.3.200, BP1.262.3.100, P2.L4.SMT.1200, P2.L4.SMT.1080 |  | 34d |
| P2.L4.SMT.1140 |  | Pull Wire - In From Distribution Panels / Out to Branch Circuits / L4 - S. Mech Tower | 5d | 2026-02-02 | 2026-02-06 | P2.L4.SMT.1090 |  | 34d |
| P2.L4.SMT.1160 |  | Electrical Tie in to Equipment / L4 - S. Mech Tower | 5d | 2026-02-09 | 2026-02-13 | P2.L4.SMT.1140, P2.L4.SMT.1070 |  | 181d |
| P2.L4.SMT.1170 |  | Test & Terminate / L4 - S. Mech Tower | 5d | 2026-02-09 | 2026-02-13 | P2.L4.SMT.1140 |  | 34d |
| P2.L4.SMT.1180 |  | Paint - Finish Coat / L4 - S. Mech Tower | 2d | 2026-02-16 | 2026-02-17 | P2.L4.SMT.1170 |  | 34d |
| P2.L4.SMT.1190 |  | Trim All MEPF Finishes / L4 - S. Mech Tower | 2d | 2026-02-18 | 2026-02-19 | P2.L4.SMT.1180 |  | 35d |
| P2.L4.SMT.1340 |  | Wall Protection / L4 - S. Mech Tower | 5d | 2026-02-19 | 2026-02-25 | P2.L4.SMT.1180, BP7.102.3.300 |  | 33d |
| P2.L4.SMT.1210 |  | Doors & Hardware / L4 - S. Mech Tower | 2d | 2026-02-20 | 2026-02-23 | P2.L4.SMT.1190 |  | 35d |
| P2.L4.SMT.1250 |  | HVAC Piping - Equip Tie In (Reheat) / L4 - S. Mech Tower | 20d | 2026-02-25 | 2026-03-24 | P2.L4.SMT.1110, CX.B2.HYDR.1000, FRG.P2.L4.SMT.1030 |  | 9d |
| P2.L4.SMT.1150 |  | Insulate HVAC / Plumbing Pipe / L4 - S. Mech Tower | 5d | 2026-03-25 | 2026-03-31 | P2.L4.SMT.1250, P2.L4.SMT.1130 |  | 9d |
| P2.L4.SMT.1220 |  | Trades Inspect & Verify R/I Work Completed to Specs / L4 - S. Mech Tower | 5d | 2026-04-01 | 2026-04-07 | P2.L4.SMT.1210, P2.L4.SMT.1120, P2.L4.SMT.1150, P2.L4.SMT.1340 |  | 9d |
| P2.L4.SMT.1240 |  | Energize Elec Panels - Lock Doors and Limit Access / L4 - S. Mech Tower | 5d | 2026-04-08 | 2026-04-14 | P2.L4.SMT.1220, CX.B2.SWGR.1010, CX.B2.MVEE.1010 |  | 9d |
| P2.L4.SMT.1230 |  | HVAC System Ready for Start Up / L4 - S. Mech Tower | 0d | 2026-04-14 | 2026-04-14 | P2.L4.SMT.1160 FF, P2.L4.SMT.1240 |  | 139d |
|  | 8 | **East Mechanical Tower / Rough In & Finish / Level 4** |  | 2025-03-18 | 2026-03-31 |  |  |  |
| P2.L4.EMT.1080 |  | Set & Connect - Mech Equipment / L4 - E. Mech Tower | 10d | 2025-03-18 A | 2025-04-18 A | P2.L3.EMT.1070, P2.4.03.630 | 100% |  |
| P2.L4.EMT.1000 |  | HVAC - Quench Vent Piping / L4 - E. Mech Tower L4 - E. Mech Tower | 5d | 2025-08-11 A | 2025-09-05 A | P2.L2.EMT.1250 | 100% |  |
| P2.L4.EMT.1105 |  | HVAC Duct Connections to Shaft Riser / L4 - E. Mech Tower | 5d | 2025-08-22 A | 2025-08-28 A | DDD3250, P2.L4.EMT.1080 | 100% |  |
| P2.L4.EMT.1010 |  | Insulation - Exterior Wall Assembly / L4 - E. Mech Tower | 5d | 2025-09-01 A | 2025-09-05 A | P2.FAC.2.Z3.150 | 100% |  |
| P2.L4.EMT.1110 |  | HVAC Piping Connections to Shaft Riser / L4 - E. Mech Tower | 15d | 2025-09-22 A | 2025-09-26 A | DDD3250, P2.L4.EMT.1080 | 100% |  |
| P2.L4.EMT.1020 |  | CMU - Lay Block / L4 - E. Mech Tower | 10d | 2025-10-08 A | 2025-10-15 A | P2.L2.EMT.1010, P2.L4.EMT.1010, P2.L3.EMT.1010 | 100% |  |
| P2.L4.EMT.1050 |  | Paint - CMU Block Fill / L4 - E. Mech Tower | 10d | 2025-10-15 A | 2025-10-16 A | P2.L4.EMT.1020 | 100% |  |
| P2.L4.EMT.1060 |  | CMU - Point & Patch / L4 - E. Mech Tower | 10d | 2025-10-16 A | 2025-10-17 A | P2.L4.EMT.1050, P2.L4.EMT.1020 | 100% |  |
| P2.L4.EMT.1070 |  | Paint Prime & 1st Coat - CMU / L4 - E. Mech Tower | 10d | 2025-10-20 A | 2025-10-23 A | P2.L4.EMT.1060 SS | 100% |  |
| P2.L4.EMT.1130 |  | BAS - Equip Tie In / L4 - E. Mech Tower | 5d | 2025-11-03 A | 2025-11-07 A | P2.L4.EMT.1080, P2.L4.EMT.1070 | 100% |  |
| P2.L4.EMT.1090 |  | Set & Connect - Elect Panels and Equipment / L4 - E. Mech Tower | 5d | 2025-11-10 A | 2025-11-15 A | P2.L4.EMT.1070 | 100% |  |
| P2.L4.EMT.1210 |  | Flooring Prep - Epoxy Floors / L4 - E. Mech Tower | 3d | 2025-11-24 A | 2025-11-26 A | P2.L3.EMT.1250, P2.L4.EMT.1090 | 100% |  |
| P2.L4.EMT.1260 |  | Flooring - Epoxy Floors / L4 - E. Mech Tower | 2d | 2025-12-17 | 2025-12-18 | P2.L4.EMT.1210 |  | 48d |
| P2.L4.EMT.1100 |  | Panelboards, Interconnect Wiring, and Remaining Room Buildout of All Elec/FA Systems / L4 - E. Mech Tower | 10d | 2025-12-19 | 2026-01-05 | BP1.262.3.200, BP1.262.3.100, P2.L4.EMT.1260, P2.L4.EMT.1090 |  | 53d |
| FRG.P2.L4.EMT.1020 |  | AHU Piping Install / L4 - E. Mech Tower - FRAGNET | 20d | 2025-12-22 | 2026-01-20 | FRG.P2.L3.EMT.1010 |  | 39d |
| P2.L4.EMT.1140 |  | Test/Inspect Duct & Piping / L4 - E. Mech Tower | 5d | 2025-12-22 | 2025-12-29 | P2.L4.EMT.1110, P2.L4.EMT.1105 |  | 59d |
| P2.L4.EMT.1150 |  | Pull Wire - In From Distribution Panels / Out to Branch Circuits / L4 - E. Mech Tower | 5d | 2026-01-06 | 2026-01-12 | P2.L4.EMT.1100 |  | 53d |
| P2.L4.EMT.1170 |  | Electrical Tie in to Equipment / L4 - E. Mech Tower | 5d | 2026-01-13 | 2026-01-19 | P2.L4.EMT.1150, P2.L4.EMT.1080 |  | 200d |
| P2.L4.EMT.1180 |  | Test & Terminate / L4 - E. Mech Tower | 5d | 2026-01-13 | 2026-01-19 | P2.L4.EMT.1150 |  | 53d |
| P2.L4.EMT.1190 |  | Paint - Finish Coat / L4 - E. Mech Tower | 2d | 2026-01-20 | 2026-01-21 | P2.L4.EMT.1180 |  | 53d |
| P2.L4.EMT.1200 |  | Trim All MEPF Finishes / L4 - E. Mech Tower | 2d | 2026-01-22 | 2026-01-23 | P2.L4.EMT.1190 |  | 54d |
| P2.L4.EMT.1220 |  | Doors & Hardware / L4 - E. Mech Tower | 2d | 2026-01-26 | 2026-01-27 | P2.L4.EMT.1200 |  | 54d |
| P2.L4.EMT.1120 |  | HVAC Piping - Equip Tie In / L4 - E. Mech Tower | 20d | 2026-01-28 | 2026-02-24 | P2.L4.EMT.1080, CX.B2.HYDR.1000 |  | 19d |
| P2.L4.EMT.1340 |  | Wall Protection / L4 - E. Mech Tower | 5d | 2026-02-19 | 2026-02-25 | P2.L4.EMT.1190, BP7.102.3.300 |  | 33d |
| P2.L4.EMT.1160 |  | Insulate HVAC / Plumbing Pipe / L4 - E. Mech Tower | 15d | 2026-02-25 | 2026-03-17 | P2.L4.EMT.1140, P2.L4.EMT.1120 |  | 19d |
| P2.L4.EMT.1230 |  | Trades Inspect & Verify R/I Work Completed to Specs / L4 - E. Mech Tower | 5d | 2026-03-18 | 2026-03-24 | P2.L4.EMT.1000, P2.L4.EMT.1220, P2.L4.EMT.1130, P2.L4.EMT.1160, P2.L4.EMT.1340 |  | 19d |
| P2.L4.EMT.1250 |  | Energize Elec Panels - Lock Doors and Limit Access / L4 - E. Mech Tower | 5d | 2026-03-25 | 2026-03-31 | P2.L4.EMT.1230, CX.B2.SWGR.1010, CX.B2.MVEE.1010, FRG.P2.L4.EMT.1020 |  | 19d |
| P2.L4.EMT.1240 |  | HVAC System Ready for Start Up / L4 - E. Mech Tower | 0d | 2026-03-31 | 2026-03-31 | P2.L4.EMT.1170 FF, P2.L4.EMT.1250, FRG.P2.L4.EMT.1020 |  | 149d |
|  | L5 | **L5 / BUILDOUT** |  | 2025-03-03 | 2026-10-28 |  |  |  |
|  | L5 | **CORE & SUPPORT SPACES / LEVEL 5** |  | 2025-03-03 | 2026-10-28 |  |  |  |
|  | 1 | **ROUGH IN - Core & Support Spaces / Level 5** |  | 2025-03-03 | 2026-02-24 |  |  |  |
|  | Z112 | **South / Level 5** |  | 2025-03-03 | 2026-02-24 |  |  |  |
| P2.L5.S.1000 |  | Layout - All Trades / L5 / South | 5d | 2025-03-03 A | 2025-03-24 A | P2.5.03.610, P2.6.03.610 | 100% |  |
| P2.L5.S.1020 |  | OH - Structural Supports (All Trades) / L5 / South | 5d | 2025-03-10 A | 2025-03-28 A | P2.L5.S.1000 | 100% |  |
| P2.L5.S.1010 |  | Framing - Top Track / L5 / South | 10d | 2025-04-08 A | 2025-04-16 A | P2.L4.S.1010, P2.L5.S.1000 | 100% |  |
| P2.L5.S.1030 |  | OH - MEPF - Hangers & Supports / L5 / South | 10d | 2025-04-08 A | 2025-04-18 A | P2.L5.S.1000, P2.BIM.L5.40.140 | 100% |  |
| P2.L5.S.1090 |  | Framing - Priority Walls & Door Frames / L5 / South | 10d | 2025-04-09 A | 2025-04-25 A | P2.L5.S.1010, P2.L4.S.1090 SS | 100% |  |
| P2.L5.S.1170 |  | OH - Fire Suppression / L5 / South | 10d | 2025-04-09 A | 2025-05-29 A | P2.L5.S.1030, P2.L5.S.1150 | 100% |  |

| ID | WBS | Task | Duration | Start | Finish | Predecessors | Complete | Total float | Constraint |
| --- | --- | --- | --- | --- | --- | --- | --- | --- | --- |
| P2.L5.S.1130 |  | Framing - Priority Walls - AHJ Inspections / L5 / South | 5d | 2025-04-10 A | 2025-04-29 A | P2.L5.S.1090 | 100% |  |  |
| P2.L5.S.1180 |  | OH - Plumbing Piping (High) / L5 / South | 20d | 2025-04-14 A | 2025-06-30 A | P2.L4.S.1180, P2.L5.S.1030, P2.L5.S.1150 | 100% |  |  |
| P2.L5.S.1230 |  | OH - Electrical - 208/120v Branch / L5 / South | 10d | 2025-04-14 A | 2025-07-03 A | P2.L5.S.1190 | 100% |  |  |
| P2.L5.S.1140 |  | Hang/Tape/Finish - Priority Walls / L5 / South | 10d | 2025-04-23 A | 2025-05-23 A | P2.L5.S.1020, P2.L5.S.1130 | 100% |  |  |
| P2.L5.S.1160 |  | Spray/Seal/Firestop - Head of Wall - Priority Walls / L5 / South | 5d | 2025-04-28 A | 2025-04-30 A | P2.L5.S.1140 | 100% |  |  |
| P2.L5.S.1190 |  | OH - Electrical - 480/277v Distribution / L5 / South | 10d | 2025-05-19 A | 2025-07-01 A | P2.L5.S.1030, P2.L5.S.1150 | 100% |  |  |
| P2.L5.S.1150 |  | Paint Prime & 1st Coat - Priority Walls / L5 / South | 10d | 2025-06-02 A | 2025-06-13 A | P2.L5.S.1160 SS | 100% |  |  |
| P2.L5.S.1220 |  | OH - HVAC Piping / L5 / South | 20d | 2025-06-18 A | 2025-07-31 A | P2.L5.S.1170, P2.L5.S.1030 | 100% |  |  |
| P2.L5.S.1210 |  | OH - Hang Duct - HP Mains / L5 / South | 10d | 2025-07-07 A | 2025-07-30 A | P2.L5.S.1030, P2.L4.S.1210 FF | 100% |  |  |
| P2.L5.S.1260 |  | OH - DALT - HP Mains / L5 / South | 10d | 2025-07-24 A | 2025-09-29 A | P2.L5.S.1210 | 100% |  |  |
| P2.L5.S.1300 |  | OH - Hang Duct - LP Branch / L5 / South | 20d | 2025-07-31 A | 2025-09-10 A | P2.L5.S.1260 | 100% |  |  |
| P2.L5.S.1270 |  | OH - HVAC Piping - Test / L5 / South | 10d | 2025-08-01 A | 2025-08-14 A | P2.L5.S.1220 | 100% |  |  |
| FRG.P2.L5.S.1770 |  | HVAC Piping - Delivery / L5 / South - FRAGNET | 0d | 2025-08-08 A | 2025-08-08 A | P2.L5.S.1030 FF | 100% |  |  |
| FRG.P2.L5.S.1780 |  | HVAC Piping - Stick Build Copper Racks / L5 / South - FRAGNET | 20d | 2025-08-11 A | 2025-09-09 A | FRG.P2.L5.S.1770 | 100% |  |  |
| P2.L5.S.1290 |  | OH - Insulate HP Duct / L5 / South | 10d | 2025-08-14 A | 2025-11-04 A | P2.L5.S.1260 | 100% |  |  |
| P2.L5.S.1560 |  | OH - Plumbing Piping (Low) / L5 / South | 15d | 2025-09-08 A | 2025-09-18 A | P2.L5.S.1180 | 100% |  |  |
| FRG.P2.L5.S.1790 |  | HVAC Piping - Hanging Copper Racks / L5 / South - FRAGNET | 20d | 2025-09-10 A | 2025-09-29 A | FRG.P2.L5.S.1780 | 100% |  |  |
| P2.L5.S.1340 |  | OH - Insulate HVAC Pipe / L5 / South | 10d | 2025-09-18 A | 2025-09-30 A | P2.L5.S.1290, P2.L5.S.1270, FRG.P2.L5.S.1800 | 100% |  |  |
| FRG.P2.L5.S.1800 |  | HVAC Piping - Finish Copper Racks / L5 / South - FRAGNET | 20d | 2025-09-19 A | 2025-09-29 A | FRG.P2.L5.S.1790 | 100% |  |  |
| P2.L5.S.1420 |  | Framing - Balance of Framing & Door Frames / L5 / South | 10d | 2025-09-29 A | 2025-10-24 A | P2.L5.S.1150 | 100% |  |  |
| P2.L5.S.1380 |  | OH - Conduit - Low Volt - Fire Alarm / L5 / South | 10d | 2025-10-20 A | 2026-01-06 | P2.L5.S.1310, P2.L5.S.1350 |  | 68d |  |
| P2.L5.S.1430 |  | In Wall - Plumbing - Framing / L5 / South | 10d | 2025-10-20 A | 2025-11-07 A | P2.L5.S.1420 | 100% |  |  |
| P2.L5.S.1440 |  | In Wall - Electrical - Framing / L5 / South | 10d | 2025-10-20 A | 2025-11-30 A | P2.L5.S.1420, P2.L5.S.1230, P2.L5.S.1430 FF+5d | 100% |  |  |
| P2.L5.S.1450 |  | In Wall - Backing/Blocking/Supports / L5 / South | 10d | 2025-10-20 A | 2025-11-14 A | P2.L5.S.1420 | 100% |  |  |
| P2.L5.S.1240 |  | OH - Plumbing - Test / L5 / South | 10d | 2025-10-27 A | 2025-11-07 A | P2.L5.S.1560 | 100% |  |  |
| P2.L5.S.1250 |  | Pull Wire - Electrical - 480/277v Distribution / L5 / South | 10d | 2025-11-10 A | 2025-12-12 | P2.L5.S.1190, P2.5.HE.3989.1050, P2.5.HE.5966.1050 |  | 93d |  |
| P2.L5.S.1280 |  | OH - Insulate Plumbing / L5 / South | 10d | 2025-11-10 A | 2025-11-26 A | P2.L5.S.1240 | 100% |  |  |
| P2.L5.S.1370 |  | OH - Conduit - Low Volt - BAS/Controls / L5 / South | 10d | 2025-11-17 A | 2025-12-29 | P2.L5.S.1310, P2.L5.S.1340 |  | 73d |  |
| P2.L5.S.1200 |  | Firestop - Thru Wall - Priority Walls / L5 / South | 5d | 2025-12-01 | 2025-12-05 | P2.L5.S.1150 |  | 68d |  |
| P2.L5.S.1310 |  | OH - Set & Connect Mech Equipment / L5 / South | 10d | 2025-12-01 | 2025-12-12 | P2.L5.S.1260, FRG.P2.L5.S.1800 |  | 63d |  |
| P2.L5.S.1400 |  | OH - Conduit - Low Volt - Security / L5 / South | 10d | 2025-12-01 | 2025-12-12 | P2.L5.S.1340 |  | 83d |  |
| P2.L5.S.1460 |  | AHJ Inspections - Wall Close In / L5 / South | 5d | 2025-12-01 | 2025-12-05 | P2.L5.S.1440, P2.L5.S.1450, P2.L5.S.1430 |  | 8d |  |
| P2.L5.S.1350 |  | OH - Insulate LP Duct / L5 / South | 10d | 2025-12-08 | 2025-12-19 | P2.L5.S.1300, P2.L5.S.1200 |  | 68d |  |
| P2.L5.S.1470 |  | Hang-Tape-Finish - Walls and Hard Lid Ceilings / L5 / South | 15d | 2025-12-08 | 2025-12-29 | P2.SUM.175, P2.L5.S.1460 |  | 8d |  |
| P2.L5.S.1320 |  | OH - Electrical - Equip Tie In / L5 / South | 10d | 2025-12-15 | 2025-12-29 | P2.L5.S.1310 |  | 63d |  |
| P2.L5.S.1390 |  | OH - Conduit - Low Volt - Telecom / L5 / South | 10d | 2025-12-22 | 2026-01-06 | P2.L5.S.1350 |  | 68d |  |
| P2.L5.S.1360 |  | Pull Wire - Electrical - 208/120v Branch & Equip / L5 / South | 20d | 2025-12-30 | 2026-01-27 | P2.L5.S.1230, P2.L5.S.1320, P2.L5.S.1440 |  | 63d |  |
| P2.L5.S.1480 |  | Spray/Seal/Firestop - Head of Wall / L5 / South | 10d | 2025-12-30 | 2026-01-13 | P2.L5.S.1470 |  | 73d |  |
| P2.L5.S.1490 |  | Firestop - Thru Wall / L5 / South | 10d | 2025-12-30 | 2026-01-13 | P2.L5.S.1470, P2.L5.S.1280 |  | 73d |  |
| P2.L5.S.1500 |  | Pull Wire - Low Volt - BAS/Controls / L5 / South | 10d | 2025-12-30 | 2026-01-13 | P2.L5.S.1470, P2.L5.S.1370 |  | 73d |  |
| P2.L5.S.1530 |  | Pull Wire - Low Volt - Security / L5 / South | 10d | 2025-12-30 | 2026-01-13 | P2.L5.S.1470, P2.L5.S.1400 |  | 73d |  |
| P2.L5.S.1510 |  | Pull Wire - Low Volt - Fire Alarm / L5 / South | 10d | 2026-01-07 | 2026-01-20 | P2.L5.S.1470, P2.L5.S.1380 |  | 68d |  |
| P2.L5.S.1520 |  | Pull Wire - Low Volt - Telecom / L5 / South | 10d | 2026-01-07 | 2026-01-20 | P2.L5.S.1470, P2.L5.S.1390 |  | 68d |  |
| P2.L5.S.1330 |  | OH - HVAC Piping - Equip Tie In / L5 / South | 15d | 2026-01-28 | 2026-02-17 | P2.L5.S.1310, P2.L5.S.1270, CX.B2.HYDR.1000 |  | 48d |  |
| P2.L5.S.1550 |  | Trades Inspect & Verify R/I Work Completed to Specs / L5 / South | 5d | 2026-02-18 | 2026-02-24 | P2.L5.S.1360, P2.L5.S.1500, P2.L5.S.1510, P2.L5.S.1520, P2.L5.S.1530, P2.L5.S.1490, P2.L5.S.1480, P2.L5.S.1250, P2.L5.S.1330 |  | 48d |  |
|  | Z1121 | **North / Level 5** |  | 2025-03-03 | 2026-02-24 |  |  |  |  |
| P2.L5.N.1000 |  | Layout - All Trades / L5 / North | 5d | 2025-03-03 A | 2025-03-28 A | P2.6.03.630 | 100% |  |  |
| P2.L5.N.1020 |  | OH - Structural Supports (All Trades) / L5 / North | 5d | 2025-03-10 A | 2025-03-31 A | P2.L5.N.1000 | 100% |  |  |
| P2.L5.N.1010 |  | Framing - Top Track / L5 / North | 10d | 2025-04-14 A | 2025-04-28 A | P2.L4.N.1010, P2.L5.N.1000 | 100% |  |  |
| P2.L5.N.1030 |  | OH - MEPF - Hangers & Supports / L5 / North | 10d | 2025-04-14 A | 2025-04-25 A | P2.L5.N.1000, P2.BIM.L5.40.140 | 100% |  |  |
| P2.L5.N.1170 |  | OH - Fire Suppression / L5 / North | 10d | 2025-04-14 A | 2025-05-23 A | P2.L5.N.1030, P2.L5.N.1150 | 100% |  |  |
| P2.L5.N.1180 |  | OH - Plumbing Piping (High) / L5 / North | 20d | 2025-04-14 A | 2025-06-03 A | P2.L4.N.1180, P2.L5.N.1030 | 100% |  |  |
| P2.L5.N.1090 |  | Framing - Priority Walls & Door Frames / L5 / North | 10d | 2025-04-23 A | 2025-05-23 A | P2.L4.N.1090, P2.L5.N.1010 | 100% |  |  |
| P2.L5.N.1140 |  | Hang/Tape/Finish - Priority Walls / L5 / North | 10d | 2025-05-13 A | 2025-06-30 A | P2.L5.N.1020, P2.L5.N.1130 | 100% |  |  |
| P2.L5.N.1130 |  | Framing - Priority Walls - AHJ Inspections / L5 / North | 5d | 2025-05-14 A | 2025-05-27 A | P2.L5.N.1090 | 100% |  |  |
| P2.L5.N.1160 |  | Spray/Seal/Firestop - Head of Wall - Priority Walls / L5 / North | 5d | 2025-05-19 A | 2025-05-23 A | P2.L5.N.1140 FF | 100% |  |  |
| P2.L5.N.1150 |  | Paint Prime & 1st Coat - Priority Walls / L5 / North | 10d | 2025-05-22 A | 2025-06-30 A | P2.L5.N.1160 SS | 100% |  |  |
| P2.L5.N.1230 |  | OH - Electrical - 208/120v Branch / L5 / North | 10d | 2025-06-16 A | 2025-10-10 A | P2.L5.N.1190 | 100% |  |  |
| P2.L5.N.1190 |  | OH - Electrical - 480/277v Distribution / L5 / North | 10d | 2025-07-01 A | 2025-07-15 A | P2.L5.N.1030, P2.L5.N.1150 | 100% |  |  |
| FRG.P2.L5.N.1000 |  | HVAC Piping - Steel Racks Delivery / L5 / North - FRAGNET | 0d | 2025-08-01 A | 2025-08-01 A | P2.L5.N.1030 FF | 100% |  | finish on or after 2025-08-01 |
| FRG.P2.L5.N.1010 |  | HVAC Piping - Delivery / L5 / North - FRAGNET | 0d | 2025-08-08 A | 2025-08-08 A | P2.L5.N.1030 FF | 100% |  |  |
| FRG.P2.L5.N.1020 |  | HVAC Piping - Welding Steel Racks / L5 / North - FRAGNET | 20d | 2025-08-08 A | 2025-09-29 A | FRG.P2.L5.N.1000 | 100% |  |  |
| FRG.P2.L5.N.1030 |  | HVAC Piping - Stick Build Copper Racks / L5 / North - FRAGNET | 20d | 2025-08-11 A | 2025-09-09 A | FRG.P2.L5.N.1010 | 100% |  |  |
| P2.L5.N.1210 |  | OH - Hang Duct - HP Mains / L5 / North | 20d | 2025-08-13 A | 2025-09-29 A | P2.L5.N.1030 | 100% |  |  |
| FRG.P2.L5.N.1760 |  | HVAC Piping - Hanging Copper Racks / L5 / North - FRAGNET | 20d | 2025-09-10 A | 2025-10-02 A | FRG.P2.L5.N.1030 | 100% |  |  |
| P2.L5.N.1260 |  | OH - DALT - HP Mains / L5 / North | 10d | 2025-09-15 A | 2025-09-26 A | P2.L5.N.1210 | 100% |  |  |
| P2.L5.N.1560 |  | OH - Plumbing Piping (Low) / L5 / North | 20d | 2025-09-18 A | 2025-09-24 A | P2.L5.N.1180 | 100% |  |  |
| P2.L5.N.1220 |  | OH - HVAC Piping / L5 / North | 20d | 2025-10-06 A | 2025-12-05 | P2.L5.N.1170, P2.L5.N.1030, FRG.P2.L5.N.1760, FRG.P2.L5.N.1020 | 75% | 64d |  |
| P2.L5.N.1420 |  | Framing - Balance of Framing & Door Frames / L5 / North | 10d | 2025-10-13 A | 2025-10-31 A | P2.L5.N.1150 | 100% |  |  |
| P2.L5.N.1430 |  | In Wall - Plumbing - Framing / L5 / North | 10d | 2025-10-13 A | 2025-11-07 A | P2.L5.N.1420 | 100% |  |  |

| ID | WBS | Task | Duration | Start | Finish | Predecessors | Complete | Total float |
| --- | --- | --- | --- | --- | --- | --- | --- | --- |
| P2.L5.N.1440 |  | In Wall - Electrical - Framing / L5 / North | 10d | 2025-10-13 A | 2025-11-14 A | P2.L5.N.1230, P2.L5.N.1420, P2.L5.N.1430 FF+5d | 100% |  |
| P2.L5.N.1450 |  | In Wall - Backing/Blocking/Supports / L5 / North | 10d | 2025-10-13 A | 2025-11-07 A | P2.L5.N.1420 | 100% |  |
| P2.L5.N.1240 |  | OH - Plumbing - Test / L5 / North | 10d | 2025-10-27 A | 2025-11-04 A | P2.L5.N.1560 | 100% |  |
| P2.L5.N.1300 |  | OH - Hang Duct - LP Branch / L5 / North | 15d | 2025-10-29 A | 2026-01-06 | P2.L5.N.1260, P2.L5.N.1290 | 67% | 53d |
| P2.L5.N.1280 |  | OH - Insulate Plumbing / L5 / North | 10d | 2025-11-05 A | 2025-11-19 A | P2.L5.N.1240 | 100% |  |
| P2.L5.N.1270 |  | OH - HVAC Piping - Test / L5 / North | 5d | 2025-11-19 A | 2025-12-12 | P2.L5.N.1220 |  | 64d |
| P2.L5.N.1200 |  | Firestop - Thru Wall - Priority Walls / L5 / North | 5d | 2025-12-01 | 2025-12-05 | P2.L5.N.1150 |  | 73d |
| P2.L5.N.1250 |  | Pull Wire - Electrical - 480/277v Distribution / L5 / North | 10d | 2025-12-01 | 2025-12-12 | P2.L5.N.1190, P2.5.HE.2949.1050, P2.5.HE.2803.1050 |  | 98d |
| P2.L5.N.1290 |  | OH - Insulate HP Duct / L5 / North | 20d | 2025-12-01 | 2025-12-29 | P2.L5.N.1260 |  | 53d |
| P2.L5.N.1310 |  | OH - Set & Connect Mech Equipment / L5 / North | 10d | 2025-12-01 | 2025-12-12 | P2.L5.N.1260 |  | 68d |
| P2.L5.N.1460 |  | AHJ Inspections - Wall Close In / L5 / North | 5d | 2025-12-01 | 2025-12-05 | P2.L5.N.1440, P2.L5.N.1450, P2.L5.N.1430 |  | 8d |
| P2.L5.N.1470 |  | Hang-Tape-Finish - Walls and Hard Lid Ceilings / L5 / North | 15d | 2025-12-08 | 2025-12-29 | P2.SUM.175, P2.L5.N.1460 |  | 8d |
| P2.L5.N.1320 |  | OH - Electrical - Equip Tie In / L5 / North | 10d | 2025-12-15 | 2025-12-29 | P2.L5.N.1310 |  | 68d |
| P2.L5.N.1340 |  | OH - Insulate HVAC Pipe / L5 / North | 10d | 2025-12-30 | 2026-01-13 | P2.L5.N.1270, P2.L5.N.1290 |  | 54d |
| P2.L5.N.1360 |  | Pull Wire - Electrical - 208/120v Branch & Equip / L5 / North | 20d | 2025-12-30 | 2026-01-27 | P2.L5.N.1230, P2.L5.N.1320, P2.L5.N.1440 |  | 68d |
| P2.L5.N.1480 |  | Spray/Seal/Firestop - Head of Wall / L5 / North | 10d | 2025-12-30 | 2026-01-13 | P2.L5.N.1470 |  | 78d |
| P2.L5.N.1490 |  | Firestop - Thru Wall / L5 / North | 10d | 2025-12-30 | 2026-01-13 | P2.L5.N.1470, P2.L5.N.1280 |  | 78d |
| P2.L5.N.1350 |  | OH - Insulate LP Duct / L5 / North | 10d | 2026-01-07 | 2026-01-20 | P2.L5.N.1300, P2.L5.N.1200 |  | 53d |
| P2.L5.N.1370 |  | OH - Conduit - Low Volt - BAS/Controls / L5 / North | 10d | 2026-01-14 | 2026-01-27 | P2.L5.N.1310, P2.L5.N.1340 |  | 54d |
| P2.L5.N.1400 |  | OH - Conduit - Low Volt - Security / L5 / North | 10d | 2026-01-14 | 2026-01-27 | P2.L5.N.1340 |  | 58d |
| P2.L5.N.1380 |  | OH - Conduit - Low Volt - Fire Alarm / L5 / North | 10d | 2026-01-21 | 2026-02-03 | P2.L5.N.1310, P2.L5.N.1350 |  | 53d |
| P2.L5.N.1390 |  | OH - Conduit - Low Volt - Telecom / L5 / North | 10d | 2026-01-21 | 2026-02-03 | P2.L5.N.1350 |  | 53d |
| P2.L5.N.1330 |  | OH - HVAC Piping - Equip Tie In / L5 / North | 15d | 2026-01-28 | 2026-02-17 | P2.L5.N.1270, P2.L5.N.1310, CX.B2.HYDR.1000 |  | 53d |
| P2.L5.N.1500 |  | Pull Wire - Low Volt - BAS/Controls / L5 / North | 10d | 2026-01-28 | 2026-02-10 | P2.L5.N.1470, P2.L5.N.1370 |  | 54d |
| P2.L5.N.1530 |  | Pull Wire - Low Volt - Security / L5 / North | 10d | 2026-01-28 | 2026-02-10 | P2.L5.N.1470, P2.L5.N.1400 |  | 58d |
| P2.L5.N.1510 |  | Pull Wire - Low Volt - Fire Alarm / L5 / North | 10d | 2026-02-04 | 2026-02-17 | P2.L5.N.1470, P2.L5.N.1380 |  | 53d |
| P2.L5.N.1520 |  | Pull Wire - Low Volt - Telecom / L5 / North | 10d | 2026-02-04 | 2026-02-17 | P2.L5.N.1470, P2.L5.N.1390 |  | 53d |
| P2.L5.N.1550 |  | Trades Inspect & Verify R/I Work Completed to Specs / L5 / North | 5d | 2026-02-18 | 2026-02-24 | P2.L5.N.1490, P2.L5.N.1480, P2.L5.N.1510, P2.L5.N.1520, P2.L5.N.1530, P2.L5.N.1250, P2.L5.N.1360, P2.L5.N.1500, P2.L5.N.1330 |  | 53d |
|  | 1 | **House Electrical Rooms / Level 5** |  | 2025-04-28 | 2026-01-02 |  |  |  |
|  | 9 | **House Electrical Room 5-3989** |  | 2025-05-12 | 2026-01-02 |  |  |  |
| P2.5.HE.3989.1000 |  | Framing and Blocking / L5 / South / 3989 | 3d | 2025-05-12 A | 2025-05-16 A | P2.L5.S.1090 | 100% |  |
| P2.5.HE.3989.1010 |  | In Wall Rough In / L5 / South / 3989 | 2d | 2025-05-20 A | 2025-05-28 A | P2.5.HE.3989.1000 | 100% |  |
| P2.5.HE.3989.1020 |  | Inspections - Wall Close In / L5 / South / 3989 | 2d | 2025-05-23 A | 2025-05-27 A | P2.5.HE.3989.1010 | 100% |  |
| P2.5.HE.3989.1030 |  | Hang-Tape-Finish / L5 / South / 3989 | 5d | 2025-06-16 A | 2025-06-19 A | P2.5.HE.3989.1020, P2.FAC.2.Z1.180, P2.L11.5-9.140 | 100% |  |
| P2.5.HE.3989.1040 |  | Paint Prime & 1st Coat / L5 / South / 3989 | 2d | 2025-07-01 A | 2025-07-02 A | P2.5.HE.3989.1030 | 100% |  |
| P2.5.HE.3989.1050 |  | Cans/Troughs/Backboxes/XFMRs / L5 / South / 3989 | 5d | 2025-07-21 A | 2025-07-24 A | P2.5.HE.3989.1040 | 100% |  |
| P2.5.HE.3989.1060 |  | Risers and OH Conduit Connections / L5 / South / 3989 | 5d | 2025-08-20 A | 2025-08-27 A | P2.5.HE.3989.1050 | 100% |  |
| P2.5.HE.3989.1070 |  | Pull Wire - In From Distribution Panels / Out to Branch Circuits / L5 / South / 3989 | 5d | 2025-11-03 A | 2025-11-07 A | P2.5.HE.3989.1060 | 100% |  |
| P2.5.HE.3989.1080 |  | Panelboards, Interconnect Wiring, and Remaining Room Buildout of All Systems / L5 / South / 3989 | 10d | 2025-12-01 | 2025-12-12 | BP1.262.3.100, BP1.262.3.210, P2.5.HE.3989.1060 |  | 26d |
| P2.5.HE.3989.1090 |  | Test & Terminate / L5 / South / 3989 | 5d | 2025-12-15 | 2025-12-19 | P2.5.HE.3989.1070, P2.5.HE.3989.1080 |  | 26d |
| P2.5.HE.3989.1100 |  | Paint - Finish Coat / L5 / South / 3989 | 2d | 2025-12-22 | 2025-12-23 | P2.5.HE.3989.1090 |  | 26d |
| P2.5.HE.3989.1110 |  | Trim All MEPF Finishes / L5 / South / 3989 | 2d | 2025-12-24 | 2025-12-26 | P2.5.HE.3989.1100 |  | 26d |
| P2.5.HE.3989.1120 |  | Flooring / L5 / South / 3989 | 2d | 2025-12-29 | 2025-12-30 | P2.5.HE.3989.1110 |  | 26d |
| P2.5.HE.3989.1130 |  | Doors & Hardware / L5 / South / 3989 | 2d | 2025-12-31 | 2026-01-02 | P2.5.HE.3989.1120 |  | 26d |
| P2.5.HE.3989.1140 |  | Panels Ready to Energize - Lock Doors and Limit Access / L5 / South / 3989 | 0d | 2026-01-02 | 2026-01-02 | P2.5.HE.3989.1130 FF, P2.5.HE.3989.1090 |  | 26d |
|  | 8 | **House Electrical Room 5-2949** |  | 2025-04-28 | 2026-01-02 |  |  |  |
| P2.5.HE.2949.1000 |  | Framing and Blocking / L5 / North / 2949 | 3d | 2025-04-28 A | 2025-05-02 A | P2.L5.N.1090 | 100% |  |
| P2.5.HE.2949.1010 |  | In Wall Rough In / L5 / North / 2949 | 2d | 2025-05-01 A | 2025-05-02 A | P2.5.HE.2949.1000 | 100% |  |
| P2.5.HE.2949.1030 |  | Hang-Tape-Finish / L5 / North / 2949 | 5d | 2025-05-02 A | 2025-05-08 A | P2.5.HE.2949.1020, P2.MR.W.160 | 100% |  |
| P2.5.HE.2949.1020 |  | Inspections - Wall Close In / L5 / North / 2949 | 2d | 2025-05-05 A | 2025-05-05 A | P2.5.HE.2949.1010 | 100% |  |
| P2.5.HE.2949.1040 |  | Paint Prime & 1st Coat / L5 / North / 2949 | 2d | 2025-05-08 A | 2025-05-09 A | P2.5.HE.2949.1030 | 100% |  |
| P2.5.HE.2949.1050 |  | Cans/Troughs/Backboxes/XFMRs / L5 / North / 2949 | 5d | 2025-06-23 A | 2025-06-30 A | P2.5.HE.2949.1040 | 100% |  |
| P2.5.HE.2949.1060 |  | Risers and OH Conduit Connections / L5 / North / 2949 | 5d | 2025-06-23 A | 2025-06-30 A | P2.5.HE.2949.1050 | 100% |  |
| P2.5.HE.2949.1070 |  | Pull Wire - In From Distribution Panels / Out to Branch Circuits / L5 / North / 2949 | 5d | 2025-11-03 A | 2025-11-07 A | P2.5.HE.2949.1060 | 100% |  |
| P2.5.HE.2949.1080 |  | Panelboards, Interconnect Wiring, and Remaining Room Buildout of All Systems / L5 / North / 2949 | 10d | 2025-12-01 | 2025-12-12 | BP1.262.3.100, BP1.262.3.210, P2.5.HE.2949.1060 |  | 26d |
| P2.5.HE.2949.1090 |  | Test & Terminate / L5 / North / 2949 | 5d | 2025-12-15 | 2025-12-19 | P2.5.HE.2949.1070, P2.5.HE.2949.1080 |  | 26d |
| P2.5.HE.2949.1100 |  | Paint - Finish Coat / L5 / North / 2949 | 2d | 2025-12-22 | 2025-12-23 | P2.5.HE.2949.1090 |  | 26d |
| P2.5.HE.2949.1110 |  | Trim All MEPF Finishes / L5 / North / 2949 | 2d | 2025-12-24 | 2025-12-26 | P2.5.HE.2949.1100 |  | 26d |
| P2.5.HE.2949.1120 |  | Flooring / L5 / North / 2949 | 2d | 2025-12-29 | 2025-12-30 | P2.5.HE.2949.1110 |  | 26d |
| P2.5.HE.2949.1130 |  | Doors & Hardware / L5 / North / 2949 | 2d | 2025-12-31 | 2026-01-02 | P2.5.HE.2949.1120 |  | 26d |
| P2.5.HE.2949.1140 |  | Panels Ready to Energize - Lock Doors and Limit Access / L5 / North / 2949 | 0d | 2026-01-02 | 2026-01-02 | P2.5.HE.2949.1130 FF, P2.5.HE.2949.1090 |  | 26d |
|  | 7 | **House Electrical Room 5-2803** |  | 2025-05-26 | 2026-01-02 |  |  |  |
| P2.5.HE.2803.1000 |  | Framing and Blocking / L5 / North / 2803 | 3d | 2025-05-26 A | 2025-05-27 A | P2.L5.N.1090 | 100% |  |
| P2.5.HE.2803.1010 |  | In Wall Rough In / L5 / North / 2803 | 2d | 2025-06-09 A | 2025-06-19 A | P2.5.HE.2803.1000 | 100% |  |
| P2.5.HE.2803.1020 |  | Inspections - Wall Close In / L5 / North / 2803 | 2d | 2025-06-16 A | 2025-06-19 A | P2.5.HE.2803.1010 | 100% |  |
| P2.5.HE.2803.1030 |  | Hang-Tape-Finish / L5 / North / 2803 | 5d | 2025-06-23 A | 2025-06-30 A | P2.5.HE.2803.1020, P2.FAC.2.Z1.190, P2.MR.2-8.140 | 100% |  |
| P2.5.HE.2803.1040 |  | Paint Prime & 1st Coat / L5 / North / 2803 | 2d | 2025-07-01 A | 2025-07-02 A | P2.5.HE.2803.1030 | 100% |  |
| P2.5.HE.2803.1050 |  | Cans/Troughs/Backboxes/XFMRs / L5 / North / 2803 | 5d | 2025-07-21 A | 2025-07-24 A | P2.5.HE.2803.1040 | 100% |  |
| P2.5.HE.2803.1060 |  | Risers and OH Conduit Connections / L5 / North / 2803 | 5d | 2025-08-20 A | 2025-08-25 A | P2.5.HE.2803.1050 | 100% |  |
| P2.5.HE.2803.1070 |  | Pull Wire - In From Distribution Panels / Out to Branch Circuits / L5 / North / 2803 | 5d | 2025-11-05 A | 2025-11-11 A | P2.5.HE.2803.1060 | 100% |  |

| ID | WBS | Task | Duration | Start | Finish | Predecessors | Complete | Total float |
| --- | --- | --- | --- | --- | --- | --- | --- | --- |
| P2.5.HE.2803.1080 |  | Panelboards, Interconnect Wiring, and Remaining Room Buildout of All Systems / L5 / North / 2803 | 10d | 2025-12-01 | 2025-12-12 | BP1.262.3.100, BP1.262.3.210, P2.5.HE.2803.1060 |  | 26d |
| P2.5.HE.2803.1090 |  | Test & Terminate / L5 / North / 2803 | 5d | 2025-12-15 | 2025-12-19 | P2.5.HE.2803.1080, P2.5.HE.2803.1070 |  | 26d |
| P2.5.HE.2803.1100 |  | Paint - Finish Coat / L5 / North / 2803 | 2d | 2025-12-22 | 2025-12-23 | P2.5.HE.2803.1090 |  | 26d |
| P2.5.HE.2803.1110 |  | Trim All MEPF Finishes / L5 / North / 2803 | 2d | 2025-12-24 | 2025-12-26 | P2.5.HE.2803.1100 |  | 26d |
| P2.5.HE.2803.1120 |  | Flooring / L5 / North / 2803 | 2d | 2025-12-29 | 2025-12-30 | P2.5.HE.2803.1110 |  | 26d |
| P2.5.HE.2803.1130 |  | Doors & Hardware / L5 / North / 2803 | 2d | 2025-12-31 | 2026-01-02 | P2.5.HE.2803.1120 |  | 26d |
| P2.5.HE.2803.1140 |  | Panels Ready to Energize - Lock Doors and Limit Access / L5 / North / 2803 | 0d | 2026-01-02 | 2026-01-02 | P2.5.HE.2803.1130 FF, P2.5.HE.2803.1090 |  | 26d |
|  | 6 | **House Electrical Room 5-5966** |  | 2025-06-02 | 2026-01-02 |  |  |  |
| P2.5.HE.5966.1000 |  | Framing and Blocking / L5 / South / 5966 | 3d | 2025-06-02 A | 2025-06-04 A | P2.L5.S.1090 | 100% |  |
| P2.5.HE.5966.1010 |  | In Wall Rough In / L5 / South / 5966 | 2d | 2025-06-04 A | 2025-06-09 A | P2.5.HE.5966.1000 | 100% |  |
| P2.5.HE.5966.1020 |  | Inspections - Wall Close In / L5 / South / 5966 | 2d | 2025-06-09 A | 2025-06-13 A | P2.5.HE.5966.1010 | 100% |  |
| P2.5.HE.5966.1030 |  | Hang-Tape-Finish / L5 / South / 5966 | 5d | 2025-06-16 A | 2025-06-27 A | P2.5.HE.5966.1020, P2.LR.L7.170 | 100% |  |
| P2.5.HE.5966.1040 |  | Paint Prime & 1st Coat / L5 / South / 5966 | 2d | 2025-07-14 A | 2025-07-15 A | P2.5.HE.5966.1030 | 100% |  |
| P2.5.HE.5966.1050 |  | Cans/Troughs/Backboxes/XFMRs / L5 / South / 5966 | 5d | 2025-07-16 A | 2025-07-22 A | P2.5.HE.5966.1040 | 100% |  |
| P2.5.HE.5966.1060 |  | Risers and OH Conduit Connections / L5 / South / 5966 | 5d | 2025-08-20 A | 2025-08-27 A | P2.5.HE.5966.1050 | 100% |  |
| P2.5.HE.5966.1070 |  | Pull Wire - In From Distribution Panels / Out to Branch Circuits / L5 / South / 5966 | 5d | 2025-11-10 A | 2025-11-14 A | P2.5.HE.5966.1060 | 100% |  |
| P2.5.HE.5966.1080 |  | Panelboards, Interconnect Wiring, and Remaining Room Buildout of All Systems / L5 / South / 5966 | 10d | 2025-12-01 | 2025-12-12 | BP1.262.3.100, BP1.262.3.210, P2.5.HE.5966.1060 |  | 26d |
| P2.5.HE.5966.1090 |  | Test & Terminate / L5 / South / 5966 | 5d | 2025-12-15 | 2025-12-19 | P2.5.HE.5966.1080, P2.5.HE.5966.1070 |  | 26d |
| P2.5.HE.5966.1100 |  | Paint - Finish Coat / L5 / South / 5966 | 2d | 2025-12-22 | 2025-12-23 | P2.5.HE.5966.1090 |  | 26d |
| P2.5.HE.5966.1110 |  | Trim All MEPF Finishes / L5 / South / 5966 | 2d | 2025-12-24 | 2025-12-26 | P2.5.HE.5966.1100 |  | 26d |
| P2.5.HE.5966.1120 |  | Flooring / L5 / South / 5966 | 2d | 2025-12-29 | 2025-12-30 | P2.5.HE.5966.1110 |  | 26d |
| P2.5.HE.5966.1130 |  | Doors & Hardware / L5 / South / 5966 | 2d | 2025-12-31 | 2026-01-02 | P2.5.HE.5966.1120 |  | 26d |
| P2.5.HE.5966.1140 |  | Panels Ready to Energize - Lock Doors and Limit Access / L5 / South / 5966 | 0d | 2026-01-02 | 2026-01-02 | P2.5.HE.5966.1130 FF, P2.5.HE.5966.1090 |  | 26d |
|  | 3 | **FINISHES - Core & Support Spaces / Level 5** |  | 2025-06-17 | 2026-10-28 |  |  |  |
|  | 7KSF1 | **HT Chief - Fellows/Students - Offices - Z2/Z3 (~4,300 sf) / Level 5** |  | 2026-03-04 | 2026-09-25 |  |  |  |
|  | 1 | **Finishes** |  | 2026-03-04 | 2026-09-25 |  |  |  |
| P2.L5.F.CS.2000 |  | Paint Prime & 1st Coat Walls / L5 / Perim Offices Z2,Z3 | 5d | 2026-03-04 | 2026-03-10 | P2.L5.N.1550, P2.L5.F.CS.1000 |  | 48d |
| P2.L5.F.CS.2020 |  | R/I - Ceiling Assemblies & Supports - All Trades (A/V, Oper Part, Glass Part, etc.) / L5 / Perim Offices Z2,Z3 | 5d | 2026-03-11 | 2026-03-17 | P2.L5.F.CS.2000 |  | 101d |
| P2.L5.F.CS.2010 |  | T-Grid / L5 / Perim Offices Z2,Z3 | 5d | 2026-03-18 | 2026-03-24 | P2.L5.F.CS.2020 |  | 101d |
| P2.L5.F.CS.2050 |  | Sprinkler Heads in T-Grid / L5 / Perim Offices Z2,Z3 | 5d | 2026-03-25 | 2026-03-31 | P2.L5.F.CS.2010 |  | 101d |
| P2.L5.F.CS.2030 |  | Diffusers in T-Grid / L5 / Perim Offices Z2,Z3 | 5d | 2026-04-01 | 2026-04-07 | P2.L5.F.CS.2050, P2.L5.F.CS.2010 |  | 101d |
| P2.L5.F.CS.2040 |  | Lights & Elec Devices in T-Grid / L5 / Perim Offices Z2,Z3 | 10d | 2026-04-08 | 2026-04-21 | P2.L5.F.CS.2010, P2.L5.F.CS.2030 |  | 101d |
| P2.L5.F.CS.2070 |  | Fire Alarm in T-Grid / L5 / Perim Offices Z2,Z3 | 5d | 2026-04-22 | 2026-04-28 | P2.L5.F.CS.2010, P2.L5.F.CS.2040 |  | 101d |
| P2.L5.F.CS.2060 |  | Low Voltage in T-Grid / L5 / Perim Offices Z2,Z3 | 5d | 2026-04-29 | 2026-05-05 | P2.L5.F.CS.2010, P2.L5.F.CS.2070 |  | 101d |
| P2.L5.F.CS.2080 |  | OH Ceiling Signoff / L5 / Perim Offices Z2,Z3 | 5d | 2026-05-06 | 2026-05-12 | P2.L5.F.CS.2040, P2.L5.F.CS.2050, P2.L5.F.CS.2030, P2.L5.F.CS.2060, P2.L5.F.CS.2070 |  | 101d |
| P2.L5.F.CS.2110 |  | Drop Ceiling Tile / L5 / Perim Offices Z2,Z3 | 5d | 2026-05-13 | 2026-05-19 | P2.L5.F.CS.2080 |  | 101d |
| P2.L5.F.CS.2090 |  | Millwork / L5 / Perim Offices Z2,Z3 | 5d | 2026-05-20 | 2026-05-27 | P2.L5.F.CS.2080, P2.L5.F.CS.2110 |  | 101d |
| P2.L5.F.CS.2100 |  | Plumbing Fixtures / L5 / Perim Offices Z2,Z3 | 5d | 2026-05-28 | 2026-06-03 | P2.L5.F.CS.2090 FF, P2.L5.F.CS.2090, P2.L5.F.CS.2080 |  | 101d |
| P2.L5.F.CS.2120 |  | Floor Prep / L5 / Perim Offices Z2,Z3 | 5d | 2026-06-04 | 2026-06-10 | P2.L5.F.CS.2090, P2.L5.F.CS.2100, P2.L5.F.CS.2110 |  | 101d |
| P2.L5.F.CS.2130 |  | Floor Finishes / L5 / Perim Offices Z2,Z3 | 5d | 2026-06-11 | 2026-06-17 | P2.L5.F.CS.2120 |  | 101d |
| P2.L5.F.CS.2140 |  | Doors & Hardware / L5 / Perim Offices Z2,Z3 | 5d | 2026-06-18 | 2026-06-24 | P2.L5.F.CS.2130 |  | 101d |
| P2.L5.F.CS.2150 |  | Paint - Finish Coat / L5 / Perim Offices Z2,Z3 | 5d | 2026-06-25 | 2026-07-01 | P2.L5.F.CS.2130, P2.L5.F.CS.2140 |  | 101d |
| P2.L5.F.CS.2200 |  | Floor Base / L5 / Perim Offices Z2,Z3 | 5d | 2026-07-02 | 2026-07-09 | P2.L5.F.CS.2150 |  | 101d |
| P2.L5.F.CS.2170 |  | Trim T-Stats / L5 / Perim Offices Z2,Z3 | 5d | 2026-07-10 | 2026-07-16 | P2.L5.F.CS.2150, P2.L5.F.CS.2200 |  | 101d |
| P2.L5.F.CS.2210 |  | Demountable Partitions / L5 / Perim Offices Z2,Z3 | 5d | 2026-07-10 | 2026-07-16 | P2.L5.F.CS.2200 |  | 111d |
| P2.L5.F.CS.2160 |  | Set AV/IT Devices and Configure / L5 / Perim Offices Z2,Z3 | 5d | 2026-07-17 | 2026-07-23 | P2.L5.F.CS.2170, P2.L5.F.CS.2150 |  | 101d |
| P2.L5.F.CS.2220 |  | Trim Electrical / L5 / Perim Offices Z2,Z3 | 5d | 2026-07-17 | 2026-07-23 | P2.L5.F.CS.2170 SS, P2.L5.F.CS.2210 |  | 111d |
| P2.L5.F.CS.2230 |  | Trim Telephone/ Data / L5 / Perim Offices Z2,Z3 | 5d | 2026-07-17 | 2026-07-23 | P2.L5.F.CS.2220 SS |  | 111d |
| P2.L5.F.CS.2180 |  | Building Specialities / L5 / Perim Offices Z2,Z3 | 5d | 2026-07-24 | 2026-07-30 | P2.L5.F.CS.2160, P2.L5.F.CS.2150 |  | 101d |
| P2.L5.F.CS.2190 |  | Interior Building Signage / L5 / Perim Offices Z2,Z3 | 5d | 2026-07-31 | 2026-08-06 | P2.L5.F.CS.2180, P2.L5.F.CS.2150 |  | 101d |
| P2.L5.F.CS.2240 |  | Work Completion List - Finishes / L5 / Perim Offices Z2,Z3 | 5d | 2026-08-07 | 2026-08-13 | P2.L5.F.CS.2230, P2.L5.F.CS.2180, P2.L5.F.CS.2100, P2.L5.F.CS.2160, P2.L5.F.CS.2190, P2.L5.F.CS.2140 |  | 101d |
| P2.L5.F.CS.2250 |  | Rough Clean / L5 / Perim Offices Z2,Z3 | 5d | 2026-08-14 | 2026-08-20 | P2.L5.F.CS.2240 |  | 101d |
| P2.L5.F.CS.2260 |  | FF&E / L5 / Perim Offices Z2,Z3 | 5d | 2026-08-21 | 2026-08-27 | P2.L5.F.CS.2250 |  | 101d |
| P2.L5.F.CS.2270 |  | Prepare Punchlist / L5 / Perim Offices Z2,Z3 | 5d | 2026-08-28 | 2026-09-03 | P2.L5.F.CS.2260 |  | 101d |
| P2.L5.F.CS.2280 |  | Correct Punchlist / L5 / Perim Offices Z2,Z3 | 10d | 2026-09-04 | 2026-09-18 | P2.L5.F.CS.2270 |  | 101d |
| P2.L5.F.CS.2290 |  | Final Clean / L5 / Perim Offices Z2,Z3 | 5d | 2026-09-21 | 2026-09-25 | P2.L5.F.CS.2280 |  | 101d |
|  | 2 | **Closeout** |  |  |  |  |  |  |
|  | 7KSF11 | **DLM Chief - Admin - Offices - Z1/Z2 (2,643 sf) / Level 5** |  | 2026-02-25 | 2026-09-18 |  |  |  |
|  | 1 | **Finishes** |  | 2026-02-25 | 2026-09-18 |  |  |  |
| P2.L5.F.CS.1000 |  | Paint Prime & 1st Coat Walls / L5 / DLM Offices Z1 | 5d | 2026-02-25 | 2026-03-03 | P2.L5.S.1550 |  | 48d |
| P2.L5.F.CS.1020 |  | R/I - Ceiling Assemblies & Supports - All Trades (A/V, Oper Part, Glass Part, etc.) / L5 / DLM Offices Z1 | 5d | 2026-03-04 | 2026-03-10 | P2.L5.F.CS.1000 |  | 106d |
| P2.L5.F.CS.1010 |  | T-Grid / L5 / DLM Offices Z1 | 5d | 2026-03-11 | 2026-03-17 | P2.L5.F.CS.1020 |  | 106d |
| P2.L5.F.CS.1050 |  | Sprinkler Heads in T-Grid / L5 / DLM Offices Z1 | 5d | 2026-03-18 | 2026-03-24 | P2.L5.F.CS.1010 |  | 106d |
| P2.L5.F.CS.1030 |  | Diffusers in T-Grid / L5 / DLM Offices Z1 | 5d | 2026-03-25 | 2026-03-31 | P2.L5.F.CS.1050, P2.L5.F.CS.1010 |  | 106d |
| P2.L5.F.CS.1040 |  | Lights & Elec Devices in T-Grid / L5 / DLM Offices Z1 | 10d | 2026-04-01 | 2026-04-14 | P2.L5.F.CS.1030, P2.L5.F.CS.1010 |  | 106d |
| P2.L5.F.CS.1070 |  | Fire Alarm in T-Grid / L5 / DLM Offices Z1 | 5d | 2026-04-15 | 2026-04-21 | P2.L5.F.CS.1010, P2.L5.F.CS.1040 |  | 106d |
| P2.L5.F.CS.1060 |  | Low Voltage in T-Grid / L5 / DLM Offices Z1 | 5d | 2026-04-22 | 2026-04-28 | P2.L5.F.CS.1070, P2.L5.F.CS.1010 |  | 106d |
| P2.L5.F.CS.1080 |  | OH Ceiling Signoff / L5 / DLM Offices Z1 | 5d | 2026-04-29 | 2026-05-05 | P2.L5.F.CS.1060, P2.L5.F.CS.1070, P2.L5.F.CS.1030, P2.L5.F.CS.1040, P2.L5.F.CS.1050 |  | 106d |
| P2.L5.F.CS.1110 |  | Drop Ceiling Tile / L5 / DLM Offices Z1 | 5d | 2026-05-06 | 2026-05-12 | P2.L5.F.CS.1080 |  | 106d |
| P2.L5.F.CS.1090 |  | Millwork / L5 / DLM Offices Z1 | 5d | 2026-05-13 | 2026-05-19 | P2.L5.F.CS.1110, P2.L5.F.CS.1080 |  | 106d |

| ID | WBS | Task | Duration | Start | Finish | Predecessors | Complete | Total float |
| --- | --- | --- | --- | --- | --- | --- | --- | --- |
| P2.L5.F.CS.1100 |  | Plumbing Fixtures / L5 / DLM Offices Z1 | 5d | 2026-05-20 | 2026-05-27 | P2.L5.F.CS.1090 FF, P2.L5.F.CS.1090, P2.L5.F.CS.1080 |  | 106d |
| P2.L5.F.CS.1120 |  | Floor Prep / L5 / DLM Offices Z1 | 5d | 2026-05-28 | 2026-06-03 | P2.L5.F.CS.1110, P2.L5.F.CS.1090, P2.L5.F.CS.1100 |  | 106d |
| P2.L5.F.CS.1130 |  | Floor Finishes / L5 / DLM Offices Z1 | 5d | 2026-06-04 | 2026-06-10 | P2.L5.F.CS.1120 |  | 106d |
| P2.L5.F.CS.1140 |  | Doors & Hardware / L5 / DLM Offices Z1 | 5d | 2026-06-11 | 2026-06-17 | P2.L5.F.CS.1130 |  | 106d |
| P2.L5.F.CS.1150 |  | Paint - Finish Coat / L5 / DLM Offices Z1 | 5d | 2026-06-18 | 2026-06-24 | P2.L5.F.CS.1140, P2.L5.F.CS.1130 |  | 106d |
| P2.L5.F.CS.1200 |  | Floor Base / L5 / DLM Offices Z1 | 5d | 2026-06-25 | 2026-07-01 | P2.L5.F.CS.1150 |  | 106d |
| P2.L5.F.CS.1170 |  | Trim T-Stats / L5 / DLM Offices Z1 | 5d | 2026-07-02 | 2026-07-09 | P2.L5.F.CS.1150, P2.L5.F.CS.1200 |  | 106d |
| P2.L5.F.CS.1210 |  | Demountable Partitions / L5 / DLM Offices Z1 | 5d | 2026-07-02 | 2026-07-09 | P2.L5.F.CS.1200 |  | 116d |
| P2.L5.F.CS.1160 |  | Set AV/IT Devices and Configure / L5 / DLM Offices Z1 | 5d | 2026-07-10 | 2026-07-16 | P2.L5.F.CS.1170, P2.L5.F.CS.1150 |  | 106d |
| P2.L5.F.CS.1220 |  | Trim Electrical / L5 / DLM Offices Z1 | 5d | 2026-07-10 | 2026-07-16 | P2.L5.F.CS.1170 SS, P2.L5.F.CS.1210 |  | 116d |
| P2.L5.F.CS.1230 |  | Trim Telephone/ Data / L5 / DLM Offices Z1 | 5d | 2026-07-10 | 2026-07-16 | P2.L5.F.CS.1220 SS |  | 116d |
| P2.L5.F.CS.1180 |  | Building Specialities / L5 / DLM Offices Z1 | 5d | 2026-07-17 | 2026-07-23 | P2.L5.F.CS.1160, P2.L5.F.CS.1150 |  | 106d |
| P2.L5.F.CS.1190 |  | Interior Building Signage / L5 / DLM Offices Z1 | 5d | 2026-07-24 | 2026-07-30 | P2.L5.F.CS.1180, P2.L5.F.CS.1150 |  | 106d |
| P2.L5.F.CS.1240 |  | Work Completion List - Finishes / L5 / DLM Offices Z1 | 5d | 2026-07-31 | 2026-08-06 | P2.L5.F.CS.1180, P2.L5.F.CS.1100, P2.L5.F.CS.1230, P2.L5.F.CS.1160, P2.L5.F.CS.1190, P2.L5.F.CS.1140 |  | 106d |
| P2.L5.F.CS.1250 |  | Rough Clean / L5 / DLM Offices Z1 | 5d | 2026-08-07 | 2026-08-13 | P2.L5.F.CS.1240 |  | 106d |
| P2.L5.F.CS.1260 |  | FF&E / L5 / DLM Offices Z1 | 5d | 2026-08-14 | 2026-08-20 | P2.L5.F.CS.1250 |  | 106d |
| P2.L5.F.CS.1270 |  | Prepare Punchlist / L5 / DLM Offices Z1 | 5d | 2026-08-21 | 2026-08-27 | P2.L5.F.CS.1260 |  | 106d |
| P2.L5.F.CS.1280 |  | Correct Punchlist / L5 / DLM Offices Z1 | 10d | 2026-08-28 | 2026-09-11 | P2.L5.F.CS.1270 |  | 106d |
| P2.L5.F.CS.1290 |  | Final Clean / L5 / DLM Offices Z1 | 5d | 2026-09-14 | 2026-09-18 | P2.L5.F.CS.1280 |  | 106d |
|  | 2 | **Closeout** |  |  |  |  |  |  |
|  | 5 | **Bathrooms - Break Rooms - Locker Rooms / Level 5** |  | 2025-06-17 | 2026-05-27 |  |  |  |
|  | 1 | **Toilets 5-2807 / 5-2809** |  | 2025-06-17 | 2026-04-21 |  |  |  |
| P2.L5.BR.1000 |  | Plumbing - Set Pipe Carriers / L5 / Toilets 280X | 3d | 2025-06-17 A | 2025-06-20 A | P2.L4.BR.1000 | 100% |  |
| P2.L5.BR.1020 |  | Plumbing - Test Pipe / L5 / Toilets 280X | 2d | 2025-10-27 A | 2025-12-22 | P2.L5.BR.1000 | 100% | 157d |
| P2.L5.BR.1010 |  | Framing & Blocking - Walls and Hard Lid Ceilings / L5 / Toilets 280X | 2d | 2025-12-22 | 2025-12-23 | P2.L5.BR.1000 |  | 151d |
| P2.L5.BR.1040 |  | Trim Sprinkler Drops _ Hard Lids / L5 / Toilets 280X | 2d | 2025-12-24 | 2025-12-26 | P2.L5.BR.1010 |  | 151d |
| P2.L5.BR.1050 |  | Duct Drops _ Hard Lids / L5 / Toilets 280X | 2d | 2025-12-29 | 2025-12-30 | P2.L5.BR.1010, P2.L5.BR.1040 |  | 151d |
| P2.L5.BR.1070 |  | In Wall - Insulate Plumbing / L5 / Toilets 280X | 2d | 2025-12-31 | 2026-01-02 | P2.L5.BR.1020, P2.L5.BR.1050 |  | 151d |
| P2.L5.BR.1030 |  | R/I - Electrical _ Hard Lids / L5 / Toilets 280X | 5d | 2026-01-05 | 2026-01-09 | P2.L5.BR.1010, P2.L5.BR.1070 |  | 151d |
| P2.L5.BR.1060 |  | R/I - Fire Alarm _ Hard Lids / L5 / Toilets 280X | 5d | 2026-01-12 | 2026-01-16 | P2.L5.BR.1010, P2.L5.BR.1030 |  | 151d |
| P2.L5.BR.1080 |  | Inspection - Close In - Walls and Hard Lid Ceilings / L5 / Toilets 280X | 3d | 2026-01-19 | 2026-01-21 | P2.L5.BR.1060, P2.L5.BR.1050, P2.L5.BR.1030, P2.L5.BR.1040, P2.L5.BR.1070 |  | 151d |
| P2.L5.BR.1090 |  | Hang-Tape-Finish _ Walls and Hard Lids Ceilings / L5 / Toilets 280X | 5d | 2026-01-22 | 2026-01-28 | P2.SUM.175, P2.L5.BR.1080 |  | 151d |
| P2.L5.BR.1100 |  | Paint Prime & Final Coat _ Walls & Hard Lid Ceilings / L5 / Toilets 280X | 2d | 2026-01-29 | 2026-01-30 | P2.L5.BR.1090 |  | 151d |
| P2.L5.BR.1140 |  | Trim - HVAC G/R/D's / L5 / Toilets 280X | 2d | 2026-02-02 | 2026-02-03 | BP1.233.3.410, P2.L5.BR.1100 |  | 151d |
| P2.L5.BR.1120 |  | Pull Wire & Trim Devices - Electrical / L5 / Toilets 280X | 2d | 2026-02-04 | 2026-02-05 | P2.L5.BR.1140, P2.L5.BR.1100 |  | 151d |
| P2.L5.BR.1130 |  | Lights - Set & Terminate / L5 / Toilets 280X | 2d | 2026-02-04 | 2026-02-05 | P2.L5.BR.1120 SS |  | 156d |
| P2.L5.BR.1110 |  | Pull Wire & Trim Devices - Fire Alarm / L5 / Toilets 280X | 5d | 2026-02-06 | 2026-02-12 | P2.L5.BR.1120, P2.L5.BR.1100 |  | 151d |
| P2.L5.BR.1150 |  | Wall Tile / L5 / Toilets 280X | 5d | 2026-02-13 | 2026-02-19 | P2.L5.BR.1130, P2.L5.BR.1140, P2.L5.BR.1110 |  | 151d |
| P2.L5.BR.2310 |  | Flooring Prep - Epoxy Floors / L5 / Toilets 280X | 1d | 2026-04-02 | 2026-04-02 | P2.L5.BR.1150, P2.L5.BR.2330 |  | 122d |
| P2.L5.BR.2320 |  | Flooring - Epoxy Floors / L5 / Toilets 280X | 2d | 2026-04-03 | 2026-04-06 | P2.L5.BR.2310 |  | 203d |
| P2.L5.BR.1160 |  | Doors & Hardware / L5 / Toilets 280X | 2d | 2026-04-07 | 2026-04-08 | P2.L5.BR.1150, P2.L5.BR.2320 |  | 203d |
| P2.L5.BR.1170 |  | Plumbing Fixtures / Sinks / Showers / L5 / Toilets 280X | 2d | 2026-04-09 | 2026-04-10 | P2.L5.BR.1160, P2.L5.BR.1150, P2.L5.BR.2320 |  | 211d |
| P2.L5.BR.1180 |  | Bathroom Accessories / L5 / Toilets 280X | 2d | 2026-04-13 | 2026-04-14 | P2.L5.BR.1170 |  | 211d |
| P2.L5.BR.1190 |  | Work Completion List - Finishes / L5 / Toilets 280X | 5d | 2026-04-15 | 2026-04-21 | P2.L5.BR.1160, P2.L5.BR.1180, P2.L5.BR.1110 |  | 211d |
|  | 4 | **Lockers, Toilets, and Showers 5-3964 / 5-3962** |  | 2025-06-17 | 2026-05-27 |  |  |  |
| P2.L5.BR.2000 |  | Plumbing - Set Pipe Carriers / L5 / Toilets 396X | 5d | 2025-06-17 A | 2025-06-20 A | P2.L5.BR.1000 | 100% |  |
| P2.L5.BR.2060 |  | Duct Drops _ Hard Lids / L5 / Toilets 396X | 5d | 2025-09-22 A | 2025-09-26 A | P2.L5.BR.2000 | 100% |  |
| P2.L5.BR.2030 |  | Plumbing - Test Pipe @ Chase Walls / L5 / Toilets 396X | 5d | 2025-10-27 A | 2025-11-05 A | P2.L5.BR.2000 | 100% |  |
| P2.L5.BR.2010 |  | Countertop Support Framing / L5 / Toilets 396X | 5d | 2025-11-03 A | 2025-11-07 A | P2.L5.S.1420 | 100% |  |
| P2.L5.BR.2020 |  | Frame - Chase Walls and Hard Lid Ceilings / L5 / Toilets 396X | 5d | 2025-12-22 | 2025-12-29 | P2.L5.BR.2010, P2.L5.BR.2000 |  | 122d |
| P2.L5.BR.2080 |  | In Wall - Insulate Plumbing / L5 / Toilets 396X | 5d | 2025-12-22 | 2025-12-29 | P2.L5.BR.2030 |  | 132d |
| P2.L5.BR.2040 |  | R/I - Electrical _ Hard Lids / L5 / Toilets 396X | 5d | 2025-12-30 | 2026-01-06 | P2.L5.BR.2020 |  | 122d |
| P2.L5.BR.2050 |  | Trim Sprinkler Drops _ Hard Lids / L5 / Toilets 396X | 5d | 2025-12-30 | 2026-01-06 | P2.L5.BR.2020 |  | 127d |
| P2.L5.BR.2070 |  | R/I - Fire Alarm _ Hard Lids / L5 / Toilets 396X | 5d | 2026-01-07 | 2026-01-13 | P2.L5.BR.2020, P2.L5.BR.2040 |  | 122d |
| P2.L5.BR.2090 |  | Inspection - Close In - Chase Walls and Hard Lid Ceilings / L5 / Toilets 396X | 5d | 2026-01-14 | 2026-01-20 | P2.L5.BR.2070, P2.L5.BR.2040, P2.L5.BR.2050, P2.L5.BR.2060, P2.L5.BR.2080 |  | 122d |
| P2.L5.BR.2100 |  | Hang-Tape-Finish _ Chase Walls and Hard Lids Ceilings / L5 / Toilets 396X | 5d | 2026-01-21 | 2026-01-27 | P2.SUM.175, P2.L5.BR.2090 |  | 122d |
| P2.L5.BR.2110 |  | Paint Prime & 1st Coat _ Walls & Hard Lid Ceilings / L5 / Toilets 396X | 5d | 2026-01-28 | 2026-02-03 | P2.L5.BR.2100 |  | 122d |
| P2.L5.BR.2140 |  | Ceiling Grid / L5 / Toilets 396X | 5d | 2026-02-04 | 2026-02-10 | P2.L5.BR.2110 |  | 122d |
| P2.L5.BR.2170 |  | Trim Sprinkler Drops _ Ceiling Tiles / L5 / Toilets 396X | 5d | 2026-02-11 | 2026-02-17 | P2.L5.BR.2140 |  | 122d |
| P2.L5.BR.2160 |  | Trim - HVAC G/R/D's / L5 / Toilets 396X | 5d | 2026-02-18 | 2026-02-24 | BP1.233.3.410, P2.L5.BR.2170, P2.L5.BR.2140 |  | 122d |
| P2.L5.BR.2130 |  | Pull Wire - Electrical / L5 / Toilets 396X | 5d | 2026-02-25 | 2026-03-03 | P2.L5.BR.2140, P2.L5.BR.2160, P2.L5.BR.2110 |  | 122d |
| P2.L5.BR.2120 |  | Pull Wire - Fire Alarm / L5 / Toilets 396X | 5d | 2026-03-04 | 2026-03-10 | P2.L5.BR.2140, P2.L5.BR.2130, P2.L5.BR.2110 |  | 209d |
| P2.L5.BR.2150 |  | Lights - Set & Terminate / L5 / Toilets 396X | 5d | 2026-03-04 | 2026-03-10 | P2.L5.BR.2140, P2.L5.BR.2130 |  | 122d |
| P2.L5.BR.2180 |  | Inspection - Ceiling Close In - ACT Ceilings / L5 / Toilets 396X | 5d | 2026-03-11 | 2026-03-17 | P2.L5.BR.2170, P2.L5.BR.2160, P2.L5.BR.2150 |  | 122d |
| P2.L5.BR.2190 |  | Ceiling Tiles / L5 / Toilets 396X | 5d | 2026-03-18 | 2026-03-24 | P2.L5.BR.2180 |  | 122d |
| P2.L5.BR.2200 |  | Wall Tile / L5 / Toilets 396X | 5d | 2026-03-25 | 2026-03-31 | P2.L5.BR.2190 |  | 122d |
| P2.L5.BR.2330 |  | Flooring Prep - Epoxy Floors / L5 / Toilets 396X | 1d | 2026-04-01 | 2026-04-01 | P2.L4.BR.1200, P2.L5.BR.2200 |  | 122d |
| P2.L5.BR.2340 |  | Flooring - Epoxy Floors / L5 / Toilets 396X | 4d | 2026-04-02 | 2026-04-07 | P2.L5.BR.2330 |  | 174d |
| P2.L5.BR.2210 |  | Paint - Finish Coat / L5 / Toilets 396X | 5d | 2026-04-08 | 2026-04-14 | P2.L5.BR.2340 |  | 174d |
| P2.L5.BR.2220 |  | Countertops / L5 / Toilets 396X | 5d | 2026-04-15 | 2026-04-21 | P2.L5.BR.2210 |  | 174d |

| ID | WBS | Task | Duration | Start | Finish | Predecessors | Complete | Total float |
| --- | --- | --- | --- | --- | --- | --- | --- | --- |
| P2.L5.BR.2260 |  | Lockers & Benches / L5 / Toilets 396X | 5d | 2026-04-22 | 2026-04-28 | P2.L5.BR.2220, P2.L5.BR.2210 |  | 174d |
| P2.L5.BR.2270 |  | Plumbing Fixtures / Sinks / Showers / L5 / Toilets 396X | 5d | 2026-04-22 | 2026-04-28 | P2.L5.BR.2220 |  | 191d |
| P2.L5.BR.2230 |  | Trim - Fire Alarm Devices / L5 / Toilets 396X | 5d | 2026-04-29 | 2026-05-05 | P2.L5.BR.2260, P2.L5.BR.2210, P2.L5.BR.2120 |  | 174d |
| P2.L5.BR.2280 |  | Toilet Partitions / L5 / Toilets 396X | 5d | 2026-04-29 | 2026-05-05 | P2.L5.BR.2270 |  | 191d |
| P2.L5.BR.2240 |  | Trim - Electrical Devices / L5 / Toilets 396X | 5d | 2026-05-06 | 2026-05-12 | P2.L5.BR.2230, P2.L5.BR.2210 |  | 174d |
| P2.L5.BR.2290 |  | Bathroom Accessories / L5 / Toilets 396X | 5d | 2026-05-06 | 2026-05-12 | P2.L5.BR.2270, P2.L5.BR.2280 |  | 191d |
| P2.L5.BR.2250 |  | Doors & Hardware / L5 / Toilets 396X | 5d | 2026-05-13 | 2026-05-19 | P2.L5.BR.2240, P2.L5.BR.2210 |  | 174d |
| P2.L5.BR.2300 |  | Work Completion List - Finishes / L5 / Toilets 396X | 5d | 2026-05-20 | 2026-05-27 | P2.L5.BR.2260, P2.L5.BR.2250, P2.L5.BR.2280, P2.L5.BR.2290, P2.L5.BR.2230, P2.L5.BR.2240 |  | 186d |
|  | 1 | **Corridors & Lobbies / Level 5** |  | 2026-03-11 | 2026-10-28 |  |  |  |
| P2.L5.CL.1000 |  | Paint Prime & 1st Coat Walls / L5 / Corr & Lobbies | 5d | 2026-03-11 | 2026-03-17 | P2.L5.S.1550, P2.L5.N.1550, P2.L5.F.CS.2000 |  | 48d |
| P2.L5.CL.1010 |  | Framing - Hard Lid Ceilings / L5 / Corr & Lobbies | 10d | 2026-03-18 | 2026-03-31 | P2.L5.CL.1000 |  | 48d |
| P2.L5.CL.1020 |  | T-Grid / L5 / Corr & Lobbies | 10d | 2026-03-18 | 2026-03-31 | P2.L5.CL.1000 |  | 48d |
| P2.L5.CL.1040 |  | R/I - Trim Sprinkler Heads- All Ceilings / L5 / Corr & Lobbies | 5d | 2026-03-27 | 2026-04-02 | P2.L5.CL.1020 FF+2d, P2.L5.CL.1010 FF+2d |  | 48d |
| P2.L5.CL.1070 |  | Trim - Sprinkler Heads @ T-Grid / L5 / Corr & Lobbies | 5d | 2026-03-27 | 2026-04-02 | P2.L5.CL.1020 FF+2d |  | 141d |
| P2.L5.CL.1050 |  | R/I - HVAC- All Ceilings / L5 / Corr & Lobbies | 5d | 2026-04-03 | 2026-04-09 | P2.L5.CL.1020 FF+2d, P2.L5.CL.1010 FF+2d, P2.L5.CL.1040 |  | 48d |
| P2.L5.CL.1030 |  | R/I - Electrical - All Ceilings / L5 / Corr & Lobbies | 15d | 2026-04-10 | 2026-04-30 | P2.L5.CL.1020 FF+2d, P2.L5.CL.1010 FF+2d, P2.L5.CL.1050 |  | 48d |
| P2.L5.CL.1060 |  | R/I - All Remaining Low Voltage - All Ceilings / L5 / Corr & Lobbies | 5d | 2026-05-01 | 2026-05-07 | P2.L5.CL.1020 FF+2d, P2.L5.CL.1010 FF+2d, P2.L5.CL.1030 |  | 48d |
| P2.L5.CL.1100 |  | Pull Wire - Electrical / L5 / Corr & Lobbies | 10d | 2026-05-01 | 2026-05-14 | P2.L5.CL.1030 |  | 78d |
| P2.L5.CL.1080 |  | R/I - Fire Alarm/Life Safety - All Ceilings / L5 / Corr & Lobbies | 5d | 2026-05-08 | 2026-05-14 | P2.L5.CL.1010 FF+2d, P2.L5.CL.1060 |  | 48d |
| P2.L5.CL.1090 |  | Inspections - Close In- All Ceilings / L5 / Corr & Lobbies | 5d | 2026-05-15 | 2026-05-21 | P2.L5.CL.1050, P2.L5.CL.1060, P2.L5.CL.1030, P2.L5.CL.1040, P2.L5.CL.1080 |  | 48d |
| P2.L5.CL.1110 |  | Pull Wire - Fire Alarm / L5 / Corr & Lobbies | 5d | 2026-05-15 | 2026-05-21 | P2.L5.CL.1100, P2.L5.CL.1080 |  | 83d |
| P2.L5.CL.1120 |  | Pull Wire - All Remianing Low Voltage Systems / L5 / Corr & Lobbies | 5d | 2026-05-22 | 2026-05-29 | P2.L5.CL.1110, P2.L5.CL.1060 |  | 88d |
| P2.L5.CL.1130 |  | Hang/Tape/Finish- Hard Lid Ceilings / L5 / Corr & Lobbies | 10d | 2026-05-22 | 2026-06-05 | P2.L5.CL.1090 |  | 48d |
| P2.L5.CL.1140 |  | Drop Ceiling Tiles @ T-Grid / L5 / Corr & Lobbies | 5d | 2026-06-01 | 2026-06-05 | P2.L5.CL.1070, P2.L5.CL.1100, P2.L5.CL.1110, P2.L5.CL.1120 |  | 101d |
| P2.L5.CL.1190 |  | Paint - Hard Lid Ceilings / L5 / Corr & Lobbies | 5d | 2026-06-08 | 2026-06-12 | P2.L5.CL.1130 |  | 48d |
| P2.L5.CL.1180 |  | Ceiling Mounted - HVAC GRD's / L5 / Corr & Lobbies | 15d | 2026-06-15 | 2026-07-06 | P2.L5.CL.1020, P2.L5.CL.1190 |  | 48d |
| P2.L5.CL.1150 |  | Ceiling Mounted - Electrical Devices and Lights / L5 / Corr & Lobbies | 20d | 2026-06-29 | 2026-07-27 | P2.L5.CL.1180 SS+10d, P2.L5.CL.1100, P2.L5.CL.1190 |  | 48d |
| P2.L5.CL.1160 |  | Ceiling Mounted - Fire Alarm/Life Saftey Devices / L5 / Corr & Lobbies | 15d | 2026-07-14 | 2026-08-03 | P2.L5.CL.1150 SS+10d, P2.L5.CL.1020, P2.L5.CL.1110, P2.L5.CL.1190 |  | 48d |
| P2.L5.CL.1170 |  | Ceiling Mounted - All Low Voltage Devices / L5 / Corr & Lobbies | 15d | 2026-07-28 | 2026-08-17 | P2.L5.CL.1160 SS+10d, P2.L5.CL.1120, P2.L5.CL.1190 |  | 48d |
| P2.L5.CL.1320 |  | Prep Flooring / L5 / Corr & Lobbies | 2d | 2026-08-18 | 2026-08-19 | P2.L5.CL.1140 SS+2d, P2.L5.CL.1160, P2.L5.CL.1150, P2.L5.CL.1170, P2.L5.CL.1180 |  | 48d |
| P2.L5.CL.1200 |  | Flooring / L5 / Corr & Lobbies | 8d | 2026-08-20 | 2026-08-31 | P2.L5.CL.1320 |  | 48d |
| P2.L5.CL.1210 |  | Final Paint / L5 / Corr & Lobbies | 5d | 2026-08-27 | 2026-09-02 | P2.L5.CL.1200 FF+2d, P2.L5.CL.1140, BP7.097.3.100 |  | 78d |
| P2.L5.CL.1220 |  | Floor Base / L5 / Corr & Lobbies | 5d | 2026-09-03 | 2026-09-10 | P2.L5.CL.1210 |  | 98d |
| P2.L5.CL.1250 |  | Trim - HVAC - Wall Mounted Devices / L5 / Corr & Lobbies | 5d | 2026-09-03 | 2026-09-10 | P2.L5.CL.1210 |  | 78d |
| P2.L5.CL.1230 |  | Trim - All Electrical - Wall Mounted Devices / L5 / Corr & Lobbies | 5d | 2026-09-11 | 2026-09-17 | P2.L5.CL.1250, P2.L5.CL.1210 |  | 78d |
| P2.L5.CL.1240 |  | Trim - Fire Alarm - Wall Mounted Devices / L5 / Corr & Lobbies | 5d | 2026-09-18 | 2026-09-24 | P2.L5.CL.1230, P2.L5.CL.1210 |  | 78d |
| P2.L5.CL.1260 |  | Trim - All Remining Low Voltage Systems - Wall Mounted Devices / L5 / Corr & Lobbies | 5d | 2026-09-25 | 2026-10-01 | P2.L5.CL.1240, P2.L5.CL.1210 |  | 78d |
| P2.L5.CL.1270 |  | Building Signage / L5 / Corr & Lobbies | 5d | 2026-10-02 | 2026-10-08 | P2.L5.CL.1260, P2.L5.CL.1210 |  | 78d |
| P2.L5.CL.1280 |  | Work Completion List / L5 / Corr & Lobbies | 5d | 2026-10-09 | 2026-10-15 | P2.L5.CL.1230, P2.L5.CL.1240, P2.L5.CL.1250, P2.L5.CL.1260, P2.L5.CL.1220, P2.L5.CL.1270 |  | 78d |
| P2.L5.CL.1290 |  | Rough Clean / L5 / Corr & Lobbies | 2d | 2026-10-16 | 2026-10-19 | P2.L5.CL.1280 |  | 78d |
| P2.L5.CL.1300 |  | Punchlist / L5 / Corr & Lobbies | 5d | 2026-10-20 | 2026-10-26 | P2.L5.CL.1290 |  | 78d |
| P2.L5.CL.1310 |  | Final Clean / L5 / Corr & Lobbies | 2d | 2026-10-27 | 2026-10-28 | P2.L5.CL.1300 |  | 78d |
|  | 2 | **LAB & CLINICAL SPACES / LEVEL 5 (Below Interstitials)** |  | 2025-04-14 | 2026-10-21 |  |  |  |
|  | 3 | **ROUGH IN - Lab & Clinical Spaces (Below Interstitials) / Level 5** |  | 2025-04-14 | 2026-03-25 |  |  |  |
| P2.L5.LC.4170 |  | Snorkel Support to Deck - Install / L5 / Lab & Clinical | 1d | 2025-04-14 A | 2025-04-14 A | P2.L5.LC.1020 FF, P2.L5.LC.1000 | 100% |  |
| P2.L5.LC.1030 |  | OH - MEPF - Hangers & Supports / L5 / Lab & Clinical | 10d | 2025-04-16 A | 2025-04-30 A | P2.BIM.L5.40.140, P2.L5.LC.1000 | 100% |  |
| P2.L5.LC.1020 |  | OH - Structural Supports (All Trades) / L5 / Lab & Clinical | 10d | 2025-04-22 A | 2025-04-25 A | P2.L5.LC.1000 | 100% |  |
| P2.L5.LC.1000 |  | Layout - All Trades / L5 / Lab & Clinical | 5d | 2025-04-23 A | 2025-04-30 A | P2.6.I.05.220 | 100% |  |
| P2.L5.LC.1080 |  | OH - Fireproof Interstitial Steel Above / L5 / Lab & Clinical | 10d | 2025-04-28 A | 2025-05-16 A | P2.6.I.03.320, P2.L5.LC.1020, P2.L5.LC.1030 | 100% |  |
| P2.L5.LC.1010 |  | Framing - Top Track / L5 / Lab & Clinical | 10d | 2025-05-01 A | 2025-05-14 A | P2.L5.N.1010, P2.L5.LC.1000 | 100% |  |
| P2.L5.LC.1170 |  | OH - Fire Suppression / L5 / Lab & Clinical | 10d | 2025-05-19 A | 2025-06-16 A | P2.L5.LC.1080, P2.L5.LC.1150 | 100% |  |
| P2.L5.LC.1090 |  | Framing - Priority Walls & Door Frames / L5 / Lab & Clinical | 10d | 2025-05-27 A | 2025-06-30 A | P2.L5.N.1090, P2.L5.LC.1010, P2.L5.LC.1080 | 100% |  |
| P2.L5.LC.1130 |  | Framing - Priority Walls - AHJ Inspections / L5 / Lab & Clinical | 5d | 2025-06-02 A | 2025-06-30 A | P2.L5.LC.1090 | 100% |  |
| P2.L5.LC.1140 |  | Hang/Tape/Finish - Priority Walls / L5 / Lab & Clinical | 10d | 2025-06-23 A | 2025-07-25 A | P2.L5.N.1140, P2.L5.LC.1130 | 100% |  |
| P2.L5.LC.1160 |  | Spray/Seal/Firestop - Head of Wall - Priority Walls / L5 / Lab & Clinical | 5d | 2025-06-23 A | 2025-06-30 A | P2.L5.LC.1140 | 100% |  |
| P2.L5.LC.1150 |  | Paint Prime & 1st Coat - Priority Walls / L5 / Lab & Clinical | 10d | 2025-06-30 A | 2025-07-15 A | P2.L5.LC.1160 SS | 100% |  |
| P2.L5.LC.1190 |  | OH - Electrical - 480/277v Distribution / L5 / Lab & Clinical | 20d | 2025-07-01 A | 2025-07-31 A | P2.L5.LC.1080, P2.L5.LC.1150 | 100% |  |
| P2.L5.LC.1180 |  | OH - Plumbing Piping (High) / L5 / Lab & Clinical | 20d | 2025-07-22 A | 2025-08-29 A | P2.L5.LC.1080, P2.L5.LC.1150 | 100% |  |
| FRG.P2.L5.LC.1730 |  | HVAC Piping - Delivery / L5 / Lab & Clinical - FRAGNET | 0d | 2025-08-08 A | 2025-08-08 A | P2.L5.LC.1030 FF | 100% |  |
| FRG.P2.L5.LC.1720 |  | HVAC Piping - Stick Build Copper Racks / L5 / Lab & Clinical - FRAGNET | 20d | 2025-08-11 A | 2025-09-09 A | FRG.P2.L5.LC.1730 | 100% |  |
| P2.L5.LC.1230 |  | OH - Electrical - 208/120v Branch / L5 / Lab & Clinical | 10d | 2025-08-11 A | 2025-12-11 | P2.L5.LC.1190 | 10% | 65d |
| P2.L5.LC.1210 |  | OH - Hang Duct - HP Mains / L5 / Lab & Clinical | 20d | 2025-09-02 A | 2025-09-26 A | P2.L5.N.1210, P2.L5.LC.1080 | 100% |  |
| FRG.P2.L5.LC.1710 |  | HVAC Piping - Hanging Copper Racks / L5 / Lab & Clinical - FRAGNET | 20d | 2025-09-10 A | 2025-10-02 A | FRG.P2.L5.LC.1720 | 100% |  |
| P2.L5.LC.1260 |  | OH - DALT - HP Mains / L5 / Lab & Clinical | 10d | 2025-09-12 A | 2025-09-30 A | P2.L5.LC.1210 | 100% |  |
| P2.L5.LC.1560 |  | OH - Plumbing Piping (Low) / L5 / Lab & Clinical | 20d | 2025-09-18 A | 2025-09-30 A | P2.L5.LC.1180 | 100% |  |
| P2.L5.LC.1300 |  | OH - Hang Duct - LP Branch (High) / L5 / Lab & Clinical | 20d | 2025-09-29 A | 2025-12-12 | P2.L5.LC.1210 | 50% | 74d |
| P2.L5.LC.1420 |  | Framing - Balance of Framing & Door Frames / L5 / Lab & Clinical | 10d | 2025-09-29 A | 2025-10-24 A | P2.L5.LC.1150 | 100% |  |
| P2.L5.LC.1570 |  | OH - Hang Duct - LP Branch (Low) / L5 / Lab & Clinical | 20d | 2025-09-29 A | 2025-12-12 | P2.L5.LC.1300 SS | 50% | 74d |
| P2.L5.LC.1220 |  | OH - HVAC Piping / L5 / Lab & Clinical | 20d | 2025-10-03 A | 2025-11-14 A | P2.L5.LC.1170, P2.L5.LC.1080, FRG.P2.L5.LC.1710 | 100% |  |
| P2.L5.LC.1440 |  | In Wall - Electrical - Framing / L5 / Lab & Clinical | 10d | 2025-10-20 A | 2025-12-18 | P2.L5.LC.1230, P2.L5.LC.1420 | 50% | 65d |

| ID | WBS | Task | Duration | Start | Finish | Predecessors | Complete | Total float |
| --- | --- | --- | --- | --- | --- | --- | --- | --- |
| P2.L5.LC.1450 |  | In Wall - Backing/Blocking/Supports / L5 / Lab & Clinical | 10d | 2025-10-20 A | 2025-12-05 | P2.L5.LC.1420 | 50% | 74d |
| P2.L5.LC.1430 |  | In Wall - Plumbing - Framing / L5 / Lab & Clinical | 10d | 2025-10-20 A | 2025-11-14 A | P2.L5.LC.1420, PCO.830.1160 | 100% |  |
| P2.L5.LC.1240 |  | OH - Plumbing - Test / L5 / Lab & Clinical | 10d | 2025-10-27 A | 2025-12-05 | P2.L5.LC.1560, P2.L5.LC.1420 | 50% | 69d |
| P2.L5.LC.1270 |  | OH - HVAC Piping - Test / L5 / Lab & Clinical | 5d | 2025-10-31 A | 2025-12-04 | P2.L5.LC.1220 | 20% | 70d |
| P2.L5.LC.1290 |  | OH - Insulate HP Duct / L5 / Lab & Clinical | 10d | 2025-11-03 A | 2025-11-14 A | P2.L5.LC.1260 | 100% |  |
| P2.L5.LC.1200 |  | Firestop - Thru Wall - Priority Walls / L5 / Lab & Clinical | 5d | 2025-12-01 | 2025-12-05 | P2.L5.LC.1150 |  | 79d |
| P2.L5.LC.1250 |  | Pull Wire - Electrical - 480/277v Distribution / L5 / Lab & Clinical | 10d | 2025-12-01 | 2025-12-12 | P2.L5.LC.1190 |  | 104d |
| P2.L5.LC.1310 |  | OH - Set & Connect Mech Equipment / L5 / Lab & Clinical | 10d | 2025-12-01 | 2025-12-12 | P2.L5.LC.1260 |  | 74d |
| P2.L5.LC.1340 |  | OH - Insulate HVAC Pipe / L5 / Lab & Clinical | 10d | 2025-12-05 | 2025-12-18 | P2.L5.LC.1270, P2.L5.LC.1290 |  | 70d |
| P2.L5.LC.1280 |  | OH - Insulate Plumbing / L5 / Lab & Clinical | 10d | 2025-12-08 | 2025-12-19 | P2.L5.LC.1240 |  | 69d |
| P2.L5.LC.1320 |  | OH - Electrical - Equip Tie In / L5 / Lab & Clinical | 10d | 2025-12-15 | 2025-12-29 | P2.L5.LC.1310 |  | 74d |
| P2.L5.LC.1350 |  | OH - Insulate LP Duct / L5 / Lab & Clinical | 10d | 2025-12-15 | 2025-12-29 | P2.L5.LC.1570, P2.L5.LC.1200 |  | 74d |
| P2.L5.LC.1370 |  | OH - Conduit - Low Volt - BAS/Controls / L5 / Lab & Clinical | 10d | 2025-12-19 | 2026-01-05 | P2.L5.LC.1310, P2.L5.LC.1340 |  | 70d |
| P2.L5.LC.1400 |  | OH - Conduit - Low Volt - Security / L5 / Lab & Clinical | 10d | 2025-12-19 | 2026-01-05 | P2.L5.LC.1340 |  | 80d |
| P2.L5.LC.1360 |  | Pull Wire - Electrical - 208/120v Branch & Equip / L5 / Lab & Clinical | 20d | 2025-12-30 | 2026-01-27 | P2.L5.LC.1320, P2.L5.LC.1230, P2.L5.LC.1440 |  | 74d |
| P2.L5.LC.1380 |  | OH - Conduit - Low Volt - Fire Alarm / L5 / Lab & Clinical | 10d | 2025-12-30 | 2026-01-13 | P2.L5.LC.1310, P2.L5.LC.1350 |  | 74d |
| P2.L5.LC.1390 |  | OH - Conduit - Low Volt - Telecom / L5 / Lab & Clinical | 10d | 2025-12-30 | 2026-01-13 | P2.L5.LC.1350 |  | 74d |
| P2.L5.LC.1410 |  | OH - Conduit - Low Volt - Medical Services/Nurse Call (?) / L5 / Lab & Clinical | 10d | 2025-12-30 | 2026-01-13 | P2.L5.LC.1350 |  | 74d |
| P2.L5.LC.1330 |  | OH - HVAC Piping - Equip Tie In / L5 / Lab & Clinical | 15d | 2026-01-28 | 2026-02-17 | P2.L5.LC.1270, P2.L5.LC.1310, CX.B2.HYDR.1000 |  | 59d |
| P2.L5.LC.1460 |  | AHJ Inspections - Wall Close In / L5 / Lab & Clinical | 5d | 2026-02-05 | 2026-02-11 | P2.L5.LC.1440, P2.L5.LC.1450, P2.L5.LC.1430 |  | 33d |
| P2.L5.LC.1470 |  | Hang-Tape-Finish - Walls and Hard Lid Ceilings / L5 / Lab & Clinical | 10d | 2026-02-19 | 2026-03-04 | P2.SUM.175, BP6.132.3.100, P2.L5.LC.1460, P2.L5.LC.1280, PCO.830.1160 |  | 28d |
| P2.L5.LC.1480 |  | Spray/Seal/Firestop - Head of Wall / L5 / Lab & Clinical | 10d | 2026-03-05 | 2026-03-18 | P2.L5.LC.1470 |  | 38d |
| P2.L5.LC.1490 |  | Firestop - Thru Wall / L5 / Lab & Clinical | 10d | 2026-03-05 | 2026-03-18 | P2.L5.LC.1470 |  | 38d |
| P2.L5.LC.1500 |  | Pull Wire - Low Volt - BAS/Controls / L5 / Lab & Clinical | 10d | 2026-03-05 | 2026-03-18 | P2.L5.LC.1470, P2.L5.LC.1370 |  | 28d |
| P2.L5.LC.1510 |  | Pull Wire - Low Volt - Fire Alarm / L5 / Lab & Clinical | 10d | 2026-03-05 | 2026-03-18 | P2.L5.LC.1470, P2.L5.LC.1380 |  | 38d |
| P2.L5.LC.1520 |  | Pull Wire - Low Volt - Telecom / L5 / Lab & Clinical | 10d | 2026-03-05 | 2026-03-18 | P2.L5.LC.1470, P2.L5.LC.1390 |  | 38d |
| P2.L5.LC.1530 |  | Pull Wire - Low Volt - Security / L5 / Lab & Clinical | 10d | 2026-03-05 | 2026-03-18 | P2.L5.LC.1470, P2.L5.LC.1400 |  | 38d |
| P2.L5.LC.1540 |  | Pull Wire - Low Volt - Medical Services/Nurse Call (?) / L5 / Lab & Clinical | 10d | 2026-03-05 | 2026-03-18 | P2.L5.LC.1470, P2.L5.LC.1410 |  | 38d |
| P2.L5.LC.1550 |  | Trades Inspect & Verify R/I Work Completed to Specs / L5 / Lab & Clinical | 5d | 2026-03-19 | 2026-03-25 | P2.L5.LC.1480, P2.L5.LC.1490, P2.L5.LC.1510, P2.L5.LC.1520, P2.L5.LC.1530, P2.L5.LC.1250, P2.L5.LC.1540, P2.L5.LC.1360, P2.L5.LC.1500, P2.L5.LC.1330 |  | 38d |
|  | 13 | **FINISHES - Lab & Clinical Spaces (Below Interstitials) / Level 5** |  | 2026-02-19 | 2026-10-21 |  |  |  |
|  | 2 | **Staff and Open Bench Suites - Room Blocks 5-39.. / Level 5** |  | 2026-03-05 | 2026-09-23 |  |  |  |
| P2.L5.F.LC.4270 |  | Casework (Before Flooring) / L5 / Staff, Open Bench | 2d | 2026-03-05 | 2026-03-06 | P2.L5.LC.1470 |  | 186d |
| P2.L5.F.LC.4290 |  | Equipment / L5 / Staff, Open Bench | 10d | 2026-03-09 | 2026-03-20 | P2.L5.F.LC.4270 |  | 203d |
| P2.L5.F.LC.1000 |  | Paint - Walls / L5 / Staff, Open Bench | 5d | 2026-03-26 | 2026-04-01 | P2.L5.LC.1550 |  | 103d |
| P2.L5.F.LC.1010 |  | R/I - Ceiling Assemblies & Supports - Med Equip / L5 / Staff, Open Bench | 5d | 2026-04-02 | 2026-04-08 | P2.L5.F.LC.1000 |  | 103d |
| P2.L5.F.LC.1210 |  | Wall Protection / L5 / Staff, Open Bench | 5d | 2026-04-02 | 2026-04-08 | P2.L5.F.LC.1000, BP7.102.3.300 |  | 163d |
| P2.L5.F.LC.1020 |  | Framing - Hard Lid Ceilings / L5 / Staff, Open Bench | 5d | 2026-04-09 | 2026-04-15 | P2.L5.F.LC.1010 |  | 103d |
| P2.L5.F.LC.1230 |  | Trim T-Stats / L5 / Staff, Open Bench | 5d | 2026-04-09 | 2026-04-15 | P2.L5.F.LC.1210 |  | 163d |
| P2.L5.F.LC.1240 |  | Trim Electrical / L5 / Staff, Open Bench | 5d | 2026-04-09 | 2026-04-15 | P2.L5.F.LC.1230 SS |  | 163d |
| P2.L5.F.LC.1250 |  | Trim Telephone/ Data / L5 / Staff, Open Bench | 5d | 2026-04-09 | 2026-04-15 | P2.L5.F.LC.1240 SS |  | 163d |
| P2.L5.F.LC.1270 |  | Trim Med Gas / L5 / Staff, Open Bench | 5d | 2026-04-09 | 2026-04-15 | P2.L5.F.LC.1210 |  | 163d |
| P2.L5.F.LC.1220 |  | Plumbing Fixtures & Drinking Fountains / L5 / Staff, Open Bench | 5d | 2026-04-15 | 2026-04-21 | P2.L5.F.LC.4270, PCO.830.1140 |  | 159d |
| P2.L5.F.LC.1030 |  | R/I - Lights & Devices - Hard Lids Ceilings / L5 / Staff, Open Bench | 10d | 2026-04-16 | 2026-04-29 | P2.L5.F.LC.1020 |  | 103d |
| P2.L5.F.LC.1040 |  | R/I - Diffusers - Hard Lid Ceilings / L5 / Staff, Open Bench | 5d | 2026-04-16 | 2026-04-22 | P2.L5.F.LC.1020 |  | 108d |
| P2.L5.F.LC.1050 |  | R/I - Sprinkler Heads - Hard Lid Ceilings / L5 / Staff, Open Bench | 5d | 2026-04-16 | 2026-04-22 | P2.L5.F.LC.1020 |  | 108d |
| P2.L5.F.LC.1060 |  | R/I - Fire Alarm - Hard Lid Ceilings / L5 / Staff, Open Bench | 5d | 2026-04-16 | 2026-04-22 | P2.L5.F.LC.1020 |  | 108d |
| P2.L5.F.LC.1070 |  | OH Ceiling Inspection & Signoff - Hard Lid Ceilings / L5 / Staff, Open Bench | 5d | 2026-04-30 | 2026-05-06 | P2.L5.F.LC.1040, P2.L5.F.LC.1050, P2.L5.F.LC.1030, P2.L5.F.LC.1060 |  | 103d |
| P2.L5.F.LC.1080 |  | Hang-Tape-Finish _Hard Lid Ceilings / L5 / Staff, Open Bench | 5d | 2026-05-07 | 2026-05-13 | P2.L5.F.LC.1070 |  | 103d |
| P2.L5.F.LC.1090 |  | Paint Ceilings / L5 / Staff, Open Bench | 5d | 2026-05-14 | 2026-05-20 | P2.L5.F.LC.1080 |  | 103d |
| P2.L5.F.LC.1100 |  | Waterproof Ceramic Tile / L5 / Staff, Open Bench | 5d | 2026-05-21 | 2026-05-28 | P2.L5.F.LC.1090 |  | 103d |
| P2.L5.F.LC.1110 |  | Ceramic Tile / L5 / Staff, Open Bench | 5d | 2026-05-29 | 2026-06-04 | P2.L5.F.LC.1100 |  | 103d |
| P2.L5.F.LC.1120 |  | T-Grid / L5 / Staff, Open Bench | 5d | 2026-06-05 | 2026-06-11 | P2.L5.F.LC.1110 |  | 103d |
| P2.L5.F.LC.1130 |  | Diffusers in T-Grid / L5 / Staff, Open Bench | 5d | 2026-06-12 | 2026-06-18 | P2.L5.F.LC.1120 |  | 103d |
| P2.L5.F.LC.1140 |  | Lights & Devices / L5 / Staff, Open Bench | 5d | 2026-06-12 | 2026-06-18 | P2.L5.F.LC.1120 |  | 103d |
| P2.L5.F.LC.1150 |  | Sprinkler Heads / L5 / Staff, Open Bench | 5d | 2026-06-12 | 2026-06-18 | P2.L5.F.LC.1120 |  | 103d |
| P2.L5.F.LC.1160 |  | Trim Low Voltage / L5 / Staff, Open Bench | 5d | 2026-06-12 | 2026-06-18 | P2.L5.F.LC.1120 |  | 103d |
| P2.L5.F.LC.1170 |  | Trim Fire Alarm / L5 / Staff, Open Bench | 5d | 2026-06-12 | 2026-06-18 | P2.L5.F.LC.1120 |  | 103d |
| P2.L5.F.LC.4280 |  | Ceiling Service Panels / L5 / Staff, Open Bench | 1d | 2026-06-12 | 2026-06-12 | P2.L5.F.LC.1120 |  | 107d |
| P2.L5.F.LC.1180 |  | OH Ceiling Signoff / L5 / Staff, Open Bench | 10d | 2026-06-19 | 2026-07-02 | P2.L5.F.LC.1130, P2.L5.F.LC.1160, P2.L5.F.LC.1170, P2.L5.F.LC.1140, P2.L5.F.LC.1150, P2.L5.F.LC.4280 |  | 103d |
| P2.L5.F.LC.1200 |  | Drop Ceiling Tile / L5 / Staff, Open Bench | 5d | 2026-07-06 | 2026-07-10 | P2.L5.F.LC.1180, P2.L5.F.LC.4280 |  | 103d |
| P2.L5.F.LC.1280 |  | Floor Prep / L5 / Staff, Open Bench | 5d | 2026-07-13 | 2026-07-17 | P2.L5.F.LC.1270, P2.L5.F.LC.1200, P2.L5.F.LC.1230, P2.L5.F.LC.1240, P2.L5.F.LC.1250, P2.L5.F.LC.1220, P2.L5.F.LC.4270 |  | 103d |
| P2.L5.F.LC.1290 |  | Flooring / L5 / Staff, Open Bench | 5d | 2026-07-20 | 2026-07-24 | P2.L5.F.LC.1280 |  | 103d |
| P2.L5.F.LC.1190 |  | Casework (After Flooring) / L5 / Staff, Open Bench | 1d | 2026-07-27 | 2026-07-27 | P2.L5.F.LC.1290, P2.L5.F.LC.4280 |  | 112d |
| P2.L5.F.LC.1260 |  | Doors & Hardware / L5 / Staff, Open Bench | 5d | 2026-07-27 | 2026-07-31 | P2.L5.F.LC.1290 |  | 123d |
| P2.L5.F.LC.1300 |  | Building Specialities / L5 / Staff, Open Bench | 5d | 2026-07-27 | 2026-07-31 | P2.L5.F.LC.1290 |  | 103d |
| P2.L5.F.LC.1310 |  | Interior Building Signage / L5 / Staff, Open Bench | 5d | 2026-07-27 | 2026-07-31 | P2.L5.F.LC.1290 |  | 103d |
| P2.L5.F.LC.1320 |  | Work Completion List - Finishes / L5 / Staff, Open Bench | 5d | 2026-08-03 | 2026-08-07 | P2.L5.F.LC.1310, P2.L5.F.LC.1300 |  | 103d |
| P2.L5.F.LC.1330 |  | Remaining Equipment Post Flooring / L5 / Staff, Open Bench | 2d | 2026-08-10 | 2026-08-11 | P2.L5.F.LC.1320, P2.L5.F.LC.1190 |  | 103d |
| P2.L5.F.LC.1340 |  | Remaining MEP Hook-Ups / L5 / Staff, Open Bench | 5d | 2026-08-12 | 2026-08-18 | P2.L5.F.LC.1330, P2.L5.F.LC.4290 |  | 103d |
| P2.L5.F.LC.1350 |  | OFOI Furniture & Equipment / L5 / Staff, Open Bench | 5d | 2026-08-12 | 2026-08-18 | P2.L5.F.LC.1340 SS |  | 113d |

| ID | WBS | Task | Duration | Start | Finish | Predecessors | Total float |
| --- | --- | --- | --- | --- | --- | --- | --- |
| P2.L5.F.LC.1360 |  | Rough Clean / L5 / Staff, Open Bench | 5d | 2026-08-19 | 2026-08-25 | P2.L5.F.LC.1340 | 103d |
| P2.L5.F.LC.1370 |  | Prepare Punchlist / L5 / Staff, Open Bench | 5d | 2026-08-26 | 2026-09-01 | P2.L5.F.LC.1340 SS, P2.L5.F.LC.1360 | 103d |
| P2.L5.F.LC.1380 |  | Correct Punchlist / L5 / Staff, Open Bench | 10d | 2026-09-02 | 2026-09-16 | P2.L5.F.LC.1350, P2.L5.F.LC.1370 | 103d |
| P2.L5.F.LC.1390 |  | Final Clean / L5 / Staff, Open Bench | 5d | 2026-09-17 | 2026-09-23 | P2.L5.F.LC.1380 | 103d |
|  | 3 | **Chem / Hema / Microbio Open Lab Suites - Room Blocks 5-28.. & 5-29.. / Level 5** |  | 2026-03-05 | 2026-10-21 |  |  |
| P2.L5.F.LC.4150 |  | Snorkel at Walls - Install / L5 / Chem, Hema, Micro | 1d | 2026-03-05 | 2026-03-05 | P2.L5.LC.1470 | 203d |
| P2.L5.F.LC.4250 |  | Casework (Before Flooring) / L5 / Chem, Hema, Micro | 17d | 2026-03-05 | 2026-03-27 | P2.L5.LC.1470 | 151d |
| P2.L5.F.LC.4160 |  | Snorkel at Wall MEP Connection / L5 / Chem, Hema, Micro | 1d | 2026-03-06 | 2026-03-06 | P2.L5.F.LC.4150 | 203d |
| P2.L5.F.LC.4300 |  | Cleanroom - Hang - Finish Walls and Cielings / L5 / Chem, Hema, Micro & Immunology | 15d | 2026-03-11 | 2026-03-31 | BP6.092.3.100, P2.L5.N.1470 | 149d |
| P2.L5.F.LC.2000 |  | Paint - Walls / L5 / Chem, Hema, Micro | 5d | 2026-03-26 | 2026-04-01 | P2.L5.LC.1550 | 83d |
| P2.L5.F.LC.2400 |  | Fumehood Equipment Install / L5 / Chem, Hema, Micro | 2d | 2026-03-26 | 2026-03-27 | P2.L5.F.LC.4250 FF | 166d |
| P2.L5.F.LC.2410 |  | Fumehood Equipment MEP Connection / L5 / Chem, Hema, Micro | 2d | 2026-03-30 | 2026-03-31 | P2.L5.F.LC.2400 | 166d |
| P2.L5.F.LC.4310 |  | Cleanroom - Install Doors and Hardware / L5 / Chem, Hema, Micro & Immunology | 5d | 2026-04-01 | 2026-04-07 | P2.L5.F.LC.4300, BP5.081.3.420 | 164d |
| P2.L5.F.LC.2010 |  | R/I - Ceiling Assemblies & Supports - Med Equip / L5 / Chem, Hema, Micro | 5d | 2026-04-02 | 2026-04-08 | P2.L5.F.LC.2000 | 83d |
| P2.L5.F.LC.4320 |  | Cleanroom - Install Windows / L5 / Chem, Hema, Micro & Immunology | 2d | 2026-04-08 | 2026-04-09 | P2.L5.F.LC.4310 | 164d |
| P2.L5.F.LC.2020 |  | Framing - Hard Lid Ceilings / L5 / Chem, Hema, Micro | 5d | 2026-04-09 | 2026-04-15 | P2.L5.F.LC.2010 | 83d |
| P2.L5.F.LC.2030 |  | R/I - Lights & Devices - Hard Lids Ceilings / L5 / Chem, Hema, Micro | 10d | 2026-04-16 | 2026-04-29 | P2.L5.F.LC.2020 | 83d |
| P2.L5.F.LC.2040 |  | R/I - Diffusers - Hard Lid Ceilings / L5 / Chem, Hema, Micro | 5d | 2026-04-16 | 2026-04-22 | P2.L5.F.LC.2020 | 88d |
| P2.L5.F.LC.2050 |  | R/I - Sprinkler Heads - Hard Lid Ceilings / L5 / Chem, Hema, Micro | 5d | 2026-04-16 | 2026-04-22 | P2.L5.F.LC.2020 | 88d |
| P2.L5.F.LC.2060 |  | R/I - Fire Alarm - Hard Lid Ceilings / L5 / Chem, Hema, Micro | 5d | 2026-04-16 | 2026-04-22 | P2.L5.F.LC.2020 | 88d |
| P2.L5.F.LC.2070 |  | OH Ceiling Inspection & Signoff - Hard Lid Ceilings / L5 / Chem, Hema, Micro | 5d | 2026-04-30 | 2026-05-06 | P2.L5.F.LC.2040, P2.L5.F.LC.2050, P2.L5.F.LC.2060, P2.L5.F.LC.2030 | 83d |
| P2.L5.F.LC.2080 |  | Hang-Tape-Finish _Hard Lid Ceilings / L5 / Chem, Hema, Micro | 5d | 2026-05-07 | 2026-05-13 | P2.L5.F.LC.2070 | 83d |
| P2.L5.F.LC.2090 |  | Paint Ceilings / L5 / Chem, Hema, Micro | 5d | 2026-05-14 | 2026-05-20 | P2.L5.F.LC.2080 | 83d |
| P2.L5.F.LC.2100 |  | Waterproof Ceramic Tile / L5 / Chem, Hema, Micro | 5d | 2026-05-21 | 2026-05-28 | P2.L5.F.LC.2090 | 83d |
| P2.L5.F.LC.2110 |  | Ceramic Tile / L5 / Chem, Hema, Micro | 5d | 2026-05-29 | 2026-06-04 | P2.L5.F.LC.2100 | 83d |
| P2.L5.F.LC.2120 |  | T-Grid / L5 / Chem, Hema, Micro | 5d | 2026-06-05 | 2026-06-11 | P2.L5.F.LC.2110 | 83d |
| P2.L5.F.LC.2130 |  | Diffusers in T-Grid / L5 / Chem, Hema, Micro | 5d | 2026-06-12 | 2026-06-18 | P2.L5.F.LC.2120 | 83d |
| P2.L5.F.LC.2140 |  | Lights & Devices / L5 / Chem, Hema, Micro | 5d | 2026-06-12 | 2026-06-18 | P2.L5.F.LC.2120 | 83d |
| P2.L5.F.LC.2150 |  | Sprinkler Heads / L5 / Chem, Hema, Micro | 5d | 2026-06-12 | 2026-06-18 | P2.L5.F.LC.2120 | 83d |
| P2.L5.F.LC.2160 |  | Trim Low Voltage / L5 / Chem, Hema, Micro | 5d | 2026-06-12 | 2026-06-18 | P2.L5.F.LC.2120 | 83d |
| P2.L5.F.LC.2170 |  | Trim Fire Alarm / L5 / Chem, Hema, Micro | 5d | 2026-06-12 | 2026-06-18 | P2.L5.F.LC.2120 | 83d |
| P2.L5.F.LC.4220 |  | Snorkel at Cielings - Install / L5 / Chem, Hema, Micro | 1d | 2026-06-12 | 2026-06-12 | P2.L5.LC.4170, P2.L5.F.LC.2120 | 133d |
| P2.L5.F.LC.4230 |  | Snorkel at Ceiling - MEP Connection / L5 / Chem, Hema, Micro | 1d | 2026-06-15 | 2026-06-15 | P2.L5.F.LC.4220 | 133d |
| P2.L5.F.LC.2180 |  | OH Ceiling Signoff / L5 / Chem, Hema, Micro | 10d | 2026-06-19 | 2026-07-02 | P2.L5.F.LC.2160, P2.L5.F.LC.2170, P2.L5.F.LC.2150, P2.L5.F.LC.2130, P2.L5.F.LC.2140 | 83d |
| P2.L5.F.LC.4060 |  | Floor Prep - Epoxy Floors / L5 / Autoclave, PAPR, & BSL3 | 3d | 2026-07-06 | 2026-07-08 | P2.L5.F.LC.4250, P2.L5.F.LC.2180 | 83d |
| P2.L5.F.LC.4260 |  | Ceiling Service Panel / L5 / Chem, Hema, Micro | 4d | 2026-07-06 | 2026-07-09 | P2.L5.F.LC.2180 | 96d |
| P2.L5.F.LC.4070 |  | Flooring - Epoxy Floors / L5 / Autoclave, PAPR, & BSL3 | 2d | 2026-07-09 | 2026-07-10 | P2.L5.F.LC.4060 | 83d |
| P2.L5.F.LC.2200 |  | Drop Ceiling Tile / L5 / Chem, Hema, Micro | 5d | 2026-07-10 | 2026-07-16 | P2.L5.F.LC.4260, P2.L5.F.LC.2410, P2.L5.F.LC.2180 | 96d |
| P2.L5.F.LC.2190 |  | Casework (After Flooring) / L5 / Chem, Hema, Micro | 7d | 2026-07-13 | 2026-07-21 | P2.L5.F.LC.4070 | 83d |
| P2.L5.F.LC.2210 |  | Wall Protection / L5 / Chem, Hema, Micro | 5d | 2026-07-22 | 2026-07-28 | P2.L5.F.LC.2190, BP7.102.3.300 | 83d |
| P2.L5.F.LC.2220 |  | Plumbing Fixtures & Drinking Fountains / L5 / Chem, Hema, Micro | 5d | 2026-07-22 | 2026-07-28 | P2.L5.F.LC.2190, PCO.830.1140 | 88d |
| P2.L5.F.LC.2260 |  | Doors & Hardware / L5 / Chem, Hema, Micro | 5d | 2026-07-22 | 2026-07-28 | P2.L5.F.LC.2190 | 88d |
| P2.L5.F.LC.2230 |  | Trim T-Stats / L5 / Chem, Hema, Micro | 5d | 2026-07-29 | 2026-08-04 | P2.L5.F.LC.2210 | 83d |
| P2.L5.F.LC.2240 |  | Trim Electrical / L5 / Chem, Hema, Micro | 5d | 2026-07-29 | 2026-08-04 | P2.L5.F.LC.2230 SS | 83d |
| P2.L5.F.LC.2250 |  | Trim Telephone/ Data / L5 / Chem, Hema, Micro | 5d | 2026-07-29 | 2026-08-04 | P2.L5.F.LC.2240 SS | 83d |
| P2.L5.F.LC.2270 |  | Trim Med Gas / L5 / Chem, Hema, Micro | 5d | 2026-07-29 | 2026-08-04 | P2.L5.F.LC.2190, P2.L5.F.LC.2210 | 83d |
| P2.L5.F.LC.2280 |  | Floor Prep / L5 / Chem, Hema, Micro | 5d | 2026-08-05 | 2026-08-11 | P2.L5.F.LC.2200, P2.L5.F.LC.2260, P2.L5.F.LC.2240, P2.L5.F.LC.2250, P2.L5.F.LC.2220, P2.L5.F.LC.2230, P2.L5.F.LC.2270, P2.L5.F.LC.4320 | 83d |
| P2.L5.F.LC.2290 |  | Flooring / L5 / Chem, Hema, Micro | 5d | 2026-08-12 | 2026-08-18 | P2.L5.F.LC.2280 | 83d |
| P2.L5.F.LC.2300 |  | Building Specialities / L5 / Chem, Hema, Micro | 5d | 2026-08-19 | 2026-08-25 | P2.L5.F.LC.2290 | 83d |
| P2.L5.F.LC.2310 |  | Interior Building Signage / L5 / Chem, Hema, Micro | 5d | 2026-08-19 | 2026-08-25 | P2.L5.F.LC.2290 | 83d |
| P2.L5.F.LC.2320 |  | Work Completion List - Finishes / L5 / Chem, Hema, Micro | 5d | 2026-08-26 | 2026-09-01 | P2.L5.F.LC.2310, P2.L5.F.LC.2300, P2.L5.F.LC.4160, P2.L5.F.LC.4230 | 83d |
| P2.L5.F.LC.2330 |  | Remaining Equipment Post Flooring / L5 / Chem, Hema, Micro | 5d | 2026-09-02 | 2026-09-09 | P2.L5.F.LC.2320, P2.L5.F.LC.2190 | 83d |
| P2.L5.F.LC.2340 |  | Remaining MEP Hook-Ups / L5 / Chem, Hema, Micro | 5d | 2026-09-10 | 2026-09-16 | P2.L5.F.LC.2330, P2.L5.F.LC.4160, P2.L5.F.LC.4230 | 83d |
| P2.L5.F.LC.2350 |  | OFOI Furniture & Equipment / L5 / Chem, Hema, Micro | 5d | 2026-09-10 | 2026-09-16 | P2.L5.F.LC.2340 SS | 93d |
| P2.L5.F.LC.2360 |  | Rough Clean / L5 / Chem, Hema, Micro | 5d | 2026-09-17 | 2026-09-23 | P2.L5.F.LC.2340 | 83d |
| P2.L5.F.LC.2370 |  | Prepare Punchlist / L5 / Chem, Hema, Micro | 5d | 2026-09-24 | 2026-09-30 | P2.L5.F.LC.2340 SS, P2.L5.F.LC.2360 | 83d |
| P2.L5.F.LC.2380 |  | Correct Punchlist / L5 / Chem, Hema, Micro | 10d | 2026-10-01 | 2026-10-14 | P2.L5.F.LC.2370, P2.L5.F.LC.2350 | 83d |
| P2.L5.F.LC.2390 |  | Final Clean / L5 / Chem, Hema, Micro | 5d | 2026-10-15 | 2026-10-21 | P2.L5.F.LC.2380 | 83d |
|  | 4 | **Immunology / Mass Spec/HPCL / Mycology Lab Suites - Room Blocks 5-28.. & 5-29.. / Level 5** |  | 2026-03-05 | 2026-09-23 |  |  |
| P2.L5.F.LC.4180 |  | Casework (Before Flooring) / L5 / Mass, Myc, Immuno | 16d | 2026-03-05 | 2026-03-26 | P2.L5.LC.1470 | 126d |
| P2.L5.F.LC.4240 |  | Equipment (Before Flooring) / L5 / Mass, Myc, Immuno | 1d | 2026-03-05 | 2026-03-05 | P2.L5.LC.1470 | 192d |
| P2.L5.F.LC.3000 |  | Paint - Walls / L5 / Mass, Myc, Immuno | 5d | 2026-03-26 | 2026-04-01 | BP6.092.3.100, P2.L5.LC.1550 | 103d |
| P2.L5.F.LC.4080 |  | Fumehood Equipment Install / L5 / Mass, Myc, Immuno | 1d | 2026-03-26 | 2026-03-26 | P2.L5.F.LC.4180 FF | 126d |
| P2.L5.F.LC.4090 |  | Fumehood Equipment MEP Connection / L5 / Mass, Myc, Immuno | 1d | 2026-03-27 | 2026-03-27 | P2.L5.F.LC.4080 | 126d |
| P2.L5.F.LC.3010 |  | R/I - Ceiling Assemblies & Supports - Med Equip / L5 / Mass, Myc, Immuno | 5d | 2026-04-02 | 2026-04-08 | P2.L5.F.LC.3000 | 103d |
| P2.L5.F.LC.3210 |  | Wall Protection / L5 / Mass, Myc, Immuno | 5d | 2026-04-02 | 2026-04-08 | P2.L5.F.LC.3000, BP7.102.3.300 | 163d |
| P2.L5.F.LC.3020 |  | Framing - Hard Lid Ceilings / L5 / Mass, Myc, Immuno | 5d | 2026-04-09 | 2026-04-15 | P2.L5.F.LC.3010 | 103d |
| P2.L5.F.LC.3230 |  | Trim T-Stats / L5 / Mass, Myc, Immuno | 5d | 2026-04-09 | 2026-04-15 | P2.L5.F.LC.3210 | 163d |
| P2.L5.F.LC.3240 |  | Trim Electrical / L5 / Mass, Myc, Immuno | 5d | 2026-04-09 | 2026-04-15 | P2.L5.F.LC.3230 SS | 163d |
| P2.L5.F.LC.3250 |  | Trim Telephone/ Data / L5 / Mass, Myc, Immuno | 5d | 2026-04-09 | 2026-04-15 | P2.L5.F.LC.3240 SS | 163d |

| ID | WBS | Task | Duration | Start | Finish | Predecessors | Complete | Total float |
| --- | --- | --- | --- | --- | --- | --- | --- | --- |
| P2.L5.F.LC.3270 |  | Trim Med Gas / L5 / Mass, Myc, Immuno | 5d | 2026-04-09 | 2026-04-15 | P2.L5.F.LC.3210 |  | 163d |
| P2.L5.F.LC.3220 |  | Plumbing Fixtures & Drinking Fountains / L5 / Mass, Myc, Immuno | 5d | 2026-04-15 | 2026-04-21 | P2.L5.F.LC.4180, PCO.830.1140 |  | 159d |
| P2.L5.F.LC.3030 |  | R/I - Lights & Devices - Hard Lids Ceilings / L5 / Mass, Myc, Immuno | 10d | 2026-04-16 | 2026-04-29 | P2.L5.F.LC.3020 |  | 103d |
| P2.L5.F.LC.3040 |  | R/I - Diffusers - Hard Lid Ceilings / L5 / Mass, Myc, Immuno | 5d | 2026-04-16 | 2026-04-22 | P2.L5.F.LC.3020 |  | 108d |
| P2.L5.F.LC.3050 |  | R/I - Sprinkler Heads - Hard Lid Ceilings / L5 / Mass, Myc, Immuno | 5d | 2026-04-16 | 2026-04-22 | P2.L5.F.LC.3020 |  | 108d |
| P2.L5.F.LC.3060 |  | R/I - Fire Alarm - Hard Lid Ceilings / L5 / Mass, Myc, Immuno | 5d | 2026-04-16 | 2026-04-22 | P2.L5.F.LC.3020 |  | 108d |
| P2.L5.F.LC.3070 |  | OH Ceiling Inspection & Signoff - Hard Lid Ceilings / L5 / Mass, Myc, Immuno | 5d | 2026-04-30 | 2026-05-06 | P2.L5.F.LC.4090, P2.L5.F.LC.3050, P2.L5.F.LC.3060, P2.L5.F.LC.3030, P2.L5.F.LC.3040 |  | 103d |
| P2.L5.F.LC.3080 |  | Hang-Tape-Finish _Hard Lid Ceilings / L5 / Mass, Myc, Immuno | 5d | 2026-05-07 | 2026-05-13 | P2.L5.F.LC.3070 |  | 103d |
| P2.L5.F.LC.3090 |  | Paint Ceilings / L5 / Mass, Myc, Immuno | 5d | 2026-05-14 | 2026-05-20 | P2.L5.F.LC.3080 |  | 103d |
| P2.L5.F.LC.3100 |  | Waterproof Ceramic Tile / L5 / Mass, Myc, Immuno | 5d | 2026-05-21 | 2026-05-28 | P2.L5.F.LC.3090 |  | 103d |
| P2.L5.F.LC.3110 |  | Ceramic Tile / L5 / Mass, Myc, Immuno | 5d | 2026-05-29 | 2026-06-04 | P2.L5.F.LC.3100 |  | 103d |
| P2.L5.F.LC.3120 |  | T-Grid / L5 / Mass, Myc, Immuno | 5d | 2026-06-05 | 2026-06-11 | P2.L5.F.LC.3110 |  | 103d |
| P2.L5.F.LC.3130 |  | Diffusers in T-Grid / L5 / Mass, Myc, Immuno | 5d | 2026-06-12 | 2026-06-18 | P2.L5.F.LC.3120 |  | 103d |
| P2.L5.F.LC.3140 |  | Lights & Devices / L5 / Mass, Myc, Immuno | 5d | 2026-06-12 | 2026-06-18 | P2.L5.F.LC.3120 |  | 103d |
| P2.L5.F.LC.3150 |  | Sprinkler Heads / L5 / Mass, Myc, Immuno | 5d | 2026-06-12 | 2026-06-18 | P2.L5.F.LC.3120 |  | 103d |
| P2.L5.F.LC.3160 |  | Trim Low Voltage / L5 / Mass, Myc, Immuno | 5d | 2026-06-12 | 2026-06-18 | P2.L5.F.LC.3120 |  | 103d |
| P2.L5.F.LC.3170 |  | Trim Fire Alarm / L5 / Mass, Myc, Immuno | 5d | 2026-06-12 | 2026-06-18 | P2.L5.F.LC.3120 |  | 103d |
| P2.L5.F.LC.4100 |  | Snorkel at Cielings - Install / L5 / Mass, Myc, Immuno | 2d | 2026-06-12 | 2026-06-15 | P2.L5.LC.4170, P2.L5.F.LC.3120 |  | 115d |
| P2.L5.F.LC.4190 |  | Ceiling Service Panels / L5 / Mass, Myc, Immuno | 1d | 2026-06-12 | 2026-06-12 | P2.L5.F.LC.3120 |  | 117d |
| P2.L5.F.LC.4130 |  | Snorkel at Ceiling - MEP Connection / L5 / Mass, Myc, Immuno | 1d | 2026-06-16 | 2026-06-16 | P2.L5.F.LC.4100 |  | 115d |
| P2.L5.F.LC.3180 |  | OH Ceiling Signoff / L5 / Mass, Myc, Immuno | 10d | 2026-06-19 | 2026-07-02 | P2.L5.F.LC.3130, P2.L5.F.LC.3140, P2.L5.F.LC.3150, P2.L5.F.LC.3160, P2.L5.F.LC.3170 |  | 103d |
| P2.L5.F.LC.3200 |  | Drop Ceiling Tile / L5 / Mass, Myc, Immuno | 5d | 2026-07-06 | 2026-07-10 | P2.L5.F.LC.4130, P2.L5.F.LC.4190, P2.L5.F.LC.3180 |  | 103d |
| P2.L5.F.LC.3280 |  | Floor Prep / L5 / Mass, Myc, Immuno | 5d | 2026-07-13 | 2026-07-17 | P2.L5.F.LC.4240, P2.L5.F.LC.4180, P2.L5.F.LC.3270, P2.L5.F.LC.3200, P2.L5.F.LC.3220, P2.L5.F.LC.3230, P2.L5.F.LC.3240, P2.L5.F.LC.3250 |  | 103d |
| P2.L5.F.LC.3290 |  | Flooring / L5 / Mass, Myc, Immuno | 5d | 2026-07-20 | 2026-07-24 | P2.L5.F.LC.3280 |  | 103d |
| P2.L5.F.LC.3190 |  | Casework (After Flooring) / L5 / Mass, Myc, Immuno | 4d | 2026-07-27 | 2026-07-30 | P2.L5.F.LC.3290, P2.L5.F.LC.4190 |  | 119d |
| P2.L5.F.LC.3300 |  | Building Specialities / L5 / Mass, Myc, Immuno | 5d | 2026-07-27 | 2026-07-31 | P2.L5.F.LC.3290 |  | 103d |
| P2.L5.F.LC.3310 |  | Interior Building Signage / L5 / Mass, Myc, Immuno | 5d | 2026-07-27 | 2026-07-31 | P2.L5.F.LC.3290 |  | 103d |
| P2.L5.F.LC.3260 |  | Doors & Hardware / L5 / Mass, Myc, Immuno | 5d | 2026-07-31 | 2026-08-06 | P2.L5.F.LC.3190 |  | 119d |
| P2.L5.F.LC.3320 |  | Work Completion List - Finishes / L5 / Mass, Myc, Immuno | 5d | 2026-08-03 | 2026-08-07 | P2.L5.F.LC.4130, P2.L5.F.LC.3310, P2.L5.F.LC.3300 |  | 103d |
| P2.L5.F.LC.3330 |  | Remaining Equipment Post Flooring / L5 / Mass, Myc, Immuno | 2d | 2026-08-10 | 2026-08-11 | P2.L5.F.LC.3320 |  | 103d |
| P2.L5.F.LC.3340 |  | Remaining MEP Hook-Ups / L5 / Mass, Myc, Immuno | 5d | 2026-08-12 | 2026-08-18 | P2.L5.F.LC.4090, P2.L5.F.LC.4130, P2.L5.F.LC.3330 |  | 103d |
| P2.L5.F.LC.3350 |  | OFOI Furniture & Equipment / L5 / Mass, Myc, Immuno | 5d | 2026-08-12 | 2026-08-18 | P2.L5.F.LC.3340 SS |  | 113d |
| P2.L5.F.LC.3360 |  | Rough Clean / L5 / Mass, Myc, Immuno | 5d | 2026-08-19 | 2026-08-25 | P2.L5.F.LC.3340 |  | 103d |
| P2.L5.F.LC.3370 |  | Prepare Punchlist / L5 / Mass, Myc, Immuno | 5d | 2026-08-26 | 2026-09-01 | P2.L5.F.LC.3340 SS, P2.L5.F.LC.3360 |  | 103d |
| P2.L5.F.LC.3380 |  | Correct Punchlist / L5 / Mass, Myc, Immuno | 10d | 2026-09-02 | 2026-09-16 | P2.L5.F.LC.3350, P2.L5.F.LC.3370 |  | 103d |
| P2.L5.F.LC.3390 |  | Final Clean / L5 / Mass, Myc, Immuno | 5d | 2026-09-17 | 2026-09-23 | P2.L5.F.LC.3380 |  | 103d |
|  | 1 | **Cold Rooms - 5-2931 & 5-2851** |  | 2026-02-19 | 2026-04-08 |  |  |  |
| P2.L5.F.LC.4000 |  | Cold Room Walls, Ceilings & Floors Build-Out / L5 / 5-2931 & 5-2851 | 10d | 2026-02-19 | 2026-03-04 | BP6.132.3.100, P2.L5.N.1470 FF |  | 13d |
| P2.L5.F.LC.4010 |  | Cold Room Set-Equipment / L5 / 5-2931 & 5-2851 | 5d | 2026-03-05 | 2026-03-11 | P2.L5.F.LC.4000 |  | 13d |
| P2.L5.F.LC.4020 |  | Braze Lines, Pressure Test, Insulate / L5 / 5-2931 & 5-2851 | 5d | 2026-03-12 | 2026-03-18 | P2.L5.F.LC.4010 |  | 13d |
| P2.L5.F.LC.4030 |  | Final Mechanical/Plumbing Tie-In / L5 / 5-2931 & 5-2851 | 5d | 2026-03-19 | 2026-03-25 | P2.L5.F.LC.4020 |  | 13d |
| P2.L5.F.LC.4040 |  | Controls, Lights, LV, and Final Power / L5 / 5-2931 & 5-2851 | 5d | 2026-03-26 | 2026-04-01 | P2.L5.F.LC.4030, CX.B2.SWGR.1010, CX.B2.MVEE.1010 |  | 13d |
| P2.L5.F.LC.4050 |  | Start-up / L5 / 5-2931 & 5-2851 | 5d | 2026-04-02 | 2026-04-08 | P2.L5.F.LC.4040 |  | 13d |
|  | 1 | **MECHANICAL TOWERS / LEVEL 5** |  | 2025-04-15 | 2026-03-31 |  |  |  |
|  | 4 | **South Mechanical Tower / Rough In & Finish / Level 5** |  | 2025-06-02 | 2026-03-31 |  |  |  |
| P2.L5.SMT.1070 |  | Set & Connect - Mech Equipment / L5 - S. Mech Tower | 10d | 2025-06-02 A | 2025-06-02 A | P2.5.03.610, P2.L4.SMT.1070 | 100% |  |
| P2.L5.SMT.1000 |  | Insulation - Exterior Wall Assembly / L5 - S. Mech Tower | 5d | 2025-07-02 A | 2025-07-09 A | P2.FAC.2.Z1.150 | 100% |  |
| P2.L5.SMT.1020 |  | In Wall - Electrical - CMU / L5 - S. Mech Tower | 10d | 2025-07-24 A | 2025-08-01 A | P2.L5.SMT.1010 SS | 100% |  |
| P2.L5.SMT.1030 |  | In Wall - Mech/Plumbing - CMU / L5 - S. Mech Tower | 10d | 2025-07-24 A | 2025-08-01 A | P2.L5.SMT.1010 SS | 100% |  |
| P2.L5.SMT.1105 |  | HVAC Duct Connections to Shaft Riser / L5 - S. Mech Tower | 20d | 2025-09-02 A | 2025-09-26 A | P2.L5.SMT.1070 | 100% |  |
| P2.L5.SMT.1010 |  | CMU - Lay Block / L5 - S. Mech Tower | 10d | 2025-09-04 A | 2025-09-10 A | P2.L5.SMT.1000, P2.L4.SMT.1010 | 100% |  |
| P2.L5.SMT.1050 |  | CMU - Point & Patch / L5 - S. Mech Tower | 10d | 2025-09-10 A | 2025-09-16 A | P2.L5.SMT.1030, P2.L5.SMT.1020, P2.L5.SMT.1040 | 100% |  |
| P2.L5.SMT.1100 |  | HVAC Piping Connections to Shaft Riser / L5 - S. Mech Tower | 20d | 2025-09-11 A | 2025-09-26 A | P2.L5.SMT.1070 | 100% |  |
| P2.L5.SMT.1040 |  | Paint - CMU Block Fill / L5 - S. Mech Tower | 10d | 2025-09-22 A | 2025-09-26 A | P2.L5.SMT.1010 | 100% |  |
| P2.L5.SMT.1130 |  | Test/Inspect Duct & Piping / L5 - S. Mech Tower | 15d | 2025-09-26 A | 2025-09-30 A | P2.L5.SMT.1100, P2.L5.SMT.1105 | 100% |  |
| P2.L5.SMT.1060 |  | Paint Prime & 1st Coat - CMU / L5 - S. Mech Tower | 10d | 2025-10-01 A | 2025-10-14 A | P2.L5.SMT.1050 SS | 100% |  |
| FRG.P2.L5.SMT.1040 |  | AHU Piping Install / L5 - S. Mech Tower - FRAGNET | 15d | 2025-10-13 A | 2025-11-26 A | FRG.P2.L4.SMT.1030 | 100% |  |
| P2.L5.SMT.1080 |  | Set & Connect - Elect Panels and Equipment / L5 - S. Mech Tower | 5d | 2025-12-01 | 2025-12-05 | P2.L5.SMT.1060 |  | 57d |
| P2.L5.SMT.1120 |  | BAS - Equip Tie In / L5 - S. Mech Tower | 5d | 2025-12-01 | 2025-12-05 | P2.L5.SMT.1070, P2.L5.SMT.1060 |  | 89d |
| P2.L5.SMT.1200 |  | Flooring Prep - Epoxy Floors / L5 - S. Mech Tower | 3d | 2026-01-19 | 2026-01-21 | P2.L5.SMT.1080, P2.L4.SMT.1200 |  | 29d |
| P2.L5.SMT.1250 |  | Flooring - Epoxy Floors / L5 - S. Mech Tower | 2d | 2026-01-22 | 2026-01-23 | P2.L5.SMT.1200 |  | 29d |
| P2.L5.SMT.1090 |  | Panelboards, Interconnect Wiring, and Remaining Room Buildout of All Elec/FA Systems / L5 - S. Mech Tower | 10d | 2026-01-26 | 2026-02-06 | P2.L5.SMT.1080, P2.L5.SMT.1250, BP1.262.3.200, BP1.262.3.100 |  | 29d |
| P2.L5.SMT.1110 |  | HVAC Piping - Equip Tie In / L5 - S. Mech Tower | 20d | 2026-01-28 | 2026-02-24 | P2.L5.SMT.1070, CX.B2.HYDR.1000, FRG.P2.L5.SMT.1040 |  | 19d |
| P2.L5.SMT.1140 |  | Pull Wire - In From Distribution Panels / Out to Branch Circuits / L5 - S. Mech Tower | 5d | 2026-02-09 | 2026-02-13 | P2.L5.SMT.1090 |  | 29d |
| P2.L5.SMT.1160 |  | Electrical Tie in to Equipment / L5 - S. Mech Tower | 5d | 2026-02-16 | 2026-02-20 | P2.L5.SMT.1140, P2.L5.SMT.1070 |  | 46d |
| P2.L5.SMT.1170 |  | Test & Terminate / L5 - S. Mech Tower | 5d | 2026-02-16 | 2026-02-20 | P2.L5.SMT.1140 |  | 29d |
| P2.L5.SMT.1180 |  | Paint - Finish Coat / L5 - S. Mech Tower | 2d | 2026-02-23 | 2026-02-24 | P2.L5.SMT.1170 |  | 29d |
| P2.L5.SMT.1150 |  | Insulate HVAC / Plumbing Pipe / L5 - S. Mech Tower | 15d | 2026-02-25 | 2026-03-17 | P2.L5.SMT.1110, P2.L5.SMT.1130, P2.L5.SMT.1250 |  | 19d |
| P2.L5.SMT.1190 |  | Trim All MEPF Finishes / L5 - S. Mech Tower | 2d | 2026-02-25 | 2026-02-26 | P2.L5.SMT.1180 |  | 30d |
| P2.L5.SMT.1340 |  | Wall Protection / L5 - S. Mech Tower | 5d | 2026-02-25 | 2026-03-03 | P2.L5.SMT.1180, BP7.102.3.300 |  | 29d |

| ID | WBS | Task | Duration | Start | Finish | Predecessors | Complete | Total float | Constraint |
| --- | --- | --- | --- | --- | --- | --- | --- | --- | --- |
| P2.L5.SMT.1210 |  | Doors & Hardware / L5 - S. Mech Tower | 2d | 2026-02-27 | 2026-03-02 | P2.L5.SMT.1190 |  | 30d |  |
| P2.L5.SMT.1220 |  | Trades Inspect & Verify R/I Work Completed to Specs / L5 - S. Mech Tower | 5d | 2026-03-18 | 2026-03-24 | P2.L5.SMT.1120, P2.L5.SMT.1150, P2.L5.SMT.1210, P2.L5.SMT.1340 |  | 19d |  |
| P2.L5.SMT.1240 |  | Energize Elec Panels - Lock Doors and Limit Access / L5 - S. Mech Tower | 5d | 2026-03-25 | 2026-03-31 | P2.L5.SMT.1220, CX.B2.SWGR.1010, CX.B2.MVEE.1010 |  | 19d |  |
| P2.L5.SMT.1230 |  | HVAC System Ready for Start Up / L5 - S. Mech Tower | 0d | 2026-03-31 | 2026-03-31 | P2.L5.SMT.1240, P2.L5.SMT.1160 FF |  | 19d |  |
|  | 8 | **East Mechanical Tower / Rough In & Finish / Level 5** |  | 2025-04-15 | 2026-03-31 |  |  |  |  |
| P2.L5.EMT.1070 |  | Set & Connect - Mech Equipment / L5 - E. Mech Tower | 10d | 2025-04-15 A | 2025-04-28 A | P2.5.03.630, P2.L4.EMT.1080 | 100% |  |  |
| P2.L5.EMT.1250 |  | Quench Vent / L5 - E. Mech Tower (From L4 Interstitial (2)) | 20d | 2025-04-29 A | 2025-06-03 A | P2.L5.EMT.1070 | 100% |  |  |
| P2.L5.EMT.1100 |  | HVAC Piping Connections to Shaft Riser / L5 - E. Mech Tower | 10d | 2025-06-02 A | 2025-06-13 A | P2.L5.EMT.1070 | 100% |  |  |
| P2.L2.INT.N.2180 |  | Quench Vent / L5 - E. Mech Tower (From 1-2855) | 12d | 2025-06-16 A | 2025-09-30 A | P2.L5.EMT.1250 | 100% |  |  |
| P2.L5.EMT.1000 |  | Insulation - Exterior Wall Assembly / L5 - E. Mech Tower | 5d | 2025-08-29 A | 2025-09-10 A | P2.FAC.2.Z3.150 | 100% |  |  |
| P2.L5.EMT.1105 |  | HVAC Duct Connections to Shaft Riser / L5 - E. Mech Tower | 5d | 2025-09-02 A | 2025-09-26 A | P2.L5.EMT.1070 | 100% |  |  |
| P2.L2.INT.N.2190 |  | Quench Vent / L5 - E. Mech Tower (From 1-2835) | 12d | 2025-09-08 A | 2025-09-30 A | P2.L2.INT.N.2180 | 100% |  |  |
| P2.L5.EMT.1130 |  | Test/Inspect Duct & Piping / L5 - E. Mech Tower | 5d | 2025-09-26 A | 2025-09-30 A | P2.L5.EMT.1105, P2.L5.EMT.1100 | 100% |  |  |
| P2.L2.INT.N.2200 |  | Quench Vent / L5 - E. Mech Tower (From 1-2815) | 12d | 2025-10-01 A | 2025-10-16 A | P2.L2.INT.N.2190 | 100% |  |  |
| P2.L5.EMT.1010 |  | CMU - Lay Block / L5 - E. Mech Tower | 10d | 2025-10-15 A | 2025-10-22 A | P2.L3.EMT.1010, P2.L5.EMT.1000, P2.L4.EMT.1020 | 100% |  |  |
| P2.L2.INT.N.2210 |  | Quench Vent / L5 - E. Mech Tower (From 1-2865) | 12d | 2025-10-17 A | 2025-10-31 A | P2.L2.INT.N.2200 | 100% |  |  |
| P2.L5.EMT.1050 |  | CMU - Point & Patch / L5 - E. Mech Tower | 10d | 2025-10-20 A | 2025-10-30 A | P2.L5.EMT.1040, P2.L5.EMT.1010 | 100% |  |  |
| P2.L5.EMT.1040 |  | Paint - CMU Block Fill / L5 - E. Mech Tower | 10d | 2025-10-22 A | 2025-10-22 A | P2.L5.EMT.1010 | 100% |  |  |
| P2.L5.EMT.1060 |  | Paint Prime & 1st Coat - CMU / L5 - E. Mech Tower | 10d | 2025-10-27 A | 2025-10-30 A | P2.L5.EMT.1050 SS | 100% |  |  |
| P2.L2.INT.N.2220 |  | Quench Vent / L5 - E. Mech Tower (From 1-2845) | 12d | 2025-10-31 A | 2025-11-14 A | P2.L2.INT.N.2210 | 100% |  |  |
| P2.L2.INT.N.2230 |  | Quench Vent / L5 - E. Mech Tower (From 1-2825) | 12d | 2025-11-01 A | 2025-11-14 A | P2.L2.INT.N.2220 | 100% |  |  |
| P2.L2.INT.N.2240 |  | Quench Vent / L5 - E. Mech Tower (From 1-2805) | 12d | 2025-11-01 A | 2025-11-14 A | P2.L2.INT.N.2230 | 100% |  |  |
| P2.L5.EMT.1080 |  | Set & Connect - Elect Panels and Equipment / L5 - E. Mech Tower | 5d | 2025-11-03 A | 2025-11-07 A | P2.L5.EMT.1060 | 100% |  |  |
| P2.L5.EMT.1120 |  | BAS - Equip Tie In / L5 - E. Mech Tower | 5d | 2025-11-03 A | 2025-11-07 A | P2.L5.EMT.1070, P2.L5.EMT.1060 | 100% |  |  |
| P2.L2.INT.N.2260 |  | Quench Vent / L5 - E. Mech Tower (From B2 (2)) | 20d | 2025-12-01 | 2025-12-29 | P2.L2.INT.N.2240 |  | 72d |  |
| P2.L5.EMT.1200 |  | Flooring Prep - Epoxy Floors / L5 - E. Mech Tower | 3d | 2025-12-19 | 2025-12-23 | P2.L5.EMT.1080, P2.L4.EMT.1260 |  | 48d |  |
| P2.L5.EMT.1260 |  | Flooring - Epoxy Floors / L5 - E. Mech Tower | 2d | 2025-12-24 | 2025-12-26 | P2.L5.EMT.1200 |  | 48d |  |
| P2.L5.EMT.1090 |  | Panelboards, Interconnect Wiring, and Remaining Room Buildout of All Elec/FA Systems / L5 - E. Mech Tower | 10d | 2025-12-29 | 2026-01-12 | P2.L5.EMT.1080, P2.L5.EMT.1260, BP1.262.3.200, BP1.262.3.100 |  | 48d |  |
| P2.L2.INT.N.2250 |  | Quench Vent / L5 - E. Mech Tower (From L1 Future) | 12d | 2025-12-30 | 2026-01-15 | P2.L2.INT.N.2260 |  | 72d |  |
| P2.L5.EMT.1140 |  | Pull Wire - In From Distribution Panels / Out to Branch Circuits / L5 - E. Mech Tower | 5d | 2026-01-13 | 2026-01-19 | P2.L5.EMT.1090 |  | 48d |  |
| P2.L5.EMT.1160 |  | Electrical Tie in to Equipment / L5 - E. Mech Tower | 5d | 2026-01-20 | 2026-01-26 | P2.L5.EMT.1140, P2.L5.EMT.1070 |  | 195d |  |
| P2.L5.EMT.1170 |  | Test & Terminate / L5 - E. Mech Tower | 5d | 2026-01-20 | 2026-01-26 | P2.L5.EMT.1140 |  | 48d |  |
| P2.L5.EMT.1180 |  | Paint - Finish Coat / L5 - E. Mech Tower | 2d | 2026-01-27 | 2026-01-28 | P2.L5.EMT.1170 |  | 48d |  |
| P2.L5.EMT.1110 |  | HVAC Piping - Equip Tie In / L5 - E. Mech Tower | 20d | 2026-01-28 | 2026-02-24 | P2.L5.EMT.1070, CX.B2.HYDR.1000 |  | 19d |  |
| P2.L5.EMT.1190 |  | Trim All MEPF Finishes / L5 - E. Mech Tower | 2d | 2026-01-29 | 2026-01-30 | P2.L5.EMT.1180 |  | 49d |  |
| P2.L5.EMT.1210 |  | Doors & Hardware / L5 - E. Mech Tower | 2d | 2026-02-02 | 2026-02-03 | P2.L5.EMT.1190 |  | 49d |  |
| P2.L5.EMT.1340 |  | Wall Protection / L5 - E. Mech Tower | 5d | 2026-02-19 | 2026-02-25 | P2.L5.EMT.1180, BP7.102.3.300 |  | 33d |  |
| P2.L5.EMT.1150 |  | Insulate HVAC / Plumbing Pipe / L5 - E. Mech Tower | 15d | 2026-02-25 | 2026-03-17 | P2.L5.EMT.1110, P2.L5.EMT.1130 |  | 19d |  |
| P2.L5.EMT.1220 |  | Trades Inspect & Verify R/I Work Completed to Specs / L5 - E. Mech Tower | 5d | 2026-03-18 | 2026-03-24 | P2.L5.EMT.1210, P2.L5.EMT.1120, P2.L5.EMT.1150, P2.L5.EMT.1340 |  | 19d |  |
| P2.L5.EMT.1240 |  | Energize Elec Panels - Lock Doors and Limit Access / L5 - E. Mech Tower | 5d | 2026-03-25 | 2026-03-31 | P2.L5.EMT.1220, CX.B2.SWGR.1010, CX.B2.MVEE.1010 |  | 19d |  |
| P2.L5.EMT.1230 |  | HVAC System Ready for Start Up / L5 - E. Mech Tower | 0d | 2026-03-31 | 2026-03-31 | P2.L5.EMT.1240, P2.L5.EMT.1160 FF |  | 149d |  |
|  | L6 | **L6 / BUILDOUT** |  | 2015-11-03 | 2026-11-30 |  |  |  |  |
|  | L6 | **CORE & SUPPORT SPACES / LEVEL 6** |  | 2025-03-07 | 2026-11-30 |  |  |  |  |
|  | 2 | **ROUGH IN - Core & Support Spaces / Level 6** |  | 2025-03-07 | 2026-04-16 |  |  |  |  |
|  | Z112 | **South / Level 6** |  | 2025-03-07 | 2026-03-10 |  |  |  |  |
| P2.L6.S.1000 |  | Layout - All Trades / L6 / South | 5d | 2025-03-07 A | 2025-03-31 A | P2.7.03.610 | 100% |  |  |
| P2.L6.S.1020 |  | OH - Structural Supports (All Trades) / L6 / South | 5d | 2025-04-14 A | 2025-04-18 A | P2.L6.S.1000 | 100% |  |  |
| P2.L6.S.1030 |  | OH - MEPF - Hangers & Supports / L6 / South | 10d | 2025-04-14 A | 2025-05-07 A | P2.L6.S.1000, P2.BIM.L6.40.140 | 100% |  |  |
| P2.L6.S.1010 |  | Framing - Top Track / L6 / South | 10d | 2025-04-23 A | 2025-05-15 A | P2.L6.S.1000 | 100% |  |  |
| P2.L6.S.1090 |  | Framing - Priority Walls & Door Frames / L6 / South | 10d | 2025-05-09 A | 2025-05-28 A | P2.L6.S.1010 FF+2d | 100% |  |  |
| P2.L6.S.1140 |  | Hang/Tape/Finish - Priority Walls / L6 / South | 10d | 2025-05-12 A | 2025-05-27 A | P2.L6.S.1020, P2.L6.S.1130 | 100% |  |  |
| P2.L6.S.1130 |  | Framing - Priority Walls - AHJ Inspections / L6 / South | 5d | 2025-05-14 A | 2025-05-21 A | P2.L6.S.1090 | 100% |  |  |
| P2.L6.S.1170 |  | OH - Fire Suppression / L6 / South | 10d | 2025-05-19 A | 2025-05-29 A | P2.L6.S.1030 | 100% |  |  |
| P2.L6.S.1160 |  | Spray/Seal/Firestop - Head of Wall - Priority Walls / L6 / South | 5d | 2025-05-21 A | 2025-05-28 A | P2.L6.S.1140 FF | 100% |  |  |
| P2.L6.S.1150 |  | Paint Prime & 1st Coat - Priority Walls / L6 / South | 10d | 2025-06-02 A | 2025-06-13 A | P2.L6.S.1160 | 100% |  |  |
| P2.L6.S.1230 |  | OH - Electrical - 208/120v Branch / L6 / South | 10d | 2025-06-11 A | 2025-09-03 A | P2.L6.S.1190 | 100% |  |  |
| P2.L6.S.1220 |  | OH - HVAC Piping (High) / L6 / South | 20d | 2025-06-16 A | 2025-07-15 A | P2.L6.S.1170, P2.L6.S.1030 | 100% |  |  |
| P2.L6.S.1190 |  | OH - Electrical - 480/277v Distribution / L6 / South | 10d | 2025-06-23 A | 2025-07-11 A | P2.L6.S.1030, P2.L6.S.1150 | 100% |  |  |
| P2.L6.S.1180 |  | OH - Plumbing Piping (High) / L6 / South | 20d | 2025-07-07 A | 2025-09-08 A | P2.L6.S.1030, P2.L6.S.1150, P2.L5.S.1180 | 100% |  |  |
| P2.L6.S.1210 |  | OH - Hang Duct - HP Mains / L6 / South | 10d | 2025-07-21 A | 2025-09-12 A | P2.L6.S.1170, P2.L6.S.1030, P2.L5.S.1210 | 100% |  |  |
| FRG.P2.L6.S.1670 |  | HVAC Piping Delivery / L6 / South - FRAGNET | 0d | 2025-08-08 A | 2025-08-08 A | P2.L6.S.1030 FF | 100% |  | finish on or after 2025-08-29 |
| FRG.P2.L6.S.1680 |  | HVAC Piping - Staging & Layout / L6 / South - FRAGNET | 15d | 2025-08-11 A | 2025-08-29 A | FRG.P2.L6.S.1670 | 100% |  |  |
| FRG.P2.L6.S.1690 |  | HVAC Piping - Hanging Copper Racks / L6 / South - FRAGNET | 20d | 2025-09-02 A | 2025-09-29 A | FRG.P2.L6.S.1680 | 100% |  |  |
| P2.L6.S.1570 |  | OH - Plumbing Piping (Low) / L6 / South | 20d | 2025-09-05 A | 2025-09-18 A | P2.L6.S.1180 | 100% |  |  |
| FRG.P2.L6.S.1700 |  | HVAC Piping - Stick Build Copper Racks / L6 / South - FRAGNET | 6d | 2025-09-18 A | 2025-09-25 A | FRG.P2.L6.S.1690 | 100% |  |  |
| P2.L6.S.1260 |  | OH - DALT - HP Mains / L6 / South | 10d | 2025-09-29 A | 2025-11-07 A | P2.L6.S.1210 | 100% |  |  |
| P2.L6.S.1420 |  | Framing - Balance of Framing & Door Frames / L6 / South | 10d | 2025-10-13 A | 2025-10-27 A | P2.L5.S.1420 | 100% |  |  |
| P2.L6.S.1300 |  | OH - Hang Duct - LP Branch / L6 / South | 20d | 2025-10-20 A | 2025-12-19 | P2.L6.S.1260 | 25% | 63d |  |
| P2.L6.S.1290 |  | OH - Insulate HP Duct / L6 / South | 10d | 2025-11-10 A | 2025-11-21 A | P2.L6.S.1260 | 100% |  |  |
| P2.L6.S.1200 |  | Firestop - Thru Wall - Priority Walls / L6 / South | 5d | 2025-12-01 | 2025-12-05 | P2.L6.S.1150 |  | 73d |  |

| ID | WBS | Task | Duration | Start | Finish | Predecessors | Complete | Total float | Constraint |
| --- | --- | --- | --- | --- | --- | --- | --- | --- | --- |
| P2.L6.S.1240 |  | OH - Plumbing - Test / L6 / South | 10d | 2025-12-01 | 2025-12-12 | P2.L6.S.1570 |  | 83d |  |
| P2.L6.S.1250 |  | Pull Wire - Electrical - 480/277v Distribution / L6 / South | 10d | 2025-12-01 | 2025-12-12 | P2.L6.S.1190, P2.6.HE.5966.1050, P2.6.HE.5959.1050 |  | 103d |  |
| P2.L6.S.1310 |  | OH - Set & Connect Mech Equipment / L6 / South | 10d | 2025-12-01 | 2025-12-12 | P2.L6.S.1260 |  | 73d |  |
| P2.L6.S.1430 |  | In Wall - Plumbing - Framing / L6 / South | 10d | 2025-12-01 | 2025-12-12 | P2.L6.S.1420 |  | 13d |  |
| P2.L6.S.1440 |  | In Wall - Electrical - Framing / L6 / South | 10d | 2025-12-01 | 2025-12-12 | P2.L6.S.1420, P2.L6.S.1230 |  | 13d |  |
| P2.L6.S.1450 |  | In Wall - Backing/Blocking/Supports / L6 / South | 10d | 2025-12-01 | 2025-12-12 | P2.L6.S.1420 |  | 13d |  |
| P2.L6.S.1560 |  | OH - HVAC Piping (Low) / L6 / South | 20d | 2025-12-01 | 2025-12-29 | P2.L6.S.1220, FRG.P2.L6.S.1700 |  | 48d |  |
| P2.L6.S.1280 |  | OH - Insulate Plumbing / L6 / South | 10d | 2025-12-15 | 2025-12-29 | P2.L6.S.1240 |  | 83d |  |
| P2.L6.S.1320 |  | OH - Electrical - Equip Tie In / L6 / South | 10d | 2025-12-15 | 2025-12-29 | P2.L6.S.1310 |  | 73d |  |
| P2.L6.S.1460 |  | AHJ Inspections - Wall Close In / L6 / South | 5d | 2025-12-15 | 2025-12-19 | P2.L6.S.1440, P2.L6.S.1450, P2.L6.S.1430 |  | 13d |  |
| P2.L6.S.1350 |  | OH - Insulate LP Duct / L6 / South | 15d | 2025-12-22 | 2026-01-13 | P2.L6.S.1300, P2.L6.S.1200 |  | 63d |  |
| P2.L6.S.1270 |  | OH - HVAC Piping - Test / L6 / South | 15d | 2025-12-30 | 2026-01-20 | P2.L6.S.1560 |  | 48d |  |
| P2.L6.S.1360 |  | Pull Wire - Electrical - 208/120v Branch & Equip / L6 / South | 20d | 2025-12-30 | 2026-01-27 | P2.L6.S.1440, P2.L6.S.1230, P2.L6.S.1320 |  | 73d |  |
| P2.L6.S.1470 |  | Hang-Tape-Finish - Walls and Hard Lid Ceilings / L6 / South | 13d | 2025-12-30 | 2026-01-16 | P2.L6.S.1460, P2.SUM.175, P2.L5.S.1470, P2.L5.N.1470 |  | 8d |  |
| P2.L6.S.1380 |  | OH - Conduit - Low Volt - Fire Alarm / L6 / South | 10d | 2026-01-14 | 2026-01-27 | P2.L6.S.1310, P2.L6.S.1350 |  | 63d |  |
| P2.L6.S.1390 |  | OH - Conduit - Low Volt - Telecom / L6 / South | 10d | 2026-01-14 | 2026-01-27 | P2.L6.S.1350 |  | 63d |  |
| P2.L6.S.1410 |  | OH - Conduit - Low Volt - Medical Services/Nurse Call (?) / L6 / South | 10d | 2026-01-14 | 2026-01-27 | P2.L6.S.1350 |  | 63d |  |
| P2.L6.S.1480 |  | Spray/Seal/Firestop - Head of Wall / L6 / South | 10d | 2026-01-19 | 2026-01-30 | P2.L6.S.1470 |  | 70d |  |
| P2.L6.S.1490 |  | Firestop - Thru Wall / L6 / South | 10d | 2026-01-19 | 2026-01-30 | P2.L6.S.1470, P2.L6.S.1280 |  | 70d |  |
| P2.L6.S.1340 |  | OH - Insulate HVAC Pipe / L6 / South | 10d | 2026-01-21 | 2026-02-03 | P2.L6.S.1290, P2.L6.S.1270 |  | 48d |  |
| P2.L6.S.1330 |  | OH - HVAC Piping - Equip Tie In / L6 / South | 15d | 2026-01-28 | 2026-02-17 | P2.L6.S.1310, P2.L6.S.1270, CX.B2.HYDR.1000 |  | 58d |  |
| P2.L6.S.1510 |  | Pull Wire - Low Volt - Fire Alarm / L6 / South | 10d | 2026-01-28 | 2026-02-10 | P2.L6.S.1470, P2.L6.S.1380 |  | 63d |  |
| P2.L6.S.1520 |  | Pull Wire - Low Volt - Telecom / L6 / South | 10d | 2026-01-28 | 2026-02-10 | P2.L6.S.1470, P2.L6.S.1390 |  | 63d |  |
| P2.L6.S.1540 |  | Pull Wire - Low Volt - Medical Services/Nurse Call (?) / L6 / South | 10d | 2026-01-28 | 2026-02-10 | P2.L6.S.1470, P2.L6.S.1410 |  | 63d |  |
| P2.L6.S.1370 |  | OH - Conduit - Low Volt - BAS/Controls / L6 / South | 10d | 2026-02-04 | 2026-02-17 | P2.L6.S.1310, P2.L6.S.1340 |  | 48d |  |
| P2.L6.S.1400 |  | OH - Conduit - Low Volt - Security / L6 / South | 10d | 2026-02-04 | 2026-02-17 | P2.L6.S.1340 |  | 48d |  |
| P2.L6.S.1500 |  | Pull Wire - Low Volt - BAS/Controls / L6 / South | 10d | 2026-02-18 | 2026-03-03 | P2.L6.S.1470, P2.L6.S.1370 |  | 48d |  |
| P2.L6.S.1530 |  | Pull Wire - Low Volt - Security / L6 / South | 10d | 2026-02-18 | 2026-03-03 | P2.L6.S.1470, P2.L6.S.1400 |  | 48d |  |
| P2.L6.S.1550 |  | Trades Inspect & Verify R/I Work Completed to Specs / L6 / South | 5d | 2026-03-04 | 2026-03-10 | P2.L6.S.1490, P2.L6.S.1480, P2.L6.S.1250, P2.L6.S.1540, P2.L6.S.1360, P2.L6.S.1500, P2.L6.S.1510, P2.L6.S.1520, P2.L6.S.1530, P2.L6.S.1330 |  | 48d |  |
|  | Z1121 | **North / Level 6** |  | 2025-04-21 | 2026-04-01 |  |  |  |  |
| P2.L6.N.1010 |  | Framing - Top Track / L6 / North | 10d | 2025-04-21 A | 2025-04-30 A | P2.L6.N.1000 SS | 100% |  |  |
| P2.L6.N.1020 |  | OH - Structural Supports (All Trades) / L6 / North | 5d | 2025-04-21 A | 2025-04-30 A | P2.L6.N.1000 | 100% |  |  |
| P2.L6.N.1030 |  | OH - MEPF - Hangers & Supports / L6 / North | 10d | 2025-04-21 A | 2025-05-09 A | P2.L6.N.1000, P2.BIM.L6.40.140 | 100% |  |  |
| P2.L6.N.1000 |  | Layout - All Trades / L6 / North | 5d | 2025-04-23 A | 2025-04-30 A | P2.6.03.630, P2.7.03.630 | 100% |  |  |
| P2.L6.N.1170 |  | OH - Fire Suppression / L6 / North | 10d | 2025-05-12 A | 2025-05-30 A | P2.L6.N.1030 | 100% |  |  |
| P2.L6.N.1090 |  | Framing - Priority Walls & Door Frames / L6 / North | 10d | 2025-05-19 A | 2025-05-30 A | P2.L6.N.1010 | 100% |  |  |
| P2.L6.N.1130 |  | Framing - Priority Walls - AHJ Inspections / L6 / North | 3d | 2025-06-09 A | 2025-06-30 A | P2.L6.N.1090 | 100% |  |  |
| P2.L6.N.1160 |  | Spray/Seal/Firestop - Head of Wall - Priority Walls / L6 / North | 5d | 2025-06-09 A | 2025-06-19 A | P2.L6.N.1140 FF | 100% |  |  |
| P2.L6.N.1180 |  | OH - Plumbing Piping (High) / L6 / North | 20d | 2025-06-16 A | 2025-09-03 A | P2.L6.N.1030, P2.L5.N.1180 | 100% |  |  |
| P2.L6.N.1150 |  | Paint Prime & 1st Coat - Priority Walls / L6 / North | 4d | 2025-06-19 A | 2025-06-26 A | P2.L6.N.1160 SS | 100% |  |  |
| P2.L6.N.1140 |  | Hang/Tape/Finish - Priority Walls / L6 / North | 5d | 2025-06-25 A | 2025-07-17 A | P2.L6.N.1130, P2.L6.N.1020 | 100% |  |  |
| P2.L6.N.1190 |  | OH - Electrical - 480/277v Distribution / L6 / North | 10d | 2025-07-05 A | 2025-08-07 A | P2.L6.N.1150, P2.L6.N.1030 | 100% |  |  |
| FRG.P2.L6.N.1700 |  | HVAC Piping Delivery / L6 / North - FRAGNET | 0d | 2025-08-08 A | 2025-08-08 A | P2.L6.N.1030 FF | 100% |  | finish on or after 2025-08-29 |
| FRG.P2.L6.N.1730 |  | HVAC Piping - Staging & Layout / L6 / North - FRAGNET | 15d | 2025-08-11 A | 2025-09-29 A | FRG.P2.L6.N.1700 | 100% |  |  |
| FRG.P2.L6.N.1720 |  | HVAC Piping - Hanging Copper Racks / L6 / North - FRAGNET | 6d | 2025-09-02 A | 2025-09-09 A | FRG.P2.L6.N.1700, FRG.P2.L6.N.1730 | 100% |  |  |
| P2.L6.N.1560 |  | OH - Plumbing Piping (Low) / L6 / North | 20d | 2025-09-11 A | 2025-09-22 A | P2.L6.N.1180 | 100% |  |  |
| P2.L6.N.1210 |  | OH - Hang Duct - HP Mains / L6 / North | 15d | 2025-09-15 A | 2025-10-31 A | P2.L6.N.1030 | 100% |  |  |
| P2.L6.N.1220 |  | OH - HVAC Piping (High) / L6 / North | 20d | 2025-09-15 A | 2025-11-14 A | P2.L6.N.1030, P2.L6.N.1170, FRG.P2.L6.N.1720 | 100% |  |  |
| P2.L6.N.1420 |  | Framing - Balance of Framing & Door Frames / L6 / North | 10d | 2025-10-13 A | 2025-10-27 A | P2.L5.S.1420 | 100% |  |  |
| P2.L6.N.1260 |  | OH - DALT - HP Mains / L6 / North | 10d | 2025-10-30 A | 2025-10-31 A | P2.L6.N.1210 | 100% |  |  |
| P2.L6.N.1300 |  | OH - Hang Duct - LP Branch / L6 / North | 15d | 2025-10-31 A | 2025-12-19 | P2.L6.N.1260 |  | 69d |  |
| P2.L6.N.1570 |  | OH - HVAC Piping (Low) / L6 / North | 20d | 2025-10-31 A | 2025-12-12 | P2.L6.N.1220 | 50% | 59d |  |
| P2.L6.N.1290 |  | OH - Insulate HP Duct / L6 / North | 10d | 2025-11-24 A | 2025-12-10 | P2.L6.N.1260 | 20% | 76d |  |
| P2.L6.N.1200 |  | Firestop - Thru Wall - Priority Walls / L6 / North | 5d | 2025-12-01 | 2025-12-05 | P2.L6.N.1150 |  | 79d |  |
| P2.L6.N.1230 |  | OH - Electrical - 208/120v Branch / L6 / North | 10d | 2025-12-01 | 2025-12-12 | P2.L6.N.1190 |  | 69d |  |
| P2.L6.N.1240 |  | OH - Plumbing - Test / L6 / North | 10d | 2025-12-01 | 2025-12-12 | P2.L6.N.1560 |  | 84d |  |
| P2.L6.N.1250 |  | Pull Wire - Electrical - 480/277v Distribution / L6 / North | 10d | 2025-12-01 | 2025-12-12 | P2.L6.N.1190, P2.6.HE.2947.1050, P2.6.HE.2803.1050 |  | 104d |  |
| P2.L6.N.1310 |  | OH - Set & Connect Mech Equipment / L6 / North | 15d | 2025-12-01 | 2025-12-19 | P2.L6.N.1260 |  | 69d |  |
| P2.L6.N.1450 |  | In Wall - Backing/Blocking/Supports / L6 / North | 10d | 2025-12-01 | 2025-12-12 | P2.L6.N.1420 |  | 79d |  |
| P2.L6.N.1270 |  | OH - HVAC Piping - Test / L6 / North | 15d | 2025-12-15 | 2026-01-06 | P2.L6.N.1570 |  | 59d |  |
| P2.L6.N.1280 |  | OH - Insulate Plumbing / L6 / North | 10d | 2025-12-15 | 2025-12-29 | P2.L6.N.1240 |  | 84d |  |
| P2.L6.N.1440 |  | In Wall - Electrical - Framing / L6 / North | 10d | 2025-12-15 | 2025-12-29 | P2.L6.N.1230, P2.L6.N.1420 |  | 69d |  |
| P2.L6.N.1320 |  | OH - Electrical - Equip Tie In / L6 / North | 10d | 2025-12-22 | 2026-01-06 | P2.L6.N.1310 |  | 69d |  |
| P2.L6.N.1350 |  | OH - Insulate LP Duct / L6 / North | 10d | 2025-12-22 | 2026-01-06 | P2.L6.N.1300, P2.L6.N.1200 |  | 69d |  |
| P2.L6.N.1340 |  | OH - Insulate HVAC Pipe / L6 / North | 10d | 2026-01-07 | 2026-01-20 | P2.L6.N.1270, P2.L6.N.1290 |  | 59d |  |
| P2.L6.N.1360 |  | Pull Wire - Electrical - 208/120v Branch & Equip / L6 / North | 20d | 2026-01-07 | 2026-02-03 | P2.L6.N.1320, P2.L6.N.1230, P2.L6.N.1440 |  | 69d |  |
| P2.L6.N.1380 |  | OH - Conduit - Low Volt - Fire Alarm / L6 / North | 10d | 2026-01-07 | 2026-01-20 | P2.L6.N.1310, P2.L6.N.1350 |  | 69d |  |
| P2.L6.N.1390 |  | OH - Conduit - Low Volt - Telecom / L6 / North | 10d | 2026-01-07 | 2026-01-20 | P2.L6.N.1350 |  | 69d |  |
| P2.L6.N.1410 |  | OH - Conduit - Low Volt - Medical Services/Nurse Call (?) / L6 / North | 10d | 2026-01-07 | 2026-01-20 | P2.L6.N.1350 |  | 69d |  |
| P2.L6.N.1370 |  | OH - Conduit - Low Volt - BAS/Controls / L6 / North | 10d | 2026-01-21 | 2026-02-03 | P2.L6.N.1310, P2.L6.N.1340 |  | 59d |  |

| ID | WBS | Task | Duration | Start | Finish | Predecessors | Complete | Total float |
| --- | --- | --- | --- | --- | --- | --- | --- | --- |
| P2.L6.N.1400 |  | OH - Conduit - Low Volt - Security / L6 / North | 10d | 2026-01-21 | 2026-02-03 | P2.L6.N.1340 |  | 59d |
| P2.L6.N.1330 |  | OH - HVAC Piping - Equip Tie In / L6 / North | 15d | 2026-01-28 | 2026-02-17 | P2.L6.N.1310, P2.L6.N.1270, CX.B2.HYDR.1000 |  | 59d |
| P2.L6.N.1430 |  | In Wall - Plumbing - Framing / L6 / North | 10d | 2026-02-05 | 2026-02-18 | P2.L6.N.1420, PCO.830.1160 |  | 33d |
| P2.L6.N.1460 |  | AHJ Inspections - Wall Close In / L6 / North | 5d | 2026-02-19 | 2026-02-25 | P2.L6.N.1440, P2.L6.N.1450, P2.L6.N.1430 |  | 33d |
| P2.L6.N.1470 |  | Hang-Tape-Finish - Walls and Hard Lid Ceilings / L6 / North | 10d | 2026-02-26 | 2026-03-11 | P2.L6.N.1460, P2.SUM.175, P2.L5.N.1470, P2.L5.S.1470, PCO.830.1160 |  | 33d |
| P2.L6.N.1480 |  | Spray/Seal/Firestop - Head of Wall / L6 / North | 10d | 2026-03-12 | 2026-03-25 | P2.L6.N.1470 |  | 33d |
| P2.L6.N.1490 |  | Firestop - Thru Wall / L6 / North | 10d | 2026-03-12 | 2026-03-25 | P2.L6.N.1470, P2.L6.N.1280 |  | 33d |
| P2.L6.N.1500 |  | Pull Wire - Low Volt - BAS/Controls / L6 / North | 10d | 2026-03-12 | 2026-03-25 | P2.L6.N.1470, P2.L6.N.1370 |  | 33d |
| P2.L6.N.1510 |  | Pull Wire - Low Volt - Fire Alarm / L6 / North | 10d | 2026-03-12 | 2026-03-25 | P2.L6.N.1470, P2.L6.N.1380 |  | 33d |
| P2.L6.N.1520 |  | Pull Wire - Low Volt - Telecom / L6 / North | 10d | 2026-03-12 | 2026-03-25 | P2.L6.N.1470, P2.L6.N.1390 |  | 33d |
| P2.L6.N.1530 |  | Pull Wire - Low Volt - Security / L6 / North | 10d | 2026-03-12 | 2026-03-25 | P2.L6.N.1470, P2.L6.N.1400 |  | 33d |
| P2.L6.N.1540 |  | Pull Wire - Low Volt - Medical Services/Nurse Call (?) / L6 / North | 10d | 2026-03-12 | 2026-03-25 | P2.L6.N.1470, P2.L6.N.1410 |  | 33d |
| P2.L6.N.1550 |  | Trades Inspect & Verify R/I Work Completed to Specs / L6 / North | 5d | 2026-03-26 | 2026-04-01 | P2.L6.N.1480, P2.L6.N.1490, P2.L6.N.1510, P2.L6.N.1520, P2.L6.N.1530, P2.L6.N.1250, P2.L6.N.1540, P2.L6.N.1360, P2.L6.N.1500, P2.L6.N.1330 |  | 33d |
|  | 1 | **House Electrical Rooms / Level 6** |  | 2025-05-26 | 2026-01-02 |  |  |  |
|  | 9 | **House Electrical Room 6-5966** |  | 2025-05-26 | 2026-01-02 |  |  |  |
| P2.6.HE.5966.1000 |  | Framing and Blocking / L6 / South / 5966 | 3d | 2025-05-26 A | 2025-05-30 A | P2.L6.S.1090 | 100% |  |
| P2.6.HE.5966.1010 |  | In Wall Rough In / L6 / South / 5966 | 2d | 2025-06-09 A | 2025-06-16 A | P2.6.HE.5966.1000 | 100% |  |
| P2.6.HE.5966.1020 |  | Inspections - Wall Close In / L6 / South / 5966 | 2d | 2025-06-11 A | 2025-06-18 A | P2.6.HE.5966.1010 | 100% |  |
| P2.6.HE.5966.1030 |  | Hang-Tape-Finish / L6 / South / 5966 | 5d | 2025-06-23 A | 2025-06-30 A | P2.6.HE.5966.1020, P2.LR.L7.170 | 100% |  |
| P2.6.HE.5966.1040 |  | Paint Prime & 1st Coat / L6 / South / 5966 | 2d | 2025-07-28 A | 2025-07-29 A | P2.6.HE.5966.1030 | 100% |  |
| P2.6.HE.5966.1050 |  | Cans/Troughs/Backboxes/XFMRs / L6 / South / 5966 | 5d | 2025-07-29 A | 2025-08-27 A | P2.6.HE.5966.1040 | 100% |  |
| P2.6.HE.5966.1060 |  | Risers and OH Conduit Connections / L6 / South / 5966 | 5d | 2025-08-26 A | 2025-09-09 A | P2.6.HE.5966.1050 | 100% |  |
| P2.6.HE.5966.1070 |  | Pull Wire - In From Distribution Panels / Out to Branch Circuits / L6 / South / 5966 | 5d | 2025-11-10 A | 2025-11-14 A | P2.6.HE.5966.1060 | 100% |  |
| P2.6.HE.5966.1080 |  | Panelboards, Interconnect Wiring, and Remaining Room Buildout of All Systems / L6 / South / 5966 | 10d | 2025-12-01 | 2025-12-12 | P2.6.HE.5966.1060, BP1.262.3.100, BP1.262.3.210 |  | 26d |
| P2.6.HE.5966.1090 |  | Test & Terminate / L6 / South / 5966 | 5d | 2025-12-15 | 2025-12-19 | P2.6.HE.5966.1080, P2.6.HE.5966.1070 |  | 26d |
| P2.6.HE.5966.1100 |  | Paint - Finish Coat / L6 / South / 5966 | 2d | 2025-12-22 | 2025-12-23 | P2.6.HE.5966.1090 |  | 26d |
| P2.6.HE.5966.1110 |  | Trim All MEPF Finishes / L6 / South / 5966 | 2d | 2025-12-24 | 2025-12-26 | P2.6.HE.5966.1100 |  | 26d |
| P2.6.HE.5966.1120 |  | Flooring / L6 / South / 5966 | 2d | 2025-12-29 | 2025-12-30 | P2.6.HE.5966.1110 |  | 26d |
| P2.6.HE.5966.1130 |  | Doors & Hardware / L6 / South / 5966 | 2d | 2025-12-31 | 2026-01-02 | P2.6.HE.5966.1120 |  | 26d |
| P2.6.HE.5966.1140 |  | Panels Ready to Energize - Lock Doors and Limit Access / L6 / South / 5966 | 0d | 2026-01-02 | 2026-01-02 | P2.6.HE.5966.1090, P2.6.HE.5966.1130 FF |  | 26d |
|  | 8 | **House Electrical Room 6-2947** |  | 2025-06-02 | 2026-01-02 |  |  |  |
| P2.6.HE.2947.1000 |  | Framing and Blocking / L6 / North / 2947 | 3d | 2025-06-02 A | 2025-06-09 A | P2.L6.N.1090 | 100% |  |
| P2.6.HE.2947.1010 |  | In Wall Rough In / L6 / North / 2947 | 2d | 2025-06-09 A | 2025-06-16 A | P2.6.HE.2947.1000 | 100% |  |
| P2.6.HE.2947.1020 |  | Inspections - Wall Close In / L6 / North / 2947 | 2d | 2025-06-11 A | 2025-06-18 A | P2.6.HE.2947.1010 | 100% |  |
| P2.6.HE.2947.1030 |  | Hang-Tape-Finish / L6 / North / 2947 | 5d | 2025-06-23 A | 2025-06-30 A | P2.6.HE.2947.1020, P2.MR.W.160 | 100% |  |
| P2.6.HE.2947.1040 |  | Paint Prime & 1st Coat / L6 / North / 2947 | 2d | 2025-07-01 A | 2025-07-03 A | P2.6.HE.2947.1030 | 100% |  |
| P2.6.HE.2947.1050 |  | Cans/Troughs/Backboxes/XFMRs / L6 / North / 2947 | 5d | 2025-07-05 A | 2025-07-09 A | P2.6.HE.2947.1040 | 100% |  |
| P2.6.HE.2947.1060 |  | Risers and OH Conduit Connections / L6 / North / 2947 | 5d | 2025-07-08 A | 2025-07-10 A | P2.6.HE.2947.1050 | 100% |  |
| P2.6.HE.2947.1070 |  | Pull Wire - In From Distribution Panels / Out to Branch Circuits / L6 / North / 2947 | 5d | 2025-11-03 A | 2025-11-07 A | P2.6.HE.2947.1060 | 100% |  |
| P2.6.HE.2947.1080 |  | Panelboards, Interconnect Wiring, and Remaining Room Buildout of All Systems / L6 / North / 2947 | 10d | 2025-12-01 | 2025-12-12 | BP1.262.3.100, BP1.262.3.210, P2.6.HE.2947.1060 |  | 26d |
| P2.6.HE.2947.1090 |  | Test & Terminate / L6 / North / 2947 | 5d | 2025-12-15 | 2025-12-19 | P2.6.HE.2947.1080, P2.6.HE.2947.1070 |  | 26d |
| P2.6.HE.2947.1100 |  | Paint - Finish Coat / L6 / North / 2947 | 2d | 2025-12-22 | 2025-12-23 | P2.6.HE.2947.1090 |  | 26d |
| P2.6.HE.2947.1110 |  | Trim All MEPF Finishes / L6 / North / 2947 | 2d | 2025-12-24 | 2025-12-26 | P2.6.HE.2947.1100 |  | 26d |
| P2.6.HE.2947.1120 |  | Flooring / L6 / North / 2947 | 2d | 2025-12-29 | 2025-12-30 | P2.6.HE.2947.1110 |  | 26d |
| P2.6.HE.2947.1130 |  | Doors & Hardware / L6 / North / 2947 | 2d | 2025-12-31 | 2026-01-02 | P2.6.HE.2947.1120 |  | 26d |
| P2.6.HE.2947.1140 |  | Panels Ready to Energize - Lock Doors and Limit Access / L6 / North / 2947 | 0d | 2026-01-02 | 2026-01-02 | P2.6.HE.2947.1090, P2.6.HE.2947.1130 FF |  | 26d |
|  | 7 | **House Electrical Room 6-2803** |  | 2025-06-02 | 2026-01-02 |  |  |  |
| P2.6.HE.2803.1000 |  | Framing and Blocking / L6 / North / 2803 | 3d | 2025-06-02 A | 2025-06-09 A | P2.L6.N.1090 | 100% |  |
| P2.6.HE.2803.1010 |  | In Wall Rough In / L6 / North / 2803 | 2d | 2025-06-06 A | 2025-06-16 A | P2.6.HE.2803.1000 | 100% |  |
| P2.6.HE.2803.1020 |  | Inspections - Wall Close In / L6 / North / 2803 | 2d | 2025-06-11 A | 2025-06-18 A | P2.6.HE.2803.1010 | 100% |  |
| P2.6.HE.2803.1030 |  | Hang-Tape-Finish / L6 / North / 2803 | 5d | 2025-07-07 A | 2025-07-10 A | P2.6.HE.2803.1020, P2.FAC.2.Z1.190, P2.MR.2-8.140 | 100% |  |
| P2.6.HE.2803.1040 |  | Paint Prime & 1st Coat / L6 / North / 2803 | 2d | 2025-07-28 A | 2025-07-30 A | P2.6.HE.2803.1030 | 100% |  |
| P2.6.HE.2803.1050 |  | Cans/Troughs/Backboxes/XFMRs / L6 / North / 2803 | 5d | 2025-08-27 A | 2025-09-03 A | P2.6.HE.2803.1040 | 100% |  |
| P2.6.HE.2803.1060 |  | Risers and OH Conduit Connections / L6 / North / 2803 | 5d | 2025-09-08 A | 2025-09-17 A | P2.6.HE.2803.1050 | 100% |  |
| P2.6.HE.2803.1070 |  | Pull Wire - In From Distribution Panels / Out to Branch Circuits / L6 / North / 2803 | 5d | 2025-11-05 A | 2025-11-11 A | P2.6.HE.2803.1060 | 100% |  |
| P2.6.HE.2803.1080 |  | Panelboards, Interconnect Wiring, and Remaining Room Buildout of All Systems / L6 / North / 2803 | 10d | 2025-12-01 | 2025-12-12 | BP1.262.3.100, BP1.262.3.210, P2.6.HE.2803.1060 |  | 26d |
| P2.6.HE.2803.1090 |  | Test & Terminate / L6 / North / 2803 | 5d | 2025-12-15 | 2025-12-19 | P2.6.HE.2803.1070, P2.6.HE.2803.1080 |  | 26d |
| P2.6.HE.2803.1100 |  | Paint - Finish Coat / L6 / North / 2803 | 2d | 2025-12-22 | 2025-12-23 | P2.6.HE.2803.1090 |  | 26d |
| P2.6.HE.2803.1110 |  | Trim All MEPF Finishes / L6 / North / 2803 | 2d | 2025-12-24 | 2025-12-26 | P2.6.HE.2803.1100 |  | 26d |
| P2.6.HE.2803.1120 |  | Flooring / L6 / North / 2803 | 2d | 2025-12-29 | 2025-12-30 | P2.6.HE.2803.1110 |  | 26d |
| P2.6.HE.2803.1130 |  | Doors & Hardware / L6 / North / 2803 | 2d | 2025-12-31 | 2026-01-02 | P2.6.HE.2803.1120 |  | 26d |
| P2.6.HE.2803.1140 |  | Panels Ready to Energize - Lock Doors and Limit Access / L6 / North / 2803 | 0d | 2026-01-02 | 2026-01-02 | P2.6.HE.2803.1090, P2.6.HE.2803.1130 FF |  | 26d |
|  | 6 | **House Electrical Room 6-5959** |  | 2025-05-26 | 2026-01-02 |  |  |  |
| P2.6.HE.5959.1000 |  | Framing and Blocking / L6 / South / 5959 | 3d | 2025-05-26 A | 2025-05-30 A | P2.L6.S.1090 | 100% |  |
| P2.6.HE.5959.1010 |  | In Wall Rough In / L6 / South / 5959 | 2d | 2025-06-09 A | 2025-06-16 A | P2.6.HE.5959.1000 | 100% |  |
| P2.6.HE.5959.1020 |  | Inspections - Wall Close In / L6 / South / 5959 | 2d | 2025-06-11 A | 2025-06-18 A | P2.6.HE.5959.1010 | 100% |  |
| P2.6.HE.5959.1030 |  | Hang-Tape-Finish / L6 / South / 5959 | 5d | 2025-06-19 A | 2025-06-30 A | P2.6.HE.5959.1020, P2.FAC.2.Z1.180, P2.L11.5-9.140 | 100% |  |
| P2.6.HE.5959.1040 |  | Paint Prime & 1st Coat / L6 / South / 5959 | 2d | 2025-07-28 A | 2025-07-30 A | P2.6.HE.5959.1030 | 100% |  |
| P2.6.HE.5959.1050 |  | Cans/Troughs/Backboxes/XFMRs / L6 / South / 5959 | 5d | 2025-08-25 A | 2025-08-27 A | P2.6.HE.5959.1040 | 100% |  |
| P2.6.HE.5959.1060 |  | Risers and OH Conduit Connections / L6 / South / 5959 | 5d | 2025-08-27 A | 2025-09-11 A | P2.6.HE.5959.1050 | 100% |  |

| ID | WBS | Task | Duration | Start | Finish | Predecessors | Complete | Total float |
| --- | --- | --- | --- | --- | --- | --- | --- | --- |
| P2.6.HE.5959.1070 |  | Pull Wire - In From Distribution Panels / Out to Branch Circuits / L6 / South / 5959 | 5d | 2025-11-03 A | 2025-11-07 A | P2.6.HE.5959.1060 | 100% |  |
| P2.6.HE.5959.1080 |  | Panelboards, Interconnect Wiring, and Remaining Room Buildout of All Systems / L6 / South / 5959 | 10d | 2025-12-01 | 2025-12-12 | BP1.262.3.100, BP1.262.3.210, P2.6.HE.5959.1060 |  | 26d |
| P2.6.HE.5959.1090 |  | Test & Terminate / L6 / South / 5959 | 5d | 2025-12-15 | 2025-12-19 | P2.6.HE.5959.1070, P2.6.HE.5959.1080 |  | 26d |
| P2.6.HE.5959.1100 |  | Paint - Finish Coat / L6 / South / 5959 | 2d | 2025-12-22 | 2025-12-23 | P2.6.HE.5959.1090 |  | 26d |
| P2.6.HE.5959.1110 |  | Trim All MEPF Finishes / L6 / South / 5959 | 2d | 2025-12-24 | 2025-12-26 | P2.6.HE.5959.1100 |  | 26d |
| P2.6.HE.5959.1120 |  | Flooring / L6 / South / 5959 | 2d | 2025-12-29 | 2025-12-30 | P2.6.HE.5959.1110 |  | 26d |
| P2.6.HE.5959.1130 |  | Doors & Hardware / L6 / South / 5959 | 2d | 2025-12-31 | 2026-01-02 | P2.6.HE.5959.1120 |  | 26d |
| P2.6.HE.5959.1140 |  | Panels Ready to Energize - Lock Doors and Limit Access / L6 / South / 5959 | 0d | 2026-01-02 | 2026-01-02 | P2.6.HE.5959.1090, P2.6.HE.5959.1130 FF |  | 26d |
|  | 2 | **L6 / IT Closets** |  | 2025-08-11 | 2026-04-16 |  |  |  |
|  | 1 | **IT Closet 6-2818** |  | 2025-08-11 | 2026-04-16 |  |  |  |
| P2.6.IT.2818.130 |  | HVAC Equipment / L6 / North / 2818 | 5d | 2025-08-11 A | 2025-09-18 A | P2.6.IT.2818.110 | 100% |  |
| P2.6.IT.2818.100 |  | Hang Plywood Backboards / L6 / North / 2818 | 2d | 2025-09-16 A | 2025-09-17 A | P2.L6.N.1140 | 100% |  |
| P2.6.IT.2818.110 |  | Paint Prime & 1st Coat / L6 / North / 2818 | 2d | 2025-09-29 A | 2025-09-30 A | P2.6.IT.2818.100 | 100% |  |
| P2.6.IT.2818.120 |  | Electrical Panels / Conduit Connections / Wire Terminations / L6 / North / 2818 | 5d | 2025-12-01 | 2025-12-05 | P2.6.IT.2818.110, P2.6.HE.2803.1070 FF |  | 158d |
| P2.6.IT.2818.140 |  | Trim all MEPF / L6 / North / 2818 | 2d | 2025-12-08 | 2025-12-09 | P2.6.IT.2818.130, P2.6.IT.2818.120 |  | 158d |
| P2.6.IT.2818.150 |  | Flooring / L6 / North / 2818 | 5d | 2025-12-10 | 2025-12-16 | P2.6.IT.2818.140 |  | 158d |
| P2.6.IT.2818.180 |  | Grounding and Bonding / L6 / North / 2818 | 2d | 2025-12-17 | 2025-12-18 | P2.6.IT.2818.150 |  | 158d |
| P2.6.IT.2818.170 |  | OH Cable Tray / L6 / North / 2818 | 5d | 2026-02-04 | 2026-02-10 | P2.L6.N.1390, P2.L6.S.1390, P2.L6.INT.S.1340, P2.L6.INT.N.1340 |  | 122d |
| P2.6.IT.2818.260 |  | Room Ready - CIT / L6 / North / 2818 | 5d | 2026-02-11 | 2026-02-17 | P2.6.IT.2818.150, P2.6.IT.2818.170, P2.6.IT.2818.180 |  | 122d |
| P2.6.IT.2818.160 |  | Equipment Racks and Ladders / L6 / North / 2818 | 5d | 2026-02-18 | 2026-02-24 | P2.6.IT.2818.150, P2.6.IT.2818.260 |  | 122d |
| P2.6.IT.2818.190 |  | Pull Wire - Backbone Cabling Into Racks / L6 / North / 2818 | 5d | 2026-02-25 | 2026-03-03 | P2.6.IT.2818.160, P2.6.IT.2818.260 |  | 137d |
| P2.6.IT.2818.200 |  | Pull Wire - Horizontal Cabling Out to Termination Points / L6 / North / 2818 | 20d | 2026-02-25 | 2026-03-24 | P2.6.IT.2818.160, P2.6.IT.2818.260 |  | 122d |
| P2.6.IT.2818.210 |  | Paint - Finish Coat / L6 / North / 2818 | 2d | 2026-03-25 | 2026-03-26 | P2.6.IT.2818.190, P2.6.IT.2818.200 |  | 122d |
| P2.6.IT.2818.220 |  | Terminations and Punch Downs - All Cabling / L6 / North / 2818 | 15d | 2026-03-27 | 2026-04-16 | P2.6.IT.2818.210, P2.6.IT.2818.160, P2.6.IT.2818.260 |  | 122d |
| P2.6.IT.2818.230 |  | Doors & Hardware / L6 / North / 2818 | 2d | 2026-03-27 | 2026-03-30 | P2.6.IT.2818.210 |  | 132d |
| P2.6.IT.2818.240 |  | Energize Elec Panels Serving Comms Racks / L6 / North / 2818 | 3d | 2026-03-31 | 2026-04-02 | P2.6.HE.2803.1140, P2.6.IT.2818.230, CX.B2.SWGR.1010, CX.B2.MVEE.1010 |  | 132d |
| P2.6.IT.2818.250 |  | Comms Racks In Service / L6 / North / 2818 | 0d | 2026-04-16 | 2026-04-16 | P2.6.IT.2818.240, P2.6.IT.2818.220 |  | 122d |
|  | 2 | **IT Closet 6-2865** |  | 2025-08-11 | 2026-03-26 |  |  |  |
| P2.6.IT.2865.130 |  | HVAC Equipment / L6 / South / 2865 | 5d | 2025-08-11 A | 2025-09-18 A | P2.6.IT.2865.110 | 100% |  |
| P2.6.IT.2865.100 |  | Hang Plywood Backboards / L6 / South / 2865 | 2d | 2025-09-24 A | 2025-09-29 A | P2.L6.S.1140 | 100% |  |
| P2.6.IT.2865.110 |  | Paint Prime & 1st Coat / L6 / South / 2865 | 2d | 2025-09-29 A | 2025-09-30 A | P2.6.IT.2865.100 | 100% |  |
| P2.6.IT.2865.120 |  | Electrical Panels / Conduit Connections / Wire Terminations / L6 / South / 2865 | 5d | 2025-10-24 A | 2025-10-31 A | P2.6.IT.2865.110, P2.6.HE.2947.1070 FF | 100% |  |
| P2.6.IT.2865.140 |  | Trim all MEPF / L6 / South / 2865 | 2d | 2025-12-01 | 2025-12-02 | P2.6.IT.2865.120, P2.6.IT.2865.130 |  | 178d |
| P2.6.IT.2865.150 |  | Flooring / L6 / South / 2865 | 5d | 2025-12-03 | 2025-12-09 | P2.6.IT.2865.140 |  | 178d |
| P2.6.IT.2865.180 |  | Grounding and Bonding / L6 / South / 2865 | 2d | 2025-12-10 | 2025-12-11 | P2.6.IT.2865.150 |  | 178d |
| P2.6.IT.2865.170 |  | OH Cable Tray / L6 / South / 2865 | 5d | 2026-02-04 | 2026-02-10 | P2.L6.S.1390, P2.L6.N.1390, P2.L6.INT.S.1340, P2.L6.INT.N.1340 |  | 137d |
| P2.6.IT.2865.260 |  | Room Ready - CIT / L6 / South / 2865 | 5d | 2026-02-11 | 2026-02-17 | P2.6.IT.2865.150, P2.6.IT.2865.170, P2.6.IT.2865.180 |  | 137d |
| P2.6.IT.2865.160 |  | Equipment Racks and Ladders / L6 / South / 2865 | 5d | 2026-02-18 | 2026-02-24 | P2.6.IT.2865.150, P2.6.IT.2865.260 |  | 137d |
| P2.6.IT.2865.190 |  | Pull Wire - Backbone Cabling Into Racks / L6 / South / 2865 | 5d | 2026-02-25 | 2026-03-03 | P2.6.IT.2865.160, P2.6.IT.2865.260 |  | 137d |
| P2.6.IT.2865.200 |  | Pull Wire - Horizontal Cabling Out to Termination Points / L6 / South / 2865 | 5d | 2026-02-25 | 2026-03-03 | P2.6.IT.2865.160, P2.6.IT.2865.260 |  | 137d |
| P2.6.IT.2865.210 |  | Paint - Finish Coat / L6 / South / 2865 | 2d | 2026-03-04 | 2026-03-05 | P2.6.IT.2865.190, P2.6.IT.2865.200 |  | 137d |
| P2.6.IT.2865.220 |  | Terminations and Punch Downs - All Cabling / L6 / South / 2865 | 15d | 2026-03-06 | 2026-03-26 | P2.6.IT.2865.210, P2.6.IT.2865.160, P2.6.IT.2865.260 |  | 137d |
| P2.6.IT.2865.230 |  | Doors & Hardware / L6 / South / 2865 | 2d | 2026-03-06 | 2026-03-09 | P2.6.IT.2865.210 |  | 147d |
| P2.6.IT.2865.240 |  | Energize Elec Panels Serving Comms Racks / L6 / South / 2865 | 3d | 2026-03-10 | 2026-03-12 | P2.6.HE.2803.1140, P2.6.HE.2947.1140, P2.6.IT.2865.230, CX.B2.SWGR.1010, CX.B2.MVEE.1010 |  | 147d |
| P2.6.IT.2865.250 |  | Comms Racks In Service / L6 / South / 2865 | 0d | 2026-03-26 | 2026-03-26 | P2.6.IT.2865.240, P2.6.IT.2865.220 |  | 137d |
|  | 3 | **IT Closet 6-3929** |  | 2025-08-11 | 2026-03-26 |  |  |  |
| P2.6.IT.3929.130 |  | HVAC Equipment / L6 / South / 3929 | 5d | 2025-08-11 A | 2025-09-18 A | P2.6.IT.3929.110 | 100% |  |
| P2.6.IT.3929.100 |  | Hang Plywood Backboards / L6 / South / 3929 | 2d | 2025-09-16 A | 2025-09-17 A | P2.L6.S.1140 | 100% |  |
| P2.6.IT.3929.110 |  | Paint Prime & 1st Coat / L6 / South / 3929 | 2d | 2025-09-29 A | 2025-09-30 A | P2.6.IT.3929.100 | 100% |  |
| P2.6.IT.3929.120 |  | Electrical Panels / Conduit Connections / Wire Terminations / L6 / South / 3929 | 5d | 2025-10-24 A | 2025-10-31 A | P2.6.IT.3929.110, P2.6.HE.5959.1070 FF | 100% |  |
| P2.6.IT.3929.140 |  | Trim all MEPF / L6 / South / 3929 | 2d | 2025-12-01 | 2025-12-02 | P2.6.IT.3929.130, P2.6.IT.3929.120 |  | 178d |
| P2.6.IT.3929.150 |  | Flooring / L6 / South / 3929 | 5d | 2025-12-03 | 2025-12-09 | P2.6.IT.3929.140 |  | 178d |
| P2.6.IT.3929.180 |  | Grounding and Bonding / L6 / South / 3929 | 2d | 2025-12-10 | 2025-12-11 | P2.6.IT.3929.150 |  | 178d |
| P2.6.IT.3929.170 |  | OH Cable Tray / L6 / South / 3929 | 5d | 2026-02-04 | 2026-02-10 | P2.L6.S.1390, P2.L6.N.1390, P2.L6.INT.S.1340, P2.L6.INT.N.1340 |  | 137d |
| P2.6.IT.3929.260 |  | Room Ready - CIT / L6 / South / 3929 | 5d | 2026-02-11 | 2026-02-17 | P2.6.IT.3929.150, P2.6.IT.3929.170, P2.6.IT.3929.180 |  | 137d |
| P2.6.IT.3929.160 |  | Equipment Racks and Ladders / L6 / South / 3929 | 5d | 2026-02-18 | 2026-02-24 | P2.6.IT.3929.150, P2.6.IT.3929.260 |  | 137d |
| P2.6.IT.3929.190 |  | Pull Wire - Backbone Cabling Into Racks / L6 / South / 3929 | 5d | 2026-02-25 | 2026-03-03 | P2.6.IT.3929.160, P2.6.IT.3929.260 |  | 137d |
| P2.6.IT.3929.200 |  | Pull Wire - Horizontal Cabling Out to Termination Points / L6 / South / 3929 | 5d | 2026-02-25 | 2026-03-03 | P2.6.IT.3929.160, P2.6.IT.3929.260 |  | 137d |
| P2.6.IT.3929.210 |  | Paint - Finish Coat / L6 / South / 3929 | 2d | 2026-03-04 | 2026-03-05 | P2.6.IT.3929.190, P2.6.IT.3929.200 |  | 137d |
| P2.6.IT.3929.220 |  | Terminations and Punch Downs - All Cabling / L6 / South / 3929 | 15d | 2026-03-06 | 2026-03-26 | P2.6.IT.3929.210, P2.6.IT.3929.160, P2.6.IT.3929.260 |  | 137d |
| P2.6.IT.3929.230 |  | Doors & Hardware / L6 / South / 3929 | 2d | 2026-03-06 | 2026-03-09 | P2.6.IT.3929.210 |  | 147d |
| P2.6.IT.3929.240 |  | Energize Elec Panels Serving Comms Racks / L6 / South / 3929 | 3d | 2026-03-10 | 2026-03-12 | P2.6.HE.5959.1140, P2.6.IT.3929.230, CX.B2.SWGR.1010, CX.B2.MVEE.1010 |  | 147d |
| P2.6.IT.3929.250 |  | Comms Racks In Service / L6 / South / 3929 | 0d | 2026-03-26 | 2026-03-26 | P2.6.IT.3929.240, P2.6.IT.3929.220 |  | 137d |
|  | 4 | **FINISHES - CORE & SUPPORT SPACES / Level 6** |  | 2025-06-16 | 2026-11-30 |  |  |  |
|  | 7KSF11 | **Chem Chief - MD Chief - Pre/Post Amp - Research - Z1/Z2 / Level 6** |  | 2026-03-11 | 2026-10-26 |  |  |  |
|  | 1 | **Finishes** |  | 2026-03-11 | 2026-10-26 |  |  |  |
| P2.L6.F.CS.1000 |  | Paint Prime & 1st Coat Walls / L6 / Chem, MD Chief Z1,Z2 | 5d | 2026-03-11 | 2026-03-17 | P2.L6.S.1550 |  | 48d |
| P2.L6.F.CS.1020 |  | R/I - Ceiling Assemblies & Supports - All Trades (A/V, Oper Part, Glass Part, etc.) / L6 / Chem, MD Chief Z1,Z2 | 5d | 2026-03-18 | 2026-03-24 | P2.L6.F.CS.1000 |  | 80d |
| P2.L6.F.CS.1010 |  | T-Grid / L6 / Chem, MD Chief Z1,Z2 | 5d | 2026-03-25 | 2026-03-31 | P2.L6.F.CS.1020 |  | 80d |
| P2.L6.F.CS.1050 |  | Sprinkler Heads in T-Grid / L6 / Chem, MD Chief Z1,Z2 | 5d | 2026-04-01 | 2026-04-07 | P2.L6.F.CS.1010 |  | 80d |

| ID | WBS | Task | Duration | Start | Finish | Predecessors | Total float |
| --- | --- | --- | --- | --- | --- | --- | --- |
| P2.L6.F.CS.1030 |  | Diffusers in T-Grid / L6 / Chem, MD Chief Z1,Z2 | 5d | 2026-04-08 | 2026-04-14 | P2.L6.F.CS.1010, P2.L6.F.CS.1050 | 80d |
| P2.L6.F.CS.1040 |  | Lights & Elec Devices in T-Grid / L6 / Chem, MD Chief Z1,Z2 | 10d | 2026-04-15 | 2026-04-28 | P2.L6.F.CS.1010, P2.L6.F.CS.1030 | 80d |
| P2.L6.F.CS.1070 |  | Fire Alarm in T-Grid / L6 / Chem, MD Chief Z1,Z2 | 5d | 2026-04-29 | 2026-05-05 | P2.L6.F.CS.1010, P2.L6.F.CS.1040 | 80d |
| P2.L6.F.CS.1060 |  | Low Voltage in T-Grid / L6 / Chem, MD Chief Z1,Z2 | 5d | 2026-05-06 | 2026-05-12 | P2.L6.F.CS.1070, P2.L6.F.CS.1010 | 80d |
| P2.L6.F.CS.2320 |  | Ceiling Service Panel / L6 / Chem, MD Chief Z1,Z2 | 1d | 2026-05-13 | 2026-05-13 | P2.L6.F.CS.1060, P2.L6.F.CS.1010 | 80d |
| P2.L6.F.CS.1080 |  | OH Ceiling Signoff / L6 / Chem, MD Chief Z1,Z2 | 5d | 2026-05-14 | 2026-05-20 | P2.L6.F.CS.2320, P2.L6.F.CS.1060, P2.L6.F.CS.1070, P2.L6.F.CS.1030, P2.L6.F.CS.1040, P2.L6.F.CS.1050 | 80d |
| P2.L6.F.CS.2300 |  | Casework (Before Flooring) / L6 / Chem, MD Chief Z1,Z2 | 11d | 2026-05-21 | 2026-06-05 | P2.L6.F.CS.1000, P2.L6.F.CS.1080 | 80d |
| P2.L6.F.CS.1300 |  | Fumehood Equipment Install / L6 / Chem, MD Chief Z1,Z2 | 1d | 2026-06-05 | 2026-06-05 | P2.L6.F.CS.2300 FF | 80d |
| P2.L6.F.CS.1090 |  | Millwork / L6 / Chem, MD Chief Z1,Z2 | 5d | 2026-06-08 | 2026-06-12 | P2.L6.F.CS.2300, P2.L6.F.CS.1080 | 81d |
| P2.L6.F.CS.1100 |  | Plumbing Fixtures / L6 / Chem, MD Chief Z1,Z2 | 5d | 2026-06-08 | 2026-06-12 | P2.L6.F.CS.1090 FF, P2.L6.F.CS.1080, PCO.830.1140 | 139d |
| P2.L6.F.CS.1310 |  | Fumehood Equipment MEP Connection / L6 / Chem, MD Chief Z1,Z2 | 1d | 2026-06-08 | 2026-06-08 | P2.L6.F.CS.1300 | 80d |
| P2.L6.F.CS.1110 |  | Drop Ceiling Tile / L6 / Chem, MD Chief Z1,Z2 | 5d | 2026-06-09 | 2026-06-15 | P2.L6.F.CS.2320, P2.L6.F.CS.1310, P2.L6.F.CS.1080 | 80d |
| P2.L6.F.CS.1120 |  | Floor Prep / L6 / Chem, MD Chief Z1,Z2 | 5d | 2026-06-16 | 2026-06-22 | P2.L6.F.CS.2300, P2.L6.F.CS.1110, P2.L6.F.CS.1090 | 80d |
| P2.L6.F.CS.1130 |  | Floor Finishes / L6 / Chem, MD Chief Z1,Z2 | 5d | 2026-06-23 | 2026-06-29 | P2.L6.F.CS.1120 | 80d |
| P2.L6.F.CS.2310 |  | Casework (After Flooring) / L6 / Chem, MD Chief Z1,Z2 | 2d | 2026-06-30 | 2026-07-01 | P2.L6.F.CS.1130 | 80d |
| P2.L6.F.CS.2340 |  | Interior Glazing / L6 / Chem, MD Chief Z1,Z2 | 5d | 2026-06-30 | 2026-07-07 | P2.L6.F.CS.1130, BP7.088.3.100 | 83d |
| P2.L6.F.CS.2330 |  | Remaining Equipment Post Flooring / L6 / Chem, MD Chief Z1,Z2 | 1d | 2026-07-02 | 2026-07-02 | P2.L6.F.CS.2310, P2.L6.F.CS.1130 | 80d |
| P2.L6.F.CS.1140 |  | Doors & Hardware / L6 / Chem, MD Chief Z1,Z2 | 5d | 2026-07-06 | 2026-07-10 | P2.L6.F.CS.2310, P2.L6.F.CS.2330, P2.L6.F.CS.1130 | 80d |
| P2.L6.F.CS.1150 |  | Paint - Finish Coat / L6 / Chem, MD Chief Z1,Z2 | 5d | 2026-07-13 | 2026-07-17 | P2.L6.F.CS.1140, P2.L6.F.CS.1130, P2.L6.F.CS.2340 | 80d |
| P2.L6.F.CS.1200 |  | Floor Base / L6 / Chem, MD Chief Z1,Z2 | 5d | 2026-07-20 | 2026-07-24 | P2.L6.F.CS.1150 | 80d |
| P2.L6.F.CS.1180 |  | Building Specialities / L6 / Chem, MD Chief Z1,Z2 | 5d | 2026-07-27 | 2026-07-31 | P2.L6.F.CS.1150, P2.L6.F.CS.1200 | 80d |
| P2.L6.F.CS.1210 |  | Demountable Partitions / L6 / Chem, MD Chief Z1,Z2 | 5d | 2026-07-27 | 2026-07-31 | P2.L6.F.CS.1200 | 90d |
| P2.L6.F.CS.1330 |  | Wall Protection / L6 / Corr & Lobbies | 5d | 2026-07-27 | 2026-07-31 | P2.L6.F.CS.1200, BP7.102.3.300 | 105d |
| P2.L6.F.CS.1170 |  | Trim T-Stats / L6 / Chem, MD Chief Z1,Z2 | 5d | 2026-08-03 | 2026-08-07 | P2.L6.F.CS.1150, P2.L6.F.CS.1180 | 80d |
| P2.L6.F.CS.1160 |  | Set AV/IT Devices and Configure / L6 / Chem, MD Chief Z1,Z2 | 5d | 2026-08-10 | 2026-08-14 | P2.L6.F.CS.1150, P2.L6.F.CS.1170 | 80d |
| P2.L6.F.CS.1220 |  | Trim Electrical / L6 / Chem, MD Chief Z1,Z2 | 5d | 2026-08-17 | 2026-08-21 | P2.L6.F.CS.1160, P2.L6.F.CS.1210, P2.L6.F.CS.1170 SS | 80d |
| P2.L6.F.CS.1230 |  | Trim Telephone/ Data / L6 / Chem, MD Chief Z1,Z2 | 5d | 2026-08-24 | 2026-08-28 | P2.L6.F.CS.1220, P2.L6.F.CS.1220 SS | 80d |
| P2.L6.F.CS.1190 |  | Interior Building Signage / L6 / Chem, MD Chief Z1,Z2 | 5d | 2026-08-31 | 2026-09-04 | P2.L6.F.CS.1150, P2.L6.F.CS.1230 | 80d |
| P2.L6.F.CS.1240 |  | Work Completion List - Finishes / L6 / Chem, MD Chief Z1,Z2 | 5d | 2026-09-08 | 2026-09-14 | P2.L6.F.CS.1160, P2.L6.F.CS.2330, P2.L6.F.CS.1190, P2.L6.F.CS.1140, P2.L6.F.CS.1180, P2.L6.F.CS.1100, P2.L6.F.CS.1230, P2.L6.F.CS.1330 | 80d |
| P2.L6.F.CS.1250 |  | Rough Clean / L6 / Chem, MD Chief Z1,Z2 | 5d | 2026-09-15 | 2026-09-21 | P2.L6.F.CS.1240 | 80d |
| P2.L6.F.CS.1260 |  | FF&E / L6 / Chem, MD Chief Z1,Z2 | 5d | 2026-09-22 | 2026-09-28 | P2.L6.F.CS.1250 | 80d |
| P2.L6.F.CS.1270 |  | Prepare Punchlist / L6 / Chem, MD Chief Z1,Z2 | 5d | 2026-09-29 | 2026-10-05 | P2.L6.F.CS.1260 | 80d |
| P2.L6.F.CS.1280 |  | Correct Punchlist / L6 / Chem, MD Chief Z1,Z2 | 10d | 2026-10-06 | 2026-10-19 | P2.L6.F.CS.1270 | 80d |
| P2.L6.F.CS.1290 |  | Final Clean / L6 / Chem, MD Chief Z1,Z2 | 5d | 2026-10-20 | 2026-10-26 | P2.L6.F.CS.1280 | 80d |
|  | 2 | **Closeout** |  |  |  |  |  |
|  | 7KSF1 | **L6 - Z2/Z3 - Chief Neuro / Offices - Z2/Z3 / Level 6** |  | 2026-04-02 | 2026-11-09 |  |  |
|  | 1 | **Finishes** |  | 2026-04-02 | 2026-11-09 |  |  |
| P2.L6.F.CS.2000 |  | Paint Prime & 1st Coat Walls / L6 / Neuro Chief Ofc Z2,Z3 | 5d | 2026-04-02 | 2026-04-08 | P2.L6.N.1550, P2.L6.F.CS.1000 | 37d |
| P2.L6.F.CS.2020 |  | R/I - Ceiling Assemblies & Supports - All Trades (A/V, Oper Part, Glass Part, etc.) / L6 / Neuro Chief Ofc Z2,Z3 | 5d | 2026-04-09 | 2026-04-15 | P2.L6.F.CS.2000 | 70d |
| P2.L6.F.CS.2010 |  | T-Grid / L6 / Neuro Chief Ofc Z2,Z3 | 5d | 2026-04-16 | 2026-04-22 | P2.L6.F.CS.2020 | 70d |
| P2.L6.F.CS.2050 |  | Sprinkler Heads in T-Grid / L6 / Neuro Chief Ofc Z2,Z3 | 5d | 2026-04-23 | 2026-04-29 | P2.L6.F.CS.2010 | 70d |
| P2.L6.F.CS.2030 |  | Diffusers in T-Grid / L6 / Neuro Chief Ofc Z2,Z3 | 5d | 2026-04-30 | 2026-05-06 | P2.L6.F.CS.2050, P2.L6.F.CS.2010 | 70d |
| P2.L6.F.CS.2040 |  | Lights & Elec Devices in T-Grid / L6 / Neuro Chief Ofc Z2,Z3 | 10d | 2026-05-07 | 2026-05-20 | P2.L6.F.CS.2030, P2.L6.F.CS.2010 | 70d |
| P2.L6.F.CS.2070 |  | Fire Alarm in T-Grid / L6 / Neuro Chief Ofc Z2,Z3 | 5d | 2026-05-21 | 2026-05-28 | P2.L6.F.CS.2010, P2.L6.F.CS.2040 | 70d |
| P2.L6.F.CS.2060 |  | Low Voltage in T-Grid / L6 / Neuro Chief Ofc Z2,Z3 | 5d | 2026-05-29 | 2026-06-04 | P2.L6.F.CS.2070, P2.L6.F.CS.2010 | 70d |
| P2.L6.F.CS.2080 |  | OH Ceiling Signoff / L6 / Neuro Chief Ofc Z2,Z3 | 5d | 2026-06-05 | 2026-06-11 | P2.L6.F.CS.2060, P2.L6.F.CS.2070, P2.L6.F.CS.2030, P2.L6.F.CS.2040, P2.L6.F.CS.2050 | 70d |
| P2.L6.F.CS.2110 |  | Drop Ceiling Tile / L6 / Neuro Chief Ofc Z2,Z3 | 5d | 2026-06-12 | 2026-06-18 | P2.L6.F.CS.2080 | 70d |
| P2.L6.F.CS.2090 |  | Millwork / L6 / Neuro Chief Ofc Z2,Z3 | 5d | 2026-06-19 | 2026-06-25 | P2.L6.F.CS.2080, P2.L6.F.CS.2110 | 70d |
| P2.L6.F.CS.2100 |  | Plumbing Fixtures / L6 / Neuro Chief Ofc Z2,Z3 | 5d | 2026-06-26 | 2026-07-02 | P2.L6.F.CS.2090 FF, P2.L6.F.CS.2080, P2.L6.F.CS.2090, PCO.830.1140 | 70d |
| P2.L6.F.CS.2120 |  | Floor Prep / L6 / Neuro Chief Ofc Z2,Z3 | 5d | 2026-07-06 | 2026-07-10 | P2.L6.F.CS.2110, P2.L6.F.CS.2090, P2.L6.F.CS.2100 | 70d |
| P2.L6.F.CS.2130 |  | Floor Finishes / L6 / Neuro Chief Ofc Z2,Z3 | 5d | 2026-07-13 | 2026-07-17 | P2.L6.F.CS.2120 | 70d |
| P2.L6.F.CS.2140 |  | Doors & Hardware / L6 / Neuro Chief Ofc Z2,Z3 | 5d | 2026-07-20 | 2026-07-24 | P2.L6.F.CS.2130 | 70d |
| P2.L6.F.CS.2350 |  | Interior Glazing / L6 / Neuro Chief Ofc Z2,Z3 | 2d | 2026-07-20 | 2026-07-21 | P2.L6.F.CS.2130 | 73d |
| P2.L6.F.CS.2150 |  | Paint - Finish Coat / L6 / Neuro Chief Ofc Z2,Z3 | 5d | 2026-07-27 | 2026-07-31 | P2.L6.F.CS.2140, P2.L6.F.CS.2130, P2.L6.F.CS.2350 | 70d |
| P2.L6.F.CS.2200 |  | Floor Base / L6 / Neuro Chief Ofc Z2,Z3 | 5d | 2026-08-03 | 2026-08-07 | P2.L6.F.CS.2150 | 70d |
| P2.L6.F.CS.2170 |  | Trim T-Stats / L6 / Neuro Chief Ofc Z2,Z3 | 5d | 2026-08-10 | 2026-08-14 | P2.L6.F.CS.2150, P2.L6.F.CS.2200 | 70d |
| P2.L6.F.CS.2210 |  | Demountable Partitions / L6 / Neuro Chief Ofc Z2,Z3 | 5d | 2026-08-10 | 2026-08-14 | P2.L6.F.CS.2200 | 75d |
| P2.L6.F.CS.2160 |  | Set AV/IT Devices and Configure / L6 / Neuro Chief Ofc Z2,Z3 | 5d | 2026-08-17 | 2026-08-21 | P2.L6.F.CS.2150, P2.L6.F.CS.2170 | 70d |
| P2.L6.F.CS.2220 |  | Trim Electrical / L6 / Neuro Chief Ofc Z2,Z3 | 5d | 2026-08-24 | 2026-08-28 | P2.L6.F.CS.2160, P2.L6.F.CS.2210, P2.L6.F.CS.2170 SS | 70d |
| P2.L6.F.CS.2230 |  | Trim Telephone/ Data / L6 / Neuro Chief Ofc Z2,Z3 | 5d | 2026-08-31 | 2026-09-04 | P2.L6.F.CS.2220 | 70d |
| P2.L6.F.CS.2180 |  | Building Specialities / L6 / Neuro Chief Ofc Z2,Z3 | 5d | 2026-09-08 | 2026-09-14 | P2.L6.F.CS.2150, P2.L6.F.CS.2230, P2.L6.F.CS.2160 | 70d |
| P2.L6.F.CS.2190 |  | Interior Building Signage / L6 / Neuro Chief Ofc Z2,Z3 | 5d | 2026-09-15 | 2026-09-21 | P2.L6.F.CS.2150, P2.L6.F.CS.2180 | 70d |
| P2.L6.F.CS.2240 |  | Work Completion List - Finishes / L6 / Neuro Chief Ofc Z2,Z3 | 5d | 2026-09-22 | 2026-09-28 | P2.L6.F.CS.2190, P2.L6.F.CS.2140, P2.L6.F.CS.2180, P2.L6.F.CS.2100, P2.L6.F.CS.2230, P2.L6.F.CS.2160 | 70d |
| P2.L6.F.CS.2250 |  | Rough Clean / L6 / Neuro Chief Ofc Z2,Z3 | 5d | 2026-09-29 | 2026-10-05 | P2.L6.F.CS.2240 | 70d |
| P2.L6.F.CS.2260 |  | FF&E / L6 / Neuro Chief Ofc Z2,Z3 | 5d | 2026-10-06 | 2026-10-12 | P2.L6.F.CS.2250 | 70d |
| P2.L6.F.CS.2270 |  | Prepare Punchlist / L6 / Neuro Chief Ofc Z2,Z3 | 5d | 2026-10-13 | 2026-10-19 | P2.L6.F.CS.2260 | 70d |
| P2.L6.F.CS.2280 |  | Correct Punchlist / L6 / Neuro Chief Ofc Z2,Z3 | 10d | 2026-10-20 | 2026-11-02 | P2.L6.F.CS.2270 | 70d |
| P2.L6.F.CS.2290 |  | Final Clean / L6 / Neuro Chief Ofc Z2,Z3 | 5d | 2026-11-03 | 2026-11-09 | P2.L6.F.CS.2280 | 70d |
|  | 2 | **Closeout** |  |  |  |  |  |
|  | 5 | **Bathrooms - Break Rooms - Locker Rooms / Level 6** |  | 2025-06-16 | 2026-06-17 |  |  |

| ID | WBS | Task | Duration | Start | Finish | Predecessors | Complete | Total float |
| --- | --- | --- | --- | --- | --- | --- | --- | --- |
|  | 4 | **Bathrooms 6-3952 / 6-3954** |  | 2025-06-16 | 2026-06-17 |  |  |  |
| P2.L6.BR.1000 |  | Plumbing - Set Pipe Carriers / L6 / South / Restrooms 395X | 5d | 2025-06-16 A | 2025-06-20 A | P2.L5.BR.2000 | 100% |  |
| P2.L6.BR.1010 |  | Countertop Support Framing / L6 / South / Restrooms 395X | 5d | 2025-12-01 | 2025-12-05 | P2.L6.S.1420 |  | 119d |
| P2.L6.BR.1020 |  | Frame - Chase Walls and Hard Lid Ceilings / L6 / South / Restrooms 395X | 5d | 2025-12-22 | 2025-12-29 | P2.L6.BR.1000, P2.L6.BR.1010 |  | 109d |
| P2.L6.BR.1030 |  | Plumbing - Test Pipe @ Chase Walls / L6 / South / Restrooms 395X | 5d | 2025-12-22 | 2025-12-29 | P2.L6.BR.1000 |  | 119d |
| P2.L6.BR.1050 |  | Trim Sprinkler Drops _ Hard Lids / L6 / South / Restrooms 395X | 5d | 2025-12-30 | 2026-01-06 | P2.L6.BR.1020 |  | 109d |
| P2.L6.BR.1060 |  | Duct Drops _ Hard Lids / L6 / South / Restrooms 395X | 5d | 2026-01-07 | 2026-01-13 | P2.L6.BR.1020, P2.L6.BR.1050 |  | 109d |
| P2.L6.BR.1080 |  | In Wall - Insulate Plumbing / L6 / South / Restrooms 395X | 5d | 2026-01-14 | 2026-01-20 | P2.L6.BR.1030, P2.L6.BR.1060 |  | 109d |
| P2.L6.BR.1040 |  | R/I - Electrical _ Hard Lids / L6 / South / Restrooms 395X | 5d | 2026-01-21 | 2026-01-27 | P2.L6.BR.1080, P2.L6.BR.1020 |  | 109d |
| P2.L6.BR.1070 |  | R/I - Fire Alarm _ Hard Lids / L6 / South / Restrooms 395X | 5d | 2026-01-28 | 2026-02-03 | P2.L6.BR.1020, P2.L6.BR.1040 |  | 109d |
| P2.L6.BR.1090 |  | Inspection - Close In - Chase Walls and Hard Lid Ceilings / L6 / South / Restrooms 395X | 5d | 2026-02-04 | 2026-02-10 | P2.L6.BR.1080, P2.L6.BR.1070, P2.L6.BR.1060, P2.L6.BR.1040, P2.L6.BR.1050 |  | 109d |
| P2.L6.BR.1100 |  | Hang-Tape-Finish _ Chase Walls and Hard Lids Ceilings / L6 / South / Restrooms 395X | 5d | 2026-02-11 | 2026-02-17 | P2.L6.BR.1090, P2.SUM.175 |  | 109d |
| P2.L6.BR.1110 |  | Paint Prime & 1st Coat _ Walls & Hard Lid Ceilings / L6 / South / Restrooms 395X | 5d | 2026-02-18 | 2026-02-24 | P2.L6.BR.1100 |  | 109d |
| P2.L6.BR.1140 |  | Ceiling Grid / L6 / South / Restrooms 395X | 5d | 2026-02-25 | 2026-03-03 | P2.L6.BR.1110 |  | 109d |
| P2.L6.BR.1170 |  | Trim Sprinkler Drops _ Ceiling Tiles / L6 / South / Restrooms 395X | 5d | 2026-03-04 | 2026-03-10 | P2.L6.BR.1140 |  | 109d |
| P2.L6.BR.1160 |  | Trim - HVAC G/R/D's / L6 / South / Restrooms 395X | 5d | 2026-03-11 | 2026-03-17 | BP1.233.3.410, P2.L6.BR.1170, P2.L6.BR.1140 |  | 109d |
| P2.L6.BR.1130 |  | Pull Wire - Electrical / L6 / South / Restrooms 395X | 5d | 2026-03-18 | 2026-03-24 | P2.L6.BR.1140, P2.L6.BR.1160, P2.L6.BR.1110 |  | 109d |
| P2.L6.BR.1120 |  | Pull Wire - Fire Alarm / L6 / South / Restrooms 395X | 5d | 2026-03-25 | 2026-03-31 | P2.L6.BR.1140, P2.L6.BR.1130, P2.L6.BR.1110 |  | 149d |
| P2.L6.BR.1150 |  | Lights - Set & Terminate / L6 / South / Restrooms 395X | 5d | 2026-03-25 | 2026-03-31 | P2.L6.BR.1140, P2.L6.BR.1130 |  | 109d |
| P2.L6.BR.1180 |  | Inspection - Ceiling Close In - ACT Ceilings / L6 / South / Restrooms 395X | 5d | 2026-04-01 | 2026-04-07 | P2.L6.BR.1170, P2.L6.BR.1150, P2.L6.BR.1160 |  | 109d |
| P2.L6.BR.1190 |  | Ceiling Tiles / L6 / South / Restrooms 395X | 5d | 2026-04-08 | 2026-04-14 | P2.L6.BR.1180 |  | 109d |
| P2.L6.BR.1200 |  | Wall Tile / L6 / South / Restrooms 395X | 5d | 2026-04-15 | 2026-04-21 | P2.L6.BR.1190 |  | 109d |
| P2.L6.BR.2200 |  | Flooring Prep - Epoxy Floors / L6 / South / Restrooms 395X | 1d | 2026-04-22 | 2026-04-22 | P2.L6.BR.1200, P2.L5.BR.2310 |  | 109d |
| P2.L6.BR.2210 |  | Flooring - Epoxy Floors / L6 / South / Restrooms 395X | 4d | 2026-04-23 | 2026-04-28 | P2.L6.BR.2200 |  | 109d |
| P2.L6.BR.1210 |  | Paint - Finish Coat / L6 / South / Restrooms 395X | 5d | 2026-04-29 | 2026-05-05 | P2.L6.BR.2210 |  | 109d |
| P2.L6.BR.1220 |  | Countertops / L6 / South / Restrooms 395X | 5d | 2026-05-06 | 2026-05-12 | P2.L6.BR.1210 |  | 109d |
| P2.L6.BR.1260 |  | Lockers & Benches / L6 / South / Restrooms 395X | 5d | 2026-05-13 | 2026-05-19 | P2.L6.BR.1210, P2.L6.BR.1220 |  | 109d |
| P2.L6.BR.1270 |  | Plumbing Fixtures / Sinks / Showers / L6 / South / Restrooms 395X | 5d | 2026-05-13 | 2026-05-19 | P2.L6.BR.1220 |  | 181d |
| P2.L6.BR.1240 |  | Trim - Electrical Devices / L6 / South / Restrooms 395X | 5d | 2026-05-20 | 2026-05-27 | P2.L6.BR.1260, P2.L6.BR.1210 |  | 109d |
| P2.L6.BR.1280 |  | Toilet Partitions / L6 / South / Restrooms 395X | 5d | 2026-05-20 | 2026-05-27 | P2.L6.BR.1270 |  | 181d |
| P2.L6.BR.1290 |  | Bathroom Accessories / L6 / South / Restrooms 395X | 5d | 2026-05-20 | 2026-05-27 | P2.L6.BR.1270 |  | 181d |
| P2.L6.BR.1230 |  | Trim - Fire Alarm Devices / L6 / South / Restrooms 395X | 5d | 2026-05-28 | 2026-06-03 | P2.L6.BR.1240, P2.L6.BR.1210, P2.L6.BR.1120 |  | 109d |
| P2.L6.BR.1250 |  | Doors & Hardware / L6 / South / Restrooms 395X | 5d | 2026-06-04 | 2026-06-10 | P2.L6.BR.1210, P2.L6.BR.1230 |  | 109d |
| P2.L6.BR.1300 |  | Work Completion List - Finishes / L6 / South / Restrooms 395X | 5d | 2026-06-11 | 2026-06-17 | P2.L6.BR.1290, P2.L6.BR.1260, P2.L6.BR.1230, P2.L6.BR.1240, P2.L6.BR.1250, P2.L6.BR.1280 |  | 171d |
|  | 1 | **Toilets 6-2937 / 6-2939** |  | 2025-06-16 | 2026-05-12 |  |  |  |
| P2.L6.BR.2000 |  | Plumbing - Set Pipe Carriers / L6 / North / Restrooms 293X | 3d | 2025-06-16 A | 2025-06-20 A | P2.L6.BR.1000 | 100% |  |
| P2.L6.BR.2010 |  | Framing & Blocking - Walls and Hard Lid Ceilings / L6 / North / Restrooms 293X | 2d | 2025-12-22 | 2025-12-23 | P2.L6.BR.2000 |  | 164d |
| P2.L6.BR.2020 |  | Plumbing - Test Pipe / L6 / North / Restrooms 293X | 2d | 2025-12-22 | 2025-12-23 | P2.L6.BR.2000 |  | 168d |
| P2.L6.BR.2040 |  | Trim Sprinkler Drops _ Hard Lids / L6 / North / Restrooms 293X | 2d | 2025-12-24 | 2025-12-26 | P2.L6.BR.2010 |  | 164d |
| P2.L6.BR.2050 |  | Duct Drops _ Hard Lids / L6 / North / Restrooms 293X | 2d | 2025-12-29 | 2025-12-30 | P2.L6.BR.2010, P2.L6.BR.2040 |  | 164d |
| P2.L6.BR.2070 |  | In Wall - Insulate Plumbing / L6 / North / Restrooms 293X | 2d | 2025-12-31 | 2026-01-02 | P2.L6.BR.2020, P2.L6.BR.2050 |  | 164d |
| P2.L6.BR.2030 |  | R/I - Electrical _ Hard Lids / L6 / North / Restrooms 293X | 5d | 2026-01-05 | 2026-01-09 | P2.L6.BR.2070, P2.L6.BR.2010 |  | 164d |
| P2.L6.BR.2060 |  | R/I - Fire Alarm _ Hard Lids / L6 / North / Restrooms 293X | 5d | 2026-01-12 | 2026-01-16 | P2.L6.BR.2010, P2.L6.BR.2030 |  | 164d |
| P2.L6.BR.2080 |  | Inspection - Close In - Walls and Hard Lid Ceilings / L6 / North / Restrooms 293X | 3d | 2026-01-19 | 2026-01-21 | P2.L6.BR.2070, P2.L6.BR.2060, P2.L6.BR.2040, P2.L6.BR.2050, P2.L6.BR.2030 |  | 164d |
| P2.L6.BR.2090 |  | Hang-Tape-Finish _ Walls and Hard Lids Ceilings / L6 / North / Restrooms 293X | 5d | 2026-01-22 | 2026-01-28 | P2.L6.BR.2080, P2.SUM.175 |  | 164d |
| P2.L6.BR.2100 |  | Paint Prime & Final Coat _ Walls & Hard Lid Ceilings / L6 / North / Restrooms 293X | 2d | 2026-01-29 | 2026-01-30 | P2.L6.BR.2090 |  | 164d |
| P2.L6.BR.2140 |  | Trim - HVAC G/R/D's / L6 / North / Restrooms 293X | 2d | 2026-02-02 | 2026-02-03 | BP1.233.3.410, P2.L6.BR.2100 |  | 164d |
| P2.L6.BR.2120 |  | Pull Wire & Trim Devices - Electrical / L6 / North / Restrooms 293X | 2d | 2026-02-04 | 2026-02-05 | P2.L6.BR.2140, P2.L6.BR.2100 |  | 164d |
| P2.L6.BR.2130 |  | Lights - Set & Terminate / L6 / North / Restrooms 293X | 2d | 2026-02-04 | 2026-02-05 | P2.L6.BR.2120 SS |  | 169d |
| P2.L6.BR.2110 |  | Pull Wire & Trim Devices - Fire Alarm / L6 / North / Restrooms 293X | 5d | 2026-02-06 | 2026-02-12 | P2.L6.BR.2120, P2.L6.BR.2100 |  | 164d |
| P2.L6.BR.2150 |  | Wall Tile / L6 / North / Restrooms 293X | 5d | 2026-02-13 | 2026-02-19 | P2.L6.BR.2140, P2.L6.BR.2130, P2.L6.BR.2110 |  | 164d |
| P2.L6.BR.2220 |  | Flooring Prep - Epoxy Floors / L6 / North / Restrooms 293X | 1d | 2026-04-23 | 2026-04-23 | P2.L6.BR.2200, P2.L6.BR.2150 |  | 120d |
| P2.L6.BR.2230 |  | Flooring - Epoxy Floors / L6 / North / Restrooms 293X | 2d | 2026-04-24 | 2026-04-27 | P2.L6.BR.2220 |  | 138d |
| P2.L6.BR.2160 |  | Doors & Hardware / L6 / North / Restrooms 293X | 2d | 2026-04-28 | 2026-04-29 | P2.L6.BR.2230, P2.L6.BR.2150 |  | 138d |
| P2.L6.BR.2170 |  | Plumbing Fixtures / Sinks / Showers / L6 / North / Restrooms 293X | 2d | 2026-04-30 | 2026-05-01 | P2.L6.BR.2230, P2.L6.BR.2150, P2.L6.BR.2160 |  | 196d |
| P2.L6.BR.2180 |  | Bathroom Accessories / L6 / North / Restrooms 293X | 2d | 2026-05-04 | 2026-05-05 | P2.L6.BR.2170 |  | 196d |
| P2.L6.BR.2190 |  | Work Completion List - Finishes / L6 / North / Restrooms 293X | 5d | 2026-05-06 | 2026-05-12 | P2.L6.BR.2160, P2.L6.BR.2180, P2.L6.BR.2110 |  | 196d |
|  | 1 | **Corridors & Lobbies / Level 6** |  | 2026-04-09 | 2026-11-30 |  |  |  |
| P2.L6.CL.1000 |  | Paint Prime & 1st Coat Walls / L6 / Corr & Lobbies | 5d | 2026-04-09 | 2026-04-15 | P2.L6.F.CS.2000 |  | 37d |
| P2.L6.CL.1010 |  | Framing - Hard Lid Ceilings / L6 / Corr & Lobbies | 10d | 2026-04-16 | 2026-04-29 | P2.L6.CL.1000 |  | 37d |
| P2.L6.CL.1020 |  | T-Grid / L6 / Corr & Lobbies | 10d | 2026-04-16 | 2026-04-29 | P2.L6.CL.1000 |  | 37d |
| P2.L6.CL.1040 |  | R/I - Trim Sprinkler Heads- All Ceilings / L6 / Corr & Lobbies | 5d | 2026-04-27 | 2026-05-01 | P2.L6.CL.1020 FF+2d, P2.L6.CL.1010 FF+2d |  | 37d |
| P2.L6.CL.1070 |  | Trim - Sprinkler Heads @ T-Grid / L6 / Corr & Lobbies | 5d | 2026-04-27 | 2026-05-01 | P2.L6.CL.1020 FF+2d |  | 130d |
| P2.L6.CL.1050 |  | R/I - HVAC- All Ceilings / L6 / Corr & Lobbies | 5d | 2026-05-04 | 2026-05-08 | P2.L6.CL.1020 FF+2d, P2.L6.CL.1010 FF+2d, P2.L6.CL.1040 |  | 37d |
| P2.L6.CL.1030 |  | R/I - Electrical - All Ceilings / L6 / Corr & Lobbies | 15d | 2026-05-11 | 2026-06-01 | P2.L6.CL.1020 FF+2d, P2.L6.CL.1010 FF+2d, P2.L6.CL.1050 |  | 37d |
| P2.L6.CL.1060 |  | R/I - All Remaining Low Voltage - All Ceilings / L6 / Corr & Lobbies | 5d | 2026-06-02 | 2026-06-08 | P2.L6.CL.1020 FF+2d, P2.L6.CL.1010 FF+2d, P2.L6.CL.1030 |  | 37d |
| P2.L6.CL.1100 |  | Pull Wire - Electrical / L6 / Corr & Lobbies | 10d | 2026-06-02 | 2026-06-15 | P2.L6.CL.1030 |  | 67d |
| P2.L6.CL.1080 |  | R/I - Fire Alarm/Life Safety - All Ceilings / L6 / Corr & Lobbies | 5d | 2026-06-09 | 2026-06-15 | P2.L6.CL.1010 FF+2d, P2.L6.CL.1060 |  | 37d |
| P2.L6.CL.1090 |  | Inspections - Close In- All Ceilings / L6 / Corr & Lobbies | 5d | 2026-06-16 | 2026-06-22 | P2.L6.CL.1050, P2.L6.CL.1060, P2.L6.CL.1030, P2.L6.CL.1040, P2.L6.CL.1080 |  | 37d |
| P2.L6.CL.1110 |  | Pull Wire - Fire Alarm / L6 / Corr & Lobbies | 5d | 2026-06-16 | 2026-06-22 | P2.L6.CL.1100, P2.L6.CL.1080 |  | 72d |

| ID | WBS | Task | Duration | Start | Finish | Predecessors | Complete | Total float |
| --- | --- | --- | --- | --- | --- | --- | --- | --- |
| P2.L6.CL.1120 |  | Pull Wire - All Remianing Low Voltage Systems / L6 / Corr & Lobbies | 5d | 2026-06-23 | 2026-06-29 | P2.L6.CL.1110, P2.L6.CL.1060 |  | 77d |
| P2.L6.CL.1130 |  | Hang/Tape/Finish- Hard Lid Ceilings / L6 / Corr & Lobbies | 10d | 2026-06-23 | 2026-07-07 | P2.L6.CL.1090 |  | 37d |
| P2.L6.CL.1140 |  | Drop Ceiling Tiles @ T-Grid / L6 / Corr & Lobbies | 5d | 2026-06-30 | 2026-07-07 | P2.L6.CL.1100, P2.L6.CL.1110, P2.L6.CL.1120, P2.L6.CL.1070 |  | 90d |
| P2.L6.CL.1190 |  | Paint - Hard Lid Ceilings / L6 / Corr & Lobbies | 5d | 2026-07-08 | 2026-07-14 | P2.L6.CL.1130 |  | 37d |
| P2.L6.CL.1180 |  | Ceiling Mounted - HVAC GRD's / L6 / Corr & Lobbies | 15d | 2026-07-15 | 2026-08-04 | P2.L6.CL.1190, P2.L6.CL.1020 |  | 37d |
| P2.L6.CL.1150 |  | Ceiling Mounted - Electrical Devices and Lights / L6 / Corr & Lobbies | 20d | 2026-07-29 | 2026-08-25 | P2.L6.CL.1100, P2.L6.CL.1190, P2.L6.CL.1180 SS+10d |  | 37d |
| P2.L6.CL.1160 |  | Ceiling Mounted - Fire Alarm/Life Saftey Devices / L6 / Corr & Lobbies | 15d | 2026-08-12 | 2026-09-01 | P2.L6.CL.1110, P2.L6.CL.1190, P2.L6.CL.1020, P2.L6.CL.1150 SS+10d |  | 37d |
| P2.L6.CL.1170 |  | Ceiling Mounted - All Low Voltage Devices / L6 / Corr & Lobbies | 15d | 2026-08-26 | 2026-09-16 | P2.L6.CL.1190, P2.L6.CL.1120, P2.L6.CL.1160 SS+10d |  | 37d |
| P2.L6.CL.1320 |  | Prep Flooring / L6 / Corr & Lobbies | 2d | 2026-09-17 | 2026-09-18 | P2.L6.CL.1170, P2.L6.CL.1180, P2.L6.CL.1160, P2.L6.CL.1150, P2.L6.CL.1140 SS+2d, P2.L5.CL.1200 |  | 37d |
| P2.L6.CL.1200 |  | Flooring / L6 / Corr & Lobbies | 8d | 2026-09-21 | 2026-09-30 | P2.L6.CL.1320 |  | 37d |
| P2.L6.CL.1210 |  | Final Paint / L6 / Corr & Lobbies | 5d | 2026-09-28 | 2026-10-02 | P2.L6.CL.1200 FF+2d, P2.L6.CL.1140, BP7.097.3.100 |  | 57d |
| P2.L6.CL.1220 |  | Floor Base / L6 / Corr & Lobbies | 5d | 2026-10-05 | 2026-10-09 | P2.L6.CL.1210 |  | 72d |
| P2.L6.CL.1250 |  | Trim - HVAC - Wall Mounted Devices / L6 / Corr & Lobbies | 5d | 2026-10-05 | 2026-10-09 | P2.L6.CL.1210 |  | 57d |
| P2.L6.CL.1230 |  | Trim - All Electrical - Wall Mounted Devices / L6 / Corr & Lobbies | 5d | 2026-10-12 | 2026-10-16 | P2.L6.CL.1250, P2.L6.CL.1210 |  | 57d |
| P2.L6.CL.1340 |  | Wall Protection / L6 / Corr & Lobbies | 5d | 2026-10-12 | 2026-10-16 | BP7.102.3.300, P2.L6.CL.1220 |  | 72d |
| P2.L6.CL.1240 |  | Trim - Fire Alarm - Wall Mounted Devices / L6 / Corr & Lobbies | 5d | 2026-10-19 | 2026-10-23 | P2.L6.CL.1230, P2.L6.CL.1210 |  | 57d |
| P2.L6.CL.1260 |  | Trim - All Remining Low Voltage Systems - Wall Mounted Devices / L6 / Corr & Lobbies | 5d | 2026-10-26 | 2026-10-30 | P2.L6.CL.1240, P2.L6.CL.1210 |  | 57d |
| P2.L6.CL.1270 |  | Building Signage / L6 / Corr & Lobbies | 5d | 2026-11-02 | 2026-11-06 | P2.L6.CL.1260, P2.L6.CL.1210 |  | 57d |
| P2.L6.CL.1280 |  | Work Completion List / L6 / Corr & Lobbies | 5d | 2026-11-09 | 2026-11-13 | P2.L6.CL.1270, P2.L6.CL.1230, P2.L6.CL.1240, P2.L6.CL.1250, P2.L6.CL.1260, P2.L6.CL.1220, P2.L6.CL.1340 |  | 57d |
| P2.L6.CL.1290 |  | Rough Clean / L6 / Corr & Lobbies | 2d | 2026-11-16 | 2026-11-17 | P2.L6.CL.1280 |  | 57d |
| P2.L6.CL.1300 |  | Punchlist / L6 / Corr & Lobbies | 5d | 2026-11-18 | 2026-11-24 | P2.L6.CL.1290 |  | 57d |
| P2.L6.CL.1310 |  | Final Clean / L6 / Corr & Lobbies | 2d | 2026-11-25 | 2026-11-30 | P2.L6.CL.1300 |  | 57d |
|  | INT | **INTERSTITIAL / LEVEL 6** |  | 2025-04-30 | 2026-05-14 |  |  |  |
|  | 2 | **South Interstitials 6-3905 & 6-2855** |  | 2025-05-12 | 2026-05-14 |  |  |  |
|  | Z1 | **Rough In - South Interstitials 6-3905 & 6-2855** |  | 2025-05-12 | 2026-03-05 |  |  |  |
| P2.L6.INT.S.1000 |  | Layout - All Trades / L6 / South Int | 5d | 2025-05-12 A | 2025-05-16 A | P2.6.I.03.310 | 100% |  |
| P2.L6.INT.S.1020 |  | OH - Structural Supports (All Trades) / L6 / South Int | 5d | 2025-05-16 A | 2025-05-17 A | P2.L6.INT.S.1000 | 100% |  |
| P2.L6.INT.S.1040 |  | Fireproof Interstitial Steel / L6 / South Int | 5d | 2025-05-20 A | 2025-05-22 A | P2.L6.INT.S.1010, P2.L6.INT.S.1020, P2.L6.INT.S.1030 | 100% |  |
| P2.L6.INT.S.1010 |  | Framing - Top Track / L6 / South Int | 5d | 2025-05-26 A | 2025-05-30 A | P2.L6.N.1010, P2.L6.INT.S.1000 | 100% |  |
| P2.L6.INT.S.1030 |  | OH - MEPF - Hangers & Supports / L6 / South Int | 10d | 2025-05-26 A | 2025-05-30 A | P2.L6.INT.S.1000, P2.BIM.L6.40.140 | 100% |  |
| P2.L6.INT.S.1070 |  | Framing - Perimeter Studs and Door Frames / L6 / South Int | 10d | 2025-05-30 A | 2025-06-30 A | P2.L6.INT.S.1040 | 100% |  |
| P2.L6.INT.S.1170 |  | Set & Connect - Mech Equipment / L6 / South Int | 10d | 2025-05-30 A | 2025-06-13 A | P2.L6.INT.S.1040 | 100% |  |
| P2.L6.INT.S.1130 |  | OH - Fire Suppression / L6 / South Int | 10d | 2025-06-02 A | 2025-06-13 A | P2.L6.INT.S.1100 FF+2d, P2.L6.INT.S.1040 | 100% |  |
| P2.L6.INT.S.1160 |  | OH - Electrical - 480/277v Distribution / L6 / South Int | 20d | 2025-06-18 A | 2025-09-12 A | P2.L6.INT.S.1120 FF+2d, P2.L6.INT.S.1100 FF+2d, P2.L6.INT.S.1040 | 100% |  |
| P2.L6.INT.S.1100 |  | Spray/Seal/Firestop - Head of Wall / L6 / South Int | 5d | 2025-06-24 A | 2025-06-30 A | P2.L6.INT.S.1070 | 100% |  |
| P2.L6.INT.S.1060 |  | In Wall - Backing/Blocking/Supports / L6 / South Int | 10d | 2025-07-01 A | 2025-07-15 A | P2.L6.INT.S.1070 SS | 100% |  |
| P2.L6.INT.S.1150 |  | OH - Plumbing Piping / L6 / South Int | 20d | 2025-07-18 A | 2025-09-05 A | P2.L6.INT.S.1120 FF+2d, P2.L6.INT.S.1100 FF+2d, P2.L6.INT.S.1040 | 100% |  |
| P2.L6.INT.S.1140 |  | OH - Hang Duct - HP Mains / L6 / South Int | 10d | 2025-07-24 A | 2025-09-12 A | P2.L6.INT.S.1040 | 100% |  |
| P2.L6.INT.S.1050 |  | In Wall - Electrical - Framing / L6 / South Int | 10d | 2025-07-30 A | 2025-09-17 A | P2.L6.INT.S.1070 SS | 100% |  |
| P2.L6.INT.S.1180 |  | OH - HVAC Piping (High) / L6 / South Int | 20d | 2025-08-01 A | 2025-09-22 A | P2.L6.S.1220, P2.L6.INT.S.1130, P2.L6.INT.S.1040, FRG.P2.L6.INT.S.1750 | 100% |  |
| FRG.P2.L6.INT.S.1740 |  | HVAC Piping Delivery / L6 / South Int - FRAGNET | 0d | 2025-08-01 A | 2025-08-01 A | P2.L6.INT.S.1030 FF | 100% |  |
| FRG.P2.L6.INT.S.1750 |  | HVAC Piping - Staging & Layout / L6 / South Int - FRAGNET | 18d | 2025-08-04 A | 2025-08-29 A | FRG.P2.L6.INT.S.1740 | 100% |  |
| P2.L6.INT.S.1220 |  | OH - Plumbing - Test / L6 / South Int | 15d | 2025-09-09 A | 2025-09-18 A | P2.L6.INT.S.1150 | 100% |  |
| P2.L6.INT.S.1190 |  | OH - Electrical - 208/120v Branch / L6 / South Int | 10d | 2025-09-15 A | 2025-10-23 A | P2.L6.INT.S.1160 | 100% |  |
| P2.L6.INT.S.1080 |  | AHJ Inspections - Wall Close In / L6 / South Int | 5d | 2025-09-18 A | 2025-09-19 A | P2.L6.INT.S.1060 FF, P2.L6.INT.S.1070, P2.L6.INT.S.1050 | 100% |  |
| P2.L6.INT.S.1090 |  | Hang-Tape-Finish / L6 / South Int | 10d | 2025-09-22 A | 2025-10-15 A | P2.L6.INT.S.1080 | 100% |  |
| P2.L6.INT.S.1330 |  | OH - Conduit - Low Volt - Fire Alarm / L6 / South Int | 10d | 2025-09-22 A | 2025-09-30 A | P2.L6.INT.S.1310 | 100% |  |
| P2.L6.INT.S.1120 |  | Paint Prime & 1st Coat / L6 / South Int | 5d | 2025-10-16 A | 2025-10-20 A | P2.L6.INT.S.1100 SS, P2.L6.INT.S.1090 | 100% |  |
| P2.L6.INT.S.1175 |  | Set & Connect - Elect Panels and Equipment / L6 / South Int | 5d | 2025-10-27 A | 2025-10-30 A | P2.L6.INT.S.1120, P2.L6.INT.S.1100 | 100% |  |
| P2.L6.INT.S.2090 |  | OH - HVAC Piping (Low) / L6 / South Int | 20d | 2025-10-31 A | 2025-12-01 A | P2.L6.INT.S.1180 | 100% |  |
| P2.L6.INT.S.1200 |  | OH - Electrical - Equip Tie In / L6 / South Int | 10d | 2025-11-03 A | 2025-11-30 A | P2.L6.INT.S.1160, P2.L6.INT.S.1170, P2.L6.INT.S.1175 | 100% |  |
| P2.L6.INT.S.1240 |  | OH - Hang Duct - LP Branch / L6 / South Int | 10d | 2025-11-17 A | 2025-12-16 | P2.L6.INT.S.1210 | 80% | 80d |
| P2.L6.INT.S.1210 |  | OH - DALT - HP Mains / L6 / South Int | 10d | 2025-12-01 | 2025-12-12 | P2.L6.INT.S.1140 |  | 67d |
| P2.L6.INT.S.1250 |  | OH - HVAC Piping - Test / L6 / South Int | 10d | 2025-12-01 | 2025-12-12 | P2.L6.INT.S.2090 |  | 77d |
| P2.L6.INT.S.1260 |  | OH - Insulate Plumbing / L6 / South Int | 10d | 2025-12-01 | 2025-12-12 | P2.L6.INT.S.1220 |  | 107d |
| P2.L6.INT.S.1270 |  | Pull Wire - Electrical - 208/120v Branch & Equip / L6 / South Int | 20d | 2025-12-01 | 2025-12-29 | P2.L6.INT.S.1200, P2.L6.INT.S.1190, P2.L6.INT.S.1050 |  | 97d |
| P2.L6.INT.S.1280 |  | Pull Wire - Electrical - 480/277v Distribution / L6 / South Int | 10d | 2025-12-01 | 2025-12-12 | P2.L6.INT.S.1200 |  | 107d |
| P2.L6.INT.S.1230 |  | OH - Insulate HP Duct / L6 / South Int | 10d | 2025-12-15 | 2025-12-29 | P2.L6.INT.S.1210 |  | 67d |
| P2.L6.INT.S.1310 |  | OH - Insulate LP Duct / L6 / South Int | 10d | 2025-12-17 | 2025-12-31 | P2.L6.INT.S.1240 |  | 80d |
| P2.L6.INT.S.1340 |  | OH - Conduit - Low Volt - Telecom / L6 / South Int | 10d | 2025-12-24 A | 2026-01-08 | P2.L6.INT.S.1310 | 50% | 80d |
| P2.L6.INT.S.1300 |  | OH - Insulate HVAC Pipe / L6 / South Int | 10d | 2025-12-30 | 2026-01-13 | P2.L6.INT.S.1230, P2.L6.INT.S.1250 |  | 67d |
| P2.L6.INT.S.1370 |  | Pull Wire - Low Volt - Fire Alarm / L6 / South Int | 10d | 2026-01-02 | 2026-01-15 | P2.L6.INT.S.1330, P2.L6.INT.S.1090 |  | 85d |
| P2.L6.INT.S.1380 |  | Pull Wire - Low Volt - Telecom / L6 / South Int | 10d | 2026-01-09 | 2026-01-22 | P2.L6.INT.S.1340, P2.L6.INT.S.1090 |  | 80d |
| P2.L6.INT.S.1320 |  | OH - Conduit - Low Volt - BAS/Controls / L6 / South Int | 10d | 2026-01-14 | 2026-01-27 | P2.L6.INT.S.1300 |  | 67d |
| P2.L6.INT.S.1350 |  | OH - Conduit - Low Volt - Security / L6 / South Int | 10d | 2026-01-14 | 2026-01-27 | P2.L6.INT.S.1300 |  | 67d |
| P2.L6.INT.S.1110 |  | Firestop - Thru Wall / L6 / South Int | 5d | 2026-01-28 | 2026-02-03 | P2.L6.INT.S.1140, P2.L6.INT.S.1150, P2.L6.INT.S.1160, P2.L6.INT.S.1180, P2.L6.INT.S.1130, P2.L6.INT.S.1340, P2.L6.INT.S.1350, P2.L6.INT.S.1320, P2.L6.INT.S.1330, P2.L6.INT.S.1120 SS |  | 72d |
| P2.L6.INT.S.1290 |  | OH - HVAC Piping - Equip Tie In / L6 / South Int | 15d | 2026-01-28 | 2026-02-17 | P2.L6.INT.S.1170, P2.L6.INT.S.1250 FF+3d, CX.B2.HYDR.1000 |  | 52d |
| P2.L6.INT.S.1390 |  | Pull Wire - Low Volt - Security / L6 / South Int | 10d | 2026-01-28 | 2026-02-10 | P2.L6.INT.S.1350 |  | 67d |
| P2.L6.INT.S.1360 |  | Pull Wire - Low Volt - BAS/Controls / L6 / South Int | 10d | 2026-02-18 | 2026-03-03 | P2.L6.INT.S.1320, P2.L6.INT.S.1290 |  | 52d |
| P2.L6.INT.S.1400 |  | Trades Inspect & Verify R/I Work Completed to Specs / L6 / South Int | 2d | 2026-03-04 | 2026-03-05 | P2.L6.INT.S.1380, P2.L6.INT.S.1390, P2.L6.INT.S.1280, P2.L6.INT.S.1270, P2.L6.INT.S.1360, P2.L6.INT.S.1370, P2.L6.INT.S.1260, P2.L6.INT.S.1110 |  | 52d |

| ID | WBS | Task | Duration | Start | Finish | Predecessors | Complete | Total float |
| --- | --- | --- | --- | --- | --- | --- | --- | --- |
|  | 2 | **Finishes - South Interstitial 6-2855 (12,408 sf)** |  | 2026-03-06 | 2026-05-14 |  |  |  |
| P2.L6.INT.S.2000 |  | Flooring Prep - Epoxy Floors / L6 / South Int | 7d | 2026-03-06 | 2026-03-16 | P2.L6.INT.S.1400 |  | 157d |
| P2.L6.INT.S.2100 |  | Flooring - Epoxy Floors / L6 / South Int | 3d | 2026-03-17 | 2026-03-19 | P2.L6.INT.S.2000 |  | 157d |
| P2.L6.INT.S.2010 |  | Paint - Finish Coat / L6 / South Int | 5d | 2026-03-20 | 2026-03-26 | P2.L6.INT.S.1400, P2.L6.INT.S.2100 |  | 157d |
| P2.L6.INT.S.2020 |  | Doors & Hardware / L6 / South Int | 5d | 2026-03-27 | 2026-04-02 | P2.L6.INT.S.2010 |  | 157d |
| P2.L6.INT.S.2040 |  | Building Signage / L6 / South Int | 5d | 2026-03-27 | 2026-04-02 | P2.L6.INT.S.2010 |  | 199d |
| P2.L6.INT.S.2030 |  | Trim All MEP Finishes / L6 / South Int | 5d | 2026-04-03 | 2026-04-09 | P2.L6.INT.S.2020, P2.L6.INT.S.2010 |  | 194d |
| P2.L6.INT.S.2050 |  | Rough Clean / L6 / South Int | 5d | 2026-04-10 | 2026-04-16 | P2.L6.INT.S.2040, P2.L6.INT.S.2030 |  | 194d |
| P2.L6.INT.S.2060 |  | Prepare Punchlist / L6 / South Int | 5d | 2026-04-17 | 2026-04-23 | P2.L6.INT.S.2050 |  | 194d |
| P2.L6.INT.S.2070 |  | Correct Punchlist / L6 / South Int | 10d | 2026-04-24 | 2026-05-07 | P2.L6.INT.S.2060 FF, P2.L6.INT.S.2060 |  | 194d |
| P2.L6.INT.S.2080 |  | Final Clean / L6 / South Int | 5d | 2026-05-08 | 2026-05-14 | P2.L6.INT.S.2070 FF, P2.L6.INT.S.2070 |  | 194d |
|  | 1 | **North Interstitial 6-2835** |  | 2025-04-30 | 2026-05-14 |  |  |  |
|  | Z11 | **Rough In - North Interstitial 6-2835** |  | 2025-04-30 | 2026-03-05 |  |  |  |
| P2.L6.INT.N.1000 |  | Layout - All Trades / L6 / North Int | 5d | 2025-04-30 A | 2025-05-20 A | P2.6.I.03.320 | 100% |  |
| P2.L6.INT.N.1130 |  | OH - Fire Suppression / L6 / North Int | 10d | 2025-05-14 A | 2025-06-11 A | P2.L6.INT.N.1040 | 100% |  |
| P2.L6.INT.N.1020 |  | OH - Structural Supports (All Trades) / L6 / North Int | 5d | 2025-05-20 A | 2025-05-21 A | P2.L6.INT.N.1000 | 100% |  |
| P2.L6.INT.N.1040 |  | Fireproof Interstitial Steel / L6 / North Int | 5d | 2025-05-22 A | 2025-05-28 A | P2.L6.INT.N.1010, P2.L6.INT.N.1020, P2.L6.INT.N.1030 | 100% |  |
| P2.L6.INT.N.1010 |  | Framing - Top Track / L6 / North Int | 5d | 2025-05-26 A | 2025-05-30 A | P2.L6.INT.S.1010, P2.L6.INT.N.1000 | 100% |  |
| P2.L6.INT.N.1030 |  | OH - MEPF - Hangers & Supports / L6 / North Int | 10d | 2025-05-26 A | 2025-05-30 A | P2.L6.INT.N.1000 | 100% |  |
| P2.L6.INT.N.1170 |  | Set & Connect - Mech Equipment / L6 / North Int | 20d | 2025-05-30 A | 2025-06-27 A | P2.L6.INT.N.1040, BP1.230.3.100 FF | 100% |  |
| P2.L6.INT.N.1160 |  | OH - Electrical - 480/277v Distribution / L6 / North Int | 20d | 2025-06-30 A | 2025-09-19 A | P2.L6.INT.N.1040 | 100% |  |
| P2.L6.INT.N.1070 |  | Framing - Perimeter Studs and Door Frames / L6 / North Int | 10d | 2025-07-28 A | 2025-08-05 A | P2.L6.INT.N.1040 | 100% |  |
| P2.L6.INT.N.1050 |  | In Wall - Electrical - Framing / L6 / North Int | 10d | 2025-07-30 A | 2025-09-19 A | P2.L6.INT.N.1070 SS | 100% |  |
| P2.L6.INT.N.1190 |  | OH - Electrical - 208/120v Branch / L6 / North Int | 10d | 2025-07-30 A | 2025-11-30 A | P2.L6.INT.N.1050, P2.L6.INT.N.1160 | 100% |  |
| FRG.P2.L6.INT.N.1720 |  | HVAC Piping Delivery / L6 / North Int - FRAGNET | 0d | 2025-08-01 A | 2025-08-01 A | P2.L6.INT.N.1030 FF | 100% |  |
| FRG.P2.L6.INT.N.1730 |  | HVAC Piping - Staging & Layout / L6 / North Int - FRAGNET | 18d | 2025-08-04 A | 2025-08-29 A | FRG.P2.L6.INT.N.1720 | 100% |  |
| P2.L6.INT.N.1150 |  | OH - Plumbing Piping / L6 / North Int | 15d | 2025-08-04 A | 2025-09-25 A | P2.L6.INT.N.1100 FF+2d, P2.L6.N.1180, P2.L6.INT.N.1120 FF+2d, P2.L6.INT.N.1040 | 100% |  |
| P2.L6.INT.N.1140 |  | OH - Hang Duct - HP Mains / L6 / North Int | 20d | 2025-09-05 A | 2025-12-05 | P2.L6.INT.N.1100 FF+2d, P2.L6.INT.S.1140, P2.L6.INT.N.1120 FF+2d, P2.L6.INT.N.1040 | 75% | 62d |
| P2.L6.INT.N.1180 |  | OH - HVAC Piping (High) / L6 / North Int | 20d | 2025-09-05 A | 2025-11-28 A | P2.L6.INT.N.1040, P2.L6.INT.N.1130 SS+5d, FRG.P2.L6.INT.N.1730 | 100% |  |
| P2.L6.INT.N.1060 |  | In Wall - Backing/Blocking/Supports / L6 / North Int | 10d | 2025-09-12 A | 2025-09-12 A | P2.L6.INT.N.1070 SS | 100% |  |
| P2.L6.INT.N.1330 |  | OH - Conduit - Low Volt - Fire Alarm / L6 / North Int | 10d | 2025-09-12 A | 2025-09-30 A | P2.L6.INT.N.1310 | 100% |  |
| P2.L6.INT.N.1080 |  | AHJ Inspections - Wall Close In / L6 / North Int | 5d | 2025-09-18 A | 2025-09-19 A | P2.L6.INT.N.1050 FF, P2.L6.INT.N.1060 FF, P2.L6.INT.N.1070, P2.L6.INT.N.1190 FF | 100% |  |
| P2.L6.INT.N.1090 |  | Hang-Tape-Finish / L6 / North Int | 10d | 2025-09-24 A | 2025-10-15 A | P2.L6.INT.N.1080 | 100% |  |
| P2.L6.INT.N.1100 |  | Spray/Seal/Firestop - Head of Wall / L6 / North Int | 5d | 2025-10-08 A | 2025-10-14 A | P2.L6.INT.N.1090 SS+5d | 100% |  |
| P2.L6.INT.N.1120 |  | Paint Prime & 1st Coat / L6 / North Int | 5d | 2025-10-16 A | 2025-10-20 A | P2.L6.INT.N.1100 SS | 100% |  |
| P2.L6.INT.N.1175 |  | Set & Connect - Elect Panels and Equipment / L6 / North Int | 5d | 2025-10-27 A | 2025-10-30 A | P2.L6.INT.N.1100, P2.L6.INT.N.1120 | 100% |  |
| P2.L6.INT.N.1200 |  | OH - Electrical - Equip Tie In / L6 / North Int | 10d | 2025-11-10 A | 2025-11-30 A | P2.L6.INT.N.1160, P2.L6.INT.N.1170, P2.L6.INT.N.1175 | 100% |  |
| P2.L6.INT.N.2090 |  | OH - HVAC Piping (Low) / L6 / North Int | 20d | 2025-11-10 A | 2025-12-12 | P2.L6.INT.N.1180 | 50% | 72d |
| P2.L6.INT.N.1220 |  | OH - Plumbing - Test / L6 / North Int | 15d | 2025-12-01 | 2025-12-19 | P2.L6.INT.N.1150 |  | 92d |
| P2.L6.INT.N.1270 |  | Pull Wire - Electrical - 208/120v Branch & Equip / L6 / North Int | 20d | 2025-12-01 | 2025-12-29 | P2.L6.INT.N.1190, P2.L6.INT.N.1200 |  | 97d |
| P2.L6.INT.N.1280 |  | Pull Wire - Electrical - 480/277v Distribution / L6 / North Int | 10d | 2025-12-01 | 2025-12-12 | P2.L6.INT.N.1200 |  | 107d |
| P2.L6.INT.N.1210 |  | OH - DALT - HP Mains / L6 / North Int | 10d | 2025-12-08 | 2025-12-19 | P2.L6.INT.N.1140 |  | 62d |
| P2.L6.INT.N.1250 |  | OH - HVAC Piping - Test / L6 / North Int | 10d | 2025-12-08 | 2025-12-19 | P2.L6.INT.N.2090 FF+5d |  | 72d |
| P2.L6.INT.N.1230 |  | OH - Insulate HP Duct / L6 / North Int | 10d | 2025-12-22 | 2026-01-06 | P2.L6.INT.N.1210 |  | 62d |
| P2.L6.INT.N.1240 |  | OH - Hang Duct - LP Branch / L6 / North Int | 10d | 2025-12-22 | 2026-01-06 | P2.L6.INT.N.1210 |  | 62d |
| P2.L6.INT.N.1260 |  | OH - Insulate Plumbing / L6 / North Int | 10d | 2025-12-22 | 2026-01-06 | P2.L6.INT.N.1220 |  | 92d |
| P2.L6.INT.N.1300 |  | OH - Insulate HVAC Pipe / L6 / North Int | 10d | 2026-01-07 | 2026-01-20 | P2.L6.INT.N.1230, P2.L6.INT.N.1250 |  | 62d |
| P2.L6.INT.N.1310 |  | OH - Insulate LP Duct / L6 / North Int | 10d | 2026-01-07 | 2026-01-20 | P2.L6.INT.N.1240 |  | 62d |
| P2.L6.INT.N.1320 |  | OH - Conduit - Low Volt - BAS/Controls / L6 / North Int | 10d | 2026-01-21 | 2026-02-03 | P2.L6.INT.N.1300 |  | 62d |
| P2.L6.INT.N.1340 |  | OH - Conduit - Low Volt - Telecom / L6 / North Int | 10d | 2026-01-21 | 2026-02-03 | P2.L6.INT.N.1310 |  | 62d |
| P2.L6.INT.N.1350 |  | OH - Conduit - Low Volt - Security / L6 / North Int | 10d | 2026-01-21 | 2026-02-03 | P2.L6.INT.N.1300 |  | 62d |
| P2.L6.INT.N.1370 |  | Pull Wire - Low Volt - Fire Alarm / L6 / North Int | 10d | 2026-01-21 | 2026-02-03 | P2.L6.INT.N.1330 |  | 72d |
| P2.L6.INT.N.1290 |  | OH - HVAC Piping - Equip Tie In / L6 / North Int | 15d | 2026-01-28 | 2026-02-17 | P2.L6.INT.N.1170, P2.L6.INT.N.1250, CX.B2.HYDR.1000 |  | 52d |
| P2.L6.INT.N.1110 |  | Firestop - Thru Wall / L6 / North Int | 5d | 2026-02-04 | 2026-02-10 | P2.L6.INT.N.1180, P2.L6.INT.N.1130, P2.L6.INT.N.1140, P2.L6.INT.N.1150, P2.L6.INT.N.1160, P2.L6.INT.N.2090, P2.L6.INT.N.1330, P2.L6.INT.N.1340, P2.L6.INT.N.1350, P2.L6.INT.N.1320, P2.L6.INT.N.1120 SS |  | 67d |
| P2.L6.INT.N.1380 |  | Pull Wire - Low Volt - Telecom / L6 / North Int | 10d | 2026-02-04 | 2026-02-17 | P2.L6.INT.N.1340 |  | 62d |
| P2.L6.INT.N.1390 |  | Pull Wire - Low Volt - Security / L6 / North Int | 10d | 2026-02-04 | 2026-02-17 | P2.L6.INT.N.1350 |  | 62d |
| P2.L6.INT.N.1360 |  | Pull Wire - Low Volt - BAS/Controls / L6 / North Int | 10d | 2026-02-18 | 2026-03-03 | P2.L6.INT.N.1290, P2.L6.INT.N.1320 |  | 52d |
| P2.L6.INT.N.1400 |  | Trades Inspect & Verify R/I Work Completed to Specs / L6 / North Int | 2d | 2026-03-04 | 2026-03-05 | P2.L6.INT.N.1110, P2.L6.INT.N.1370, P2.L6.INT.N.1380, P2.L6.INT.N.1390, P2.L6.INT.N.1280, P2.L6.INT.N.1260, P2.L6.INT.N.1270, P2.L6.INT.N.1360 |  | 52d |
|  | 1 | **Finishes - North Interstitial 6-2835 (6,848 sf)** |  | 2026-03-06 | 2026-05-14 |  |  |  |
| P2.L6.INT.N.2000 |  | Flooring Prep - Epoxy Floors / L6 / North Int | 7d | 2026-03-06 | 2026-03-16 | P2.L6.INT.N.1175, P2.L6.INT.N.1400 |  | 157d |
| P2.L6.INT.N.2100 |  | Flooring - Epoxy Floors / L6 / North Int | 3d | 2026-03-17 | 2026-03-19 | P2.L6.INT.N.2000 |  | 157d |
| P2.L6.INT.N.2010 |  | Paint - Finish Coat / L6 / North Int | 5d | 2026-03-20 | 2026-03-26 | P2.L6.INT.N.1400, P2.L6.INT.N.2100 |  | 157d |
| P2.L6.INT.N.2020 |  | Doors & Hardware / L6 / North Int | 5d | 2026-03-27 | 2026-04-02 | P2.L6.INT.N.2010 |  | 157d |
| P2.L6.INT.N.2040 |  | Building Signage / L6 / North Int | 5d | 2026-03-27 | 2026-04-02 | P2.L6.INT.N.2010 |  | 199d |
| P2.L6.INT.N.2030 |  | Trim All MEP Finishes / L6 / North Int | 5d | 2026-04-03 | 2026-04-09 | P2.L6.INT.N.2020, P2.L6.INT.N.2010 |  | 194d |
| P2.L6.INT.N.2050 |  | Rough Clean / L6 / North Int | 5d | 2026-04-10 | 2026-04-16 | P2.L6.INT.N.2040, P2.L6.INT.N.2030 |  | 194d |
| P2.L6.INT.N.2060 |  | Prepare Punchlist / L6 / North Int | 5d | 2026-04-17 | 2026-04-23 | P2.L6.INT.N.2050 |  | 194d |
| P2.L6.INT.N.2070 |  | Correct Punchlist / L6 / North Int | 10d | 2026-04-24 | 2026-05-07 | P2.L6.INT.N.2060 FF, P2.L6.INT.N.2060 |  | 194d |
| P2.L6.INT.N.2080 |  | Final Clean / L6 / North Int | 5d | 2026-05-08 | 2026-05-14 | P2.L6.INT.N.2070 FF, P2.L6.INT.N.2070 |  | 194d |
|  | 1 | **MECHANICAL TOWERS / LEVEL 6** |  | 2015-11-03 | 2026-04-14 |  |  |  |

| ID | WBS | Task | Duration | Start | Finish | Predecessors | Complete | Total float |
| --- | --- | --- | --- | --- | --- | --- | --- | --- |
|  | 4 | **South Mechanical Tower / Rough In & Finish / Level 6** |  | 2015-11-03 | 2026-04-14 |  |  |  |
| P2.L6.SMT.1080 |  | Set & Connect - Elect Panels and Equipment / L6 - S. Mech Tower | 5d | 2015-11-03 A | 2025-11-07 A | P2.L6.SMT.1060 | 100% |  |
| P2.L6.SMT.1070 |  | Set & Connect - Mech Equipment / L6 - S. Mech Tower | 10d | 2025-06-01 A | 2025-06-01 A | P2.L5.SMT.1070, P2.6.03.610 | 100% |  |
| P2.L6.SMT.1000 |  | Insulation - Exterior Wall Assembly / L6 - S. Mech Tower | 5d | 2025-07-02 A | 2025-07-09 A | P2.FAC.2.Z1.150 | 100% |  |
| P2.L6.SMT.1020 |  | In Wall - Electrical - CMU / L6 - S. Mech Tower | 10d | 2025-08-01 A | 2025-08-15 A | P2.L6.SMT.1010 SS | 100% |  |
| P2.L6.SMT.1030 |  | In Wall - Mech/Plumbing - CMU / L6 - S. Mech Tower | 10d | 2025-08-01 A | 2025-08-15 A | P2.L6.SMT.1010 SS | 100% |  |
| P2.L6.SMT.1100 |  | HVAC Piping Connections to Shaft Riser (Chilled Water) / L6 - S. Mech Tower | 20d | 2025-09-02 A | 2025-09-26 A | P2.L6.SMT.1070 | 100% |  |
| P2.L6.SMT.1105 |  | HVAC Duct Connections to Shaft Riser / L6 - S. Mech Tower | 20d | 2025-09-02 A | 2025-09-26 A | P2.L6.SMT.1070 | 100% |  |
| P2.L6.SMT.1250 |  | HVAC Piping Connections to Shaft Riser (Reheat) / L6 - S. Mech Tower | 20d | 2025-09-02 A | 2025-09-26 A | P2.L6.SMT.1100 | 100% |  |
| P2.L6.SMT.1010 |  | CMU - Lay Block / L6 - S. Mech Tower | 10d | 2025-09-05 A | 2025-09-10 A | P2.L3.SMT.1010, P2.L6.SMT.1000 | 100% |  |
| P2.L6.SMT.1130 |  | Test/Inspect Duct & Piping / L6 - S. Mech Tower | 5d | 2025-09-26 A | 2025-09-30 A | P2.L6.SMT.1105, P2.L6.SMT.1250 | 100% |  |
| P2.L6.SMT.1040 |  | Paint - CMU Block Fill / L6 - S. Mech Tower | 10d | 2025-10-06 A | 2025-10-17 A | P2.L6.SMT.1010 | 100% |  |
| P2.L6.SMT.1050 |  | CMU - Point & Patch / L6 - S. Mech Tower | 10d | 2025-10-20 A | 2025-10-22 A | P2.L6.SMT.1030, P2.L6.SMT.1020, P2.L6.SMT.1040 | 100% |  |
| P2.L6.SMT.1060 |  | Paint Prime & 1st Coat - CMU / L6 - S. Mech Tower | 10d | 2025-10-20 A | 2025-10-31 A | P2.L6.SMT.1050 SS | 100% |  |
| FRG.P2.L6.SMT.1040 |  | AHU Piping Install / L6 - S. Mech Tower - FRAGNET | 20d | 2025-12-01 A | 2025-12-29 | FRG.P2.L5.SMT.1040 |  | 24d |
| P2.L6.SMT.1120 |  | BAS - Equip Tie In / L6 - S. Mech Tower | 5d | 2025-12-01 | 2025-12-05 | P2.L6.SMT.1070, P2.L6.SMT.1060 |  | 104d |
| P2.L6.SMT.1200 |  | Flooring Prep - Epoxy Floors / L6 - S. Mech Tower | 3d | 2026-01-26 | 2026-01-28 | P2.L5.SMT.1250, P2.L6.SMT.1080 |  | 34d |
| P2.L6.SMT.1110 |  | HVAC Piping - Equip Tie In (Chilled Water) / L6 - S. Mech Tower | 20d | 2026-01-28 | 2026-02-24 | P2.L6.SMT.1070, CX.B2.HYDR.1000, FRG.P2.L6.SMT.1040 |  | 24d |
| P2.L6.SMT.1270 |  | Flooring - Epoxy Floors / L6 - S. Mech Tower | 2d | 2026-01-29 | 2026-01-30 | P2.L6.SMT.1200 |  | 34d |
| P2.L6.SMT.1090 |  | Panelboards, Interconnect Wiring, and Remaining Room Buildout of All Elec/FA Systems / L6 - S. Mech Tower | 10d | 2026-02-02 | 2026-02-13 | BP1.262.3.100, BP1.262.3.200, P2.L6.SMT.1270, P2.L6.SMT.1080 |  | 39d |
| P2.L6.SMT.1140 |  | Pull Wire - In From Distribution Panels / Out to Branch Circuits / L6 - S. Mech Tower | 5d | 2026-02-16 | 2026-02-20 | P2.L6.SMT.1090 |  | 39d |
| P2.L6.SMT.1160 |  | Electrical Tie in to Equipment / L6 - S. Mech Tower | 5d | 2026-02-23 | 2026-02-27 | P2.L6.SMT.1140, P2.L6.SMT.1070 |  | 56d |
| P2.L6.SMT.1170 |  | Test & Terminate / L6 - S. Mech Tower | 5d | 2026-02-23 | 2026-02-27 | P2.L6.SMT.1140 |  | 39d |
| P2.L6.SMT.1260 |  | HVAC Piping - Equip Tie In (Reheat) / L6 - S. Mech Tower | 20d | 2026-02-25 | 2026-03-24 | P2.L6.SMT.1110, CX.B2.HYDR.1000, FRG.P2.L6.SMT.1040 |  | 24d |
| P2.L6.SMT.1180 |  | Paint - Finish Coat / L6 - S. Mech Tower | 2d | 2026-03-02 | 2026-03-03 | P2.L6.SMT.1170 |  | 39d |
| P2.L6.SMT.1190 |  | Trim All MEPF Finishes / L6 - S. Mech Tower | 2d | 2026-03-04 | 2026-03-05 | P2.L6.SMT.1180 |  | 40d |
| P2.L6.SMT.1340 |  | Wall Protection / L6 - S. Mech Tower | 5d | 2026-03-04 | 2026-03-10 | P2.L6.SMT.1180, BP7.102.3.300 |  | 39d |
| P2.L6.SMT.1210 |  | Doors & Hardware / L6 - S. Mech Tower | 2d | 2026-03-06 | 2026-03-09 | P2.L6.SMT.1190 |  | 40d |
| P2.L6.SMT.1150 |  | Insulate HVAC / Plumbing Pipe / L6 - S. Mech Tower | 5d | 2026-03-25 | 2026-03-31 | P2.L6.SMT.1260, P2.L6.SMT.1130 |  | 24d |
| P2.L6.SMT.1220 |  | Trades Inspect & Verify R/I Work Completed to Specs / L6 - S. Mech Tower | 5d | 2026-04-01 | 2026-04-07 | P2.L6.SMT.1210, P2.L6.SMT.1120, P2.L6.SMT.1150, P2.L6.SMT.1340 |  | 24d |
| P2.L6.SMT.1240 |  | Energize Elec Panels - Lock Doors and Limit Access / L6 - S. Mech Tower | 5d | 2026-04-08 | 2026-04-14 | P2.L6.SMT.1220, CX.B2.SWGR.1010, CX.B2.MVEE.1010 |  | 24d |
| P2.L6.SMT.1230 |  | HVAC System Ready for Start Up / L6 - S. Mech Tower | 0d | 2026-04-14 | 2026-04-14 | P2.L6.SMT.1160 FF, P2.L6.SMT.1240 |  | 24d |
|  | 8 | **East Mechanical Tower / Rough In & Finish / Level 6** |  | 2025-04-10 | 2026-03-31 |  |  |  |
| P2.L6.EMT.1070 |  | Set & Connect - Mech Equipment / L6 - E. Mech Tower | 10d | 2025-04-10 A | 2025-04-11 A | P2.L5.EMT.1070, P2.6.03.630 | 100% |  |
| P2.L6.EMT.1030 |  | In Wall - Mech/Plumbing - CMU / L6 - E. Mech Tower | 10d | 2025-08-11 A | 2025-09-18 A | P2.L6.EMT.1010 SS | 100% |  |
| P2.L6.EMT.1000 |  | Insulation - Exterior Wall Assembly / L6 - E. Mech Tower | 5d | 2025-09-11 A | 2025-09-15 A | P2.FAC.2.Z3.150 | 100% |  |
| P2.L6.EMT.1010 |  | CMU - Lay Block / L6 - E. Mech Tower | 10d | 2025-10-16 A | 2025-10-23 A | P2.L4.EMT.1020, P2.L6.EMT.1000 | 100% |  |
| P2.L6.EMT.1020 |  | In Wall - Electrical - CMU / L6 - E. Mech Tower | 10d | 2025-10-16 A | 2025-10-23 A | P2.L6.EMT.1010 SS | 100% |  |
| P2.L6.EMT.1040 |  | Paint - CMU Block Fill / L6 - E. Mech Tower | 10d | 2025-10-29 A | 2025-11-04 A | P2.L6.EMT.1010 | 100% |  |
| P2.L6.EMT.1050 |  | CMU - Point & Patch / L6 - E. Mech Tower | 10d | 2025-11-05 A | 2025-11-18 A | P2.L6.EMT.1040, P2.L6.EMT.1030, P2.L6.EMT.1020 | 100% |  |
| P2.L6.EMT.1060 |  | Paint Prime & 1st Coat - CMU / L6 - E. Mech Tower | 10d | 2025-11-10 A | 2025-11-15 A | P2.L6.EMT.1050 SS | 100% |  |
| P2.L6.EMT.1080 |  | Set & Connect - Elect Panels and Equipment / L6 - E. Mech Tower | 5d | 2025-11-24 A | 2025-11-26 A | P2.L6.EMT.1060 | 100% |  |
| P2.L6.EMT.1120 |  | BAS - Equip Tie In / L6 - E. Mech Tower | 5d | 2025-11-24 A | 2025-11-26 A | P2.L6.EMT.1070, P2.L6.EMT.1060 | 100% |  |
| P2.L6.EMT.1100 |  | HVAC Piping Connections to Shaft Riser / L6 - E. Mech Tower | 20d | 2025-12-01 | 2025-12-29 | P2.L6.EMT.1070 |  | 59d |
| P2.L6.EMT.1250 |  | HVAC Duct Connections to Shaft Riser / L6 - E. Mech Tower | 5d | 2025-12-01 | 2025-12-05 | P2.L6.EMT.1070 |  | 74d |
| P2.L6.EMT.1200 |  | Flooring Prep - Epoxy Floors / L6 - E. Mech Tower | 3d | 2025-12-29 | 2025-12-31 | P2.L5.EMT.1260, P2.L6.EMT.1080 |  | 53d |
| P2.L6.EMT.1130 |  | Test/Inspect Duct & Piping / L6 - E. Mech Tower | 15d | 2025-12-30 | 2026-01-20 | P2.L6.EMT.1100, P2.L6.EMT.1250 |  | 59d |
| P2.L6.EMT.1260 |  | Flooring - Epoxy Floors / L6 - E. Mech Tower | 2d | 2026-01-02 | 2026-01-05 | P2.L6.EMT.1200 |  | 53d |
| P2.L6.EMT.1090 |  | Panelboards, Interconnect Wiring, and Remaining Room Buildout of All Elec/FA Systems / L6 - E. Mech Tower | 10d | 2026-01-06 | 2026-01-19 | BP1.262.3.200, BP1.262.3.100, P2.L6.EMT.1260, P2.L6.EMT.1080 |  | 58d |
| P2.L6.EMT.1140 |  | Pull Wire - In From Distribution Panels / Out to Branch Circuits / L6 - E. Mech Tower | 5d | 2026-01-20 | 2026-01-26 | P2.L6.EMT.1090 |  | 58d |
| FRG.P2.L6.EMT.1040 |  | AHU Piping Install / L6 - E. Mech Tower - FRAGNET | 20d | 2026-01-21 | 2026-02-17 | FRG.P2.L4.EMT.1020 |  | 39d |
| P2.L6.EMT.1160 |  | Electrical Tie in to Equipment / L6 - E. Mech Tower | 5d | 2026-01-27 | 2026-02-02 | P2.L6.EMT.1140, P2.L6.EMT.1070 |  | 75d |
| P2.L6.EMT.1170 |  | Test & Terminate / L6 - E. Mech Tower | 5d | 2026-01-27 | 2026-02-02 | P2.L6.EMT.1140 |  | 58d |
| P2.L6.EMT.1110 |  | HVAC Piping - Equip Tie In / L6 - E. Mech Tower | 20d | 2026-01-28 | 2026-02-24 | P2.L6.EMT.1070, CX.B2.HYDR.1000 |  | 34d |
| P2.L6.EMT.1230 |  | HVAC System Ready for Start Up / L6 - E. Mech Tower | 0d | 2026-02-02 | 2026-02-02 | P2.L6.EMT.1160 FF |  | 75d |
| P2.L6.EMT.1180 |  | Paint - Finish Coat / L6 - E. Mech Tower | 2d | 2026-02-03 | 2026-02-04 | P2.L6.EMT.1170 |  | 58d |
| P2.L6.EMT.1190 |  | Trim All MEPF Finishes / L6 - E. Mech Tower | 2d | 2026-02-05 | 2026-02-06 | P2.L6.EMT.1180 |  | 59d |
| P2.L6.EMT.1210 |  | Doors & Hardware / L6 - E. Mech Tower | 2d | 2026-02-09 | 2026-02-10 | P2.L6.EMT.1190 |  | 59d |
| P2.L6.EMT.1340 |  | Wall Protection / L6 - E. Mech Tower | 5d | 2026-02-19 | 2026-02-25 | P2.L6.EMT.1180, BP7.102.3.300 |  | 48d |
| P2.L6.EMT.1150 |  | Insulate HVAC / Plumbing Pipe / L6 - E. Mech Tower | 15d | 2026-02-25 | 2026-03-17 | P2.L6.EMT.1130, P2.L6.EMT.1110 |  | 34d |
| P2.L6.EMT.1220 |  | Trades Inspect & Verify R/I Work Completed to Specs / L6 - E. Mech Tower | 5d | 2026-03-18 | 2026-03-24 | P2.L6.EMT.1210, P2.L6.EMT.1120, P2.L6.EMT.1150, P2.L6.EMT.1340, FRG.P2.L6.EMT.1040 |  | 34d |
| P2.L6.EMT.1240 |  | Energize Elec Panels - Lock Doors and Limit Access / L6 - E. Mech Tower | 5d | 2026-03-25 | 2026-03-31 | P2.L6.EMT.1220, CX.B2.SWGR.1010, CX.B2.MVEE.1010, FRG.P2.L6.EMT.1040 |  | 34d |
|  | L7 | **L7 / BUILDOUT** |  | 2025-05-10 | 2026-12-14 |  |  |  |
|  | L7 | **CORE & SUPPORT SPACES / LEVEL 7** |  | 2025-05-27 | 2026-12-14 |  |  |  |
|  | 3 | **ROUGH IN - Core & Support Spaces / Level 7** |  | 2025-05-27 | 2026-03-18 |  |  |  |
|  | Z112 | **South / Level 7** |  | 2025-06-09 | 2026-03-18 |  |  |  |
| P2.L7.S.1000 |  | Layout - All Trades / L7 / South | 5d | 2025-06-09 A | 2025-06-13 A | P2.7.03.610 | 100% |  |
| P2.L7.S.1020 |  | OH - Structural Supports (All Trades) / L7 / South | 5d | 2025-06-09 A | 2025-06-13 A | P2.L7.S.1000 | 100% |  |
| P2.L7.S.1030 |  | OH - MEPF - Hangers & Supports / L7 / South | 10d | 2025-06-09 A | 2025-06-13 A | P2.L7.S.1000, P2.BIM.L7.40.140 | 100% |  |
| P2.L7.S.1010 |  | Framing - Top Track / L7 / South | 10d | 2025-06-16 A | 2025-06-30 A | P2.L7.S.1000 FF+1d, P2.L6.S.1010 FF+2d | 100% |  |

| ID | WBS | Task | Duration | Start | Finish | Predecessors | Complete | Total float | Constraint |
| --- | --- | --- | --- | --- | --- | --- | --- | --- | --- |
| P2.L7.S.1090 |  | Framing - Priority Walls & Door Frames / L7 / South | 10d | 2025-06-16 A | 2025-06-30 A | P2.L6.S.1090, P2.L7.S.1010 | 100% |  |  |
| P2.L7.S.1170 |  | OH - Fire Suppression / L7 / South | 10d | 2025-06-16 A | 2025-06-30 A | P2.L7.S.1030 | 100% |  |  |
| P2.L7.S.1130 |  | Framing - Priority Walls - AHJ Inspections / L7 / South | 5d | 2025-06-23 A | 2025-07-18 A | P2.L7.S.1090 | 100% |  |  |
| P2.L7.S.1160 |  | Spray/Seal/Firestop - Head of Wall - Priority Walls / L7 / South | 5d | 2025-06-23 A | 2025-06-30 A | P2.L7.S.1140 FF | 100% |  |  |
| P2.L7.S.1140 |  | Hang/Tape/Finish - Priority Walls / L7 / South | 10d | 2025-07-16 A | 2025-08-11 A | P2.L7.S.1020, P2.L7.S.1130 | 100% |  |  |
| P2.L7.S.1150 |  | Paint Prime & 1st Coat - Priority Walls / L7 / South | 10d | 2025-07-18 A | 2025-07-30 A | P2.L7.S.1160 SS | 100% |  |  |
| P2.L7.S.1180 |  | OH - Plumbing Piping / L7 / South | 20d | 2025-08-11 A | 2025-09-11 A | P2.L6.S.1570, P2.L7.S.1030, P2.L7.S.1150 | 100% |  |  |
| P2.L7.S.1190 |  | OH - Electrical - 480/277v Distribution / L7 / South | 10d | 2025-08-20 A | 2025-09-12 A | P2.L7.S.1030, P2.L7.S.1150 | 100% |  |  |
| FRG.P2.L7.S.1720 |  | HVAC Piping - Steel Racks Delivery / L7 / South - FRAGNET | 0d | 2025-08-29 A | 2025-08-29 A | P2.L7.S.1030 FF | 100% |  |  |
| FRG.P2.L7.S.1640 |  | HVAC Piping - Copper Racks Delivery / L7 / South - FRAGNET | 0d | 2025-08-29 A | 2025-08-29 A | P2.L7.S.1030 FF | 100% |  | finish on or after 2025-08-29 |
| FRG.P2.L7.S.1650 |  | HVAC Piping - Copper Racks Staging & Layout / L7 / South - FRAGNET | 5d | 2025-09-02 A | 2025-09-08 A | FRG.P2.L7.S.1640 | 100% |  |  |
| FRG.P2.L7.S.1730 |  | HVAC Piping - Steel Racks / L7 / South - FRAGNET | 20d | 2025-09-02 A | 2025-09-30 A | FRG.P2.L7.S.1720 | 100% |  |  |
| P2.L7.S.1230 |  | OH - Electrical - 208/120v Branch / L7 / South | 10d | 2025-09-08 A | 2025-12-11 | P2.L7.S.1190 | 10% | 30d |  |
| FRG.P2.L7.S.1660 |  | HVAC Piping - Hanging Copper Racks / L7 / South - FRAGNET | 20d | 2025-09-09 A | 2025-10-06 A | FRG.P2.L7.S.1650 | 100% |  |  |
| FRG.P2.L7.S.1740 |  | HVAC Piping - Hanging Steel Racks / L7 / South - FRAGNET | 20d | 2025-10-01 A | 2025-10-27 A | FRG.P2.L7.S.1730, P2.L6.INT.S.2090, P2.L6.INT.S.1180, P2.L6.INT.N.1180 | 100% |  |  |
| P2.L7.S.1210 |  | OH - Hang Duct - HP Mains / L7 / South | 20d | 2025-10-01 A | 2025-10-27 A | P2.L7.S.1170, P2.L7.S.1030, P2.L6.S.1210 FF+5d | 100% |  |  |
| P2.L7.S.1220 |  | OH - HVAC Piping (High) / L7 / South | 20d | 2025-10-07 A | 2025-10-27 A | P2.L7.S.1170, P2.L7.S.1030, FRG.P2.L7.S.1660 | 100% |  |  |
| P2.L7.S.1420 |  | Framing - Balance of Framing & Door Frames / L7 / South | 10d | 2025-10-20 A | 2025-10-31 A | P2.L8.S.1420, P2.L8.N.1420 | 100% |  |  |
| P2.L7.S.1260 |  | OH - DALT - HP Mains / L7 / South | 10d | 2025-10-31 A | 2025-12-11 | P2.L7.S.1210 | 10% | 65d |  |
| P2.L7.S.1300 |  | OH - Hang Duct - LP Branch / L7 / South | 15d | 2025-11-10 A | 2025-12-19 | P2.L7.S.1260 SS |  | 69d |  |
| P2.L7.S.1560 |  | OH - HVAC Piping (Low) / L7 / South | 20d | 2025-11-10 A | 2025-12-12 | P2.L7.S.1220 | 50% | 64d |  |
| P2.L7.S.1430 |  | In Wall - Plumbing - Framing / L7 / South | 10d | 2025-11-14 A | 2025-11-28 A | P2.L7.S.1420 | 100% |  |  |
| P2.L7.S.1440 |  | In Wall - Electrical - Framing / L7 / South | 10d | 2025-11-14 A | 2025-12-26 | P2.L7.S.1420, P2.L7.S.1230 |  | 30d |  |
| P2.L7.S.1200 |  | Firestop - Thru Wall - Priority Walls / L7 / South | 5d | 2025-12-01 | 2025-12-05 | P2.L7.S.1150 |  | 79d |  |
| P2.L7.S.1240 |  | OH - Plumbing - Test / L7 / South | 10d | 2025-12-01 | 2025-12-12 | P2.L7.S.1180 |  | 84d |  |
| P2.L7.S.1250 |  | Pull Wire - Electrical - 480/277v Distribution / L7 / South | 10d | 2025-12-01 | 2025-12-12 | P2.L7.S.1190, P2.7.HE.5959.1050 |  | 104d |  |
| P2.L7.S.1450 |  | In Wall - Backing/Blocking/Supports / L7 / South | 10d | 2025-12-01 | 2025-12-12 | P2.L7.S.1420 |  | 39d |  |
| P2.L7.S.1290 |  | OH - Insulate HP Duct / L7 / South | 10d | 2025-12-12 | 2025-12-26 | P2.L7.S.1260 |  | 65d |  |
| P2.L7.S.1310 |  | OH - Set & Connect Mech Equipment / L7 / South | 10d | 2025-12-12 | 2025-12-26 | P2.L7.S.1260 |  | 65d |  |
| P2.L7.S.1270 |  | OH - HVAC Piping - Test / L7 / South | 10d | 2025-12-15 | 2025-12-29 | P2.L7.S.1560, FRG.P2.L7.S.1740 |  | 64d |  |
| P2.L7.S.1280 |  | OH - Insulate Plumbing / L7 / South | 10d | 2025-12-15 | 2025-12-29 | P2.L7.S.1240 |  | 84d |  |
| P2.L7.S.1350 |  | OH - Insulate LP Duct / L7 / South | 10d | 2025-12-22 | 2026-01-06 | P2.L7.S.1300, P2.L7.S.1200 |  | 69d |  |
| P2.L7.S.1320 |  | OH - Electrical - Equip Tie In / L7 / South | 10d | 2025-12-29 | 2026-01-12 | P2.L7.S.1310 |  | 65d |  |
| P2.L7.S.1460 |  | AHJ Inspections - Wall Close In / L7 / South | 5d | 2025-12-29 | 2026-01-05 | P2.L7.S.1440, P2.L7.S.1450, P2.L7.S.1430 |  | 30d |  |
| P2.L7.S.1340 |  | OH - Insulate HVAC Pipe / L7 / South | 10d | 2025-12-30 | 2026-01-13 | P2.L7.S.1290, P2.L7.S.1270 |  | 64d |  |
| P2.L7.S.1380 |  | OH - Conduit - Low Volt - Fire Alarm / L7 / South | 10d | 2026-01-07 | 2026-01-20 | P2.L7.S.1310, P2.L7.S.1350 |  | 69d |  |
| P2.L7.S.1390 |  | OH - Conduit - Low Volt - Telecom / L7 / South | 10d | 2026-01-07 | 2026-01-20 | P2.L7.S.1350 |  | 69d |  |
| P2.L7.S.1410 |  | OH - Conduit - Low Volt - Medical Services/Nurse Call (?) / L7 / South | 10d | 2026-01-07 | 2026-01-20 | P2.L7.S.1350 |  | 69d |  |
| P2.L7.S.1360 |  | Pull Wire - Electrical - 208/120v Branch & Equip / L7 / South | 20d | 2026-01-13 | 2026-02-09 | P2.L7.S.1230, P2.L7.S.1320, P2.L7.S.1440 |  | 65d |  |
| P2.L7.S.1370 |  | OH - Conduit - Low Volt - BAS/Controls / L7 / South | 10d | 2026-01-14 | 2026-01-27 | P2.L7.S.1310, P2.L7.S.1340 |  | 64d |  |
| P2.L7.S.1400 |  | OH - Conduit - Low Volt - Security / L7 / South | 10d | 2026-01-14 | 2026-01-27 | P2.L7.S.1340 |  | 64d |  |
| P2.L7.S.1330 |  | OH - HVAC Piping - Equip Tie In / L7 / South | 20d | 2026-01-28 | 2026-02-24 | P2.L7.S.1310, P2.L7.S.1270, CX.B2.HYDR.1000 |  | 54d |  |
| P2.L7.S.1470 |  | Hang-Tape-Finish - Walls and Hard Lid Ceilings / L7 / South | 15d | 2026-02-05 | 2026-02-25 | P2.SUM.175, P2.L7.S.1460, P2.L8.N.1470, P2.L8.S.1470 |  | 8d |  |
| P2.L7.S.1480 |  | Spray/Seal/Firestop - Head of Wall / L7 / South | 10d | 2026-02-26 | 2026-03-11 | P2.L7.S.1470 |  | 43d |  |
| P2.L7.S.1490 |  | Firestop - Thru Wall / L7 / South | 10d | 2026-02-26 | 2026-03-11 | P2.L7.S.1470, P2.L7.S.1280 |  | 43d |  |
| P2.L7.S.1500 |  | Pull Wire - Low Volt - BAS/Controls / L7 / South | 10d | 2026-02-26 | 2026-03-11 | P2.L7.S.1470, P2.L7.S.1370 |  | 43d |  |
| P2.L7.S.1510 |  | Pull Wire - Low Volt - Fire Alarm / L7 / South | 10d | 2026-02-26 | 2026-03-11 | P2.L7.S.1470, P2.L7.S.1380 |  | 43d |  |
| P2.L7.S.1520 |  | Pull Wire - Low Volt - Telecom / L7 / South | 10d | 2026-02-26 | 2026-03-11 | P2.L7.S.1470, P2.L7.S.1390 |  | 43d |  |
| P2.L7.S.1530 |  | Pull Wire - Low Volt - Security / L7 / South | 10d | 2026-02-26 | 2026-03-11 | P2.L7.S.1470, P2.L7.S.1400 |  | 43d |  |
| P2.L7.S.1540 |  | Pull Wire - Low Volt - Medical Services/Nurse Call (?) / L7 / South | 10d | 2026-02-26 | 2026-03-11 | P2.L7.S.1470, P2.L7.S.1410 |  | 43d |  |
| P2.L7.S.1550 |  | Trades Inspect & Verify R/I Work Completed to Specs / L7 / South | 5d | 2026-03-12 | 2026-03-18 | P2.L7.S.1360, P2.L7.S.1500, P2.L7.S.1510, P2.L7.S.1520, P2.L7.S.1530, P2.L7.S.1490, P2.L7.S.1480, P2.L7.S.1250, P2.L7.S.1540, P2.L7.S.1330 |  | 43d |  |
|  | Z1121 | **North / Level 7** |  | 2025-05-27 | 2026-03-18 |  |  |  |  |
| P2.L7.N.1000 |  | Layout - All Trades / L7 / North | 5d | 2025-05-27 A | 2025-06-24 A | P2.8.03.610 | 100% |  |  |
| P2.L7.N.1010 |  | Framing - Top Track / L7 / North | 10d | 2025-06-04 A | 2025-06-17 A | P2.L7.N.1000 | 100% |  |  |
| P2.L7.N.1020 |  | OH - Structural Supports (All Trades) / L7 / North | 5d | 2025-06-13 A | 2025-06-19 A | P2.L7.N.1000 | 100% |  |  |
| P2.L7.N.1030 |  | OH - MEPF - Hangers & Supports / L7 / North | 10d | 2025-06-13 A | 2025-06-30 A | P2.L7.N.1000, P2.BIM.L7.40.140 | 100% |  |  |
| P2.L7.N.1170 |  | OH - Fire Suppression / L7 / North | 10d | 2025-06-18 A | 2025-07-31 A | P2.L7.N.1030 | 100% |  |  |
| P2.L7.N.1090 |  | Framing - Priority Walls & Door Frames / L7 / North | 10d | 2025-06-25 A | 2025-07-31 A | P2.L7.N.1010 | 100% |  |  |
| P2.L7.N.1150 |  | Paint Prime & 1st Coat - Priority Walls / L7 / North | 10d | 2025-07-17 A | 2025-07-24 A | P2.L7.N.1160 | 100% |  |  |
| P2.L7.N.1160 |  | Spray/Seal/Firestop - Head of Wall - Priority Walls / L7 / North | 5d | 2025-07-17 A | 2025-07-24 A | P2.L7.N.1140 | 100% |  |  |
| P2.L7.N.1130 |  | Framing - Priority Walls - AHJ Inspections / L7 / North | 5d | 2025-07-22 A | 2025-07-30 A | P2.L7.N.1090 | 100% |  |  |
| P2.L7.N.1140 |  | Hang/Tape/Finish - Priority Walls / L7 / North | 10d | 2025-07-31 A | 2025-08-21 A | P2.L7.N.1020, P2.L7.N.1130 | 100% |  |  |
| P2.L7.N.1180 |  | OH - Plumbing Piping (High) / L7 / North | 20d | 2025-08-25 A | 2025-09-18 A | P2.L6.N.1560, P2.L7.N.1030, P2.L7.N.1150 | 100% |  |  |
| FRG.P2.L7.N.1670 |  | HVAC Piping Delivery / L7 / North - FRAGNET | 0d | 2025-08-29 A | 2025-08-29 A | P2.L7.N.1030 FF | 100% |  | finish on or after 2025-08-29 |
| FRG.P2.L7.N.1680 |  | HVAC Piping - Staging & Layout / L7 / North - FRAGNET | 5d | 2025-09-02 A | 2025-09-08 A | FRG.P2.L7.N.1670 | 100% |  |  |
| FRG.P2.L7.N.1690 |  | HVAC Piping - Hanging Copper Racks / L7 / North - FRAGNET | 20d | 2025-09-09 A | 2025-10-01 A | FRG.P2.L7.N.1680 | 100% |  |  |
| P2.L7.N.1190 |  | OH - Electrical - 480/277v Distribution / L7 / North | 10d | 2025-09-15 A | 2025-11-07 A | P2.L7.N.1030, P2.L7.N.1150 | 100% |  |  |
| P2.L7.N.1220 |  | OH - HVAC Piping (High) / L7 / North | 20d | 2025-10-02 A | 2025-11-28 A | P2.L7.N.1030, P2.L7.N.1170, FRG.P2.L7.N.1690 | 100% |  |  |
| P2.L7.N.1210 |  | OH - Hang Duct - HP Mains / L7 / North | 15d | 2025-10-20 A | 2025-11-28 A | P2.L6.N.1210, P2.L7.N.1030, P2.L7.N.1170 | 100% |  |  |
| P2.L7.N.1300 |  | OH - Hang Duct - LP Branch / L7 / North | 20d | 2025-10-20 A | 2025-12-29 | P2.L7.N.1260 | 50% | 74d |  |

| ID | WBS | Task | Duration | Start | Finish | Predecessors | Complete | Total float |
| --- | --- | --- | --- | --- | --- | --- | --- | --- |
| P2.L7.N.1420 |  | Framing - Balance of Framing & Door Frames / L7 / North | 10d | 2025-10-20 A | 2025-10-31 A | P2.L8.N.1420, P2.L8.S.1420 | 100% |  |
| P2.L7.N.1560 |  | OH - HVAC Piping (Low) / L7 / North | 20d | 2025-10-30 A | 2025-12-12 | P2.L7.N.1220 | 50% | 54d |
| P2.L7.N.1570 |  | OH - Plumbing Piping (Low) / L7 / North | 20d | 2025-10-31 A | 2025-12-26 | P2.L7.N.1180, P2.L7.N.1220 | 5% | 55d |
| P2.L7.N.1230 |  | OH - Electrical - 208/120v Branch / L7 / North | 10d | 2025-11-10 A | 2025-12-12 | P2.L7.N.1190 |  | 29d |
| P2.L7.N.1430 |  | In Wall - Plumbing - Framing / L7 / North | 10d | 2025-11-18 A | 2025-11-28 A | P2.L7.N.1420 | 100% |  |
| P2.L7.N.1200 |  | Firestop - Thru Wall - Priority Walls / L7 / North | 5d | 2025-12-01 | 2025-12-05 | P2.L7.N.1150 |  | 89d |
| P2.L7.N.1250 |  | Pull Wire - Electrical - 480/277v Distribution / L7 / North | 10d | 2025-12-01 | 2025-12-12 | P2.L7.N.1190, P2.7.HE.2941.1050, P2.7.HE.2803.1050 |  | 104d |
| P2.L7.N.1260 |  | OH - DALT - HP Mains / L7 / North | 10d | 2025-12-01 | 2025-12-12 | P2.L7.N.1210 |  | 54d |
| P2.L7.N.1450 |  | In Wall - Backing/Blocking/Supports / L7 / North | 10d | 2025-12-01 | 2025-12-12 | P2.L7.N.1420 |  | 39d |
| P2.L7.N.1270 |  | OH - HVAC Piping - Test / L7 / North | 10d | 2025-12-15 | 2025-12-29 | P2.L7.N.1560 |  | 54d |
| P2.L7.N.1290 |  | OH - Insulate HP Duct / L7 / North | 10d | 2025-12-15 | 2025-12-29 | P2.L7.N.1260 |  | 54d |
| P2.L7.N.1310 |  | OH - Set & Connect Mech Equipment / L7 / North | 10d | 2025-12-15 | 2025-12-29 | P2.L7.N.1260 |  | 64d |
| P2.L7.N.1390 |  | OH - Conduit - Low Volt - Telecom / L7 / North | 10d | 2025-12-15 | 2025-12-29 | P2.L7.N.1230 |  | 84d |
| P2.L7.N.1440 |  | In Wall - Electrical - Framing / L7 / North | 10d | 2025-12-15 | 2025-12-29 | P2.L7.N.1230, P2.L7.N.1090, P2.L7.N.1420 |  | 29d |
| P2.L7.N.1240 |  | OH - Plumbing - Test / L7 / North | 20d | 2025-12-29 | 2026-01-26 | P2.L7.N.1570 |  | 55d |
| P2.L7.N.1320 |  | OH - Electrical - Equip Tie In / L7 / North | 10d | 2025-12-30 | 2026-01-13 | P2.L7.N.1310 |  | 64d |
| P2.L7.N.1340 |  | OH - Insulate HVAC Pipe / L7 / North | 10d | 2025-12-30 | 2026-01-13 | P2.L7.N.1290, P2.L7.N.1270 |  | 54d |
| P2.L7.N.1350 |  | OH - Insulate LP Duct / L7 / North | 10d | 2025-12-30 | 2026-01-13 | P2.L7.N.1300, P2.L7.N.1200 |  | 74d |
| P2.L7.N.1380 |  | OH - Conduit - Low Volt - Fire Alarm / L7 / North | 10d | 2025-12-30 | 2026-01-13 | P2.L7.N.1230, P2.L7.N.1310 |  | 74d |
| P2.L7.N.1460 |  | AHJ Inspections - Wall Close In / L7 / North | 5d | 2025-12-30 | 2026-01-06 | P2.L7.N.1450, P2.L7.N.1430, P2.L7.N.1440 |  | 29d |
| P2.L7.N.1360 |  | Pull Wire - Electrical - 208/120v Branch & Equip / L7 / North | 20d | 2026-01-14 | 2026-02-10 | P2.L7.N.1230, P2.L7.N.1320, P2.L7.N.1440 |  | 64d |
| P2.L7.N.1370 |  | OH - Conduit - Low Volt - BAS/Controls / L7 / North | 10d | 2026-01-14 | 2026-01-27 | P2.L7.N.1310, P2.L7.N.1340 |  | 54d |
| P2.L7.N.1400 |  | OH - Conduit - Low Volt - Security / L7 / North | 10d | 2026-01-14 | 2026-01-27 | P2.L7.N.1340 |  | 64d |
| P2.L7.N.1280 |  | OH - Insulate Plumbing / L7 / North | 10d | 2026-01-27 | 2026-02-09 | P2.L7.N.1240 |  | 55d |
| P2.L7.N.1330 |  | OH - HVAC Piping - Equip Tie In / L7 / North | 20d | 2026-01-28 | 2026-02-24 | P2.L7.N.1310, P2.L7.N.1270, CX.B2.HYDR.1000 |  | 54d |
| P2.L7.N.1410 |  | OH - Conduit - Low Volt - Medical Services/Nurse Call (?) / L7 / North | 10d | 2026-01-28 | 2026-02-10 | P2.L7.N.1370 |  | 54d |
| P2.L7.N.1470 |  | Hang-Tape-Finish - Walls and Hard Lid Ceilings / L7 / North | 15d | 2026-02-05 | 2026-02-25 | P2.SUM.175, P2.L7.N.1460, P2.L8.S.1470, P2.L8.N.1470 |  | 8d |
| P2.L7.N.1480 |  | Spray/Seal/Firestop - Head of Wall / L7 / North | 10d | 2026-02-12 | 2026-02-25 | P2.L7.N.1470 FF |  | 53d |
| P2.L7.N.1490 |  | Firestop - Thru Wall / L7 / North | 10d | 2026-02-26 | 2026-03-11 | P2.L7.N.1470, P2.L7.N.1280, P2.L7.N.1350 |  | 43d |
| P2.L7.N.1500 |  | Pull Wire - Low Volt - BAS/Controls / L7 / North | 10d | 2026-02-26 | 2026-03-11 | P2.L7.N.1470, P2.L7.N.1370 |  | 43d |
| P2.L7.N.1510 |  | Pull Wire - Low Volt - Fire Alarm / L7 / North | 10d | 2026-02-26 | 2026-03-11 | P2.L7.N.1470, P2.L7.N.1380 |  | 43d |
| P2.L7.N.1520 |  | Pull Wire - Low Volt - Telecom / L7 / North | 10d | 2026-02-26 | 2026-03-11 | P2.L7.N.1470, P2.L7.N.1390 |  | 43d |
| P2.L7.N.1530 |  | Pull Wire - Low Volt - Security / L7 / North | 10d | 2026-02-26 | 2026-03-11 | P2.L7.N.1470, P2.L7.N.1400 |  | 43d |
| P2.L7.N.1540 |  | Pull Wire - Low Volt - Medical Services/Nurse Call (?) / L7 / North | 10d | 2026-02-26 | 2026-03-11 | P2.L7.N.1470, P2.L7.N.1410 |  | 43d |
| P2.L7.N.1550 |  | Trades Inspect & Verify R/I Work Completed to Specs / L7 / North | 5d | 2026-03-12 | 2026-03-18 | P2.L7.N.1490, P2.L7.N.1480, P2.L7.N.1530, P2.L7.N.1250, P2.L7.N.1540, P2.L7.N.1360, P2.L7.N.1500, P2.L7.N.1510, P2.L7.N.1520, P2.L7.N.1330 |  | 43d |
|  | 1 | **House Electrical Rooms / Level 7** |  | 2025-07-08 | 2026-01-02 |  |  |  |
|  | 9 | **House Electrical Room 7-2941** |  | 2025-07-08 | 2026-01-02 |  |  |  |
| P2.7.HE.2941.1000 |  | Framing and Blocking / L7 / North / 2941 | 3d | 2025-07-08 A | 2025-07-11 A | P2.L7.N.1090 | 100% |  |
| P2.7.HE.2941.1010 |  | In Wall Rough In / L7 / North / 2941 | 2d | 2025-07-15 A | 2025-07-18 A | P2.7.HE.2941.1000 | 100% |  |
| P2.7.HE.2941.1020 |  | Inspections - Wall Close In / L7 / North / 2941 | 2d | 2025-07-19 A | 2025-07-19 A | P2.7.HE.2941.1010 | 100% |  |
| P2.7.HE.2941.1030 |  | Hang-Tape-Finish / L7 / North / 2941 | 5d | 2025-07-22 A | 2025-07-30 A | P2.7.HE.2941.1020, P2.MR.W.160 | 100% |  |
| P2.7.HE.2941.1040 |  | Paint Prime & 1st Coat / L7 / North / 2941 | 2d | 2025-08-04 A | 2025-08-05 A | P2.7.HE.2941.1030 | 100% |  |
| P2.7.HE.2941.1050 |  | Cans/Troughs/Backboxes/XFMRs / L7 / North / 2941 | 5d | 2025-09-02 A | 2025-09-10 A | P2.7.HE.2941.1040 | 100% |  |
| P2.7.HE.2941.1060 |  | Risers and OH Conduit Connections / L7 / North / 2941 | 5d | 2025-09-15 A | 2025-09-26 A | P2.7.HE.2941.1050 | 100% |  |
| P2.7.HE.2941.1070 |  | Pull Wire - In From Distribution Panels / Out to Branch Circuits / L7 / North / 2941 | 5d | 2025-11-03 A | 2025-11-07 A | P2.7.HE.2941.1060 | 100% |  |
| P2.7.HE.2941.1080 |  | Panelboards, Interconnect Wiring, and Remaining Room Buildout of All Systems / L7 / North / 2941 | 10d | 2025-12-01 | 2025-12-12 | BP1.262.3.100, BP1.262.3.210, P2.7.HE.2941.1060 |  | 26d |
| P2.7.HE.2941.1090 |  | Test & Terminate / L7 / North / 2941 | 5d | 2025-12-15 | 2025-12-19 | P2.7.HE.2941.1070, P2.7.HE.2941.1080 |  | 26d |
| P2.7.HE.2941.1100 |  | Paint - Finish Coat / L7 / North / 2941 | 2d | 2025-12-22 | 2025-12-23 | P2.7.HE.2941.1090 |  | 26d |
| P2.7.HE.2941.1110 |  | Trim All MEPF Finishes / L7 / North / 2941 | 2d | 2025-12-24 | 2025-12-26 | P2.7.HE.2941.1100 |  | 26d |
| P2.7.HE.2941.1120 |  | Flooring / L7 / North / 2941 | 2d | 2025-12-29 | 2025-12-30 | P2.7.HE.2941.1110 |  | 26d |
| P2.7.HE.2941.1130 |  | Doors & Hardware / L7 / North / 2941 | 2d | 2025-12-31 | 2026-01-02 | P2.7.HE.2941.1120 |  | 26d |
| P2.7.HE.2941.1140 |  | Panels Ready to Energize - Lock Doors and Limit Access / L7 / North / 2941 | 0d | 2026-01-02 | 2026-01-02 | P2.7.HE.2941.1130 FF, P2.7.HE.2941.1090 |  | 26d |
|  | 8 | **House Electrical Room 7-2803** |  | 2025-07-08 | 2026-01-02 |  |  |  |
| P2.7.HE.2803.1000 |  | Framing and Blocking / L7 / North / 2803 | 3d | 2025-07-08 A | 2025-07-11 A | P2.L7.N.1090 | 100% |  |
| P2.7.HE.2803.1010 |  | In Wall Rough In / L7 / North / 2803 | 2d | 2025-07-15 A | 2025-07-18 A | P2.7.HE.2803.1000 | 100% |  |
| P2.7.HE.2803.1020 |  | Inspections - Wall Close In / L7 / North / 2803 | 2d | 2025-07-19 A | 2025-07-19 A | P2.7.HE.2803.1010 | 100% |  |
| P2.7.HE.2803.1030 |  | Hang-Tape-Finish / L7 / North / 2803 | 5d | 2025-07-22 A | 2025-07-30 A | P2.7.HE.2803.1020, P2.FAC.2.Z1.190, P2.MR.2-8.140 | 100% |  |
| P2.7.HE.2803.1040 |  | Paint Prime & 1st Coat / L7 / North / 2803 | 2d | 2025-09-08 A | 2025-09-09 A | P2.7.HE.2803.1030 | 100% |  |
| P2.7.HE.2803.1050 |  | Cans/Troughs/Backboxes/XFMRs / L7 / North / 2803 | 5d | 2025-09-24 A | 2025-09-26 A | P2.7.HE.2803.1040 | 100% |  |
| P2.7.HE.2803.1060 |  | Risers and OH Conduit Connections / L7 / North / 2803 | 5d | 2025-09-29 A | 2025-10-10 A | P2.7.HE.2803.1050 | 100% |  |
| P2.7.HE.2803.1070 |  | Pull Wire - In From Distribution Panels / Out to Branch Circuits / L7 / North / 2803 | 5d | 2025-11-05 A | 2025-11-11 A | P2.7.HE.2803.1060 | 100% |  |
| P2.7.HE.2803.1080 |  | Panelboards, Interconnect Wiring, and Remaining Room Buildout of All Systems / L7 / North / 2803 | 10d | 2025-12-01 | 2025-12-12 | BP1.262.3.100, BP1.262.3.210, P2.7.HE.2803.1060 |  | 26d |
| P2.7.HE.2803.1090 |  | Test & Terminate / L7 / North / 2803 | 5d | 2025-12-15 | 2025-12-19 | P2.7.HE.2803.1070, P2.7.HE.2803.1080 |  | 26d |
| P2.7.HE.2803.1100 |  | Paint - Finish Coat / L7 / North / 2803 | 2d | 2025-12-22 | 2025-12-23 | P2.7.HE.2803.1090 |  | 26d |
| P2.7.HE.2803.1110 |  | Trim All MEPF Finishes / L7 / North / 2803 | 2d | 2025-12-24 | 2025-12-26 | P2.7.HE.2803.1100 |  | 26d |
| P2.7.HE.2803.1120 |  | Flooring / L7 / North / 2803 | 2d | 2025-12-29 | 2025-12-30 | P2.7.HE.2803.1110 |  | 26d |
| P2.7.HE.2803.1130 |  | Doors & Hardware / L7 / North / 2803 | 2d | 2025-12-31 | 2026-01-02 | P2.7.HE.2803.1120 |  | 26d |
| P2.7.HE.2803.1140 |  | Panels Ready to Energize - Lock Doors and Limit Access / L7 / North / 2803 | 0d | 2026-01-02 | 2026-01-02 | P2.7.HE.2803.1130 FF, P2.7.HE.2803.1090 |  | 26d |
|  | 7 | **House Electrical Room 7-5959** |  | 2025-07-08 | 2026-01-02 |  |  |  |
| P2.7.HE.5959.1000 |  | Framing and Blocking / L7 / South / 5959 | 3d | 2025-07-08 A | 2025-07-11 A | P2.L7.S.1090 | 100% |  |

| ID | WBS | Task | Duration | Start | Finish | Predecessors | Complete | Total float |
| --- | --- | --- | --- | --- | --- | --- | --- | --- |
| P2.7.HE.5959.1010 |  | In Wall Rough In / L7 / South / 5959 | 2d | 2025-07-15 A | 2025-07-18 A | P2.7.HE.5959.1000 | 100% |  |
| P2.7.HE.5959.1020 |  | Inspections - Wall Close In / L7 / South / 5959 | 2d | 2025-07-19 A | 2025-07-19 A | P2.7.HE.5959.1010 | 100% |  |
| P2.7.HE.5959.1030 |  | Hang-Tape-Finish / L7 / South / 5959 | 5d | 2025-07-22 A | 2025-07-30 A | P2.7.HE.5959.1020, P2.FAC.2.Z1.180, P2.L11.5-9.140 | 100% |  |
| P2.7.HE.5959.1040 |  | Paint Prime & 1st Coat / L7 / South / 5959 | 2d | 2025-09-02 A | 2025-09-03 A | P2.7.HE.5959.1030 | 100% |  |
| P2.7.HE.5959.1050 |  | Cans/Troughs/Backboxes/XFMRs / L7 / South / 5959 | 5d | 2025-09-08 A | 2025-09-11 A | P2.7.HE.5959.1040 | 100% |  |
| P2.7.HE.5959.1060 |  | Risers and OH Conduit Connections / L7 / South / 5959 | 5d | 2025-09-17 A | 2025-09-30 A | P2.7.HE.5959.1050 | 100% |  |
| P2.7.HE.5959.1070 |  | Pull Wire - In From Distribution Panels / Out to Branch Circuits / L7 / South / 5959 | 5d | 2025-11-03 A | 2025-11-07 A | P2.7.HE.5959.1060 | 100% |  |
| P2.7.HE.5959.1080 |  | Panelboards, Interconnect Wiring, and Remaining Room Buildout of All Systems / L7 / South / 5959 | 10d | 2025-12-01 | 2025-12-12 | BP1.262.3.100, BP1.262.3.210, P2.7.HE.5959.1060 |  | 26d |
| P2.7.HE.5959.1090 |  | Test & Terminate / L7 / South / 5959 | 5d | 2025-12-15 | 2025-12-19 | P2.7.HE.5959.1070, P2.7.HE.5959.1080 |  | 26d |
| P2.7.HE.5959.1100 |  | Paint - Finish Coat / L7 / South / 5959 | 2d | 2025-12-22 | 2025-12-23 | P2.7.HE.5959.1090 |  | 26d |
| P2.7.HE.5959.1110 |  | Trim All MEPF Finishes / L7 / South / 5959 | 2d | 2025-12-24 | 2025-12-26 | P2.7.HE.5959.1100 |  | 26d |
| P2.7.HE.5959.1120 |  | Flooring / L7 / South / 5959 | 2d | 2025-12-29 | 2025-12-30 | P2.7.HE.5959.1110 |  | 26d |
| P2.7.HE.5959.1130 |  | Doors & Hardware / L7 / South / 5959 | 2d | 2025-12-31 | 2026-01-02 | P2.7.HE.5959.1120 |  | 26d |
| P2.7.HE.5959.1140 |  | Panels Ready to Energize - Lock Doors and Limit Access / L7 / South / 5959 | 0d | 2026-01-02 | 2026-01-02 | P2.7.HE.5959.1130 FF, P2.7.HE.5959.1090 |  | 26d |
|  | 1 | **FINISHES - Core & Support Spaces / Level 7** |  | 2025-12-01 | 2026-12-14 |  |  |  |
|  | 5 | **Bathrooms - Break Rooms - Locker Rooms / Level 7** |  | 2025-12-01 | 2026-09-21 |  |  |  |
|  | 4 | **Lockers, Toilets, and Showers 7-3910 / 7-3920** |  | 2025-12-01 | 2026-09-21 |  |  |  |
| P2.L7.BR.1010 |  | Countertop Support Framing / L7 / Toilets 39XX | 5d | 2025-12-01 | 2025-12-05 | P2.L7.LC.1420 |  | 132d |
| P2.L7.BR.1000 |  | Plumbing - Set Pipe Carriers / L7 / Toilets 39XX | 5d | 2026-03-19 | 2026-03-25 | P2.L6.BR.2000, P2.L7.S.1240, P2.L7.N.1550 |  | 50d |
| P2.L7.BR.1020 |  | Frame - Chase Walls and Hard Lid Ceilings / L7 / Toilets 39XX | 5d | 2026-03-26 | 2026-04-01 | P2.L7.BR.1010, P2.L7.BR.1000 |  | 56d |
| P2.L7.BR.1030 |  | Plumbing - Test Pipe @ Chase Walls / L7 / Toilets 39XX | 5d | 2026-03-26 | 2026-04-01 | P2.L7.BR.1000 |  | 66d |
| P2.L7.BR.1050 |  | Trim Sprinkler Drops _ Hard Lids / L7 / Toilets 39XX | 5d | 2026-04-02 | 2026-04-08 | P2.L7.BR.1020 |  | 56d |
| P2.L7.BR.1060 |  | Duct Drops _ Hard Lids / L7 / Toilets 39XX | 5d | 2026-04-09 | 2026-04-15 | P2.L7.BR.1050, P2.L7.BR.1020 |  | 56d |
| P2.L7.BR.1080 |  | In Wall - Insulate Plumbing / L7 / Toilets 39XX | 5d | 2026-04-16 | 2026-04-22 | P2.L7.BR.1060, P2.L7.BR.1030 |  | 56d |
| P2.L7.BR.1040 |  | R/I - Electrical _ Hard Lids / L7 / Toilets 39XX | 5d | 2026-04-23 | 2026-04-29 | P2.L7.BR.1020, P2.L7.BR.1080 |  | 56d |
| P2.L7.BR.1070 |  | R/I - Fire Alarm _ Hard Lids / L7 / Toilets 39XX | 5d | 2026-04-30 | 2026-05-06 | P2.L7.BR.1040, P2.L7.BR.1020 |  | 56d |
| P2.L7.BR.1090 |  | Inspection - Close In - Chase Walls and Hard Lid Ceilings / L7 / Toilets 39XX | 5d | 2026-05-07 | 2026-05-13 | P2.L7.BR.1040, P2.L7.BR.1050, P2.L7.BR.1060, P2.L7.BR.1080, P2.L7.BR.1070 |  | 56d |
| P2.L7.BR.1100 |  | Hang-Tape-Finish _ Chase Walls and Hard Lids Ceilings / L7 / Toilets 39XX | 5d | 2026-05-14 | 2026-05-20 | P2.L7.S.1550, P2.L7.BR.1090 |  | 56d |
| P2.L7.BR.1110 |  | Paint Prime & 1st Coat _ Walls & Hard Lid Ceilings / L7 / Toilets 39XX | 5d | 2026-05-21 | 2026-05-28 | P2.L7.BR.1100 |  | 56d |
| P2.L7.BR.1140 |  | Ceiling Grid / L7 / Toilets 39XX | 5d | 2026-05-29 | 2026-06-04 | P2.L7.BR.1110 |  | 56d |
| P2.L7.BR.1170 |  | Trim Sprinkler Drops _ Ceiling Tiles / L7 / Toilets 39XX | 5d | 2026-06-05 | 2026-06-11 | P2.L7.BR.1140 |  | 56d |
| P2.L7.BR.1160 |  | Trim - HVAC G/R/D's / L7 / Toilets 39XX | 5d | 2026-06-12 | 2026-06-18 | BP1.233.3.410, P2.L7.BR.1140, P2.L7.BR.1170 |  | 56d |
| P2.L7.BR.1130 |  | Pull Wire - Electrical / L7 / Toilets 39XX | 5d | 2026-06-19 | 2026-06-25 | P2.L7.BR.1140, P2.L7.BR.1160, P2.L7.BR.1110 |  | 56d |
| P2.L7.BR.1120 |  | Pull Wire - Fire Alarm / L7 / Toilets 39XX | 5d | 2026-06-26 | 2026-07-02 | P2.L7.BR.1140, P2.L7.BR.1130, P2.L7.BR.1110 |  | 123d |
| P2.L7.BR.1150 |  | Lights - Set & Terminate / L7 / Toilets 39XX | 5d | 2026-06-26 | 2026-07-02 | P2.L7.BR.1140, P2.L7.BR.1130 |  | 56d |
| P2.L7.BR.1180 |  | Inspection - Ceiling Close In - ACT Ceilings / L7 / Toilets 39XX | 5d | 2026-07-06 | 2026-07-10 | P2.L7.BR.1160, P2.L7.BR.1150, P2.L7.BR.1170 |  | 56d |
| P2.L7.BR.1190 |  | Ceiling Tiles / L7 / Toilets 39XX | 5d | 2026-07-13 | 2026-07-17 | P2.L7.BR.1180 |  | 56d |
| P2.L7.BR.1200 |  | Wall Tile / L7 / Toilets 39XX | 5d | 2026-07-20 | 2026-07-24 | P2.L7.BR.1190 |  | 56d |
| P2.L7.BR.2200 |  | Flooring Prep - Epoxy Floors / L7 / Toilets 39XX | 1d | 2026-07-27 | 2026-07-27 | P2.L6.BR.2220, P2.L7.BR.1200 |  | 56d |
| P2.L7.BR.2210 |  | Flooring - Epoxy Floors / L7 / Toilets 39XX | 4d | 2026-07-28 | 2026-07-31 | P2.L7.BR.2200 |  | 83d |
| P2.L7.BR.1210 |  | Paint - Finish Coat / L7 / Toilets 39XX | 5d | 2026-08-03 | 2026-08-07 | P2.L7.BR.2210 |  | 83d |
| P2.L7.BR.1220 |  | Countertops / L7 / Toilets 39XX | 5d | 2026-08-10 | 2026-08-14 | P2.L7.BR.1210 |  | 83d |
| P2.L7.BR.1260 |  | Lockers & Benches / L7 / Toilets 39XX | 5d | 2026-08-17 | 2026-08-21 | P2.L7.BR.1220, P2.L7.BR.1210 |  | 83d |
| P2.L7.BR.1270 |  | Plumbing Fixtures / Sinks / Showers / L7 / Toilets 39XX | 5d | 2026-08-17 | 2026-08-21 | P2.L7.BR.1220 |  | 110d |
| P2.L7.BR.1240 |  | Trim - Electrical Devices / L7 / Toilets 39XX | 5d | 2026-08-24 | 2026-08-28 | P2.L7.BR.1260, P2.L7.BR.1210 |  | 83d |
| P2.L7.BR.1280 |  | Toilet Partitions / L7 / Toilets 39XX | 5d | 2026-08-24 | 2026-08-28 | P2.L7.BR.1270 |  | 110d |
| P2.L7.BR.1230 |  | Trim - Fire Alarm Devices / L7 / Toilets 39XX | 5d | 2026-08-31 | 2026-09-04 | P2.L7.BR.1240, P2.L7.BR.1210, P2.L7.BR.1120 |  | 83d |
| P2.L7.BR.1290 |  | Bathroom Accessories / L7 / Toilets 39XX | 5d | 2026-08-31 | 2026-09-04 | P2.L7.BR.1270, P2.L7.BR.1280 |  | 110d |
| P2.L7.BR.1250 |  | Doors & Hardware / L7 / Toilets 39XX | 5d | 2026-09-08 | 2026-09-14 | P2.L7.BR.1230, P2.L7.BR.1210 |  | 83d |
| P2.L7.BR.1300 |  | Work Completion List - Finishes / L7 / Toilets 39XX | 5d | 2026-09-15 | 2026-09-21 | P2.L7.BR.1260, P2.L7.BR.1250, P2.L7.BR.1280, P2.L7.BR.1290, P2.L7.BR.1230, P2.L7.BR.1240 |  | 105d |
|  | 1 | **Toilets 7-2805 & 7-2807** |  | 2026-03-26 | 2026-08-14 |  |  |  |
| P2.L7.BR.2000 |  | Plumbing - Set Pipe Carriers / L7 / Toilets 280X | 3d | 2026-03-26 | 2026-03-30 | P2.L7.BR.1000 |  | 50d |
| P2.L7.BR.2010 |  | Framing & Blocking - Walls and Hard Lid Ceilings / L7 / Toilets 280X | 2d | 2026-03-31 | 2026-04-01 | P2.L7.BR.2000 |  | 97d |
| P2.L7.BR.2020 |  | Plumbing - Test Pipe / L7 / Toilets 280X | 2d | 2026-03-31 | 2026-04-01 | P2.L7.BR.2000 |  | 101d |
| P2.L7.BR.2040 |  | Trim Sprinkler Drops _ Hard Lids / L7 / Toilets 280X | 2d | 2026-04-02 | 2026-04-03 | P2.L7.BR.2010 |  | 97d |
| P2.L7.BR.2050 |  | Duct Drops _ Hard Lids / L7 / Toilets 280X | 2d | 2026-04-06 | 2026-04-07 | P2.L7.BR.2010, P2.L7.BR.2040 |  | 97d |
| P2.L7.BR.2070 |  | In Wall - Insulate Plumbing / L7 / Toilets 280X | 2d | 2026-04-08 | 2026-04-09 | P2.L7.BR.2020, P2.L7.BR.2050 |  | 97d |
| P2.L7.BR.2030 |  | R/I - Electrical _ Hard Lids / L7 / Toilets 280X | 5d | 2026-04-10 | 2026-04-16 | P2.L7.BR.2010, P2.L7.BR.2070 |  | 97d |
| P2.L7.BR.2060 |  | R/I - Fire Alarm _ Hard Lids / L7 / Toilets 280X | 5d | 2026-04-17 | 2026-04-23 | P2.L7.BR.2010, P2.L7.BR.2030 |  | 97d |
| P2.L7.BR.2080 |  | Inspection - Close In - Walls and Hard Lid Ceilings / L7 / Toilets 280X | 3d | 2026-04-24 | 2026-04-28 | P2.L7.BR.2060, P2.L7.BR.2070, P2.L7.BR.2030, P2.L7.BR.2040, P2.L7.BR.2050 |  | 97d |
| P2.L7.BR.2090 |  | Hang-Tape-Finish _ Walls and Hard Lids Ceilings / L7 / Toilets 280X | 5d | 2026-04-29 | 2026-05-05 | P2.L7.BR.2080 |  | 97d |
| P2.L7.BR.2100 |  | Paint Prime & Final Coat _ Walls & Hard Lid Ceilings / L7 / Toilets 280X | 2d | 2026-05-06 | 2026-05-07 | P2.L7.BR.2090 |  | 97d |
| P2.L7.BR.2140 |  | Trim - HVAC G/R/D's / L7 / Toilets 280X | 2d | 2026-05-08 | 2026-05-11 | BP1.233.3.410, P2.L7.BR.2100 |  | 97d |
| P2.L7.BR.2120 |  | Pull Wire & Trim Devices - Electrical / L7 / Toilets 280X | 2d | 2026-05-12 | 2026-05-13 | P2.L7.BR.2140, P2.L7.BR.2100 |  | 97d |
| P2.L7.BR.2130 |  | Lights - Set & Terminate / L7 / Toilets 280X | 2d | 2026-05-12 | 2026-05-13 | P2.L7.BR.2120 SS |  | 102d |
| P2.L7.BR.2110 |  | Pull Wire & Trim Devices - Fire Alarm / L7 / Toilets 280X | 5d | 2026-05-14 | 2026-05-20 | P2.L7.BR.2120, P2.L7.BR.2100 |  | 97d |
| P2.L7.BR.2150 |  | Wall Tile / L7 / Toilets 280X | 5d | 2026-05-21 | 2026-05-28 | P2.L7.BR.2130, P2.L7.BR.2140, P2.L7.BR.2110 |  | 97d |
| P2.L7.BR.2220 |  | Flooring Prep - Epoxy Floors / L7 / Toilets 280X | 1d | 2026-07-28 | 2026-07-28 | P2.L7.BR.2150, P2.L7.BR.2200 |  | 56d |
| P2.L7.BR.2230 |  | Flooring - Epoxy Floors / L7 / Toilets 280X | 2d | 2026-07-29 | 2026-07-30 | P2.L7.BR.2220 |  | 112d |
| P2.L7.BR.2160 |  | Doors & Hardware / L7 / Toilets 280X | 2d | 2026-07-31 | 2026-08-03 | P2.L7.BR.2230 |  | 112d |

| ID | WBS | Task | Duration | Start | Finish | Predecessors | Complete | Total float | Constraint |
| --- | --- | --- | --- | --- | --- | --- | --- | --- | --- |
| P2.L7.BR.2170 |  | Plumbing Fixtures / Sinks / Showers / L7 / Toilets 280X | 2d | 2026-08-04 | 2026-08-05 | P2.L7.BR.2230, P2.L7.BR.2160 |  | 130d |  |
| P2.L7.BR.2180 |  | Bathroom Accessories / L7 / Toilets 280X | 2d | 2026-08-06 | 2026-08-07 | P2.L7.BR.2170 |  | 130d |  |
| P2.L7.BR.2190 |  | Work Completion List - Finishes / L7 / Toilets 280X | 5d | 2026-08-10 | 2026-08-14 | P2.L7.BR.2180, P2.L7.BR.2160, P2.L7.BR.2110 |  | 130d |  |
|  | 1 | **Corridors & Lobbies / Level 7** |  | 2026-03-12 | 2026-12-14 |  |  |  |  |
| P2.L7.CL.1000 |  | Paint Prime & 1st Coat Walls / L7 / Corr & Lobbies | 5d | 2026-03-12 | 2026-03-18 | P2.L7.S.1490 |  | 67d |  |
| P2.L7.CL.1010 |  | Framing - Hard Lid Ceilings / L7 / Corr & Lobbies | 10d | 2026-03-19 | 2026-04-01 | P2.L7.CL.1000 |  | 67d |  |
| P2.L7.CL.1020 |  | T-Grid / L7 / Corr & Lobbies | 10d | 2026-03-19 | 2026-04-01 | P2.L7.CL.1000 |  | 67d |  |
| P2.L7.CL.1040 |  | R/I - Trim Sprinkler Heads- All Ceilings / L7 / Corr & Lobbies | 5d | 2026-03-30 | 2026-04-03 | P2.L7.CL.1010 FF+2d, P2.L7.CL.1020 FF+2d |  | 67d |  |
| P2.L7.CL.1070 |  | Trim - Sprinkler Heads @ T-Grid / L7 / Corr & Lobbies | 5d | 2026-03-30 | 2026-04-03 | P2.L7.CL.1020 FF+2d |  | 160d |  |
| P2.L7.CL.1050 |  | R/I - HVAC- All Ceilings / L7 / Corr & Lobbies | 5d | 2026-04-06 | 2026-04-10 | P2.L7.CL.1010 FF+2d, P2.L7.CL.1020 FF+2d, P2.L7.CL.1040 |  | 67d |  |
| P2.L7.CL.1030 |  | R/I - Electrical - All Ceilings / L7 / Corr & Lobbies | 15d | 2026-04-13 | 2026-05-01 | P2.L7.CL.1010 FF+2d, P2.L7.CL.1020 FF+2d, P2.L7.CL.1050 |  | 67d |  |
| P2.L7.CL.1060 |  | R/I - All Remaining Low Voltage - All Ceilings / L7 / Corr & Lobbies | 5d | 2026-05-04 | 2026-05-08 | P2.L7.CL.1010 FF+2d, P2.L7.CL.1020 FF+2d, P2.L7.CL.1030 |  | 67d |  |
| P2.L7.CL.1100 |  | Pull Wire - Electrical / L7 / Corr & Lobbies | 10d | 2026-05-04 | 2026-05-15 | P2.L7.CL.1030 |  | 97d |  |
| P2.L7.CL.1080 |  | R/I - Fire Alarm/Life Safety - All Ceilings / L7 / Corr & Lobbies | 5d | 2026-05-11 | 2026-05-15 | P2.L7.CL.1010 FF+2d, P2.L7.CL.1060 |  | 67d |  |
| P2.L7.CL.1090 |  | Inspections - Close In- All Ceilings / L7 / Corr & Lobbies | 5d | 2026-05-18 | 2026-05-22 | P2.L7.CL.1080, P2.L7.CL.1030, P2.L7.CL.1040, P2.L7.CL.1050, P2.L7.CL.1060 |  | 67d |  |
| P2.L7.CL.1110 |  | Pull Wire - Fire Alarm / L7 / Corr & Lobbies | 5d | 2026-05-18 | 2026-05-22 | P2.L7.CL.1080, P2.L7.CL.1100 |  | 102d |  |
| P2.L7.CL.1120 |  | Pull Wire - All Remianing Low Voltage Systems / L7 / Corr & Lobbies | 5d | 2026-05-26 | 2026-06-01 | P2.L7.CL.1110, P2.L7.CL.1060 |  | 107d |  |
| P2.L7.CL.1130 |  | Hang/Tape/Finish- Hard Lid Ceilings / L7 / Corr & Lobbies | 10d | 2026-05-26 | 2026-06-08 | P2.L7.CL.1090 |  | 67d |  |
| P2.L7.CL.1140 |  | Drop Ceiling Tiles @ T-Grid / L7 / Corr & Lobbies | 5d | 2026-06-02 | 2026-06-08 | P2.L7.CL.1110, P2.L7.CL.1120, P2.L7.CL.1070, P2.L7.CL.1100 |  | 120d |  |
| P2.L7.CL.1190 |  | Paint - Hard Lid Ceilings / L7 / Corr & Lobbies | 5d | 2026-06-09 | 2026-06-15 | P2.L7.CL.1130 |  | 67d |  |
| P2.L7.CL.1180 |  | Ceiling Mounted - HVAC GRD's / L7 / Corr & Lobbies | 15d | 2026-06-16 | 2026-07-07 | P2.L7.CL.1190, P2.L7.CL.1020 |  | 67d |  |
| P2.L7.CL.1150 |  | Ceiling Mounted - Electrical Devices and Lights / L7 / Corr & Lobbies | 20d | 2026-06-30 | 2026-07-28 | P2.L7.CL.1180 SS+10d, P2.L7.CL.1190, P2.L7.CL.1100 |  | 67d |  |
| P2.L7.CL.1160 |  | Ceiling Mounted - Fire Alarm/Life Saftey Devices / L7 / Corr & Lobbies | 15d | 2026-07-15 | 2026-08-04 | P2.L7.CL.1150 SS+10d, P2.L7.CL.1190, P2.L7.CL.1110, P2.L7.CL.1020 |  | 67d |  |
| P2.L7.CL.1170 |  | Ceiling Mounted - All Low Voltage Devices / L7 / Corr & Lobbies | 15d | 2026-07-29 | 2026-08-18 | P2.L7.CL.1160 SS+10d, P2.L7.CL.1190, P2.L7.CL.1120 |  | 67d |  |
| P2.L7.CL.1320 |  | Prep Flooring / L7 / Corr & Lobbies | 2d | 2026-10-01 | 2026-10-02 | P2.L7.CL.1140 SS+2d, P2.L6.CL.1200, P2.L7.CL.1170, P2.L7.CL.1180, P2.L7.CL.1150, P2.L7.CL.1160 |  | 37d |  |
| P2.L7.CL.1200 |  | Flooring / L7 / Corr & Lobbies | 8d | 2026-10-05 | 2026-10-14 | P2.L7.CL.1320 |  | 37d |  |
| P2.L7.CL.1210 |  | Final Paint / L7 / Corr & Lobbies | 5d | 2026-10-12 | 2026-10-16 | P2.L7.CL.1200 FF+2d, P2.L7.CL.1140, BP7.097.3.100 |  | 47d |  |
| P2.L7.CL.1220 |  | Floor Base / L7 / Corr & Lobbies | 5d | 2026-10-19 | 2026-10-23 | P2.L7.CL.1210 |  | 67d |  |
| P2.L7.CL.1250 |  | Trim - HVAC - Wall Mounted Devices / L7 / Corr & Lobbies | 5d | 2026-10-19 | 2026-10-23 | P2.L7.CL.1210 |  | 47d |  |
| P2.L7.CL.1230 |  | Trim - All Electrical - Wall Mounted Devices / L7 / Corr & Lobbies | 5d | 2026-10-26 | 2026-10-30 | P2.L7.CL.1250, P2.L7.CL.1210 |  | 47d |  |
| P2.L7.CL.1240 |  | Trim - Fire Alarm - Wall Mounted Devices / L7 / Corr & Lobbies | 5d | 2026-11-02 | 2026-11-06 | P2.L7.CL.1230, P2.L7.CL.1210 |  | 47d |  |
| P2.L7.CL.1260 |  | Trim - All Remining Low Voltage Systems - Wall Mounted Devices / L7 / Corr & Lobbies | 5d | 2026-11-09 | 2026-11-13 | P2.L7.CL.1240, P2.L7.CL.1210 |  | 47d |  |
| P2.L7.CL.1270 |  | Building Signage / L7 / Corr & Lobbies | 5d | 2026-11-16 | 2026-11-20 | P2.L7.CL.1260, P2.L7.CL.1210 |  | 47d |  |
| P2.L7.CL.1280 |  | Work Completion List / L7 / Corr & Lobbies | 5d | 2026-11-23 | 2026-12-01 | P2.L7.CL.1270, P2.L7.CL.1250, P2.L7.CL.1260, P2.L7.CL.1220, P2.L7.CL.1230, P2.L7.CL.1240 |  | 47d |  |
| P2.L7.CL.1290 |  | Rough Clean / L7 / Corr & Lobbies | 2d | 2026-12-02 | 2026-12-03 | P2.L7.CL.1280 |  | 47d |  |
| P2.L7.CL.1300 |  | Punchlist / L7 / Corr & Lobbies | 5d | 2026-12-04 | 2026-12-10 | P2.L7.CL.1290 |  | 47d |  |
| P2.L7.CL.1310 |  | Final Clean / L7 / Corr & Lobbies | 2d | 2026-12-11 | 2026-12-14 | P2.L7.CL.1300 |  | 47d |  |
|  | 1 | **LAB & CLINICAL SPACES / LEVEL 7 (Below Interstitials)** |  | 2025-06-02 | 2026-12-09 |  |  |  |  |
|  | 2 | **ROUGH IN - Lab & Clinical Spaces (Below Interstitials) / Level 7** |  | 2025-06-02 | 2026-05-18 |  |  |  |  |
| P2.L7.LC.1000 |  | Layout - All Trades / L7 / Lab & Clinical | 5d | 2025-06-02 A | 2025-06-25 A | P2.8.I.05.110 | 100% |  |  |
| P2.L7.LC.1030 |  | OH - MEPF - Hangers & Supports / L7 / Lab & Clinical | 10d | 2025-06-04 A | 2025-06-18 A | P2.BIM.L7.40.140, P2.L7.LC.1000 FF+7d, P2.L7.LC.1000 SS | 100% |  |  |
| P2.L7.LC.1020 |  | OH - Structural Supports (All Trades) / L7 / Lab & Clinical | 5d | 2025-06-09 A | 2025-06-18 A | P2.L7.LC.1000 | 100% |  |  |
| P2.L7.LC.1080 |  | OH - Fireproof Interstitial Steel Above / L7 / Lab & Clinical | 10d | 2025-06-09 A | 2025-06-13 A | P2.8.I.03.320, P2.L7.LC.1020, P2.L7.LC.1030 | 100% |  |  |
| P2.L7.LC.1010 |  | Framing - Top Track / L7 / Lab & Clinical | 10d | 2025-06-18 A | 2025-07-29 A | P2.L7.N.1010, P2.L7.LC.1000 | 100% |  |  |
| P2.L7.LC.1170 |  | OH - Fire Suppression / L7 / Lab & Clinical | 10d | 2025-06-23 A | 2025-07-31 A | P2.L7.LC.1080 | 100% |  |  |
| P2.L7.LC.1160 |  | Spray/Seal/Firestop - Head of Wall - Priority Walls / L7 / Lab & Clinical | 5d | 2025-07-18 A | 2025-07-29 A | P2.L7.LC.1140 | 100% |  |  |
| P2.L7.LC.1090 |  | Framing - Priority Walls & Door Frames / L7 / Lab & Clinical | 10d | 2025-07-28 A | 2025-08-13 A | P2.L7.N.1090, P2.L7.LC.1010, P2.L7.LC.1080 | 100% |  |  |
| P2.L7.LC.1130 |  | Framing - Priority Walls - AHJ Inspections / L7 / Lab & Clinical | 5d | 2025-07-28 A | 2025-08-15 A | P2.L7.LC.1090 | 100% |  |  |
| P2.L7.LC.1140 |  | Hang/Tape/Finish - Priority Walls / L7 / Lab & Clinical | 10d | 2025-07-30 A | 2025-08-27 A | P2.L7.N.1140, P2.L7.LC.1130 | 100% |  |  |
| P2.L7.LC.1150 |  | Paint Prime & 1st Coat - Priority Walls / L7 / Lab & Clinical | 10d | 2025-08-11 A | 2025-08-27 A | P2.L7.LC.1160 SS | 100% |  |  |
| FRG.P2.L7.LC.1670 |  | HVAC Piping Delivery / L7 / Lab & Clinical - FRAGNET | 0d | 2025-08-29 A | 2025-08-29 A | P2.L7.LC.1030 FF | 100% |  | finish on or after 2025-08-29 |
| P2.L7.LC.1180 |  | OH - Plumbing Piping (High) / L7 / Lab & Clinical | 20d | 2025-09-01 A | 2025-09-25 A | P2.L7.LC.1150, P2.L7.LC.1080 | 100% |  |  |
| FRG.P2.L7.LC.1680 |  | HVAC Piping - Staging & Layout / L7 / Lab & Clinical - FRAGNET | 5d | 2025-09-02 A | 2025-09-08 A | FRG.P2.L7.LC.1670 | 100% |  |  |
| P2.L7.LC.1190 |  | OH - Electrical - 480/277v Distribution / L7 / Lab & Clinical | 20d | 2025-09-02 A | 2025-09-29 A | P2.L7.LC.1150, P2.L7.LC.1080 | 100% |  |  |
| FRG.P2.L7.LC1690 |  | HVAC Piping - Hanging Copper Racks / L7 / Lab & Clinical - FRAGNET | 20d | 2025-09-09 A | 2025-10-06 A | FRG.P2.L7.LC.1680 | 100% |  |  |
| P2.L7.LC.1220 |  | OH - HVAC Piping (High) / L7 / Lab & Clinical | 20d | 2025-10-07 A | 2025-11-14 A | P2.L7.LC.1080, FRG.P2.L7.LC1690 | 100% |  |  |
| P2.L7.LC.1570 |  | OH - Plumbing Piping (Low) / L7 / Lab & Clinical | 20d | 2025-10-13 A | 2025-12-19 | P2.L7.LC.1180, P2.L7.N.1220 | 25% | 69d |  |
| P2.L7.LC.1210 |  | OH - Hang Duct - HP Mains / L7 / Lab & Clinical | 20d | 2025-10-20 A | 2025-12-05 | P2.L7.LC.1080, P2.L7.N.1210 SS | 75% | 44d |  |
| P2.L7.LC.1300 |  | OH - Hang Duct - LP Branch (High) / L7 / Lab & Clinical | 20d | 2025-10-20 A | 2025-12-12 | P2.L7.LC.1170, P2.L7.LC.1210 SS | 50% | 44d |  |
| P2.L7.LC.1420 |  | Framing - Balance of Framing & Door Frames / L7 / Lab & Clinical | 10d | 2025-10-20 A | 2025-10-31 A | P2.L8.N.1420, P2.L8.S.1420 | 100% |  |  |
| P2.L7.LC.1560 |  | OH - HVAC Piping (Low) / L7 / Lab & Clinical | 20d | 2025-10-31 A | 2025-12-05 | P2.L7.LC.1220 | 75% | 64d |  |
| P2.L7.LC.1230 |  | OH - Electrical - 208/120v Branch / L7 / Lab & Clinical | 10d | 2025-11-17 A | 2025-12-12 | P2.L7.LC.1190 |  | 69d |  |
| P2.L7.LC.1440 |  | In Wall - Electrical - Framing / L7 / Lab & Clinical | 10d | 2025-11-17 A | 2025-12-29 | P2.L7.LC.1230, P2.L7.LC.1420 |  | 69d |  |
| P2.L7.LC.1580 |  | OH - Hang Duct - LP Branch (Low) / L7 / Lab & Clinical | 20d | 2025-11-17 A | 2026-01-13 | P2.L7.LC.1300 |  | 44d |  |
| P2.L7.LC.1200 |  | Firestop - Thru Wall - Priority Walls / L7 / Lab & Clinical | 5d | 2025-12-01 | 2025-12-05 | P2.L7.LC.1150 |  | 174d |  |
| P2.L7.LC.1250 |  | Pull Wire - Electrical - 480/277v Distribution / L7 / Lab & Clinical | 10d | 2025-12-01 | 2025-12-12 | P2.L7.LC.1190 |  | 104d |  |
| P2.L7.LC.1260 |  | OH - DALT - HP Mains / L7 / Lab & Clinical | 10d | 2025-12-08 | 2025-12-19 | P2.L7.LC.1210 |  | 59d |  |
| P2.L7.LC.1270 |  | OH - HVAC Piping - Test / L7 / Lab & Clinical | 15d | 2025-12-08 | 2025-12-29 | P2.L7.LC.1560 |  | 64d |  |
| P2.L7.LC.1240 |  | OH - Plumbing - Test / L7 / Lab & Clinical | 10d | 2025-12-22 | 2026-01-06 | P2.L7.LC.1570 |  | 69d |  |
| P2.L7.LC.1290 |  | OH - Insulate HP Duct / L7 / Lab & Clinical | 10d | 2025-12-22 | 2026-01-06 | P2.L7.LC.1260 |  | 59d |  |

| ID | WBS | Task | Duration | Start | Finish | Predecessors | Total float |
| --- | --- | --- | --- | --- | --- | --- | --- |
| P2.L7.LC.1280 |  | OH - Insulate Plumbing / L7 / Lab & Clinical | 10d | 2026-01-07 | 2026-01-20 | P2.L7.LC.1240 | 69d |
| P2.L7.LC.1340 |  | OH - Insulate HVAC Pipe / L7 / Lab & Clinical | 10d | 2026-01-07 | 2026-01-20 | P2.L7.LC.1270, P2.L7.LC.1290 | 59d |
| P2.L7.LC.1310 |  | OH - Set & Connect Mech Equipment / L7 / Lab & Clinical | 10d | 2026-01-14 | 2026-01-27 | P2.L7.LC.1210, P2.L7.LC.1580 | 44d |
| P2.L7.LC.1350 |  | OH - Insulate LP Duct / L7 / Lab & Clinical | 10d | 2026-01-14 | 2026-01-27 | P2.L7.LC.1580, P2.L7.LC.1200 | 149d |
| P2.L7.LC.1400 |  | OH - Conduit - Low Volt - Security / L7 / Lab & Clinical | 10d | 2026-01-21 | 2026-02-03 | P2.L7.LC.1340 | 59d |
| P2.L7.LC.1320 |  | OH - Electrical - Equip Tie In / L7 / Lab & Clinical | 10d | 2026-01-28 | 2026-02-10 | P2.L7.LC.1310 | 44d |
| P2.L7.LC.1330 |  | OH - HVAC Piping - Equip Tie In / L7 / Lab & Clinical | 20d | 2026-01-28 | 2026-02-24 | P2.L7.LC.1310, P2.L7.LC.1270 FF+5d, CX.B2.HYDR.1000 | 54d |
| P2.L7.LC.1370 |  | OH - Conduit - Low Volt - BAS/Controls / L7 / Lab & Clinical | 10d | 2026-01-28 | 2026-02-10 | P2.L7.LC.1340, P2.L7.LC.1310 | 54d |
| P2.L7.LC.1380 |  | OH - Conduit - Low Volt - Fire Alarm / L7 / Lab & Clinical | 10d | 2026-01-28 | 2026-02-10 | P2.L7.LC.1310 | 54d |
| P2.L7.LC.1390 |  | OH - Conduit - Low Volt - Telecom / L7 / Lab & Clinical | 10d | 2026-01-28 | 2026-02-10 | P2.L7.LC.1310 | 54d |
| P2.L7.LC.1410 |  | OH - Conduit - Low Volt - Medical Services/Nurse Call (?) / L7 / Lab & Clinical | 10d | 2026-01-28 | 2026-02-10 | P2.L7.LC.1310 | 54d |
| P2.L7.LC.1360 |  | Pull Wire - Electrical - 208/120v Branch & Equip / L7 / Lab & Clinical | 20d | 2026-02-11 | 2026-03-10 | P2.L7.LC.1230, P2.L7.LC.1320, P2.L7.LC.1440 | 44d |
| P2.L7.LC.1430 |  | In Wall - Plumbing - Framing / L7 / Lab & Clinical | 10d | 2026-03-24 | 2026-04-06 | P2.L7.LC.1420, PCO.831.1250, PCO.830.1160 | 0d |
| P2.L7.LC.1450 |  | In Wall - Backing/Blocking/Supports / L7 / Lab & Clinical | 10d | 2026-03-24 | 2026-04-06 | P2.L7.LC.1420, PCO.831.1250 | 0d |
| P2.L7.LC.1460 |  | AHJ Inspections - Wall Close In / L7 / Lab & Clinical | 5d | 2026-04-07 | 2026-04-13 | P2.L7.LC.1440, P2.L7.LC.1450, P2.L7.LC.1430 | 0d |
| P2.L7.LC.1470 |  | Hang-Tape-Finish - Walls and Hard Lid Ceilings / L7 / Lab & Clinical | 10d | 2026-04-14 | 2026-04-27 | P2.SUM.175, BP6.132.3.100, P2.L7.LC.1460, P2.L8.N.1470, P2.L8.S.1470, PCO.831.1250, PCO.830.1160 | 0d |
| P2.L7.LC.1480 |  | Spray/Seal/Firestop - Head of Wall / L7 / Lab & Clinical | 10d | 2026-04-28 | 2026-05-11 | P2.L7.LC.1470 | 0d |
| P2.L7.LC.1490 |  | Firestop - Thru Wall / L7 / Lab & Clinical | 10d | 2026-04-28 | 2026-05-11 | P2.L7.LC.1470, P2.L7.LC.1280 | 0d |
| P2.L7.LC.1500 |  | Pull Wire - Low Volt - BAS/Controls / L7 / Lab & Clinical | 10d | 2026-04-28 | 2026-05-11 | P2.L7.LC.1470, P2.L7.LC.1370 | 0d |
| P2.L7.LC.1510 |  | Pull Wire - Low Volt - Fire Alarm / L7 / Lab & Clinical | 10d | 2026-04-28 | 2026-05-11 | P2.L7.LC.1470, P2.L7.LC.1380 | 0d |
| P2.L7.LC.1520 |  | Pull Wire - Low Volt - Telecom / L7 / Lab & Clinical | 10d | 2026-04-28 | 2026-05-11 | P2.L7.LC.1470, P2.L7.LC.1390 | 0d |
| P2.L7.LC.1530 |  | Pull Wire - Low Volt - Security / L7 / Lab & Clinical | 10d | 2026-04-28 | 2026-05-11 | P2.L7.LC.1470, P2.L7.LC.1400 | 0d |
| P2.L7.LC.1540 |  | Pull Wire - Low Volt - Medical Services/Nurse Call (?) / L7 / Lab & Clinical | 10d | 2026-04-28 | 2026-05-11 | P2.L7.LC.1470, P2.L7.LC.1410 | 0d |
| P2.L7.LC.1550 |  | Trades Inspect & Verify R/I Work Completed to Specs / L7 / Lab & Clinical | 5d | 2026-05-12 | 2026-05-18 | P2.L7.LC.1330, P2.L7.LC.1490, P2.L7.LC.1480, P2.L7.LC.1250, P2.L7.LC.1540, P2.L7.LC.1360, P2.L7.LC.1500, P2.L7.LC.1510, P2.L7.LC.1520, P2.L7.LC.1530 | 0d |
|  | 13 | **FINISHES - Lab & Clinical Spaces (Below Interstitials) / Level 7** |  | 2026-03-31 | 2026-12-09 |  |  |
|  | 1 | **L7 - F - Freezers / QC Lab / Support Spaces (3,610 sf)** |  | 2026-04-28 | 2026-11-19 |  |  |
| P2.L7.F.LC.1190 |  | Casework (Before Flooring) / L7 / Freezer, QC | 5d | 2026-04-28 | 2026-05-04 | P2.L7.LC.1470 | 142d |
| P2.L7.F.LC.1220 |  | Plumbing Fixtures & Drinking Fountains / L7 / Freezer, QC | 5d | 2026-05-05 | 2026-05-11 | P2.L7.F.LC.1190, PCO.830.1140 | 142d |
| P2.L7.F.LC.5090 |  | Equipment / L7 / Freezer, QC | 10d | 2026-05-05 | 2026-05-18 | P2.L7.F.LC.1190 | 157d |
| P2.L7.F.LC.1000 |  | Paint - Walls / L7 / Freezer, QC | 5d | 2026-05-19 | 2026-05-26 | P2.L7.LC.1550 | 62d |
| P2.L7.F.LC.1010 |  | R/I - Ceiling Assemblies & Supports - Med Equip / L7 / Freezer, QC | 5d | 2026-05-27 | 2026-06-02 | P2.L7.F.LC.1000 | 62d |
| P2.L7.F.LC.1210 |  | Wall Protection / L7 / Freezer, QC | 5d | 2026-05-27 | 2026-06-02 | P2.L7.F.LC.1000, BP7.102.3.300 | 122d |
| P2.L7.F.LC.1400 |  | Fumehood Equipment Install / L7 / Freezer, QC | 2d | 2026-06-02 | 2026-06-03 | P2.L7.F.LC.1190 FF, PCO.831.1230 | 149d |
| P2.L7.F.LC.1020 |  | Framing - Hard Lid Ceilings / L7 / Freezer, QC | 5d | 2026-06-03 | 2026-06-09 | P2.L7.F.LC.1010 | 62d |
| P2.L7.F.LC.1230 |  | Trim T-Stats / L7 / Freezer, QC | 5d | 2026-06-03 | 2026-06-09 | P2.L7.F.LC.1210 | 122d |
| P2.L7.F.LC.1240 |  | Trim Electrical / L7 / Freezer, QC | 5d | 2026-06-03 | 2026-06-09 | P2.L7.F.LC.1230 SS | 122d |
| P2.L7.F.LC.1250 |  | Trim Telephone/ Data / L7 / Freezer, QC | 5d | 2026-06-03 | 2026-06-09 | P2.L7.F.LC.1240 SS | 122d |
| P2.L7.F.LC.1270 |  | Trim Med Gas / L7 / Freezer, QC | 5d | 2026-06-03 | 2026-06-09 | P2.L7.F.LC.1210 | 122d |
| P2.L7.F.LC.1410 |  | Fumehood Equipment MEP Connection / L7 / Freezer, QC | 2d | 2026-06-04 | 2026-06-05 | P2.L7.F.LC.1400, PCO.831.1230 | 149d |
| P2.L7.F.LC.1030 |  | R/I - Lights & Devices - Hard Lids Ceilings / L7 / Freezer, QC | 10d | 2026-06-10 | 2026-06-23 | P2.L7.F.LC.1020 | 62d |
| P2.L7.F.LC.1040 |  | R/I - Diffusers - Hard Lid Ceilings / L7 / Freezer, QC | 5d | 2026-06-10 | 2026-06-16 | P2.L7.F.LC.1020 | 67d |
| P2.L7.F.LC.1050 |  | R/I - Sprinkler Heads - Hard Lid Ceilings / L7 / Freezer, QC | 5d | 2026-06-10 | 2026-06-16 | P2.L7.F.LC.1020 | 67d |
| P2.L7.F.LC.1060 |  | R/I - Fire Alarm - Hard Lid Ceilings / L7 / Freezer, QC | 5d | 2026-06-10 | 2026-06-16 | P2.L7.F.LC.1020 | 67d |
| P2.L7.F.LC.1070 |  | OH Ceiling Inspection & Signoff - Hard Lid Ceilings / L7 / Freezer, QC | 5d | 2026-06-24 | 2026-06-30 | P2.L7.F.LC.1040, P2.L7.F.LC.1050, P2.L7.F.LC.1060, P2.L7.F.LC.1030 | 62d |
| P2.L7.F.LC.1080 |  | Hang-Tape-Finish _Hard Lid Ceilings / L7 / Freezer, QC | 5d | 2026-07-01 | 2026-07-08 | P2.L7.F.LC.1070 | 62d |
| P2.L7.F.LC.1090 |  | Paint Ceilings / L7 / Freezer, QC | 5d | 2026-07-09 | 2026-07-15 | P2.L7.F.LC.1080 | 62d |
| P2.L7.F.LC.1100 |  | Waterproof Ceramic Tile / L7 / Freezer, QC | 5d | 2026-07-16 | 2026-07-22 | P2.L7.F.LC.1090 | 62d |
| P2.L7.F.LC.1110 |  | Ceramic Tile / L7 / Freezer, QC | 5d | 2026-07-23 | 2026-07-29 | P2.L7.F.LC.1100 | 62d |
| P2.L7.F.LC.1120 |  | T-Grid / L7 / Freezer, QC | 5d | 2026-07-30 | 2026-08-05 | P2.L7.F.LC.1110 | 62d |
| P2.L7.F.LC.1130 |  | Diffusers in T-Grid / L7 / Freezer, QC | 5d | 2026-08-06 | 2026-08-12 | P2.L7.F.LC.1120 | 62d |
| P2.L7.F.LC.1140 |  | Lights & Devices / L7 / Freezer, QC | 5d | 2026-08-06 | 2026-08-12 | P2.L7.F.LC.1120 | 62d |
| P2.L7.F.LC.1150 |  | Sprinkler Heads / L7 / Freezer, QC | 5d | 2026-08-06 | 2026-08-12 | P2.L7.F.LC.1120 | 62d |
| P2.L7.F.LC.1160 |  | Trim Low Voltage / L7 / Freezer, QC | 5d | 2026-08-06 | 2026-08-12 | P2.L7.F.LC.1120 | 62d |
| P2.L7.F.LC.1170 |  | Trim Fire Alarm / L7 / Freezer, QC | 5d | 2026-08-06 | 2026-08-12 | P2.L7.F.LC.1120 | 62d |
| P2.L7.F.LC.1180 |  | OH Ceiling Signoff / L7 / Freezer, QC | 10d | 2026-08-13 | 2026-08-26 | P2.L7.F.LC.1130, P2.L7.F.LC.1140, P2.L7.F.LC.1150, P2.L7.F.LC.1170, P2.L7.F.LC.1160 | 62d |
| P2.L7.F.LC.1200 |  | Drop Ceiling Tile / L7 / Freezer, QC | 5d | 2026-08-27 | 2026-09-02 | P2.L7.F.LC.1180 | 62d |
| P2.L7.F.LC.5060 |  | Floor Prep - Epoxy Floors / L7 / Autoclave 7-3915 | 2d | 2026-08-27 | 2026-08-28 | P2.L7.F.LC.1180 | 87d |
| P2.L7.F.LC.5070 |  | Flooring - Epoxy Floors / L7 / Autoclave 7-3915 | 1d | 2026-08-31 | 2026-08-31 | P2.L7.F.LC.5060 | 87d |
| P2.L7.F.LC.1260 |  | Doors & Hardware / L7 / Freezer, QC | 5d | 2026-09-01 | 2026-09-08 | P2.L7.F.LC.5070 | 87d |
| P2.L7.F.LC.5080 |  | Casework (After Flooring) / L7 / Freezer, QC | 1d | 2026-09-01 | 2026-09-01 | P2.L7.F.LC.5070 | 88d |
| P2.L7.F.LC.1280 |  | Floor Prep / L7 / Freezer, QC | 5d | 2026-09-03 | 2026-09-10 | P2.L7.F.LC.1220, P2.L7.F.LC.1230, P2.L7.F.LC.1240, P2.L7.F.LC.1270, P2.L7.F.LC.1200, P2.L7.F.LC.1250 | 62d |
| P2.L7.F.LC.1290 |  | Flooring / L7 / Freezer, QC | 5d | 2026-09-11 | 2026-09-17 | P2.L7.F.LC.1280 | 62d |
| P2.L7.F.LC.1300 |  | Building Specialities / L7 / Freezer, QC | 5d | 2026-09-18 | 2026-09-24 | P2.L7.F.LC.1290 | 62d |
| P2.L7.F.LC.1310 |  | Interior Building Signage / L7 / Freezer, QC | 5d | 2026-09-18 | 2026-09-24 | P2.L7.F.LC.1290 | 62d |
| P2.L7.F.LC.1320 |  | Work Completion List - Finishes / L7 / Freezer, QC | 5d | 2026-09-25 | 2026-10-01 | P2.L7.F.LC.1310, P2.L7.F.LC.1300 | 62d |
| P2.L7.F.LC.1330 |  | Remaining Equipment Post Flooring / L7 / Freezer, QC | 5d | 2026-10-02 | 2026-10-08 | P2.L7.F.LC.1320, P2.L7.F.LC.5090, PCO.831.1230 | 62d |
| P2.L7.F.LC.1340 |  | Remaining MEP Hook-Ups / L7 / Freezer, QC | 5d | 2026-10-09 | 2026-10-15 | P2.L7.F.LC.1410, P2.L7.F.LC.1330, P2.L7.F.LC.5080, P2.L7.F.LC.5090 | 62d |
| P2.L7.F.LC.1350 |  | OFOI Furniture & Equipment / L7 / Freezer, QC | 5d | 2026-10-09 | 2026-10-15 | P2.L7.F.LC.1340 SS | 72d |
| P2.L7.F.LC.1360 |  | Rough Clean / L7 / Freezer, QC | 5d | 2026-10-16 | 2026-10-22 | P2.L7.F.LC.1340 | 62d |
| P2.L7.F.LC.1370 |  | Prepare Punchlist / L7 / Freezer, QC | 5d | 2026-10-23 | 2026-10-29 | P2.L7.F.LC.1340 SS, P2.L7.F.LC.1360 | 62d |

| ID | WBS | Task | Duration | Start | Finish | Predecessors | Total float |
| --- | --- | --- | --- | --- | --- | --- | --- |
| P2.L7.F.LC.1380 |  | Correct Punchlist / L7 / Freezer, QC | 10d | 2026-10-30 | 2026-11-12 | P2.L7.F.LC.1370, P2.L7.F.LC.1350 | 62d |
| P2.L7.F.LC.1390 |  | Final Clean / L7 / Freezer, QC | 5d | 2026-11-13 | 2026-11-19 | P2.L7.F.LC.1380 | 62d |
|  | 2 | **Wet Lab - Z1 (11,243 sf) / Level 7** |  | 2026-04-28 | 2026-11-30 |  |  |
| P2.L7.F.LC.2190 |  | Casework (Before Flooring) / L7 / Wet Lab Z1 | 15d | 2026-04-28 | 2026-05-18 | P2.L7.LC.1470 | 57d |
| P2.L7.F.LC.2220 |  | Plumbing Fixtures & Drinking Fountains / L7 / Wet Lab Z1 | 5d | 2026-05-19 | 2026-05-26 | P2.L7.F.LC.2190, PCO.830.1140 | 132d |
| P2.L7.F.LC.5190 |  | Interior Glazing / L7 / Wet Lab Z1 | 5d | 2026-05-19 | 2026-05-26 | P2.L7.F.LC.2190 | 57d |
| P2.L7.F.LC.2000 |  | Paint - Walls / L7 / Wet Lab Z1 | 5d | 2026-05-27 | 2026-06-02 | P2.L7.LC.1550, P2.L7.F.LC.5190 | 57d |
| P2.L7.F.LC.2400 |  | Fumehood Equipment Install / L7 / Wet Lab Z1 | 1d | 2026-06-02 | 2026-06-02 | P2.L7.F.LC.2190 FF, PCO.831.1230 | 151d |
| P2.L7.F.LC.2010 |  | R/I - Ceiling Assemblies & Supports - Med Equip / L7 / Wet Lab Z1 | 5d | 2026-06-03 | 2026-06-09 | P2.L7.F.LC.2000 | 57d |
| P2.L7.F.LC.2210 |  | Wall Protection / L7 / Wet Lab Z1 | 5d | 2026-06-03 | 2026-06-09 | P2.L7.F.LC.2000, BP7.102.3.300 | 117d |
| P2.L7.F.LC.2410 |  | Fumehood Equipment MEP Connection / L7 / Wet Lab Z1 | 1d | 2026-06-03 | 2026-06-03 | P2.L7.F.LC.2400, PCO.831.1230 | 151d |
| P2.L7.F.LC.2020 |  | Framing - Hard Lid Ceilings / L7 / Wet Lab Z1 | 5d | 2026-06-10 | 2026-06-16 | P2.L7.F.LC.2010 | 57d |
| P2.L7.F.LC.2230 |  | Trim T-Stats / L7 / Wet Lab Z1 | 5d | 2026-06-10 | 2026-06-16 | P2.L7.F.LC.2210 | 117d |
| P2.L7.F.LC.2240 |  | Trim Electrical / L7 / Wet Lab Z1 | 5d | 2026-06-10 | 2026-06-16 | P2.L7.F.LC.2230 SS | 117d |
| P2.L7.F.LC.2250 |  | Trim Telephone/ Data / L7 / Wet Lab Z1 | 5d | 2026-06-10 | 2026-06-16 | P2.L7.F.LC.2240 SS | 117d |
| P2.L7.F.LC.2270 |  | Trim Med Gas / L7 / Wet Lab Z1 | 5d | 2026-06-10 | 2026-06-16 | P2.L7.F.LC.2210 | 117d |
| P2.L7.F.LC.2030 |  | R/I - Lights & Devices - Hard Lids Ceilings / L7 / Wet Lab Z1 | 10d | 2026-06-17 | 2026-06-30 | P2.L7.F.LC.2020 | 57d |
| P2.L7.F.LC.2040 |  | R/I - Diffusers - Hard Lid Ceilings / L7 / Wet Lab Z1 | 5d | 2026-06-17 | 2026-06-23 | P2.L7.F.LC.2020 | 62d |
| P2.L7.F.LC.2050 |  | R/I - Sprinkler Heads - Hard Lid Ceilings / L7 / Wet Lab Z1 | 5d | 2026-06-17 | 2026-06-23 | P2.L7.F.LC.2020 | 62d |
| P2.L7.F.LC.2060 |  | R/I - Fire Alarm - Hard Lid Ceilings / L7 / Wet Lab Z1 | 5d | 2026-06-17 | 2026-06-23 | P2.L7.F.LC.2020 | 62d |
| P2.L7.F.LC.5120 |  | Equipment / L7 / Wet Lab Z1 | 10d | 2026-06-17 | 2026-06-30 | P2.L7.F.LC.2020 | 107d |
| P2.L7.F.LC.2070 |  | OH Ceiling Inspection & Signoff - Hard Lid Ceilings / L7 / Wet Lab Z1 | 5d | 2026-07-01 | 2026-07-08 | P2.L7.F.LC.2060, P2.L7.F.LC.2040, P2.L7.F.LC.2050, P2.L7.F.LC.2030 | 57d |
| P2.L7.F.LC.2080 |  | Hang-Tape-Finish _Hard Lid Ceilings / L7 / Wet Lab Z1 | 5d | 2026-07-09 | 2026-07-15 | P2.L7.F.LC.2070, PCO.831.1250 | 57d |
| P2.L7.F.LC.2090 |  | Paint Ceilings / L7 / Wet Lab Z1 | 5d | 2026-07-16 | 2026-07-22 | P2.L7.F.LC.2080 | 57d |
| P2.L7.F.LC.2100 |  | Waterproof Ceramic Tile / L7 / Wet Lab Z1 | 5d | 2026-07-23 | 2026-07-29 | P2.L7.F.LC.2090 | 57d |
| P2.L7.F.LC.2110 |  | Ceramic Tile / L7 / Wet Lab Z1 | 5d | 2026-07-30 | 2026-08-05 | P2.L7.F.LC.2100 | 57d |
| P2.L7.F.LC.2120 |  | T-Grid / L7 / Wet Lab Z1 | 5d | 2026-08-06 | 2026-08-12 | P2.L7.F.LC.2110 | 57d |
| P2.L7.F.LC.2130 |  | Diffusers in T-Grid / L7 / Wet Lab Z1 | 5d | 2026-08-13 | 2026-08-19 | P2.L7.F.LC.2120 | 57d |
| P2.L7.F.LC.2140 |  | Lights & Devices / L7 / Wet Lab Z1 | 5d | 2026-08-13 | 2026-08-19 | P2.L7.F.LC.2120 | 57d |
| P2.L7.F.LC.2150 |  | Sprinkler Heads / L7 / Wet Lab Z1 | 5d | 2026-08-13 | 2026-08-19 | P2.L7.F.LC.2120 | 57d |
| P2.L7.F.LC.2160 |  | Trim Low Voltage / L7 / Wet Lab Z1 | 5d | 2026-08-13 | 2026-08-19 | P2.L7.F.LC.2120 | 57d |
| P2.L7.F.LC.2170 |  | Trim Fire Alarm / L7 / Wet Lab Z1 | 5d | 2026-08-13 | 2026-08-19 | P2.L7.F.LC.2120 | 57d |
| P2.L7.F.LC.5110 |  | Ceiling Service Panel / L7 / Wet Lab Z1 | 2d | 2026-08-13 | 2026-08-14 | P2.L7.F.LC.2120 | 60d |
| P2.L7.F.LC.2180 |  | OH Ceiling Signoff / L7 / Wet Lab Z1 | 10d | 2026-08-20 | 2026-09-02 | P2.L7.F.LC.2160, P2.L7.F.LC.2170, P2.L7.F.LC.2140, P2.L7.F.LC.2150, P2.L7.F.LC.2130, P2.L7.F.LC.5110 | 57d |
| P2.L7.F.LC.2200 |  | Drop Ceiling Tile / L7 / Wet Lab Z1 | 5d | 2026-09-03 | 2026-09-10 | P2.L7.F.LC.2180, P2.L7.F.LC.5110 | 57d |
| P2.L7.F.LC.2280 |  | Floor Prep / L7 / Wet Lab Z1 | 5d | 2026-09-11 | 2026-09-17 | P2.L7.F.LC.2270, P2.L7.F.LC.2200, P2.L7.F.LC.2230, P2.L7.F.LC.2240, P2.L7.F.LC.2250, P2.L7.F.LC.2220, P2.L7.F.LC.5120 | 57d |
| P2.L7.F.LC.2290 |  | Flooring / L7 / Wet Lab Z1 | 5d | 2026-09-18 | 2026-09-24 | P2.L7.F.LC.2280 | 57d |
| P2.L7.F.LC.2260 |  | Doors & Hardware / L7 / Wet Lab Z1 | 5d | 2026-09-25 | 2026-10-01 | P2.L7.F.LC.2290 | 70d |
| P2.L7.F.LC.2300 |  | Building Specialities / L7 / Wet Lab Z1 | 5d | 2026-09-25 | 2026-10-01 | P2.L7.F.LC.2290 | 57d |
| P2.L7.F.LC.2310 |  | Interior Building Signage / L7 / Wet Lab Z1 | 5d | 2026-09-25 | 2026-10-01 | P2.L7.F.LC.2290 | 57d |
| P2.L7.F.LC.5100 |  | Casework (After Flooring) / L7 / Wet Lab Z1 | 3d | 2026-09-25 | 2026-09-29 | P2.L7.F.LC.2290 | 64d |
| P2.L7.F.LC.2320 |  | Work Completion List - Finishes / L7 / Wet Lab Z1 | 5d | 2026-10-02 | 2026-10-08 | P2.L7.F.LC.2310, P2.L7.F.LC.2300 | 57d |
| P2.L7.F.LC.2330 |  | Remaining Equipment Post Flooring / L7 / Wet Lab Z1 | 5d | 2026-10-09 | 2026-10-15 | P2.L7.F.LC.2320, P2.L7.F.LC.5100, P2.L7.F.LC.5120, PCO.831.1230 | 57d |
| P2.L7.F.LC.2340 |  | Remaining MEP Hook-Ups / L7 / Wet Lab Z1 | 5d | 2026-10-16 | 2026-10-22 | P2.L7.F.LC.2330, P2.L7.F.LC.2410 | 57d |
| P2.L7.F.LC.2350 |  | OFOI Furniture & Equipment / L7 / Wet Lab Z1 | 5d | 2026-10-16 | 2026-10-22 | P2.L7.F.LC.2340 SS | 67d |
| P2.L7.F.LC.2360 |  | Rough Clean / L7 / Wet Lab Z1 | 5d | 2026-10-23 | 2026-10-29 | P2.L7.F.LC.2340 | 57d |
| P2.L7.F.LC.2370 |  | Prepare Punchlist / L7 / Wet Lab Z1 | 5d | 2026-10-30 | 2026-11-05 | P2.L7.F.LC.2340 SS, P2.L7.F.LC.2360 | 57d |
| P2.L7.F.LC.2380 |  | Correct Punchlist / L7 / Wet Lab Z1 | 10d | 2026-11-06 | 2026-11-19 | P2.L7.F.LC.2350, P2.L7.F.LC.2370 | 57d |
| P2.L7.F.LC.2390 |  | Final Clean / L7 / Wet Lab Z1 | 5d | 2026-11-20 | 2026-11-30 | P2.L7.F.LC.2380 | 57d |
|  | 3 | **Wet Lab - Z2 (10,831 sf) / Level 7** |  | 2026-04-28 | 2026-12-01 |  |  |
| P2.L7.F.LC.3190 |  | Casework (Before Flooring) / L7 / Wet Lab Z2 | 13d | 2026-04-28 | 2026-05-14 | P2.L7.LC.1470 | 56d |
| P2.L7.F.LC.3220 |  | Plumbing Fixtures & Drinking Fountains / L7 / Wet Lab Z2 | 5d | 2026-05-15 | 2026-05-21 | P2.L7.F.LC.3190, PCO.830.1140 | 134d |
| P2.L7.F.LC.5150 |  | Equipment / L7 / Wet Lab Z2 | 10d | 2026-05-15 | 2026-05-29 | P2.L7.F.LC.3190 | 149d |
| P2.L7.F.LC.5200 |  | Interior Glazing / L7 / Wet Lab Z2 | 3d | 2026-05-15 | 2026-05-19 | P2.L7.F.LC.3190 | 56d |
| P2.L7.F.LC.3000 |  | Paint - Walls / L7 / Wet Lab Z2 | 5d | 2026-05-20 | 2026-05-27 | P2.L7.LC.1550, P2.L7.F.LC.5200 | 56d |
| P2.L7.F.LC.3010 |  | R/I - Ceiling Assemblies & Supports - Med Equip / L7 / Wet Lab Z2 | 5d | 2026-05-28 | 2026-06-03 | P2.L7.F.LC.3000 | 56d |
| P2.L7.F.LC.3400 |  | Fumehood Equipment Install / L7 / Wet Lab Z2 | 1d | 2026-06-02 | 2026-06-02 | P2.L7.F.LC.3190 FF, PCO.831.1230 | 156d |
| P2.L7.F.LC.3410 |  | Fumehood Equipment MEP Connection / L7 / Wet Lab Z2 | 1d | 2026-06-03 | 2026-06-03 | P2.L7.F.LC.3400, PCO.831.1230 | 156d |
| P2.L7.F.LC.3020 |  | Framing - Hard Lid Ceilings / L7 / Wet Lab Z2 | 5d | 2026-06-04 | 2026-06-10 | P2.L7.F.LC.3010 | 56d |
| P2.L7.F.LC.3030 |  | R/I - Lights & Devices - Hard Lids Ceilings / L7 / Wet Lab Z2 | 10d | 2026-06-11 | 2026-06-24 | P2.L7.F.LC.3020 | 56d |
| P2.L7.F.LC.3040 |  | R/I - Diffusers - Hard Lid Ceilings / L7 / Wet Lab Z2 | 5d | 2026-06-11 | 2026-06-17 | P2.L7.F.LC.3020 | 61d |
| P2.L7.F.LC.3050 |  | R/I - Sprinkler Heads - Hard Lid Ceilings / L7 / Wet Lab Z2 | 5d | 2026-06-11 | 2026-06-17 | P2.L7.F.LC.3020 | 61d |
| P2.L7.F.LC.3060 |  | R/I - Fire Alarm - Hard Lid Ceilings / L7 / Wet Lab Z2 | 5d | 2026-06-11 | 2026-06-17 | P2.L7.F.LC.3020 | 61d |
| P2.L7.F.LC.3070 |  | OH Ceiling Inspection & Signoff - Hard Lid Ceilings / L7 / Wet Lab Z2 | 5d | 2026-06-25 | 2026-07-01 | P2.L7.F.LC.3050, P2.L7.F.LC.3060, P2.L7.F.LC.3030, P2.L7.F.LC.3040 | 56d |
| P2.L7.F.LC.3080 |  | Hang-Tape-Finish _Hard Lid Ceilings / L7 / Wet Lab Z2 | 5d | 2026-07-02 | 2026-07-09 | P2.L7.F.LC.3070, PCO.831.1250 | 56d |
| P2.L7.F.LC.3090 |  | Paint Ceilings / L7 / Wet Lab Z2 | 5d | 2026-07-10 | 2026-07-16 | P2.L7.F.LC.3080 | 56d |
| P2.L7.F.LC.3100 |  | Waterproof Ceramic Tile / L7 / Wet Lab Z2 | 5d | 2026-07-17 | 2026-07-23 | P2.L7.F.LC.3090 | 56d |
| P2.L7.F.LC.3110 |  | Ceramic Tile / L7 / Wet Lab Z2 | 5d | 2026-07-24 | 2026-07-30 | P2.L7.F.LC.3100 | 56d |
| P2.L7.F.LC.3120 |  | T-Grid / L7 / Wet Lab Z2 | 5d | 2026-07-31 | 2026-08-06 | P2.L7.F.LC.3110 | 56d |
| P2.L7.F.LC.3130 |  | Diffusers in T-Grid / L7 / Wet Lab Z2 | 5d | 2026-08-07 | 2026-08-13 | P2.L7.F.LC.3120 | 56d |

| ID | WBS | Task | Duration | Start | Finish | Predecessors | Total float |
| --- | --- | --- | --- | --- | --- | --- | --- |
| P2.L7.F.LC.3140 |  | Lights & Devices / L7 / Wet Lab Z2 | 5d | 2026-08-07 | 2026-08-13 | P2.L7.F.LC.3120 | 56d |
| P2.L7.F.LC.3150 |  | Sprinkler Heads / L7 / Wet Lab Z2 | 5d | 2026-08-07 | 2026-08-13 | P2.L7.F.LC.3120 | 56d |
| P2.L7.F.LC.3160 |  | Trim Low Voltage / L7 / Wet Lab Z2 | 5d | 2026-08-07 | 2026-08-13 | P2.L7.F.LC.3120 | 56d |
| P2.L7.F.LC.3170 |  | Trim Fire Alarm / L7 / Wet Lab Z2 | 5d | 2026-08-07 | 2026-08-13 | P2.L7.F.LC.3120 | 56d |
| P2.L7.F.LC.5140 |  | Ceiling Service Panel / L7 / Wet Lab Z2 | 2d | 2026-08-07 | 2026-08-10 | P2.L7.F.LC.3120 | 74d |
| P2.L7.F.LC.3180 |  | OH Ceiling Signoff / L7 / Wet Lab Z2 | 10d | 2026-08-14 | 2026-08-27 | P2.L7.F.LC.3160, P2.L7.F.LC.3170, P2.L7.F.LC.3130, P2.L7.F.LC.3140, P2.L7.F.LC.3150 | 56d |
| P2.L7.F.LC.3200 |  | Drop Ceiling Tile / L7 / Wet Lab Z2 | 5d | 2026-08-28 | 2026-09-03 | P2.L7.F.LC.5140, P2.L7.F.LC.3180 | 61d |
| P2.L7.F.LC.3210 |  | Wall Protection / L7 / Wet Lab Z2 | 5d | 2026-08-28 | 2026-09-03 | P2.L7.F.LC.3180, BP7.102.3.300 | 56d |
| P2.L7.F.LC.3230 |  | Trim T-Stats / L7 / Wet Lab Z2 | 5d | 2026-09-04 | 2026-09-11 | P2.L7.F.LC.3210 | 56d |
| P2.L7.F.LC.3240 |  | Trim Electrical / L7 / Wet Lab Z2 | 5d | 2026-09-04 | 2026-09-11 | P2.L7.F.LC.3230 SS | 56d |
| P2.L7.F.LC.3250 |  | Trim Telephone/ Data / L7 / Wet Lab Z2 | 5d | 2026-09-04 | 2026-09-11 | P2.L7.F.LC.3240 SS | 56d |
| P2.L7.F.LC.3270 |  | Trim Med Gas / L7 / Wet Lab Z2 | 5d | 2026-09-04 | 2026-09-11 | P2.L7.F.LC.3210 | 56d |
| P2.L7.F.LC.3280 |  | Floor Prep / L7 / Wet Lab Z2 | 5d | 2026-09-14 | 2026-09-18 | P2.L7.F.LC.3200, P2.L7.F.LC.3220, P2.L7.F.LC.3230, P2.L7.F.LC.3240, P2.L7.F.LC.3250, P2.L7.F.LC.3190, P2.L7.F.LC.3270 | 56d |
| P2.L7.F.LC.3290 |  | Flooring / L7 / Wet Lab Z2 | 5d | 2026-09-21 | 2026-09-25 | P2.L7.F.LC.3280 | 56d |
| P2.L7.F.LC.3260 |  | Doors & Hardware / L7 / Wet Lab Z2 | 5d | 2026-09-28 | 2026-10-02 | P2.L7.F.LC.3290 | 69d |
| P2.L7.F.LC.3300 |  | Building Specialities / L7 / Wet Lab Z2 | 5d | 2026-09-28 | 2026-10-02 | P2.L7.F.LC.3290 | 56d |
| P2.L7.F.LC.3310 |  | Interior Building Signage / L7 / Wet Lab Z2 | 5d | 2026-09-28 | 2026-10-02 | P2.L7.F.LC.3290 | 56d |
| P2.L7.F.LC.5130 |  | Casework (After Flooring) / L7 / Wet Lab Z2 | 4d | 2026-09-28 | 2026-10-01 | P2.L7.F.LC.3290 | 62d |
| P2.L7.F.LC.3320 |  | Work Completion List - Finishes / L7 / Wet Lab Z2 | 5d | 2026-10-05 | 2026-10-09 | P2.L7.F.LC.3300, P2.L7.F.LC.3310 | 56d |
| P2.L7.F.LC.3330 |  | Remaining Equipment Post Flooring / L7 / Wet Lab Z2 | 5d | 2026-10-12 | 2026-10-16 | P2.L7.F.LC.5130, P2.L7.F.LC.5150, P2.L7.F.LC.3320, PCO.831.1230 | 56d |
| P2.L7.F.LC.3340 |  | Remaining MEP Hook-Ups / L7 / Wet Lab Z2 | 5d | 2026-10-19 | 2026-10-23 | P2.L7.F.LC.3410 FF, P2.L7.F.LC.5150, P2.L7.F.LC.3330 | 56d |
| P2.L7.F.LC.3350 |  | OFOI Furniture & Equipment / L7 / Wet Lab Z2 | 5d | 2026-10-19 | 2026-10-23 | P2.L7.F.LC.3340 SS | 66d |
| P2.L7.F.LC.3360 |  | Rough Clean / L7 / Wet Lab Z2 | 5d | 2026-10-26 | 2026-10-30 | P2.L7.F.LC.3340 | 56d |
| P2.L7.F.LC.3370 |  | Prepare Punchlist / L7 / Wet Lab Z2 | 5d | 2026-11-02 | 2026-11-06 | P2.L7.F.LC.3340 SS, P2.L7.F.LC.3360 | 56d |
| P2.L7.F.LC.3380 |  | Correct Punchlist / L7 / Wet Lab Z2 | 10d | 2026-11-09 | 2026-11-20 | P2.L7.F.LC.3350, P2.L7.F.LC.3370 | 56d |
| P2.L7.F.LC.3390 |  | Final Clean / L7 / Wet Lab Z2 | 5d | 2026-11-23 | 2026-12-01 | P2.L7.F.LC.3380 | 56d |
|  | 4 | **Wet Lab - Z3 (10,271 sf) / Level 7** |  | 2026-04-01 | 2026-12-09 |  |  |
| P2.L7.F.LC.5220 |  | Cleanroom - Hang - Finish Walls and Cielings / L7 / Wet Lab Z3 | 15d | 2026-04-01 | 2026-04-21 | P2.L7.N.1470, P2.L5.F.LC.4300 | 149d |
| P2.L7.F.LC.5230 |  | Cleanroom - Install Doors and Hardware / L7 / Wet Lab Z3 | 5d | 2026-04-22 | 2026-04-28 | P2.L7.F.LC.5220 | 149d |
| P2.L7.F.LC.4190 |  | Casework (Before Flooring) / L7 / Wet Lab Z3 | 12d | 2026-04-28 | 2026-05-13 | P2.L7.LC.1470 | 50d |
| P2.L7.F.LC.5180 |  | Equipment (Before Flooring) / L7 / Wet Lab Z3 | 1d | 2026-04-28 | 2026-04-28 | P2.L7.LC.1470 | 151d |
| P2.L7.F.LC.5240 |  | Cleanroom - Install Windows / L7 / Wet Lab Z3 | 2d | 2026-04-29 | 2026-04-30 | P2.L7.F.LC.5230 | 149d |
| P2.L7.F.LC.4220 |  | Plumbing Fixtures & Drinking Fountains / L7 / Wet Lab Z3 | 5d | 2026-05-14 | 2026-05-20 | P2.L7.F.LC.4190, PCO.830.1140 | 135d |
| P2.L7.F.LC.5210 |  | Interior Glazing / L7 / Wet Lab Z3 | 5d | 2026-05-14 | 2026-05-20 | P2.L7.F.LC.4190 | 50d |
| P2.L7.F.LC.4000 |  | Paint - Walls / L7 / Wet Lab Z3 | 5d | 2026-05-21 | 2026-05-28 | P2.L7.LC.1550, P2.L7.F.LC.5210 | 50d |
| P2.L7.F.LC.4010 |  | R/I - Ceiling Assemblies & Supports - Med Equip / L7 / Wet Lab Z3 | 5d | 2026-05-29 | 2026-06-04 | P2.L7.F.LC.4000 | 50d |
| P2.L7.F.LC.4020 |  | Framing - Hard Lid Ceilings / L7 / Wet Lab Z3 | 5d | 2026-06-05 | 2026-06-11 | P2.L7.F.LC.4010 | 50d |
| P2.L7.F.LC.4030 |  | R/I - Lights & Devices - Hard Lids Ceilings / L7 / Wet Lab Z3 | 10d | 2026-06-12 | 2026-06-25 | P2.L7.F.LC.4020 | 50d |
| P2.L7.F.LC.4040 |  | R/I - Diffusers - Hard Lid Ceilings / L7 / Wet Lab Z3 | 5d | 2026-06-12 | 2026-06-18 | P2.L7.F.LC.4020 | 55d |
| P2.L7.F.LC.4050 |  | R/I - Sprinkler Heads - Hard Lid Ceilings / L7 / Wet Lab Z3 | 5d | 2026-06-12 | 2026-06-18 | P2.L7.F.LC.4020 | 55d |
| P2.L7.F.LC.4060 |  | R/I - Fire Alarm - Hard Lid Ceilings / L7 / Wet Lab Z3 | 5d | 2026-06-12 | 2026-06-18 | P2.L7.F.LC.4020 | 55d |
| P2.L7.F.LC.4070 |  | OH Ceiling Inspection & Signoff - Hard Lid Ceilings / L7 / Wet Lab Z3 | 5d | 2026-06-26 | 2026-07-02 | P2.L7.F.LC.4030, P2.L7.F.LC.4040, P2.L7.F.LC.4050, P2.L7.F.LC.4060 | 50d |
| P2.L7.F.LC.4080 |  | Hang-Tape-Finish _Hard Lid Ceilings / L7 / Wet Lab Z3 | 5d | 2026-07-06 | 2026-07-10 | P2.L7.F.LC.4070, PCO.831.1250 | 50d |
| P2.L7.F.LC.4090 |  | Paint Ceilings / L7 / Wet Lab Z3 | 5d | 2026-07-13 | 2026-07-17 | P2.L7.F.LC.4080 | 50d |
| P2.L7.F.LC.4100 |  | Waterproof Ceramic Tile / L7 / Wet Lab Z3 | 5d | 2026-07-20 | 2026-07-24 | P2.L7.F.LC.4090 | 50d |
| P2.L7.F.LC.4110 |  | Ceramic Tile / L7 / Wet Lab Z3 | 5d | 2026-07-27 | 2026-07-31 | P2.L7.F.LC.4100 | 50d |
| P2.L7.F.LC.4120 |  | T-Grid / L7 / Wet Lab Z3 | 5d | 2026-08-03 | 2026-08-07 | P2.L7.F.LC.4110 | 50d |
| P2.L7.F.LC.4130 |  | Diffusers in T-Grid / L7 / Wet Lab Z3 | 5d | 2026-08-10 | 2026-08-14 | P2.L7.F.LC.4120 | 55d |
| P2.L7.F.LC.4140 |  | Lights & Devices / L7 / Wet Lab Z3 | 10d | 2026-08-10 | 2026-08-21 | P2.L7.F.LC.4120 | 50d |
| P2.L7.F.LC.4150 |  | Sprinkler Heads / L7 / Wet Lab Z3 | 5d | 2026-08-10 | 2026-08-14 | P2.L7.F.LC.4120 | 55d |
| P2.L7.F.LC.4160 |  | Trim Low Voltage / L7 / Wet Lab Z3 | 5d | 2026-08-10 | 2026-08-14 | P2.L7.F.LC.4120 | 55d |
| P2.L7.F.LC.4170 |  | Trim Fire Alarm / L7 / Wet Lab Z3 | 5d | 2026-08-10 | 2026-08-14 | P2.L7.F.LC.4120 | 55d |
| P2.L7.F.LC.5170 |  | Ceiling Service Panel / L7 / Wet Lab Z3 | 2d | 2026-08-10 | 2026-08-11 | P2.L7.F.LC.4120 | 73d |
| P2.L7.F.LC.4180 |  | OH Ceiling Signoff / L7 / Wet Lab Z3 | 10d | 2026-08-24 | 2026-09-04 | P2.L7.F.LC.4170, P2.L7.F.LC.4160, P2.L7.F.LC.4130, P2.L7.F.LC.4140, P2.L7.F.LC.4150 | 50d |
| P2.L7.F.LC.4200 |  | Drop Ceiling Tile / L7 / Wet Lab Z3 | 5d | 2026-09-08 | 2026-09-14 | P2.L7.F.LC.4180, P2.L7.F.LC.5170 | 55d |
| P2.L7.F.LC.4210 |  | Wall Protection / L7 / Wet Lab Z3 | 5d | 2026-09-08 | 2026-09-14 | P2.L7.F.LC.4180, BP7.102.3.300 | 50d |
| P2.L7.F.LC.4230 |  | Trim T-Stats / L7 / Wet Lab Z3 | 5d | 2026-09-15 | 2026-09-21 | P2.L7.F.LC.4210 | 50d |
| P2.L7.F.LC.4240 |  | Trim Electrical / L7 / Wet Lab Z3 | 5d | 2026-09-15 | 2026-09-21 | P2.L7.F.LC.4230 SS | 50d |
| P2.L7.F.LC.4250 |  | Trim Telephone/ Data / L7 / Wet Lab Z3 | 5d | 2026-09-15 | 2026-09-21 | P2.L7.F.LC.4240 SS | 50d |
| P2.L7.F.LC.4270 |  | Trim Med Gas / L7 / Wet Lab Z3 | 5d | 2026-09-15 | 2026-09-21 | P2.L7.F.LC.4180, P2.L7.F.LC.4210 | 50d |
| P2.L7.F.LC.4280 |  | Floor Prep / L7 / Wet Lab Z3 | 5d | 2026-09-22 | 2026-09-28 | P2.L7.F.LC.4270, P2.L7.F.LC.4200, P2.L7.F.LC.4250, P2.L7.F.LC.4190, P2.L7.F.LC.4220, P2.L7.F.LC.4230, P2.L7.F.LC.4240, P2.L7.F.LC.5180, P2.L7.F.LC.5240 | 50d |
| P2.L7.F.LC.4290 |  | Flooring / L7 / Wet Lab Z3 | 5d | 2026-09-29 | 2026-10-05 | P2.L7.F.LC.4280 | 50d |
| P2.L7.F.LC.4260 |  | Doors & Hardware / L7 / Wet Lab Z3 | 5d | 2026-10-06 | 2026-10-12 | P2.L7.F.LC.4290 | 63d |
| P2.L7.F.LC.4300 |  | Building Specialities / L7 / Wet Lab Z3 | 5d | 2026-10-06 | 2026-10-12 | P2.L7.F.LC.4290 | 50d |
| P2.L7.F.LC.4310 |  | Interior Building Signage / L7 / Wet Lab Z3 | 5d | 2026-10-06 | 2026-10-12 | P2.L7.F.LC.4290 | 50d |
| P2.L7.F.LC.5160 |  | Casework (After Flooring) / L7 / Wet Lab Z3 / L7 / Wet Lab Z3 | 3d | 2026-10-06 | 2026-10-08 | P2.L7.F.LC.4290 | 57d |
| P2.L7.F.LC.4320 |  | Work Completion List - Finishes / L7 / Wet Lab Z3 | 5d | 2026-10-13 | 2026-10-19 | P2.L7.F.LC.4310, P2.L7.F.LC.4300 | 50d |
| P2.L7.F.LC.4330 |  | Remaining Equipment Post Flooring / L7 / Wet Lab Z3 | 5d | 2026-10-20 | 2026-10-26 | P2.L7.F.LC.4320, P2.L7.F.LC.4290, P2.L7.F.LC.5160, PCO.831.1230 | 50d |
| P2.L7.F.LC.4340 |  | Remaining MEP Hook-Ups / L7 / Wet Lab Z3 | 5d | 2026-10-27 | 2026-11-02 | P2.L7.F.LC.4330 | 50d |
| P2.L7.F.LC.4350 |  | OFOI Furniture & Equipment / L7 / Wet Lab Z3 | 5d | 2026-10-27 | 2026-11-02 | P2.L7.F.LC.4340 SS | 60d |

| ID | WBS | Task | Duration | Start | Finish | Predecessors | Complete | Total float |
| --- | --- | --- | --- | --- | --- | --- | --- | --- |
| P2.L7.F.LC.4360 |  | Rough Clean / L7 / Wet Lab Z3 | 5d | 2026-11-03 | 2026-11-09 | P2.L7.F.LC.4340 |  | 50d |
| P2.L7.F.LC.4370 |  | Prepare Punchlist / L7 / Wet Lab Z3 | 5d | 2026-11-10 | 2026-11-16 | P2.L7.F.LC.4360, P2.L7.F.LC.4340 SS |  | 50d |
| P2.L7.F.LC.4380 |  | Correct Punchlist / L7 / Wet Lab Z3 | 10d | 2026-11-17 | 2026-12-02 | P2.L7.F.LC.4370, P2.L7.F.LC.4350 |  | 50d |
| P2.L7.F.LC.4390 |  | Final Clean / L7 / Wet Lab Z3 | 5d | 2026-12-03 | 2026-12-09 | P2.L7.F.LC.4380 |  | 50d |
|  | 5 | **Cold Rooms - 7-3942A, 7-3935A, 7-2949, 7-2905A, & 7-2855A** |  | 2026-03-31 | 2026-09-10 |  |  |  |
| P2.L7.F.LC.5000 |  | Cold Room Walls, Ceilings & Floors Build-Out / L7 / 7-3942A, 7-3935A, 7-2949, 7-2905A, & 7-2855A | 20d | 2026-03-31 | 2026-04-27 | BP6.132.3.100, P2.L7.LC.1470 FF, P2.L7.S.1470 |  | 95d |
| P2.L7.F.LC.5010 |  | Cold Room Set-Equipment / L7 / 7-3942A, 7-3935A, 7-2949, 7-2905A, & 7-2855A | 5d | 2026-04-28 | 2026-05-04 | P2.L7.F.LC.5000 |  | 95d |
| P2.L7.F.LC.5020 |  | Braze Lines, Pressure Test, Insulate / L7 / 7-3942A, 7-3935A, 7-2949, 7-2905A, & 7-2855A | 5d | 2026-05-05 | 2026-05-11 | P2.L7.F.LC.5010 |  | 95d |
| P2.L7.F.LC.5030 |  | Final Mechanical/Plumbing Tie-In / L7 / 7-3942A, 7-3935A, 7-2949, 7-2905A, & 7-2855A | 5d | 2026-05-12 | 2026-05-18 | P2.L7.F.LC.5020 |  | 95d |
| P2.L7.F.LC.5040 |  | Controls, Lights, LV, and Final Power / L7 / 7-3942A, 7-3935A, 7-2949, 7-2905A, & 7-2855A | 5d | 2026-05-19 | 2026-05-26 | P2.L7.F.LC.5030, CX.B2.SWGR.1010, CX.B2.MVEE.1010 |  | 95d |
| P2.L7.F.LC.5050 |  | Start-up / L7 / 7-3942A, 7-3935A, 7-2949, 7-2905A, & 7-2855A | 5d | 2026-09-03 | 2026-09-10 | P2.L7.F.LC.5040, CX.B2.MVEE.1010 FF, CX.L7.FRZ.1000 FF, CX.L7.GSE.1000 FF, CX.L7.GSE.1010 FF, CX.L7.AHU.2000 FF, CX.L7.AHU.1000 FF, CX.L7.SLT.1000 FF, P2.L5.F.LC.4050 FF |  | 25d |
|  | 2 | **MECHANICAL TOWERS / LEVEL 7** |  | 2025-05-10 | 2026-04-14 |  |  |  |
|  | 4 | **South Mechanical Tower / Rough In & Finish / Level 7** |  | 2025-06-02 | 2026-04-14 |  |  |  |
| P2.L7.SMT.1070 |  | Set & Connect - Mech Equipment / L7 - S. Mech Tower | 20d | 2025-06-02 A | 2025-06-03 A | P2.7.03.610, P2.L6.SMT.1070 | 100% |  |
| P2.L7.SMT.1000 |  | Insulation - Exterior Wall Assembly / L7 - S. Mech Tower | 5d | 2025-07-02 A | 2025-07-09 A | P2.FAC.2.Z1.150 | 100% |  |
| P2.L7.SMT.1020 |  | In Wall - Electrical - CMU / L7 - S. Mech Tower | 10d | 2025-09-01 A | 2025-09-04 A | P2.L7.SMT.1010 SS | 100% |  |
| P2.L7.SMT.1030 |  | In Wall - Mech/Plumbing - CMU / L7 - S. Mech Tower | 10d | 2025-09-01 A | 2025-09-04 A | P2.L7.SMT.1010 SS | 100% |  |
| P2.L7.SMT.1100 |  | HVAC Piping Connections to Shaft Riser (Chilled Water) / L7 - S. Mech Tower | 20d | 2025-09-02 A | 2025-09-26 A | P2.L7.SMT.1070 | 100% |  |
| P2.L7.SMT.1250 |  | HVAC Piping Connections to Shaft Riser (Reheat) / L7 - S. Mech Tower | 20d | 2025-09-02 A | 2025-09-26 A | P2.L7.SMT.1100 | 100% |  |
| P2.L7.SMT.1010 |  | CMU - Lay Block / L7 - S. Mech Tower | 10d | 2025-09-08 A | 2025-09-11 A | P2.L7.SMT.1000, P2.L6.SMT.1010 | 100% |  |
| P2.L7.SMT.1005 |  | HVAC Duct Connections to Shaft Riser / L7 - S. Mech Tower | 5d | 2025-09-15 A | 2025-09-25 A | P2.L7.SMT.1070 | 100% |  |
| P2.L7.SMT.1130 |  | Test/Inspect Duct & Piping / L7 - S. Mech Tower | 5d | 2025-09-26 A | 2025-09-30 A | P2.L7.SMT.1005, P2.L7.SMT.1250 | 100% |  |
| P2.L7.SMT.1040 |  | Paint - CMU Block Fill / L7 - S. Mech Tower | 10d | 2025-10-06 A | 2025-10-17 A | P2.L7.SMT.1010 | 100% |  |
| P2.L7.SMT.1050 |  | CMU - Point & Patch / L7 - S. Mech Tower | 10d | 2025-10-20 A | 2025-10-22 A | P2.L7.SMT.1040, P2.L7.SMT.1030, P2.L7.SMT.1020 | 100% |  |
| P2.L7.SMT.1060 |  | Paint Prime & 1st Coat - CMU / L7 - S. Mech Tower | 10d | 2025-10-20 A | 2025-10-22 A | P2.L7.SMT.1050 SS | 100% |  |
| P2.L7.SMT.1080 |  | Set & Connect - Elect Panels and Equipment / L7 - S. Mech Tower | 5d | 2025-11-03 A | 2025-11-07 A | P2.L7.SMT.1060 | 100% |  |
| P2.L7.SMT.1120 |  | BAS - Equip Tie In / L7 - S. Mech Tower | 5d | 2025-12-01 | 2025-12-05 | P2.L7.SMT.1070, P2.L7.SMT.1060 |  | 104d |
| FRG.P2.L7.SMT.1050 |  | AHU Piping Install / L7 - S. Mech Tower - FRAGNET | 20d | 2025-12-30 | 2026-01-27 | FRG.P2.L6.SMT.1040 |  | 24d |
| P2.L7.SMT.1110 |  | HVAC Piping - Equip Tie In (Chilled Water) / L7 - S. Mech Tower | 20d | 2026-01-28 | 2026-02-24 | P2.L7.SMT.1070, CX.B2.HYDR.1000, FRG.P2.L7.SMT.1050 |  | 24d |
| P2.L7.SMT.1200 |  | Flooring Prep - Epoxy Floors / L7 - S. Mech Tower | 3d | 2026-02-02 | 2026-02-04 | P2.L7.SMT.1080, P2.L6.SMT.1270 |  | 34d |
| P2.L7.SMT.1270 |  | Flooring - Epoxy Floors / L7 - S. Mech Tower | 2d | 2026-02-05 | 2026-02-06 | P2.L7.SMT.1200 |  | 34d |
| P2.L7.SMT.1090 |  | Panelboards, Interconnect Wiring, and Remaining Room Buildout of All Elec/FA Systems / L7 - S. Mech Tower | 10d | 2026-02-09 | 2026-02-20 | P2.L7.SMT.1080, P2.L7.SMT.1270, BP1.262.3.200, BP1.262.3.100 |  | 34d |
| P2.L7.SMT.1140 |  | Pull Wire - In From Distribution Panels / Out to Branch Circuits / L7 - S. Mech Tower | 5d | 2026-02-23 | 2026-02-27 | P2.L7.SMT.1090 |  | 34d |
| P2.L7.SMT.1260 |  | HVAC Piping - Equip Tie In (Reheat) / L7 - S. Mech Tower | 20d | 2026-02-25 | 2026-03-24 | P2.L7.SMT.1110, CX.B2.HYDR.1000, FRG.P2.L7.SMT.1050 |  | 24d |
| P2.L7.SMT.1160 |  | Electrical Tie in to Equipment / L7 - S. Mech Tower | 5d | 2026-03-02 | 2026-03-06 | P2.L7.SMT.1140, P2.L7.SMT.1070 |  | 51d |
| P2.L7.SMT.1170 |  | Test & Terminate / L7 - S. Mech Tower | 5d | 2026-03-02 | 2026-03-06 | P2.L7.SMT.1140 |  | 34d |
| P2.L7.SMT.1180 |  | Paint - Finish Coat / L7 - S. Mech Tower | 2d | 2026-03-09 | 2026-03-10 | P2.L7.SMT.1170 |  | 34d |
| P2.L7.SMT.1190 |  | Trim All MEPF Finishes / L7 - S. Mech Tower | 2d | 2026-03-11 | 2026-03-12 | P2.L7.SMT.1180 |  | 35d |
| P2.L7.SMT.1340 |  | Wall Protection / L7 - S. Mech Tower | 5d | 2026-03-11 | 2026-03-17 | P2.L7.SMT.1180, BP7.102.3.300 |  | 34d |
| P2.L7.SMT.1210 |  | Doors & Hardware / L7 - S. Mech Tower | 2d | 2026-03-13 | 2026-03-16 | P2.L7.SMT.1190 |  | 35d |
| P2.L7.SMT.1150 |  | Insulate HVAC / Plumbing Pipe / L7 - S. Mech Tower | 5d | 2026-03-25 | 2026-03-31 | P2.L7.SMT.1130, P2.L7.SMT.1260 |  | 24d |
| P2.L7.SMT.1220 |  | Trades Inspect & Verify R/I Work Completed to Specs / L7 - S. Mech Tower | 5d | 2026-04-01 | 2026-04-07 | P2.L7.SMT.1120, P2.L7.SMT.1150, P2.L7.SMT.1210, P2.L7.SMT.1340 |  | 24d |
| P2.L7.SMT.1240 |  | Energize Elec Panels - Lock Doors and Limit Access / L7 - S. Mech Tower | 5d | 2026-04-08 | 2026-04-14 | P2.L7.SMT.1220, CX.B2.SWGR.1010, CX.B2.MVEE.1010 |  | 24d |
| P2.L7.SMT.1230 |  | HVAC System Ready for Start Up / L7 - S. Mech Tower | 0d | 2026-04-14 | 2026-04-14 | P2.L7.SMT.1240, P2.L7.SMT.1160 FF |  | 24d |
|  | 8 | **East Mechanical Tower / Rough In & Finish / Level 7** |  | 2025-05-10 | 2026-03-24 |  |  |  |
| P2.L7.EMT.1070 |  | Set & Connect - Mech Equipment / L7 - E. Mech Tower | 10d | 2025-05-10 A | 2025-05-17 A | P2.7.03.630, P2.L6.EMT.1070 | 100% |  |
| P2.L7.EMT.1030 |  | In Wall - Mech/Plumbing - CMU / L7 - E. Mech Tower | 10d | 2025-08-11 A | 2025-08-29 A | P2.L7.EMT.1010 SS | 100% |  |
| P2.L7.EMT.1100 |  | HVAC Piping Connections to Shaft Riser / L7 - E. Mech Tower | 20d | 2025-09-02 A | 2025-09-26 A | P2.L7.EMT.1070, P2.L7.SMT.1250 | 100% |  |
| P2.L7.EMT.1000 |  | Insulation - Exterior Wall Assembly / L7 - E. Mech Tower | 5d | 2025-09-11 A | 2025-09-17 A | P2.FAC.2.Z3.150 | 100% |  |
| P2.L7.EMT.1005 |  | HVAC Duct Connections to Shaft Riser / L7 - E. Mech Tower | 5d | 2025-09-15 A | 2025-09-26 A | P2.L7.EMT.1070 | 100% |  |
| P2.L7.EMT.1130 |  | Test/Inspect Duct & Piping / L7 - E. Mech Tower | 20d | 2025-09-26 A | 2025-09-30 A | P2.L7.EMT.1100, P2.L7.EMT.1005 | 100% |  |
| P2.L7.EMT.1010 |  | CMU - Lay Block / L7 - E. Mech Tower | 10d | 2025-10-20 A | 2025-10-28 A | P2.L5.EMT.1010, P2.L7.EMT.1000 | 100% |  |
| P2.L7.EMT.1020 |  | In Wall - Electrical - CMU / L7 - E. Mech Tower | 10d | 2025-10-20 A | 2025-10-28 A | P2.L7.EMT.1010 SS | 100% |  |
| P2.L7.EMT.1040 |  | Paint - CMU Block Fill / L7 - E. Mech Tower | 10d | 2025-11-10 A | 2025-11-15 A | P2.L7.EMT.1010 | 100% |  |
| P2.L7.EMT.1050 |  | CMU - Point & Patch / L7 - E. Mech Tower | 10d | 2025-11-10 A | 2025-11-15 A | P2.L7.EMT.1020, P2.L7.EMT.1040, P2.L7.EMT.1030 | 100% |  |
| P2.L7.EMT.1060 |  | Paint Prime & 1st Coat - CMU / L7 - E. Mech Tower | 10d | 2025-11-10 A | 2025-11-15 A | P2.L7.EMT.1050 SS | 100% |  |
| P2.L7.EMT.1120 |  | BAS - Equip Tie In / L7 - E. Mech Tower | 5d | 2025-11-18 A | 2025-11-24 A | P2.L7.EMT.1070, P2.L7.EMT.1060 | 100% |  |
| P2.L7.EMT.1080 |  | Set & Connect - Elect Panels and Equipment / L7 - E. Mech Tower | 5d | 2025-12-01 | 2025-12-05 | P2.L7.EMT.1060 |  | 72d |
| P2.L7.EMT.1200 |  | Flooring Prep - Epoxy Floors / L7 - E. Mech Tower | 3d | 2026-01-06 | 2026-01-08 | P2.L7.EMT.1080, P2.L6.EMT.1260 |  | 53d |
| P2.L7.EMT.1250 |  | Flooring - Epoxy Floors / L7 - E. Mech Tower | 2d | 2026-01-09 | 2026-01-12 | P2.L7.EMT.1200 |  | 53d |
| P2.L7.EMT.1090 |  | Panelboards, Interconnect Wiring, and Remaining Room Buildout of All Elec/FA Systems / L7 - E. Mech Tower | 10d | 2026-01-13 | 2026-01-26 | P2.L7.EMT.1080, P2.L7.EMT.1250, BP1.262.3.200, BP1.262.3.100 |  | 53d |
| P2.L7.EMT.1140 |  | Pull Wire - In From Distribution Panels / Out to Branch Circuits / L7 - E. Mech Tower | 5d | 2026-01-27 | 2026-02-02 | P2.L7.EMT.1090 |  | 53d |
| P2.L7.EMT.1110 |  | HVAC Piping - Equip Tie In / L7 - E. Mech Tower | 20d | 2026-01-28 | 2026-02-24 | P2.L7.EMT.1070, CX.B2.HYDR.1000 |  | 44d |
| P2.L7.EMT.1160 |  | Electrical Tie in to Equipment / L7 - E. Mech Tower | 5d | 2026-02-03 | 2026-02-09 | P2.L7.EMT.1140, P2.L7.EMT.1070 |  | 70d |
| P2.L7.EMT.1170 |  | Test & Terminate / L7 - E. Mech Tower | 5d | 2026-02-03 | 2026-02-09 | P2.L7.EMT.1140 |  | 53d |
| P2.L7.EMT.1180 |  | Paint - Finish Coat / L7 - E. Mech Tower | 2d | 2026-02-10 | 2026-02-11 | P2.L7.EMT.1170 |  | 53d |
| P2.L7.EMT.1190 |  | Trim All MEPF Finishes / L7 - E. Mech Tower | 2d | 2026-02-12 | 2026-02-13 | P2.L7.EMT.1180 |  | 54d |
| P2.L7.EMT.1210 |  | Doors & Hardware / L7 - E. Mech Tower | 2d | 2026-02-16 | 2026-02-17 | P2.L7.EMT.1190 |  | 54d |
| FRG.P2.L7.EMT.1050 |  | AHU Piping Install / L7 - E. Mech Tower - FRAGNET | 20d | 2026-02-18 | 2026-03-17 | FRG.P2.L6.EMT.1040 |  | 39d |
| P2.L7.EMT.1340 |  | Wall Protection / L7 - E. Mech Tower | 5d | 2026-02-19 | 2026-02-25 | P2.L7.EMT.1180, BP7.102.3.300 |  | 48d |

| ID | WBS | Task | Duration | Start | Finish | Predecessors | Complete | Total float | Constraint |
| --- | --- | --- | --- | --- | --- | --- | --- | --- | --- |
| P2.L7.EMT.1150 |  | Insulate HVAC / Plumbing Pipe / L7 - E. Mech Tower | 5d | 2026-02-25 | 2026-03-03 | P2.L7.EMT.1110, P2.L7.EMT.1130 |  | 44d |  |
| P2.L7.EMT.1220 |  | Trades Inspect & Verify R/I Work Completed to Specs / L7 - E. Mech Tower | 5d | 2026-03-04 | 2026-03-10 | P2.L7.EMT.1120, P2.L7.EMT.1150, P2.L7.EMT.1210, P2.L7.EMT.1340 |  | 44d |  |
| P2.L7.EMT.1240 |  | Energize Elec Panels - Lock Doors and Limit Access / L7 - E. Mech Tower | 5d | 2026-03-18 | 2026-03-24 | P2.L7.EMT.1220, CX.B2.SWGR.1010, CX.B2.MVEE.1010, FRG.P2.L7.EMT.1050 |  | 39d |  |
| P2.L7.EMT.1230 |  | HVAC System Ready for Start Up / L7 - E. Mech Tower | 0d | 2026-03-24 | 2026-03-24 | P2.L7.EMT.1240, P2.L7.EMT.1160 FF, FRG.P2.L7.EMT.1050 |  | 39d |  |
|  | L8 | **L8 / BUILDOUT** |  | 2025-05-26 | 2026-12-29 |  |  |  |  |
|  | L8 | **CORE & SUPPORT SPACES / LEVEL 8** |  | 2025-06-26 | 2026-12-29 |  |  |  |  |
|  | 2 | **ROUGH IN - Core & Support Spaces / Level 8** |  | 2025-06-26 | 2026-05-14 |  |  |  |  |
|  | Z112 | **South / Level 8** |  | 2025-06-26 | 2026-02-25 |  |  |  |  |
| P2.L8.S.1000 |  | Layout - All Trades / L8 / South | 5d | 2025-06-26 A | 2025-06-30 A | P2.8.03.610, P2.BIM.L8.40.150, P2.8.03.620 | 100% |  |  |
| P2.L8.S.1020 |  | OH - Structural Supports (All Trades) / L8 / South | 5d | 2025-06-27 A | 2025-06-30 A | P2.L8.S.1000 | 100% |  |  |
| P2.L8.S.1030 |  | OH - MEPF - Hangers & Supports / L8 / South | 10d | 2025-06-27 A | 2025-07-31 A | P2.L8.S.1000, P2.BIM.L8.40.150 | 100% |  |  |
| P2.L8.S.1010 |  | Framing - Top Track / L8 / South | 10d | 2025-07-14 A | 2025-07-21 A | P2.L7.S.1010, P2.L8.S.1000 FF+1d | 100% |  |  |
| P2.L8.S.1090 |  | Framing - Priority Walls & Door Frames / L8 / South | 10d | 2025-07-21 A | 2025-08-11 A | P2.L8.S.1010 FF+2d, P2.L7.N.1090 FF+3d | 100% |  |  |
| P2.L8.S.1160 |  | Spray/Seal/Firestop - Head of Wall - Priority Walls / L8 / South | 5d | 2025-07-21 A | 2025-07-28 A | P2.L8.S.1140 FF | 100% |  |  |
| P2.L8.S.1170 |  | OH - Fire Suppression / L8 / South | 10d | 2025-07-21 A | 2025-08-29 A | P2.L8.S.1030 | 100% |  |  |
| P2.L8.S.1130 |  | Framing - Priority Walls - AHJ Inspections / L8 / South | 5d | 2025-07-28 A | 2025-08-13 A | P2.L8.S.1090 | 100% |  |  |
| P2.L8.S.1140 |  | Hang/Tape/Finish - Priority Walls / L8 / South | 10d | 2025-08-14 A | 2025-09-04 A | P2.L8.S.1020, P2.L8.S.1130 | 100% |  |  |
| P2.L8.S.1150 |  | Paint Prime & 1st Coat - Priority Walls / L8 / South | 10d | 2025-08-15 A | 2025-08-29 A | P2.L8.S.1160 SS | 100% |  |  |
| P2.L8.S.1190 |  | OH - Electrical - 480/277v Distribution / L8 / South | 10d | 2025-09-01 A | 2025-09-12 A | P2.L8.S.1030, P2.L8.S.1150 | 100% |  |  |
| P2.L8.S.1180 |  | OH - Plumbing Piping / L8 / South | 20d | 2025-09-08 A | 2025-12-12 | P2.L8.S.1030, P2.L8.S.1150, P2.L7.S.1180 | 50% | 67d |  |
| P2.L8.S.1230 |  | OH - Electrical - 208/120v Branch / L8 / South | 10d | 2025-09-15 A | 2025-12-12 | P2.L8.S.1190, P2.BIM.L8.40.140 |  | 16d |  |
| P2.L8.S.1420 |  | Framing - Balance of Framing & Door Frames / L8 / South | 10d | 2025-09-29 A | 2025-10-24 A | P2.L8.S.1150 | 100% |  |  |
| FRG.P2.L8.S.1620 |  | HVAC Piping - Staging & Layout / L8 / South - FRAGNET | 5d | 2025-10-20 A | 2025-10-27 A | FRG.P2.L8.S.1610 | 100% |  |  |
| FRG.P2.L8.S.1610 |  | HVAC Piping Delivery Steel / L8 / South - FRAGNET | 0d | 2025-10-24 A | 2025-10-24 A | P2.L8.S.1030 FF | 100% |  | finish on or after 2025-09-26 |
| P2.L8.S.1210 |  | OH - Hang Duct - HP Mains / L8 / South | 20d | 2025-10-31 A | 2025-12-01 A | P2.L8.S.1030, P2.L8.S.1170 | 100% |  |  |
| FRG.P2.L8.S.1630 |  | HVAC Piping - Hanging Copper Racks / L8 / South - FRAGNET | 20d | 2025-11-03 A | 2025-12-01 A | FRG.P2.L8.S.1620, FRG.P2.L8.S.1650 | 100% |  |  |
| FRG.P2.L8.S.1640 |  | HVAC Piping - Hang Steel Racks/Spool / L8 / South - FRAGNET | 20d | 2025-11-03 A | 2025-12-01 A | FRG.P2.L8.S.1620 | 100% |  |  |
| P2.L8.S.1430 |  | In Wall - Plumbing - Framing / L8 / South | 10d | 2025-11-11 A | 2025-11-28 A | P2.L8.S.1420 | 100% |  |  |
| FRG.P2.L8.S.1650 |  | HVAC Piping Delivery Copper / L8 / South - FRAGNET | 0d | 2025-12-01 | 2025-12-01 | P2.L8.S.1030 FF |  | 51d | finish on or after 2025-10-10 |
| P2.L8.S.1200 |  | Firestop - Thru Wall - Priority Walls / L8 / South | 5d | 2025-12-01 | 2025-12-05 | P2.L8.S.1150 |  | 79d |  |
| P2.L8.S.1220 |  | OH - HVAC Piping (High) / L8 / South | 20d | 2025-12-01 A | 2025-12-29 | P2.L8.S.1030, FRG.P2.L8.S.1610, FRG.P2.L8.S.1640 |  | 41d |  |
| P2.L8.S.1250 |  | Pull Wire - Electrical - 480/277v Distribution / L8 / South | 10d | 2025-12-01 | 2025-12-12 | P2.L8.S.1190, P2.8.HE.5959.1050 |  | 104d |  |
| P2.L8.S.1260 |  | OH - DALT - HP Mains / L8 / South | 5d | 2025-12-01 | 2025-12-05 | P2.L8.S.1210 |  | 69d |  |
| P2.L8.S.1300 |  | OH - Hang Duct - LP Branch / L8 / South | 15d | 2025-12-01 | 2025-12-19 | P2.L8.S.1260 SS |  | 69d |  |
| P2.L8.S.1450 |  | In Wall - Backing/Blocking/Supports / L8 / South | 10d | 2025-12-01 | 2025-12-12 | P2.L8.S.1420 |  | 26d |  |
| P2.L8.S.1560 |  | OH - HVAC Piping (Low) / L8 / South | 20d | 2025-12-01 A | 2025-12-29 | FRG.P2.L8.S.1630 |  | 51d |  |
| P2.L8.S.1290 |  | OH - Insulate HP Duct / L8 / South | 10d | 2025-12-08 | 2025-12-19 | P2.L8.S.1260 |  | 109d |  |
| P2.L8.S.1310 |  | OH - Set & Connect Mech Equipment / L8 / South | 10d | 2025-12-08 | 2025-12-19 | P2.L8.S.1260 |  | 69d |  |
| P2.L8.S.1240 |  | OH - Plumbing - Test / L8 / South | 10d | 2025-12-15 | 2025-12-29 | P2.L8.S.1180 |  | 74d |  |
| P2.L8.S.1440 |  | In Wall - Electrical - Framing / L8 / South | 10d | 2025-12-15 | 2025-12-29 | P2.L8.S.1230, P2.L8.S.1090, P2.L8.S.1420 |  | 16d |  |
| P2.L8.S.1320 |  | OH - Electrical - Equip Tie In / L8 / South | 10d | 2025-12-22 | 2026-01-06 | P2.L8.S.1310 |  | 69d |  |
| P2.L8.S.1350 |  | OH - Insulate LP Duct / L8 / South | 10d | 2025-12-22 | 2026-01-06 | P2.L8.S.1300, P2.L8.S.1200 |  | 69d |  |
| P2.L8.S.1370 |  | OH - Conduit - Low Volt - BAS/Controls / L8 / South | 10d | 2025-12-22 | 2026-01-06 | P2.L8.S.1310 |  | 79d |  |
| P2.L8.S.1400 |  | OH - Conduit - Low Volt - Security / L8 / South | 10d | 2025-12-22 | 2026-01-06 | P2.L8.S.1310 |  | 79d |  |
| P2.L8.S.1270 |  | OH - HVAC Piping - Test / L8 / South | 15d | 2025-12-30 | 2026-01-20 | P2.L8.S.1560 |  | 69d |  |
| P2.L8.S.1280 |  | OH - Insulate Plumbing / L8 / South | 10d | 2025-12-30 | 2026-01-13 | P2.L8.S.1240 |  | 74d |  |
| P2.L8.S.1460 |  | AHJ Inspections - Wall Close In / L8 / South | 5d | 2025-12-30 | 2026-01-06 | P2.L8.S.1450, P2.L8.S.1430, P2.L8.S.1440 |  | 16d |  |
| P2.L8.S.1360 |  | Pull Wire - Electrical - 208/120v Branch & Equip / L8 / South | 20d | 2026-01-07 | 2026-02-03 | P2.L8.S.1230, P2.L8.S.1320, P2.L8.S.1440 |  | 69d |  |
| P2.L8.S.1380 |  | OH - Conduit - Low Volt - Fire Alarm / L8 / South | 10d | 2026-01-07 | 2026-01-20 | P2.L8.S.1310, P2.L8.S.1350 |  | 69d |  |
| P2.L8.S.1390 |  | OH - Conduit - Low Volt - Telecom / L8 / South | 10d | 2026-01-07 | 2026-01-20 | P2.L8.S.1350 |  | 69d |  |
| P2.L8.S.1470 |  | Hang-Tape-Finish - Walls and Hard Lid Ceilings / L8 / South | 13d | 2026-01-19 | 2026-02-04 | P2.L8.S.1460, P2.SUM.175, P2.L6.S.1470 |  | 8d |  |
| P2.L8.S.1340 |  | OH - Insulate HVAC Pipe / L8 / South | 15d | 2026-01-21 | 2026-02-10 | P2.L8.S.1270, P2.L8.S.1290 |  | 89d |  |
| P2.L8.S.1330 |  | OH - HVAC Piping - Equip Tie In / L8 / South | 10d | 2026-01-28 | 2026-02-10 | P2.L8.S.1270, P2.L8.S.1310, CX.B2.HYDR.1000 |  | 64d |  |
| P2.L8.S.1480 |  | Spray/Seal/Firestop - Head of Wall / L8 / South | 10d | 2026-02-05 | 2026-02-18 | P2.L8.S.1470 |  | 58d |  |
| P2.L8.S.1490 |  | Firestop - Thru Wall / L8 / South | 10d | 2026-02-05 | 2026-02-18 | P2.L8.S.1470, P2.L8.S.1280 |  | 58d |  |
| P2.L8.S.1500 |  | Pull Wire - Low Volt - BAS/Controls / L8 / South | 10d | 2026-02-05 | 2026-02-18 | P2.L8.S.1470, P2.L8.S.1370 |  | 58d |  |
| P2.L8.S.1510 |  | Pull Wire - Low Volt - Fire Alarm / L8 / South | 10d | 2026-02-05 | 2026-02-18 | P2.L8.S.1470, P2.L8.S.1380 |  | 58d |  |
| P2.L8.S.1520 |  | Pull Wire - Low Volt - Telecom / L8 / South | 10d | 2026-02-05 | 2026-02-18 | P2.L8.S.1470, P2.L8.S.1390 |  | 58d |  |
| P2.L8.S.1530 |  | Pull Wire - Low Volt - Security / L8 / South | 10d | 2026-02-05 | 2026-02-18 | P2.L8.S.1470, P2.L8.S.1400 |  | 58d |  |
| P2.L8.S.1550 |  | Trades Inspect & Verify R/I Work Completed to Specs / L8 / South | 5d | 2026-02-19 | 2026-02-25 | P2.L8.S.1490, P2.L8.S.1480, P2.L8.S.1530, P2.L8.S.1250, P2.L8.S.1360, P2.L8.S.1500, P2.L8.S.1510, P2.L8.S.1520, P2.L8.S.1330 |  | 58d |  |
|  | Z1121 | **North / Level 8** |  | 2025-07-07 | 2026-03-20 |  |  |  |  |
| P2.L8.N.1000 |  | Layout - All Trades / L8 / North | 5d | 2025-07-07 A | 2025-07-11 A | P2.8.03.630 | 100% |  |  |
| P2.L8.N.1030 |  | OH - MEPF - Hangers & Supports / L8 / North | 10d | 2025-07-11 A | 2025-07-28 A | P2.L8.N.1000, P2.BIM.L8.40.150 | 100% |  |  |
| P2.L8.N.1020 |  | OH - Structural Supports (All Trades) / L8 / North | 5d | 2025-07-14 A | 2025-07-18 A | P2.L8.N.1000 | 100% |  |  |
| P2.L8.N.1010 |  | Framing - Top Track / L8 / North | 10d | 2025-07-21 A | 2025-07-31 A | P2.L8.N.1000, P2.L7.N.1010 | 100% |  |  |
| P2.L8.N.1170 |  | OH - Fire Suppression / L8 / North | 10d | 2025-07-28 A | 2025-08-29 A | P2.L8.N.1030 | 100% |  |  |
| P2.L8.N.1090 |  | Framing - Priority Walls & Door Frames / L8 / North | 10d | 2025-07-29 A | 2025-08-21 A | P2.L8.S.1090, P2.L8.N.1010 | 100% |  |  |
| P2.L8.N.1160 |  | Spray/Seal/Firestop - Head of Wall - Priority Walls / L8 / North | 5d | 2025-07-29 A | 2025-08-21 A | P2.L8.N.1140 | 100% |  |  |
| P2.L8.N.1130 |  | Framing - Priority Walls - AHJ Inspections / L8 / North | 5d | 2025-08-18 A | 2025-08-22 A | P2.L8.N.1090 | 100% |  |  |
| P2.L8.N.1140 |  | Hang/Tape/Finish - Priority Walls / L8 / North | 10d | 2025-08-18 A | 2025-09-15 A | P2.L8.N.1020, P2.L8.S.1140, P2.L8.N.1130, DDD3200 FF | 100% |  |  |

| ID | WBS | Task | Duration | Start | Finish | Predecessors | Complete | Total float |
| --- | --- | --- | --- | --- | --- | --- | --- | --- |
| P2.L8.N.1150 |  | Paint Prime & 1st Coat - Priority Walls / L8 / North | 10d | 2025-08-19 A | 2025-08-29 A | P2.L8.N.1160 SS | 100% |  |
| P2.L8.N.1190 |  | OH - Electrical - 480/277v Distribution / L8 / North | 10d | 2025-09-22 A | 2025-11-07 A | P2.L8.N.1030, P2.L8.N.1150 | 100% |  |
| P2.L8.N.1420 |  | Framing - Balance of Framing & Door Frames / L8 / North | 10d | 2025-09-29 A | 2025-10-24 A | P2.L8.N.1150 | 100% |  |
| P2.L8.N.1180 |  | OH - Plumbing Piping / L8 / North | 15d | 2025-09-30 A | 2025-12-12 | P2.L8.N.1030 | 33% | 67d |
| P2.L8.N.1230 |  | OH - Electrical - 208/120v Branch / L8 / North | 10d | 2025-11-10 A | 2025-12-12 | P2.L8.N.1190, P2.BIM.L8.40.140 |  | 16d |
| P2.L8.N.1210 |  | OH - Hang Duct - HP Mains / L8 / North | 10d | 2025-11-17 A | 2025-12-12 | P2.L8.N.1170, P2.L8.N.1030, DDD3200, P2.L8.N.1090, P2.L8.S.1210 |  | 54d |
| P2.L8.N.1200 |  | Firestop - Thru Wall - Priority Walls / L8 / North | 5d | 2025-12-01 | 2025-12-05 | P2.L8.N.1150 |  | 79d |
| P2.L8.N.1220 |  | OH - HVAC Piping (High) / L8 / North | 10d | 2025-12-01 A | 2026-01-13 | P2.L8.N.1170, P2.L8.N.1030, P2.L8.N.1090, P2.L8.S.1220 |  | 41d |
| P2.L8.N.1250 |  | Pull Wire - Electrical - 480/277v Distribution / L8 / North | 10d | 2025-12-01 | 2025-12-12 | P2.L8.N.1190, P2.8.HE.2803.1050 |  | 104d |
| P2.L8.N.1260 |  | OH - DALT - HP Mains / L8 / North | 5d | 2025-12-01 A | 2025-12-19 | P2.L8.N.1210 |  | 54d |
| P2.L8.N.1300 |  | OH - Hang Duct - LP Branch (High) / L8 / North | 10d | 2025-12-01 A | 2025-12-29 | P2.L8.N.1260 SS |  | 54d |
| P2.L8.N.1310 |  | OH - Set & Connect Mech Equipment / L8 / North | 15d | 2025-12-01 A | 2026-01-13 | P2.L8.N.1260 |  | 54d |
| P2.L8.N.1430 |  | In Wall - Plumbing - Framing / L8 / North | 10d | 2025-12-01 A | 2025-12-12 | P2.L8.N.1420 |  | 26d |
| P2.L8.N.1450 |  | In Wall - Backing/Blocking/Supports / L8 / North | 10d | 2025-12-01 | 2025-12-12 | P2.L8.N.1420 |  | 26d |
| P2.L8.N.1570 |  | OH - Hang Duct - LP Branch (Low) / L8 / North | 10d | 2025-12-01 A | 2026-01-13 | P2.L8.N.1300 |  | 54d |
| P2.L8.N.1240 |  | OH - Plumbing - Test / L8 / North | 15d | 2025-12-15 | 2026-01-06 | P2.L8.N.1180 |  | 69d |
| P2.L8.N.1440 |  | In Wall - Electrical - Framing / L8 / North | 10d | 2025-12-15 | 2025-12-29 | P2.L8.N.1090, P2.L8.N.1420, P2.L8.N.1230 |  | 16d |
| P2.L8.N.1290 |  | OH - Insulate HP Duct / L8 / North | 10d | 2025-12-22 | 2026-01-06 | P2.L8.N.1260 |  | 104d |
| P2.L8.N.1460 |  | AHJ Inspections - Wall Close In / L8 / North | 5d | 2025-12-30 | 2026-01-06 | P2.L8.N.1430, P2.L8.N.1440, P2.L8.N.1450 |  | 16d |
| P2.L8.N.1280 |  | OH - Insulate Plumbing / L8 / North | 10d | 2026-01-07 | 2026-01-20 | P2.L8.N.1240 |  | 69d |
| P2.L8.N.1320 |  | OH - Electrical - Equip Tie In / L8 / North | 10d | 2026-01-14 | 2026-01-27 | P2.L8.N.1310 |  | 54d |
| P2.L8.N.1350 |  | OH - Insulate LP Duct / L8 / North | 10d | 2026-01-14 | 2026-01-27 | P2.L8.N.1570, P2.L8.N.1200 |  | 54d |
| P2.L8.N.1370 |  | OH - Conduit - Low Volt - BAS/Controls / L8 / North | 10d | 2026-01-14 | 2026-01-27 | P2.L8.N.1310 |  | 64d |
| P2.L8.N.1400 |  | OH - Conduit - Low Volt - Security / L8 / North | 10d | 2026-01-14 | 2026-01-27 | P2.L8.N.1310 |  | 64d |
| P2.L8.N.1560 |  | OH - HVAC Piping (Low) / L8 / North | 13d | 2026-01-14 | 2026-01-30 | P2.L8.N.1220, P2.L8.S.1560 |  | 41d |
| P2.L8.N.1470 |  | Hang-Tape-Finish - Walls and Hard Lid Ceilings / L8 / North | 13d | 2026-01-19 | 2026-02-04 | P2.L8.N.1460, P2.SUM.175, DDD3200, P2.L6.S.1470 |  | 8d |
| P2.L8.N.1360 |  | Pull Wire - Electrical - 208/120v Branch & Equip / L8 / North | 20d | 2026-01-28 | 2026-02-24 | P2.L8.N.1230, P2.L8.N.1320, P2.L8.N.1440 FF+5d |  | 54d |
| P2.L8.N.1380 |  | OH - Conduit - Low Volt - Fire Alarm / L8 / North | 10d | 2026-01-28 | 2026-02-10 | P2.L8.N.1310, P2.L8.N.1350 |  | 54d |
| P2.L8.N.1390 |  | OH - Conduit - Low Volt - Telecom / L8 / North | 10d | 2026-01-28 | 2026-02-10 | P2.L8.N.1350 |  | 54d |
| P2.L8.N.1270 |  | OH - HVAC Piping - Test / L8 / North | 15d | 2026-02-02 | 2026-02-20 | P2.L8.N.1560 |  | 41d |
| P2.L8.N.1480 |  | Spray/Seal/Firestop - Head of Wall / L8 / North | 10d | 2026-02-05 | 2026-02-18 | P2.L8.N.1470 |  | 58d |
| P2.L8.N.1490 |  | Firestop - Thru Wall / L8 / North | 10d | 2026-02-05 | 2026-02-18 | P2.L8.N.1470, P2.L8.N.1280 |  | 58d |
| P2.L8.N.1500 |  | Pull Wire - Low Volt - BAS/Controls / L8 / North | 10d | 2026-02-05 | 2026-02-18 | P2.L8.N.1470, P2.L8.N.1370 |  | 58d |
| P2.L8.N.1530 |  | Pull Wire - Low Volt - Security / L8 / North | 10d | 2026-02-05 | 2026-02-18 | P2.L8.N.1470, P2.L8.N.1400 |  | 58d |
| P2.L8.N.1510 |  | Pull Wire - Low Volt - Fire Alarm / L8 / North | 10d | 2026-02-11 | 2026-02-24 | P2.L8.N.1470, P2.L8.N.1380 |  | 54d |
| P2.L8.N.1520 |  | Pull Wire - Low Volt - Telecom / L8 / North | 10d | 2026-02-11 | 2026-02-24 | P2.L8.N.1470, P2.L8.N.1390 |  | 54d |
| P2.L8.N.1330 |  | OH - HVAC Piping - Equip Tie In / L8 / North | 15d | 2026-02-23 | 2026-03-13 | P2.L8.N.1310, P2.L8.N.1270, CX.B2.HYDR.1000 |  | 41d |
| P2.L8.N.1340 |  | OH - Insulate HVAC Pipe / L8 / North | 10d | 2026-02-23 | 2026-03-06 | P2.L8.N.1290, P2.L8.N.1270 |  | 71d |
| P2.L8.N.1550 |  | Trades Inspect & Verify R/I Work Completed to Specs / L8 / North | 5d | 2026-03-16 | 2026-03-20 | P2.L8.N.1250, P2.L8.N.1360, P2.L8.N.1500, P2.L8.N.1510, P2.L8.N.1520, P2.L8.N.1530, P2.L8.N.1490, P2.L8.N.1480, P2.L8.N.1330 |  | 41d |
|  | 1 | **House Electrical Rooms / Level 8** |  | 2025-07-21 | 2026-01-02 |  |  |  |
|  | 9 | **House Electrical Room 8-5959** |  | 2025-07-21 | 2026-01-02 |  |  |  |
| P2.8.HE.5959.1000 |  | Framing and Blocking / L8 / South / 5959 | 3d | 2025-07-21 A | 2025-07-24 A | P2.L8.S.1090 | 100% |  |
| P2.8.HE.5959.1010 |  | In Wall Rough In / L8 / South / 5959 | 2d | 2025-07-28 A | 2025-07-31 A | P2.8.HE.5959.1000 | 100% |  |
| P2.8.HE.5959.1020 |  | Inspections - Wall Close In / L8 / South / 5959 | 2d | 2025-07-28 A | 2025-07-31 A | P2.8.HE.5959.1010 | 100% |  |
| P2.8.HE.5959.1030 |  | Hang-Tape-Finish / L8 / South / 5959 | 5d | 2025-09-02 A | 2025-09-10 A | P2.8.HE.5959.1020, P2.FAC.2.Z1.180, P2.L11.5-9.140 | 100% |  |
| P2.8.HE.5959.1040 |  | Paint Prime & 1st Coat / L8 / South / 5959 | 2d | 2025-09-29 A | 2025-09-30 A | P2.8.HE.5959.1030 | 100% |  |
| P2.8.HE.5959.1050 |  | Cans/Troughs/Backboxes/XFMRs / L8 / South / 5959 | 5d | 2025-11-03 A | 2025-11-07 A | P2.8.HE.5959.1040 | 100% |  |
| P2.8.HE.5959.1060 |  | Risers and OH Conduit Connections / L8 / South / 5959 | 5d | 2025-11-10 A | 2025-11-14 A | P2.8.HE.5959.1050 | 100% |  |
| P2.8.HE.5959.1070 |  | Pull Wire - In From Distribution Panels / Out to Branch Circuits / L8 / South / 5959 | 5d | 2025-12-01 | 2025-12-05 | P2.8.HE.5959.1060 |  | 31d |
| P2.8.HE.5959.1080 |  | Panelboards, Interconnect Wiring, and Remaining Room Buildout of All Systems / L8 / South / 5959 | 10d | 2025-12-01 | 2025-12-12 | BP1.262.3.100, P2.8.HE.5959.1060, BP1.262.3.210 |  | 26d |
| P2.8.HE.5959.1090 |  | Test & Terminate / L8 / South / 5959 | 5d | 2025-12-15 | 2025-12-19 | P2.8.HE.5959.1080, P2.8.HE.5959.1070 |  | 26d |
| P2.8.HE.5959.1100 |  | Paint - Finish Coat / L8 / South / 5959 | 2d | 2025-12-22 | 2025-12-23 | P2.8.HE.5959.1090 |  | 26d |
| P2.8.HE.5959.1110 |  | Trim All MEPF Finishes / L8 / South / 5959 | 2d | 2025-12-24 | 2025-12-26 | P2.8.HE.5959.1100 |  | 26d |
| P2.8.HE.5959.1120 |  | Flooring / L8 / South / 5959 | 2d | 2025-12-29 | 2025-12-30 | P2.8.HE.5959.1110 |  | 26d |
| P2.8.HE.5959.1130 |  | Doors & Hardware / L8 / South / 5959 | 2d | 2025-12-31 | 2026-01-02 | P2.8.HE.5959.1120 |  | 26d |
| P2.8.HE.5959.1140 |  | Panels Ready to Energize - Lock Doors and Limit Access / L8 / South / 5959 | 0d | 2026-01-02 | 2026-01-02 | P2.8.HE.5959.1090, P2.8.HE.5959.1130 FF |  | 26d |
|  | 8 | **House Electrical Room 8-2803** |  | 2025-08-14 | 2026-01-02 |  |  |  |
| P2.8.HE.2803.1000 |  | Framing and Blocking / L8 / North / 2803 | 3d | 2025-08-14 A | 2025-08-18 A | P2.L8.N.1090 | 100% |  |
| P2.8.HE.2803.1010 |  | In Wall Rough In / L8 / North / 2803 | 2d | 2025-08-15 A | 2025-08-19 A | P2.8.HE.2803.1000 | 100% |  |
| P2.8.HE.2803.1020 |  | Inspections - Wall Close In / L8 / North / 2803 | 2d | 2025-08-19 A | 2025-08-21 A | P2.8.HE.2803.1010 | 100% |  |
| P2.8.HE.2803.1030 |  | Hang-Tape-Finish / L8 / North / 2803 | 5d | 2025-08-22 A | 2025-09-04 A | P2.8.HE.2803.1020, P2.FAC.2.Z1.190, P2.MR.2-8.140 | 100% |  |
| P2.8.HE.2803.1040 |  | Paint Prime & 1st Coat / L8 / North / 2803 | 2d | 2025-09-29 A | 2025-09-30 A | P2.8.HE.2803.1030 | 100% |  |
| P2.8.HE.2803.1050 |  | Cans/Troughs/Backboxes/XFMRs / L8 / North / 2803 | 5d | 2025-11-05 A | 2025-11-11 A | P2.8.HE.2803.1040 | 100% |  |
| P2.8.HE.2803.1060 |  | Risers and OH Conduit Connections / L8 / North / 2803 | 5d | 2025-11-12 A | 2025-11-18 A | P2.8.HE.2803.1050 | 100% |  |
| P2.8.HE.2803.1070 |  | Pull Wire - In From Distribution Panels / Out to Branch Circuits / L8 / North / 2803 | 5d | 2025-12-01 | 2025-12-05 | P2.8.HE.2803.1060 |  | 31d |
| P2.8.HE.2803.1080 |  | Panelboards, Interconnect Wiring, and Remaining Room Buildout of All Systems / L8 / North / 2803 | 10d | 2025-12-01 | 2025-12-12 | P2.8.HE.2803.1060, BP1.262.3.100, BP1.262.3.210 |  | 26d |
| P2.8.HE.2803.1090 |  | Test & Terminate / L8 / North / 2803 | 5d | 2025-12-15 | 2025-12-19 | P2.8.HE.2803.1080, P2.8.HE.2803.1070 |  | 26d |
| P2.8.HE.2803.1100 |  | Paint - Finish Coat / L8 / North / 2803 | 2d | 2025-12-22 | 2025-12-23 | P2.8.HE.2803.1090 |  | 26d |
| P2.8.HE.2803.1110 |  | Trim All MEPF Finishes / L8 / North / 2803 | 2d | 2025-12-24 | 2025-12-26 | P2.8.HE.2803.1100 |  | 26d |
| P2.8.HE.2803.1120 |  | Flooring / L8 / North / 2803 | 2d | 2025-12-29 | 2025-12-30 | P2.8.HE.2803.1110 |  | 26d |

| ID | WBS | Task | Duration | Start | Finish | Predecessors | Complete | Total float |
| --- | --- | --- | --- | --- | --- | --- | --- | --- |
| P2.8.HE.2803.1130 |  | Doors & Hardware / L8 / North / 2803 | 2d | 2025-12-31 | 2026-01-02 | P2.8.HE.2803.1120 |  | 26d |
| P2.8.HE.2803.1140 |  | Panels Ready to Energize - Lock Doors and Limit Access / L8 / North / 2803 | 0d | 2026-01-02 | 2026-01-02 | P2.8.HE.2803.1090, P2.8.HE.2803.1130 FF |  | 26d |
|  | 2 | **L8 / IT Closets** |  | 2025-09-05 | 2026-05-14 |  |  |  |
|  | 1 | **IT Closet 8-2822** |  | 2025-10-20 | 2026-05-07 |  |  |  |
| P2.8.IT.2822.100 |  | Hang Plywood Backboards / L8 / North / 2822 | 2d | 2025-10-20 A | 2025-10-24 A | P2.L8.N.1140 | 100% |  |
| P2.8.IT.2822.110 |  | Paint Prime & 1st Coat / L8 / North / 2822 | 2d | 2025-10-27 A | 2025-10-28 A | P2.8.IT.2822.100 | 100% |  |
| P2.8.IT.2822.120 |  | Electrical Panels / Conduit Connections / Wire Terminations / L8 / North / 2822 | 5d | 2025-10-28 A | 2025-10-31 A | P2.8.IT.2822.110, P2.8.HE.2803.1070 FF | 100% |  |
| P2.8.IT.2822.130 |  | HVAC Equipment / L8 / North / 2822 | 5d | 2025-12-30 | 2026-01-06 | P2.L8.N.1300, P2.8.IT.2822.110 |  | 143d |
| P2.8.IT.2822.140 |  | Trim all MEPF / L8 / North / 2822 | 2d | 2026-01-07 | 2026-01-08 | P2.8.IT.2822.130, P2.8.IT.2822.120 |  | 143d |
| P2.8.IT.2822.150 |  | Flooring / L8 / North / 2822 | 5d | 2026-01-09 | 2026-01-15 | P2.8.IT.2822.140 |  | 143d |
| P2.8.IT.2822.180 |  | Grounding and Bonding / L8 / North / 2822 | 2d | 2026-01-16 | 2026-01-19 | P2.8.IT.2822.150 |  | 143d |
| P2.8.IT.2822.170 |  | OH Cable Tray / L8 / North / 2822 | 5d | 2026-03-18 | 2026-03-24 | P2.L8.N.1390, P2.L8.S.1390, P2.L8.INT.S.1340, P2.L8.INT.N.1340 |  | 97d |
| P2.8.IT.2822.260 |  | Room Ready - CIT / L8 / North / 2822 | 5d | 2026-03-25 | 2026-03-31 | P2.8.IT.2822.150, P2.8.IT.2822.170, P2.8.IT.2822.180 |  | 97d |
| P2.8.IT.2822.160 |  | Equipment Racks and Ladders / L8 / North / 2822 | 5d | 2026-04-01 | 2026-04-07 | P2.8.IT.2822.150, P2.8.IT.2822.260 |  | 97d |
| P2.8.IT.2822.190 |  | Pull Wire - Backbone Cabling Into Racks / L8 / North / 2822 | 5d | 2026-04-08 | 2026-04-14 | P2.8.IT.2822.160, P2.8.IT.2822.260 |  | 97d |
| P2.8.IT.2822.200 |  | Pull Wire - Horizontal Cabling Out to Termination Points / L8 / North / 2822 | 5d | 2026-04-08 | 2026-04-14 | P2.8.IT.2822.160, P2.8.IT.2822.260 |  | 97d |
| P2.8.IT.2822.210 |  | Paint - Finish Coat / L8 / North / 2822 | 2d | 2026-04-15 | 2026-04-16 | P2.8.IT.2822.200, P2.8.IT.2822.190 |  | 97d |
| P2.8.IT.2822.220 |  | Terminations and Punch Downs - All Cabling / L8 / North / 2822 | 15d | 2026-04-17 | 2026-05-07 | P2.8.IT.2822.210, P2.8.IT.2822.160, P2.8.IT.2822.260 |  | 97d |
| P2.8.IT.2822.230 |  | Doors & Hardware / L8 / North / 2822 | 2d | 2026-04-17 | 2026-04-20 | P2.8.IT.2822.210 |  | 107d |
| P2.8.IT.2822.240 |  | Energize Elec Panels Serving Comms Racks / L8 / North / 2822 | 3d | 2026-04-21 | 2026-04-23 | P2.8.HE.2803.1140, P2.8.IT.2822.230, CX.B2.SWGR.1010, CX.B2.MVEE.1010 |  | 107d |
| P2.8.IT.2822.250 |  | Comms Racks In Service / L8 / North / 2822 | 0d | 2026-05-07 | 2026-05-07 | P2.8.IT.2822.220, P2.8.IT.2822.240 |  | 97d |
|  | 2 | **IT Closet 8-3903** |  | 2025-09-05 | 2026-05-14 |  |  |  |
| P2.8.IT.3903.130 |  | HVAC Equipment / L8 / South / 3903 | 5d | 2025-09-05 A | 2025-09-19 A | P2.L8.S.1140 | 100% |  |
| P2.8.IT.3903.100 |  | Hang Plywood Backboards / L8 / South / 3903 | 2d | 2025-10-20 A | 2025-10-24 A | P2.L8.S.1140 | 100% |  |
| P2.8.IT.3903.110 |  | Paint Prime & 1st Coat / L8 / South / 3903 | 2d | 2025-10-27 A | 2025-10-28 A | P2.8.IT.3903.100 | 100% |  |
| P2.8.IT.3903.120 |  | Electrical Panels / Conduit Connections / Wire Terminations / L8 / South / 3903 | 5d | 2025-10-28 A | 2025-10-31 A | P2.8.IT.3903.110, P2.8.HE.5959.1070 FF | 100% |  |
| P2.8.IT.3903.140 |  | Trim all MEPF / L8 / South / 3903 | 2d | 2025-12-08 | 2025-12-09 | P2.8.IT.3903.130, P2.8.IT.3903.120 |  | 158d |
| P2.8.IT.3903.150 |  | Flooring / L8 / South / 3903 | 5d | 2025-12-10 | 2025-12-16 | P2.8.IT.3903.140 |  | 158d |
| P2.8.IT.3903.180 |  | Grounding and Bonding / L8 / South / 3903 | 2d | 2025-12-17 | 2025-12-18 | P2.8.IT.3903.150 |  | 158d |
| P2.8.IT.3903.170 |  | OH Cable Tray / L8 / South / 3903 | 5d | 2026-03-18 | 2026-03-24 | P2.L8.S.1390, P2.L8.N.1390, P2.L8.INT.S.1340, P2.L8.INT.N.1340 |  | 92d |
| P2.8.IT.3903.260 |  | Room Ready - CIT / L8 / South / 3903 | 5d | 2026-03-25 | 2026-03-31 | P2.8.IT.3903.150, P2.8.IT.3903.170, P2.8.IT.3903.180 |  | 92d |
| P2.8.IT.3903.160 |  | Equipment Racks and Ladders / L8 / South / 3903 | 5d | 2026-04-01 | 2026-04-07 | P2.8.IT.3903.150, P2.8.IT.3903.260 |  | 92d |
| P2.8.IT.3903.190 |  | Pull Wire - Backbone Cabling Into Racks / L8 / South / 3903 | 5d | 2026-04-08 | 2026-04-14 | P2.8.IT.3903.160, P2.8.IT.3903.260 |  | 92d |
| P2.8.IT.3903.200 |  | Pull Wire - Horizontal Cabling Out to Termination Points / L8 / South / 3903 | 5d | 2026-04-08 | 2026-04-14 | P2.8.IT.3903.160, P2.8.IT.3903.260 |  | 92d |
| P2.8.IT.3903.210 |  | Paint - Finish Coat / L8 / South / 3903 | 2d | 2026-04-15 | 2026-04-16 | P2.8.IT.3903.200, P2.8.IT.3903.190 |  | 92d |
| P2.8.IT.3903.220 |  | Terminations and Punch Downs - All Cabling / L8 / South / 3903 | 20d | 2026-04-17 | 2026-05-14 | P2.8.IT.3903.210, P2.8.IT.3903.160, P2.8.IT.3903.260 |  | 92d |
| P2.8.IT.3903.230 |  | Doors & Hardware / L8 / South / 3903 | 2d | 2026-04-17 | 2026-04-20 | P2.8.IT.3903.210 |  | 107d |
| P2.8.IT.3903.240 |  | Energize Elec Panels Serving Comms Racks / L8 / South / 3903 | 3d | 2026-04-21 | 2026-04-23 | P2.8.HE.5959.1140, P2.8.IT.3903.230, CX.B2.SWGR.1010, CX.B2.MVEE.1010 |  | 107d |
| P2.8.IT.3903.250 |  | Comms Racks In Service / L8 / South / 3903 | 0d | 2026-05-14 | 2026-05-14 | P2.8.IT.3903.220, P2.8.IT.3903.240 |  | 92d |
|  | 4 | **IT Closet 8-3948** |  | 2025-09-05 | 2026-05-07 |  |  |  |
| P2.8.IT.3948.130 |  | HVAC Equipment / L8 / South / 3948 | 5d | 2025-09-05 A | 2025-09-19 A | P2.L8.S.1140 | 100% |  |
| P2.8.IT.3948.100 |  | Hang Plywood Backboards / L8 / South / 3948 | 2d | 2025-10-20 A | 2025-10-24 A | P2.L8.S.1140 | 100% |  |
| P2.8.IT.3948.110 |  | Paint Prime & 1st Coat / L8 / South / 3948 | 2d | 2025-10-27 A | 2025-10-28 A | P2.8.IT.3948.100 | 100% |  |
| P2.8.IT.3948.120 |  | Electrical Panels / Conduit Connections / Wire Terminations / L8 / South / 3948 | 5d | 2025-10-28 A | 2025-10-31 A | P2.8.IT.3948.110, P2.8.HE.5959.1070 FF | 100% |  |
| P2.8.IT.3948.140 |  | Trim all MEPF / L8 / South / 3948 | 2d | 2025-12-08 | 2025-12-09 | P2.8.IT.3948.130, P2.8.IT.3948.120 |  | 163d |
| P2.8.IT.3948.150 |  | Flooring / L8 / South / 3948 | 5d | 2025-12-10 | 2025-12-16 | P2.8.IT.3948.140 |  | 163d |
| P2.8.IT.3948.180 |  | Grounding and Bonding / L8 / South / 3948 | 2d | 2025-12-17 | 2025-12-18 | P2.8.IT.3948.150 |  | 163d |
| P2.8.IT.3948.170 |  | OH Cable Tray / L8 / South / 3948 | 5d | 2026-03-18 | 2026-03-24 | P2.L8.S.1390, P2.L8.N.1390, P2.L8.INT.S.1340, P2.L8.INT.N.1340 |  | 97d |
| P2.8.IT.3948.260 |  | Room Ready - CIT / L8 / South / 3948 | 5d | 2026-03-25 | 2026-03-31 | P2.8.IT.3948.150, P2.8.IT.3948.170, P2.8.IT.3948.180 |  | 97d |
| P2.8.IT.3948.160 |  | Equipment Racks and Ladders / L8 / South / 3948 | 5d | 2026-04-01 | 2026-04-07 | P2.8.IT.3948.150, P2.8.IT.3948.260 |  | 97d |
| P2.8.IT.3948.190 |  | Pull Wire - Backbone Cabling Into Racks / L8 / South / 3948 | 5d | 2026-04-08 | 2026-04-14 | P2.8.IT.3948.160, P2.8.IT.3948.260 |  | 97d |
| P2.8.IT.3948.200 |  | Pull Wire - Horizontal Cabling Out to Termination Points / L8 / South / 3948 | 5d | 2026-04-08 | 2026-04-14 | P2.8.IT.3948.160, P2.8.IT.3948.260 |  | 97d |
| P2.8.IT.3948.210 |  | Paint - Finish Coat / L8 / South / 3948 | 2d | 2026-04-15 | 2026-04-16 | P2.8.IT.3948.200, P2.8.IT.3948.190 |  | 97d |
| P2.8.IT.3948.220 |  | Terminations and Punch Downs - All Cabling / L8 / South / 3948 | 15d | 2026-04-17 | 2026-05-07 | P2.8.IT.3948.210, P2.8.IT.3948.160, P2.8.IT.3948.260 |  | 97d |
| P2.8.IT.3948.230 |  | Doors & Hardware / L8 / South / 3948 | 2d | 2026-04-17 | 2026-04-20 | P2.8.IT.3948.210 |  | 107d |
| P2.8.IT.3948.240 |  | Energize Elec Panels Serving Comms Racks / L8 / South / 3948 | 3d | 2026-04-21 | 2026-04-23 | P2.8.HE.5959.1140, P2.8.IT.3948.230, CX.B2.SWGR.1010, CX.B2.MVEE.1010 |  | 107d |
| P2.8.IT.3948.250 |  | Comms Racks In Service / L8 / South / 3948 | 0d | 2026-05-07 | 2026-05-07 | P2.8.IT.3948.220, P2.8.IT.3948.240 |  | 97d |
|  | 7 | **FINISHES - CORE & SUPPORT SPACES / Level 8** |  | 2025-12-01 | 2026-12-29 |  |  |  |
|  | 7KSF12 | **Offices - Z1/Z2 (~7,300 sf) / Level 8** |  | 2026-02-26 | 2026-09-28 |  |  |  |
|  | 1 | **Finishes** |  | 2026-02-26 | 2026-09-28 |  |  |  |
| P2.L8.F.CS.1000 |  | Paint Prime & 1st Coat Walls / L8 / Offices Z1/Z2 | 5d | 2026-02-26 | 2026-03-04 | P2.L8.S.1550 |  | 82d |
| P2.L8.F.CS.1020 |  | R/I - Ceiling Assemblies & Supports - All Trades (A/V, Oper Part, Glass Part, etc.) / L8 / Offices Z1/Z2 | 5d | 2026-03-05 | 2026-03-11 | P2.L8.F.CS.1000 |  | 93d |
| P2.L8.F.CS.1010 |  | T-Grid / L8 / Offices Z1/Z2 | 5d | 2026-03-12 | 2026-03-18 | P2.L8.F.CS.1020 |  | 93d |
| P2.L8.F.CS.1050 |  | Sprinkler Heads in T-Grid / L8 / Offices Z1/Z2 | 5d | 2026-03-19 | 2026-03-25 | P2.L8.F.CS.1010 |  | 93d |
| P2.L8.F.CS.1030 |  | Diffusers in T-Grid / L8 / Offices Z1/Z2 | 5d | 2026-03-26 | 2026-04-01 | P2.L8.F.CS.1050, P2.L8.F.CS.1010 |  | 93d |
| P2.L8.F.CS.1040 |  | Lights & Elec Devices in T-Grid / L8 / Offices Z1/Z2 | 10d | 2026-04-02 | 2026-04-15 | P2.L8.F.CS.1010, P2.L8.F.CS.1030 |  | 93d |
| P2.L8.F.CS.1070 |  | Fire Alarm in T-Grid / L8 / Offices Z1/Z2 | 5d | 2026-04-16 | 2026-04-22 | P2.L8.F.CS.1010, P2.L8.F.CS.1040 |  | 93d |
| P2.L8.F.CS.1060 |  | Low Voltage in T-Grid / L8 / Offices Z1/Z2 | 5d | 2026-04-23 | 2026-04-29 | P2.L8.F.CS.1010, P2.L8.F.CS.1070 |  | 93d |
| P2.L8.F.CS.1080 |  | OH Ceiling Signoff / L8 / Offices Z1/Z2 | 5d | 2026-04-30 | 2026-05-06 | P2.L8.F.CS.1040, P2.L8.F.CS.1050, P2.L8.F.CS.1030, P2.L8.F.CS.1060, P2.L8.F.CS.1070 |  | 93d |
| P2.L8.F.CS.1110 |  | Drop Ceiling Tile / L8 / Offices Z1/Z2 | 5d | 2026-05-07 | 2026-05-13 | P2.L8.F.CS.1080 |  | 93d |

| ID | WBS | Task | Duration | Start | Finish | Predecessors | Total float |
| --- | --- | --- | --- | --- | --- | --- | --- |
| P2.L8.F.CS.1090 |  | Millwork / L8 / Offices Z1/Z2 | 5d | 2026-05-14 | 2026-05-20 | P2.L8.F.CS.1080, P2.L8.F.CS.1110 | 93d |
| P2.L8.F.CS.1100 |  | Plumbing Fixtures / L8 / Offices Z1/Z2 | 5d | 2026-05-21 | 2026-05-28 | P2.L8.F.CS.1090 FF, P2.L8.F.CS.1090, P2.L8.F.CS.1080 | 93d |
| P2.L8.F.CS.1120 |  | Floor Prep / L8 / Offices Z1/Z2 | 5d | 2026-05-29 | 2026-06-04 | P2.L8.F.CS.1090, P2.L8.F.CS.1100, P2.L8.F.CS.1110 | 93d |
| P2.L8.F.CS.1130 |  | Floor Finishes / L8 / Offices Z1/Z2 | 5d | 2026-06-05 | 2026-06-11 | P2.L8.F.CS.1120 | 93d |
| P2.L8.F.CS.1140 |  | Doors & Hardware / L8 / Offices Z1/Z2 | 5d | 2026-06-12 | 2026-06-18 | P2.L8.F.CS.1130 | 93d |
| P2.L8.F.CS.2300 |  | Interior Glazing / L8 / Offices Z1/Z2 | 5d | 2026-06-12 | 2026-06-18 | P2.L8.F.CS.1130 | 100d |
| P2.L8.F.CS.1150 |  | Paint - Finish Coat / L8 / Offices Z1/Z2 | 5d | 2026-06-19 | 2026-06-25 | P2.L8.F.CS.1130, P2.L8.F.CS.1140, P2.L8.F.CS.2300 | 100d |
| P2.L8.F.CS.1190 |  | Interior Building Signage / L8 / Offices Z1/Z2 | 5d | 2026-06-26 | 2026-07-02 | P2.L8.F.CS.1150 | 125d |
| P2.L8.F.CS.1200 |  | Floor Base / L8 / Offices Z1/Z2 | 5d | 2026-06-26 | 2026-07-02 | P2.L8.F.CS.1150 | 100d |
| P2.L8.F.CS.1180 |  | Building Specialities / L8 / Offices Z1/Z2 | 5d | 2026-07-06 | 2026-07-10 | P2.L8.F.CS.1150, P2.L8.F.CS.1200 | 100d |
| P2.L8.F.CS.1210 |  | Demountable Partitions / L8 / Offices Z1/Z2 | 5d | 2026-07-06 | 2026-07-10 | P2.L8.F.CS.1200 | 110d |
| P2.L8.F.CS.1170 |  | Trim T-Stats / L8 / Offices Z1/Z2 | 5d | 2026-07-13 | 2026-07-17 | P2.L8.F.CS.1180, P2.L8.F.CS.1150 | 100d |
| P2.L8.F.CS.1160 |  | Set AV/IT Devices and Configure / L8 / Offices Z1/Z2 | 5d | 2026-07-20 | 2026-07-24 | P2.L8.F.CS.1170, P2.L8.F.CS.1150 | 100d |
| P2.L8.F.CS.1220 |  | Trim Electrical / L8 / Offices Z1/Z2 | 5d | 2026-07-27 | 2026-07-31 | P2.L8.F.CS.1160, P2.L8.F.CS.1210, P2.L8.F.CS.1170 SS | 100d |
| P2.L8.F.CS.1230 |  | Trim Telephone/ Data / L8 / Offices Z1/Z2 | 5d | 2026-08-03 | 2026-08-07 | P2.L8.F.CS.1220, P2.L8.F.CS.1220 SS | 100d |
| P2.L8.F.CS.1240 |  | Work Completion List - Finishes / L8 / Offices Z1/Z2 | 5d | 2026-08-10 | 2026-08-14 | P2.L8.F.CS.1230, P2.L8.F.CS.1180, P2.L8.F.CS.1100, P2.L8.F.CS.1160, P2.L8.F.CS.1190, P2.L8.F.CS.1140 | 100d |
| P2.L8.F.CS.1250 |  | Rough Clean / L8 / Offices Z1/Z2 | 5d | 2026-08-17 | 2026-08-21 | P2.L8.F.CS.1240 | 100d |
| P2.L8.F.CS.1260 |  | FF&E / L8 / Offices Z1/Z2 | 5d | 2026-08-24 | 2026-08-28 | P2.L8.F.CS.1250 | 100d |
| P2.L8.F.CS.1270 |  | Prepare Punchlist / L8 / Offices Z1/Z2 | 5d | 2026-08-31 | 2026-09-04 | P2.L8.F.CS.1260 | 100d |
| P2.L8.F.CS.1280 |  | Correct Punchlist / L8 / Offices Z1/Z2 | 10d | 2026-09-08 | 2026-09-21 | P2.L8.F.CS.1270 | 100d |
| P2.L8.F.CS.1290 |  | Final Clean / L8 / Offices Z1/Z2 | 5d | 2026-09-22 | 2026-09-28 | P2.L8.F.CS.1280 | 100d |
|  | 2 | **Closeout** |  |  |  |  |  |
|  | 7KSF1 | **Offices - Z2/Z3 (~7,500 sf) / Level 8** |  | 2026-03-23 | 2026-10-21 |  |  |
|  | 1 | **Finishes** |  | 2026-03-23 | 2026-10-21 |  |  |
| P2.L8.F.CS.2000 |  | Paint Prime & 1st Coat Walls / L8 / Offices Z2/Z3 | 5d | 2026-03-23 | 2026-03-27 | P2.L8.N.1550, P2.L8.F.CS.1000 | 70d |
| P2.L8.F.CS.2020 |  | R/I - Ceiling Assemblies & Supports - All Trades (A/V, Oper Part, Glass Part, etc.) / L8 / Offices Z2/Z3 | 5d | 2026-03-30 | 2026-04-03 | P2.L8.F.CS.2000 | 76d |
| P2.L8.F.CS.2010 |  | T-Grid / L8 / Offices Z2/Z3 | 5d | 2026-04-06 | 2026-04-10 | P2.L8.F.CS.2020 | 76d |
| P2.L8.F.CS.2050 |  | Sprinkler Heads in T-Grid / L8 / Offices Z2/Z3 | 5d | 2026-04-13 | 2026-04-17 | P2.L8.F.CS.2010 | 76d |
| P2.L8.F.CS.2030 |  | Diffusers in T-Grid / L8 / Offices Z2/Z3 | 5d | 2026-04-20 | 2026-04-24 | P2.L8.F.CS.2050, P2.L8.F.CS.2010 | 76d |
| P2.L8.F.CS.2040 |  | Lights & Elec Devices in T-Grid / L8 / Offices Z2/Z3 | 10d | 2026-04-27 | 2026-05-08 | P2.L8.F.CS.2030, P2.L8.F.CS.2010 | 76d |
| P2.L8.F.CS.2070 |  | Fire Alarm in T-Grid / L8 / Offices Z2/Z3 | 5d | 2026-05-11 | 2026-05-15 | P2.L8.F.CS.2010, P2.L8.F.CS.2040 | 76d |
| P2.L8.F.CS.2060 |  | Low Voltage in T-Grid / L8 / Offices Z2/Z3 | 5d | 2026-05-18 | 2026-05-22 | P2.L8.F.CS.2070, P2.L8.F.CS.2010 | 76d |
| P2.L8.F.CS.2080 |  | OH Ceiling Signoff / L8 / Offices Z2/Z3 | 5d | 2026-05-26 | 2026-06-01 | P2.L8.F.CS.2060, P2.L8.F.CS.2070, P2.L8.F.CS.2030, P2.L8.F.CS.2040, P2.L8.F.CS.2050 | 76d |
| P2.L8.F.CS.2110 |  | Drop Ceiling Tile / L8 / Offices Z2/Z3 | 5d | 2026-06-02 | 2026-06-08 | P2.L8.F.CS.2080 | 76d |
| P2.L8.F.CS.2090 |  | Millwork / L8 / Offices Z2/Z3 | 5d | 2026-06-09 | 2026-06-15 | P2.L8.F.CS.2110, P2.L8.F.CS.2080 | 76d |
| P2.L8.F.CS.2100 |  | Plumbing Fixtures / L8 / Offices Z2/Z3 | 5d | 2026-06-16 | 2026-06-22 | P2.L8.F.CS.2090 FF, P2.L8.F.CS.2090, P2.L8.F.CS.2080 | 76d |
| P2.L8.F.CS.2120 |  | Floor Prep / L8 / Offices Z2/Z3 | 5d | 2026-06-23 | 2026-06-29 | P2.L8.F.CS.2110, P2.L8.F.CS.2090, P2.L8.F.CS.2100 | 76d |
| P2.L8.F.CS.2130 |  | Floor Finishes / L8 / Offices Z2/Z3 | 5d | 2026-06-30 | 2026-07-07 | P2.L8.F.CS.2120 | 76d |
| P2.L8.F.CS.2140 |  | Doors & Hardware / L8 / Offices Z2/Z3 | 5d | 2026-07-08 | 2026-07-14 | P2.L8.F.CS.2130 | 76d |
| P2.L8.F.CS.2310 |  | Interior Glazing / L8 / Offices Z1/Z2 | 5d | 2026-07-08 | 2026-07-14 | P2.L8.F.CS.2130 | 83d |
| P2.L8.F.CS.2150 |  | Paint - Finish Coat / L8 / Offices Z2/Z3 | 5d | 2026-07-15 | 2026-07-21 | P2.L8.F.CS.2140, P2.L8.F.CS.2130, P2.L8.F.CS.2310 | 83d |
| P2.L8.F.CS.2190 |  | Interior Building Signage / L8 / Offices Z2/Z3 | 5d | 2026-07-22 | 2026-07-28 | P2.L8.F.CS.2150 | 108d |
| P2.L8.F.CS.2200 |  | Floor Base / L8 / Offices Z2/Z3 | 5d | 2026-07-22 | 2026-07-28 | P2.L8.F.CS.2150 | 83d |
| P2.L8.F.CS.2180 |  | Building Specialities / L8 / Offices Z2/Z3 | 5d | 2026-07-29 | 2026-08-04 | P2.L8.F.CS.2150, P2.L8.F.CS.2200 | 83d |
| P2.L8.F.CS.2210 |  | Demountable Partitions / L8 / Offices Z2/Z3 | 5d | 2026-07-29 | 2026-08-04 | P2.L8.F.CS.2200 | 93d |
| P2.L8.F.CS.2170 |  | Trim T-Stats / L8 / Offices Z2/Z3 | 5d | 2026-08-05 | 2026-08-11 | P2.L8.F.CS.2180, P2.L8.F.CS.2150 | 83d |
| P2.L8.F.CS.2160 |  | Set AV/IT Devices and Configure / L8 / Offices Z2/Z3 | 5d | 2026-08-12 | 2026-08-18 | P2.L8.F.CS.2170, P2.L8.F.CS.2150 | 83d |
| P2.L8.F.CS.2220 |  | Trim Electrical / L8 / Offices Z2/Z3 | 5d | 2026-08-19 | 2026-08-25 | P2.L8.F.CS.2160, P2.L8.F.CS.2210, P2.L8.F.CS.2170 SS | 83d |
| P2.L8.F.CS.2230 |  | Trim Telephone/ Data / L8 / Offices Z2/Z3 | 5d | 2026-08-26 | 2026-09-01 | P2.L8.F.CS.2220, P2.L8.F.CS.2220 SS | 83d |
| P2.L8.F.CS.2240 |  | Work Completion List - Finishes / L8 / Offices Z2/Z3 | 5d | 2026-09-02 | 2026-09-09 | P2.L8.F.CS.2180, P2.L8.F.CS.2100, P2.L8.F.CS.2230, P2.L8.F.CS.2160, P2.L8.F.CS.2190, P2.L8.F.CS.2140 | 83d |
| P2.L8.F.CS.2250 |  | Rough Clean / L8 / Offices Z2/Z3 | 5d | 2026-09-10 | 2026-09-16 | P2.L8.F.CS.2240 | 83d |
| P2.L8.F.CS.2260 |  | FF&E / L8 / Offices Z2/Z3 | 5d | 2026-09-17 | 2026-09-23 | P2.L8.F.CS.2250 | 83d |
| P2.L8.F.CS.2270 |  | Prepare Punchlist / L8 / Offices Z2/Z3 | 5d | 2026-09-24 | 2026-09-30 | P2.L8.F.CS.2260, P2.HZ.E.81 | 83d |
| P2.L8.F.CS.2280 |  | Correct Punchlist / L8 / Offices Z2/Z3 | 10d | 2026-10-01 | 2026-10-14 | P2.L8.F.CS.2270 | 83d |
| P2.L8.F.CS.2290 |  | Final Clean / L8 / Offices Z2/Z3 | 5d | 2026-10-15 | 2026-10-21 | P2.L8.F.CS.2280 | 83d |
|  | 2 | **Closeout** |  |  |  |  |  |
|  | 5 | **Bathrooms - Break Rooms - Locker Rooms / Level 8** |  | 2025-12-01 | 2026-10-01 |  |  |
|  | 4 | **Bathrooms 8-3952 / 8-3954** |  | 2025-12-01 | 2026-10-01 |  |  |
| P2.L8.BR.1010 |  | Countertop Support Framing / L8 / Toilets 395X | 5d | 2025-12-01 | 2025-12-05 | P2.L8.S.1420 | 134d |
| P2.L8.BR.1000 |  | Plumbing - Set Pipe Carriers / L8 / Toilets 395X | 5d | 2026-03-31 | 2026-04-06 | P2.L8.S.1240, P2.L7.BR.2000 | 50d |
| P2.L8.BR.1020 |  | Frame - Chase Walls and Hard Lid Ceilings / L8 / Toilets 395X | 5d | 2026-04-07 | 2026-04-13 | P2.L8.BR.1010, P2.L8.BR.1000 | 50d |
| P2.L8.BR.1030 |  | Plumbing - Test Pipe @ Chase Walls / L8 / Toilets 395X | 5d | 2026-04-07 | 2026-04-13 | P2.L8.BR.1000 | 60d |
| P2.L8.BR.1050 |  | Trim Sprinkler Drops _ Hard Lids / L8 / Toilets 395X | 5d | 2026-04-14 | 2026-04-20 | P2.L8.BR.1020 | 50d |
| P2.L8.BR.1060 |  | Duct Drops _ Hard Lids / L8 / Toilets 395X | 5d | 2026-04-21 | 2026-04-27 | P2.L8.BR.1050, P2.L8.BR.1020 | 50d |
| P2.L8.BR.1080 |  | In Wall - Insulate Plumbing / L8 / Toilets 395X | 5d | 2026-04-28 | 2026-05-04 | P2.L8.BR.1060, P2.L8.BR.1030 | 50d |
| P2.L8.BR.1040 |  | R/I - Electrical _ Hard Lids / L8 / Toilets 395X | 5d | 2026-05-05 | 2026-05-11 | P2.L8.BR.1080, P2.L8.BR.1020 | 50d |
| P2.L8.BR.1070 |  | R/I - Fire Alarm _ Hard Lids / L8 / Toilets 395X | 5d | 2026-05-12 | 2026-05-18 | P2.L8.BR.1040, P2.L8.BR.1020 | 50d |
| P2.L8.BR.1090 |  | Inspection - Close In - Chase Walls and Hard Lid Ceilings / L8 / Toilets 395X | 5d | 2026-05-19 | 2026-05-26 | P2.L8.BR.1060, P2.L8.BR.1040, P2.L8.BR.1050, P2.L8.BR.1080, P2.L8.BR.1070 | 50d |
| P2.L8.BR.1100 |  | Hang-Tape-Finish _ Chase Walls and Hard Lids Ceilings / L8 / Toilets 395X | 5d | 2026-05-27 | 2026-06-02 | P2.L8.BR.1090 | 50d |
| P2.L8.BR.1110 |  | Paint Prime & 1st Coat _ Walls & Hard Lid Ceilings / L8 / Toilets 395X | 5d | 2026-06-03 | 2026-06-09 | P2.L8.BR.1100 | 50d |

| ID | WBS | Task | Duration | Start | Finish | Predecessors | Complete | Total float |
| --- | --- | --- | --- | --- | --- | --- | --- | --- |
| P2.L8.BR.1140 |  | Ceiling Grid / L8 / Toilets 395X | 5d | 2026-06-10 | 2026-06-16 | P2.L8.BR.1110 |  | 50d |
| P2.L8.BR.1170 |  | Trim Sprinkler Drops _ Ceiling Tiles / L8 / Toilets 395X | 5d | 2026-06-17 | 2026-06-23 | P2.L8.BR.1140 |  | 50d |
| P2.L8.BR.1160 |  | Trim - HVAC G/R/D's / L8 / Toilets 395X | 5d | 2026-06-24 | 2026-06-30 | BP1.233.3.410, P2.L8.BR.1170, P2.L8.BR.1140 |  | 50d |
| P2.L8.BR.1130 |  | Pull Wire - Electrical / L8 / Toilets 395X | 5d | 2026-07-01 | 2026-07-08 | P2.L8.BR.1110, P2.L8.BR.1140, P2.L8.BR.1160 |  | 50d |
| P2.L8.BR.1120 |  | Pull Wire - Fire Alarm / L8 / Toilets 395X | 5d | 2026-07-09 | 2026-07-15 | P2.L8.BR.1130, P2.L8.BR.1110, P2.L8.BR.1140 |  | 142d |
| P2.L8.BR.1150 |  | Lights - Set & Terminate / L8 / Toilets 395X | 5d | 2026-07-09 | 2026-07-15 | P2.L8.BR.1130, P2.L8.BR.1140 |  | 50d |
| P2.L8.BR.1180 |  | Inspection - Ceiling Close In - ACT Ceilings / L8 / Toilets 395X | 5d | 2026-07-16 | 2026-07-22 | P2.L8.BR.1170, P2.L8.BR.1150, P2.L8.BR.1160 |  | 50d |
| P2.L8.BR.1190 |  | Ceiling Tiles / L8 / Toilets 395X | 5d | 2026-07-23 | 2026-07-29 | P2.L8.BR.1180 |  | 50d |
| P2.L8.BR.1200 |  | Wall Tile / L8 / Toilets 395X | 5d | 2026-07-30 | 2026-08-05 | P2.L8.BR.1190 |  | 50d |
| P2.L8.BR.1310 |  | Flooring Prep - Epoxy Floors / L8 / Toilets 395X | 1d | 2026-08-06 | 2026-08-06 | P2.L8.BR.1200, P2.L7.BR.2220 |  | 50d |
| P2.L8.BR.1320 |  | Flooring - Epoxy Floors / L8 / Toilets 395X | 4d | 2026-08-07 | 2026-08-12 | P2.L8.BR.1310 |  | 50d |
| P2.L8.BR.1250 |  | Doors & Hardware / L8 / Toilets 395X | 5d | 2026-08-13 | 2026-08-19 | P2.L8.BR.1320 |  | 50d |
| P2.L8.BR.1210 |  | Paint - Finish Coat / L8 / Toilets 395X | 5d | 2026-08-20 | 2026-08-26 | P2.L8.BR.1250 |  | 97d |
| P2.L8.BR.1220 |  | Countertops / L8 / Toilets 395X | 5d | 2026-08-27 | 2026-09-02 | P2.L8.BR.1250, P2.L8.BR.1210 |  | 97d |
| P2.L8.BR.1260 |  | Lockers & Benches / L8 / Toilets 395X | 5d | 2026-09-03 | 2026-09-10 | P2.L8.BR.1210, P2.L8.BR.1220 |  | 97d |
| P2.L8.BR.1270 |  | Plumbing Fixtures / Sinks / Showers / L8 / Toilets 395X | 5d | 2026-09-03 | 2026-09-10 | P2.L8.BR.1220 |  | 102d |
| P2.L8.BR.1240 |  | Trim - Electrical Devices / L8 / Toilets 395X | 5d | 2026-09-11 | 2026-09-17 | P2.L8.BR.1210, P2.L8.BR.1260 |  | 97d |
| P2.L8.BR.1280 |  | Toilet Partitions / L8 / Toilets 395X | 5d | 2026-09-11 | 2026-09-17 | P2.L8.BR.1270 |  | 102d |
| P2.L8.BR.1290 |  | Bathroom Accessories / L8 / Toilets 395X | 5d | 2026-09-11 | 2026-09-17 | P2.L8.BR.1270 |  | 102d |
| P2.L8.BR.1230 |  | Trim - Fire Alarm Devices / L8 / Toilets 395X | 5d | 2026-09-18 | 2026-09-24 | P2.L8.BR.1240, P2.L8.BR.1210, P2.L8.BR.1120 |  | 97d |
| P2.L8.BR.1300 |  | Work Completion List - Finishes / L8 / Toilets 395X | 5d | 2026-09-25 | 2026-10-01 | P2.L8.BR.1230, P2.L8.BR.1240, P2.L8.BR.1250, P2.L8.BR.1280, P2.L8.BR.1290, P2.L8.BR.1260 |  | 97d |
|  | 1 | **Corridors & Lobbies / Level 8** |  | 2026-03-30 | 2026-12-29 |  |  |  |
| P2.L8.CL.1000 |  | Paint Prime & 1st Coat Walls / L8 / Corr & Lobbies | 5d | 2026-03-30 | 2026-04-03 | P2.L8.N.1550, P2.L8.F.CS.2000 |  | 70d |
| P2.L8.CL.1010 |  | Framing - Hard Lid Ceilings / L8 / Corr & Lobbies | 10d | 2026-04-06 | 2026-04-17 | P2.L8.CL.1000 |  | 75d |
| P2.L8.CL.1020 |  | T-Grid / L8 / Corr & Lobbies | 10d | 2026-04-06 | 2026-04-17 | P2.L8.CL.1000 |  | 70d |
| P2.L8.CL.1070 |  | Trim - Sprinkler Heads @ T-Grid / L8 / Corr & Lobbies | 5d | 2026-04-15 | 2026-04-21 | P2.L8.CL.1020 FF+2d |  | 70d |
| P2.L8.CL.1040 |  | R/I - Trim Sprinkler Heads- All Ceilings / L8 / Corr & Lobbies | 5d | 2026-04-22 | 2026-04-28 | P2.L8.CL.1010 FF+2d, P2.L8.CL.1020 FF+2d, P2.L8.CL.1070 |  | 70d |
| P2.L8.CL.1050 |  | R/I - HVAC- All Ceilings / L8 / Corr & Lobbies | 5d | 2026-04-29 | 2026-05-05 | P2.L8.CL.1010 FF+2d, P2.L8.CL.1020 FF+2d, P2.L8.CL.1040 |  | 70d |
| P2.L8.CL.1030 |  | R/I - Electrical - All Ceilings / L8 / Corr & Lobbies | 5d | 2026-05-06 | 2026-05-12 | P2.L8.CL.1010 FF+2d, P2.L8.CL.1020 FF+2d, P2.L8.CL.1050 |  | 70d |
| P2.L8.CL.1060 |  | R/I - All Remaining Low Voltage - All Ceilings / L8 / Corr & Lobbies | 5d | 2026-05-13 | 2026-05-19 | P2.L8.CL.1010 FF+2d, P2.L8.CL.1020 FF+2d, P2.L8.CL.1030 |  | 70d |
| P2.L8.CL.1100 |  | Pull Wire - Electrical / L8 / Corr & Lobbies | 10d | 2026-05-13 | 2026-05-27 | P2.L8.CL.1030 |  | 100d |
| P2.L8.CL.1080 |  | R/I - Fire Alarm/Life Safety - All Ceilings / L8 / Corr & Lobbies | 5d | 2026-05-20 | 2026-05-27 | P2.L8.CL.1010 FF+2d, P2.L8.CL.1060 |  | 70d |
| P2.L8.CL.1090 |  | Inspections - Close In- All Ceilings / L8 / Corr & Lobbies | 5d | 2026-05-28 | 2026-06-03 | P2.L8.CL.1030, P2.L8.CL.1040, P2.L8.CL.1050, P2.L8.CL.1060, P2.L8.CL.1080 |  | 70d |
| P2.L8.CL.1110 |  | Pull Wire - Fire Alarm / L8 / Corr & Lobbies | 5d | 2026-05-28 | 2026-06-03 | P2.L8.CL.1100, P2.L8.CL.1080 |  | 105d |
| P2.L8.CL.1120 |  | Pull Wire - All Remianing Low Voltage Systems / L8 / Corr & Lobbies | 5d | 2026-06-04 | 2026-06-10 | P2.L8.CL.1110, P2.L8.CL.1060 |  | 110d |
| P2.L8.CL.1130 |  | Hang/Tape/Finish- Hard Lid Ceilings / L8 / Corr & Lobbies | 10d | 2026-06-04 | 2026-06-17 | P2.L8.CL.1090 |  | 70d |
| P2.L8.CL.1330 |  | Interior Glazing / L8 / Corr & Lobbies | 5d | 2026-06-04 | 2026-06-10 | P2.L8.CL.1090 |  | 132d |
| P2.L8.CL.1140 |  | Drop Ceiling Tiles @ T-Grid / L8 / Corr & Lobbies | 5d | 2026-06-11 | 2026-06-17 | P2.L8.CL.1110, P2.L8.CL.1120, P2.L8.CL.1070, P2.L8.CL.1100 |  | 123d |
| P2.L8.CL.1190 |  | Paint - Hard Lid Ceilings / L8 / Corr & Lobbies | 5d | 2026-06-18 | 2026-06-24 | P2.L8.CL.1130 |  | 70d |
| P2.L8.CL.1180 |  | Ceiling Mounted - HVAC GRD's / L8 / Corr & Lobbies | 15d | 2026-06-25 | 2026-07-16 | P2.L8.CL.1020, P2.L8.CL.1190 |  | 70d |
| P2.L8.CL.1150 |  | Ceiling Mounted - Electrical Devices and Lights / L8 / Corr & Lobbies | 20d | 2026-07-10 | 2026-08-06 | P2.L8.CL.1100, P2.L8.CL.1190, P2.L8.CL.1180 SS+10d |  | 70d |
| P2.L8.CL.1160 |  | Ceiling Mounted - Fire Alarm/Life Saftey Devices / L8 / Corr & Lobbies | 15d | 2026-07-24 | 2026-08-13 | P2.L8.CL.1110, P2.L8.CL.1020, P2.L8.CL.1190, P2.L8.CL.1150 SS+10d |  | 70d |
| P2.L8.CL.1170 |  | Ceiling Mounted - All Low Voltage Devices / L8 / Corr & Lobbies | 15d | 2026-08-07 | 2026-08-27 | P2.L8.CL.1120, P2.L8.CL.1190, P2.L8.CL.1160 SS+10d |  | 70d |
| P2.L8.CL.1320 |  | Prep Flooring / L8 / Corr & Lobbies | 2d | 2026-10-15 | 2026-10-16 | P2.L8.CL.1150, P2.L8.CL.1160, P2.L8.CL.1170, P2.L8.CL.1180, P2.L8.CL.1140 SS+2d, P2.L7.CL.1200 |  | 37d |
| P2.L8.CL.1200 |  | Flooring / L8 / Corr & Lobbies | 8d | 2026-10-19 | 2026-10-28 | P2.L8.CL.1320 |  | 37d |
| P2.L8.CL.1210 |  | Final Paint / L8 / Corr & Lobbies | 5d | 2026-10-26 | 2026-10-30 | P2.L8.CL.1200 FF+2d, P2.L8.CL.1140, P2.L8.CL.1330, BP7.097.3.100 |  | 37d |
| P2.L8.CL.1220 |  | Floor Base / L8 / Corr & Lobbies | 5d | 2026-11-02 | 2026-11-06 | P2.L8.CL.1210 |  | 52d |
| P2.L8.CL.1250 |  | Trim - HVAC - Wall Mounted Devices / L8 / Corr & Lobbies | 5d | 2026-11-02 | 2026-11-06 | P2.L8.CL.1210 |  | 37d |
| P2.L8.CL.1230 |  | Trim - All Electrical - Wall Mounted Devices / L8 / Corr & Lobbies | 5d | 2026-11-09 | 2026-11-13 | P2.L8.CL.1210, P2.L8.CL.1250 |  | 37d |
| P2.L8.CL.1340 |  | Wall Protection / L8 / Corr & Lobbies | 5d | 2026-11-09 | 2026-11-13 | P2.L8.CL.1220, BP7.102.3.300 |  | 52d |
| P2.L8.CL.1240 |  | Trim - Fire Alarm - Wall Mounted Devices / L8 / Corr & Lobbies | 5d | 2026-11-16 | 2026-11-20 | P2.L8.CL.1210, P2.L8.CL.1230 |  | 37d |
| P2.L8.CL.1260 |  | Trim - All Remining Low Voltage Systems - Wall Mounted Devices / L8 / Corr & Lobbies | 5d | 2026-11-23 | 2026-12-01 | P2.L8.CL.1210, P2.L8.CL.1240 |  | 37d |
| P2.L8.CL.1270 |  | Building Signage / L8 / Corr & Lobbies | 5d | 2026-12-02 | 2026-12-08 | P2.L8.CL.1260, P2.L8.CL.1210 |  | 37d |
| P2.L8.CL.1280 |  | Work Completion List / L8 / Corr & Lobbies | 5d | 2026-12-09 | 2026-12-15 | P2.L8.CL.1270, P2.L8.CL.1250, P2.L8.CL.1260, P2.L8.CL.1220, P2.L8.CL.1230, P2.L8.CL.1240, P2.L8.CL.1340 |  | 37d |
| P2.L8.CL.1290 |  | Rough Clean / L8 / Corr & Lobbies | 2d | 2026-12-16 | 2026-12-17 | P2.L8.CL.1280 |  | 37d |
| P2.L8.CL.1300 |  | Punchlist / L8 / Corr & Lobbies | 5d | 2026-12-18 | 2026-12-24 | P2.L8.CL.1290 |  | 37d |
| P2.L8.CL.1310 |  | Final Clean / L8 / Corr & Lobbies | 2d | 2026-12-28 | 2026-12-29 | P2.L8.CL.1300 |  | 37d |
|  | INT | **L8 / INTERSTITIAL** |  | 2025-06-09 | 2026-06-12 |  |  |  |
|  | 6 | **South Interstitial 8-3905** |  | 2025-06-09 | 2026-06-05 |  |  |  |
|  | Z1 | **Rough In - South Interstitial 8-3905** |  | 2025-06-09 | 2026-03-26 |  |  |  |
| P2.L8.INT.S.1020 |  | OH - Structural Supports (All Trades) / L8 / South Int | 5d | 2025-06-09 A | 2025-06-13 A | P2.L8.INT.S.1000 | 100% |  |
| P2.L8.INT.S.1040 |  | Fireproof Interstitial Steel / L8 / South Int | 5d | 2025-06-18 A | 2025-06-25 A | P2.L8.INT.S.1030, P2.L8.INT.S.1010, P2.L8.INT.S.1020 | 100% |  |
| P2.L8.INT.S.1000 |  | Layout - All Trades / L8 / South Int | 5d | 2025-07-14 A | 2025-07-18 A | P2.8.I.03.310 | 100% |  |
| P2.L8.INT.S.1030 |  | OH - MEPF - Hangers & Supports / L8 / South Int | 5d | 2025-07-14 A | 2025-07-18 A | P2.L8.INT.S.1000, P2.BIM.L8.40.150 | 100% |  |
| P2.L8.INT.S.1010 |  | Framing - Top Track / L8 / South Int | 5d | 2025-07-23 A | 2025-07-31 A | P2.L8.N.1010, P2.L8.INT.S.1000 | 100% |  |
| P2.L8.INT.S.1130 |  | OH - Fire Suppression / L8 / South Int | 10d | 2025-08-01 A | 2025-09-26 A | P2.L8.INT.S.1040 | 100% |  |
| P2.L8.INT.S.1070 |  | Framing - Perimeter Studs and Door Frames / L8 / South Int | 10d | 2025-08-05 A | 2025-09-17 A | P2.L8.INT.S.1040 | 100% |  |
| P2.L8.INT.S.1160 |  | OH - Electrical - 480/277v Distribution / L8 / South Int | 20d | 2025-08-11 A | 2025-09-30 A | P2.L8.INT.S.1120 FF+2d, P2.L8.INT.S.1100 FF+2d, P2.L8.INT.S.1040 | 100% |  |
| P2.L8.INT.S.1190 |  | OH - Electrical - 208/120v Branch / L8 / South Int | 10d | 2025-09-05 A | 2025-10-30 A | P2.L8.INT.S.1160 | 100% |  |
| P2.L8.INT.S.1220 |  | OH - Plumbing - Test / L8 / South Int | 10d | 2025-09-18 A | 2025-09-22 A | P2.L8.INT.S.1150 | 100% |  |

| ID | WBS | Task | Duration | Start | Finish | Predecessors | Complete | Total float | Constraint |
| --- | --- | --- | --- | --- | --- | --- | --- | --- | --- |
| P2.L8.INT.S.1050 |  | In Wall - Electrical - Framing / L8 / South Int | 10d | 2025-09-22 A | 2025-09-30 A | P2.L8.INT.S.1070 SS | 100% |  |  |
| P2.L8.INT.S.1060 |  | In Wall - Backing/Blocking/Supports / L8 / South Int | 10d | 2025-09-22 A | 2025-09-30 A | P2.L8.INT.S.1070 SS | 100% |  |  |
| P2.L8.INT.S.1140 |  | OH - Hang Duct - HP Mains / L8 / South Int | 20d | 2025-09-22 A | 2025-10-31 A | P2.L8.INT.S.1120 FF+2d, P2.L8.INT.S.1100 FF+2d, P2.L8.INT.S.1040 | 100% |  |  |
| P2.L8.INT.S.1260 |  | OH - Insulate Plumbing / L8 / South Int | 10d | 2025-09-25 A | 2025-09-28 A | P2.L8.INT.S.1220 | 100% |  |  |
| P2.L8.INT.S.1080 |  | AHJ Inspections - Wall Close In / L8 / South Int | 5d | 2025-09-30 A | 2025-10-09 A | P2.L8.INT.S.1050 FF, P2.L8.INT.S.1060 FF, P2.L8.INT.S.1070 | 100% |  |  |
| P2.L8.INT.S.1150 |  | OH - Plumbing Piping / L8 / South Int | 10d | 2025-10-01 A | 2025-10-10 A | P2.L8.INT.S.1120 FF+2d, P2.L8.S.1180, P2.L8.INT.S.1100 FF+2d, P2.L8.INT.S.1040 | 100% |  |  |
| P2.L8.INT.S.1090 |  | Hang-Tape-Finish / L8 / South Int | 10d | 2025-10-14 A | 2025-10-22 A | P2.L8.INT.S.1080 | 100% |  |  |
| P2.L8.INT.S.1100 |  | Spray/Seal/Firestop - Head of Wall / L8 / South Int | 5d | 2025-10-23 A | 2025-10-29 A | P2.L8.INT.S.1090 FF | 100% |  |  |
| P2.L8.INT.S.1120 |  | Paint Prime & 1st Coat / L8 / South Int | 5d | 2025-10-23 A | 2025-10-29 A | P2.L8.INT.S.1100 SS | 100% |  |  |
| FRG.P2.L8.INT.S.1690 |  | HVAC Piping - Staging & Layout / L8 / South Int - FRAGNET | 5d | 2025-10-27 A | 2025-10-31 A | FRG.P2.L8.INT.S.1680 | 100% |  |  |
| FRG.P2.L8.INT.S.1700 |  | HVAC Piping - Hanging Steel Racks (West) / L8 / South Int - FRAGNET | 20d | 2025-10-27 A | 2025-11-21 A | FRG.P2.L8.INT.S.1690 | 100% |  |  |
| FRG.P2.L8.INT.S.1710 |  | HVAC Piping - Hanging Steel Racks (East) / L8 / South Int - FRAGNET | 20d | 2025-10-27 A | 2025-12-29 | FRG.P2.L8.INT.S.1700 |  | 37d |  |
| FRG.P2.L8.INT.S.1680 |  | HVAC Piping - Steel Racks Delivery / L8 / South Int - FRAGNET | 0d | 2025-10-28 A | 2025-10-28 A | P2.L8.INT.S.1030 FF | 100% |  | finish on or after 2025-09-29 |
| P2.L8.INT.S.1175 |  | Set & Connect - Elect Panels and Equipment / L8 / South Int | 5d | 2025-11-03 A | 2025-11-07 A | P2.L8.INT.S.1100, P2.L8.INT.S.1120 | 100% |  |  |
| P2.L8.INT.S.1170 |  | Set & Connect - Mech Equipment / L8 / South Int | 15d | 2025-12-01 | 2025-12-19 | P2.L8.INT.S.1040 |  | 72d |  |
| P2.L8.INT.S.1210 |  | OH - DALT - HP Mains / L8 / South Int | 10d | 2025-12-01 | 2025-12-12 | P2.L8.INT.S.1140 |  | 62d |  |
| P2.L8.INT.S.1230 |  | OH - Insulate HP Duct / L8 / South Int | 10d | 2025-12-15 | 2025-12-29 | P2.L8.INT.S.1210 |  | 67d |  |
| P2.L8.INT.S.1240 |  | OH - Hang Duct - LP Branch / L8 / South Int | 15d | 2025-12-15 | 2026-01-06 | P2.L8.INT.S.1210 |  | 62d |  |
| P2.L8.INT.S.1200 |  | OH - Electrical - Equip Tie In / L8 / South Int | 10d | 2025-12-22 | 2026-01-06 | P2.L8.INT.S.1160, P2.L8.INT.S.1175, P2.L8.INT.S.1170 |  | 72d |  |
| P2.L8.INT.S.1180 |  | OH - HVAC Piping / L8 / South Int | 20d | 2025-12-30 | 2026-01-27 | P2.L8.INT.S.1100 FF+2d, P2.L8.INT.S.1130, P2.L8.INT.S.1040, FRG.P2.L8.INT.S.1710 |  | 37d |  |
| P2.L8.INT.S.1270 |  | Pull Wire - Electrical - 208/120v Branch & Equip / L8 / South Int | 20d | 2026-01-07 | 2026-02-03 | P2.L8.INT.S.1190, P2.L8.INT.S.1200 |  | 72d |  |
| P2.L8.INT.S.1280 |  | Pull Wire - Electrical - 480/277v Distribution / L8 / South Int | 10d | 2026-01-07 | 2026-01-20 | P2.L8.INT.S.1200 |  | 82d |  |
| P2.L8.INT.S.1310 |  | OH - Insulate LP Duct / L8 / South Int | 10d | 2026-01-07 | 2026-01-20 | P2.L8.INT.S.1240 |  | 62d |  |
| P2.L8.INT.S.1330 |  | OH - Conduit - Low Volt - Fire Alarm / L8 / South Int | 10d | 2026-01-21 | 2026-02-03 | P2.L8.INT.S.1310 |  | 62d |  |
| P2.L8.INT.S.1340 |  | OH - Conduit - Low Volt - Telecom / L8 / South Int | 10d | 2026-01-21 | 2026-02-03 | P2.L8.INT.S.1310 |  | 62d |  |
| P2.L8.INT.S.1250 |  | OH - HVAC Piping - Test / L8 / South Int | 10d | 2026-01-28 | 2026-02-10 | P2.L8.INT.S.1180 |  | 37d |  |
| P2.L8.INT.S.1370 |  | Pull Wire - Low Volt - Fire Alarm / L8 / South Int | 10d | 2026-02-04 | 2026-02-17 | P2.L8.INT.S.1330 |  | 62d |  |
| P2.L8.INT.S.1380 |  | Pull Wire - Low Volt - Telecom / L8 / South Int | 10d | 2026-02-04 | 2026-02-17 | P2.L8.INT.S.1340 |  | 62d |  |
| P2.L8.INT.S.1290 |  | OH - HVAC Piping - Equip Tie In / L8 / South Int | 15d | 2026-02-11 | 2026-03-03 | P2.L8.INT.S.1170, P2.L8.INT.S.1250, CX.B2.HYDR.1000 |  | 42d |  |
| P2.L8.INT.S.1300 |  | OH - Insulate HVAC Pipe / L8 / South Int | 10d | 2026-02-11 | 2026-02-24 | P2.L8.INT.S.1230, P2.L8.INT.S.1250 |  | 37d |  |
| P2.L8.INT.S.1320 |  | OH - Conduit - Low Volt - BAS/Controls / L8 / South Int | 10d | 2026-02-25 | 2026-03-10 | P2.L8.INT.S.1300 |  | 37d |  |
| P2.L8.INT.S.1350 |  | OH - Conduit - Low Volt - Security / L8 / South Int | 10d | 2026-02-25 | 2026-03-10 | P2.L8.INT.S.1300 |  | 37d |  |
| P2.L8.INT.S.1110 |  | Firestop - Thru Wall / L8 / South Int | 5d | 2026-03-11 | 2026-03-17 | P2.L8.INT.S.1160, P2.L8.INT.S.1180, P2.L8.INT.S.1130, P2.L8.INT.S.1150, P2.L8.INT.S.1320, P2.L8.INT.S.1330, P2.L8.INT.S.1340, P2.L8.INT.S.1350, P2.L8.INT.S.1120 SS |  | 42d |  |
| P2.L8.INT.S.1360 |  | Pull Wire - Low Volt - BAS/Controls / L8 / South Int | 10d | 2026-03-11 | 2026-03-24 | P2.L8.INT.S.1320, P2.L8.INT.S.1290 |  | 37d |  |
| P2.L8.INT.S.1390 |  | Pull Wire - Low Volt - Security / L8 / South Int | 10d | 2026-03-11 | 2026-03-24 | P2.L8.INT.S.1350 |  | 37d |  |
| P2.L8.INT.S.1400 |  | Trades Inspect & Verify R/I Work Completed to Specs / L8 / South Int | 2d | 2026-03-25 | 2026-03-26 | P2.L8.INT.S.1110, P2.L8.INT.S.1360, P2.L8.INT.S.1370, P2.L8.INT.S.1380, P2.L8.INT.S.1390, P2.L8.INT.S.1280, P2.L8.INT.S.1260, P2.L8.INT.S.1270 |  | 37d |  |
|  | 2 | **Finishes - South Interstitial 8-3905 (4,786 sf)** |  | 2026-03-27 | 2026-06-05 |  |  |  |  |
| P2.L8.INT.S.2000 |  | Flooring Prep - Epoxy Floors / L8 / South Int | 7d | 2026-03-27 | 2026-04-06 | P2.L8.INT.S.1175, P2.L8.INT.S.1400 |  | 132d |  |
| P2.L8.INT.S.2090 |  | Flooring - Epoxy Floors / L8 / South Int | 3d | 2026-04-07 | 2026-04-09 | P2.L8.INT.S.2000 |  | 132d |  |
| P2.L8.INT.S.2010 |  | Paint - Finish Coat / L8 / South Int | 5d | 2026-04-10 | 2026-04-16 | P2.L8.INT.S.1400, P2.L8.INT.S.2090 |  | 132d |  |
| P2.L8.INT.S.2020 |  | Doors & Hardware / L8 / South Int | 5d | 2026-04-17 | 2026-04-23 | P2.L8.INT.S.2010 |  | 132d |  |
| P2.L8.INT.S.2040 |  | Building Signage / L8 / South Int | 5d | 2026-04-17 | 2026-04-23 | P2.L8.INT.S.2010 |  | 184d |  |
| P2.L8.INT.S.2030 |  | Trim All MEP Finishes / L8 / South Int | 5d | 2026-04-24 | 2026-04-30 | P2.L8.INT.S.2020, P2.L8.INT.S.2010 |  | 179d |  |
| P2.L8.INT.S.2050 |  | Rough Clean / L8 / South Int | 5d | 2026-05-01 | 2026-05-07 | P2.L8.INT.S.2040, P2.L8.INT.S.2030 |  | 179d |  |
| P2.L8.INT.S.2060 |  | Prepare Punchlist / L8 / South Int | 5d | 2026-05-08 | 2026-05-14 | P2.L8.INT.S.2050 |  | 179d |  |
| P2.L8.INT.S.2070 |  | Correct Punchlist / L8 / South Int | 10d | 2026-05-15 | 2026-05-29 | P2.L8.INT.S.2060 FF, P2.L8.INT.S.2060 |  | 179d |  |
| P2.L8.INT.S.2080 |  | Final Clean / L8 / South Int | 5d | 2026-06-01 | 2026-06-05 | P2.L8.INT.S.2070 FF, P2.L8.INT.S.2070 |  | 179d |  |
|  | 1 | **North Interstitial 8-2855** |  | 2025-06-09 | 2026-06-12 |  |  |  |  |
|  | Z11 | **Rough In - North Interstitial 8-2855** |  | 2025-06-09 | 2026-04-02 |  |  |  |  |
| P2.L8.INT.N.1020 |  | OH - Structural Supports (All Trades) / L8 / North Int | 5d | 2025-06-09 A | 2025-06-13 A | P2.L8.INT.N.1000 SS | 100% |  |  |
| P2.L8.INT.N.1040 |  | Fireproof Interstitial Steel / L8 / North Int | 5d | 2025-06-17 A | 2025-06-24 A | P2.L8.INT.N.1020, P2.L7.N.1010 | 100% |  |  |
| P2.L8.INT.N.1000 |  | Layout - All Trades / L8 / North Int | 5d | 2025-07-14 A | 2025-07-18 A | P2.8.I.03.320 | 100% |  |  |
| P2.L8.INT.N.1010 |  | Framing - Top Track / L8 / North Int | 5d | 2025-08-13 A | 2025-08-20 A | P2.L8.INT.S.1010, P2.L8.INT.N.1000 SS | 100% |  |  |
| P2.L8.INT.N.1030 |  | OH - MEPF - Hangers & Supports / L8 / North Int | 10d | 2025-08-15 A | 2025-09-11 A | P2.L8.INT.N.1000 SS | 100% |  |  |
| P2.L8.INT.N.1130 |  | OH - Fire Suppression / L8 / North Int | 10d | 2025-08-15 A | 2025-09-30 A | P2.L8.INT.N.1040, P2.L8.INT.N.1030 | 100% |  |  |
| P2.L8.INT.N.1070 |  | Framing - Perimeter Studs and Door Frames / L8 / North Int | 10d | 2025-08-21 A | 2025-08-29 A | P2.L8.INT.N.1040, P2.L8.INT.N.1010 | 100% |  |  |
| P2.L8.INT.N.1150 |  | OH - Plumbing Piping / L8 / North Int | 15d | 2025-09-01 A | 2025-09-10 A | P2.L8.INT.N.1120 FF+2d, P2.L8.INT.N.1100 FF+2d, P2.L8.N.1180, P2.L8.INT.N.1040, P2.L8.INT.S.1150 | 100% |  |  |
| P2.L8.INT.N.1160 |  | OH - Electrical - 480/277v Distribution / L8 / North Int | 20d | 2025-09-08 A | 2025-09-30 A | P2.L8.INT.N.1120 FF+2d, P2.L8.INT.N.1100 FF+2d, P2.L8.INT.N.1040 | 100% |  |  |
| P2.L8.INT.N.1050 |  | In Wall - Electrical - Framing / L8 / North Int | 10d | 2025-09-22 A | 2025-09-30 A | P2.L8.INT.N.1070 | 100% |  |  |
| P2.L8.INT.N.1060 |  | In Wall - Backing/Blocking/Supports / L8 / North Int | 10d | 2025-09-22 A | 2025-09-30 A | P2.L8.INT.N.1050 SS+5d | 100% |  |  |
| P2.L8.INT.N.1080 |  | AHJ Inspections - Wall Close In / | 5d | 2025-09-30 A | 2025-10-01 A | P2.L8.INT.N.1050 FF, P2.L8.INT.N.1060 FF, P2.L8.INT.N.1070 | 100% |  |  |
| P2.L8.INT.N.1120 |  | Paint Prime & 1st Coat / L8 / North Int | 5d | 2025-10-16 A | 2025-10-31 A | P2.L8.INT.N.1100 SS | 100% |  |  |
| P2.L8.INT.N.1090 |  | Hang-Tape-Finish / L8 / North Int | 10d | 2025-10-22 A | 2025-10-31 A | P2.L8.INT.N.1080 | 100% |  |  |
| P2.L8.INT.N.1100 |  | Spray/Seal/Firestop - Head of Wall / L8 / North Int | 5d | 2025-10-22 A | 2025-10-31 A | P2.L8.INT.N.1090 | 100% |  |  |
| P2.L8.INT.N.1140 |  | OH - Hang Duct - HP Mains (High) / L8 / North Int | 20d | 2025-10-31 A | 2025-11-28 A | P2.L8.INT.N.1120 FF+2d, P2.L8.INT.N.1100 FF+2d, P2.L8.INT.S.1140, P2.L8.INT.N.1040 | 100% |  |  |
| P2.L8.INT.N.1175 |  | Set & Connect - Elect Panels and Equipment / L8 / North Int | 5d | 2025-11-07 A | 2025-11-18 A | P2.L8.INT.N.1100, P2.L8.INT.N.1120 | 100% |  |  |
| P2.L8.INT.N.1190 |  | OH - Electrical - 208/120v Branch / L8 / North Int | 10d | 2025-11-15 A | 2025-12-05 | P2.L8.INT.N.1160 | 50% | 92d |  |
| P2.L8.INT.N.1200 |  | OH - Electrical - Equip Tie In / L8 / North Int | 10d | 2025-11-19 A | 2025-12-29 | P2.L8.INT.N.1160, P2.L8.INT.N.1175, P2.L8.INT.N.1170 | 50% | 77d |  |
| P2.L8.INT.N.1170 |  | Set & Connect - Mech Equipment / L8 / North Int | 15d | 2025-12-01 | 2025-12-19 | P2.L8.INT.N.1040 |  | 77d |  |
| P2.L8.INT.N.1210 |  | OH - DALT - HP Mains / L8 / North Int | 10d | 2025-12-01 A | 2026-01-06 | P2.L8.INT.N.2090 |  | 32d |  |

| ID | WBS | Task | Duration | Start | Finish | Predecessors | Complete | Total float |
| --- | --- | --- | --- | --- | --- | --- | --- | --- |
| P2.L8.INT.N.2090 |  | OH - Hang Duct - HP Mains (Low) / L8 / North Int | 10d | 2025-12-01 A | 2025-12-12 | P2.L8.INT.N.1140 |  | 32d |
| P2.L8.INT.N.1220 |  | OH - Plumbing - Test / L8 / North Int | 20d | 2025-12-15 | 2026-01-13 | P2.L8.INT.N.1150 |  | 67d |
| P2.L8.INT.N.1180 |  | OH - HVAC Piping (High-Steel) / L8 / North Int | 10d | 2025-12-30 | 2026-01-13 | P2.L8.INT.N.1040, P2.L8.INT.N.1130 SS, P2.L8.INT.N.1030, P2.L8.S.1220, FRG.P2.L8.INT.S.1690 |  | 43d |
| P2.L8.INT.N.1270 |  | Pull Wire - Electrical - 208/120v Branch & Equip / L8 / North Int | 20d | 2025-12-30 | 2026-01-27 | P2.L8.INT.N.1190, P2.L8.INT.N.1200, P2.L8.INT.N.1050 |  | 77d |
| P2.L8.INT.N.1280 |  | Pull Wire - Electrical - 480/277v Distribution / L8 / North Int | 10d | 2025-12-30 | 2026-01-13 | P2.L8.INT.N.1200 |  | 87d |
| P2.L8.INT.N.1230 |  | OH - Insulate HP Duct / L8 / North Int | 10d | 2026-01-07 | 2026-01-20 | P2.L8.INT.N.1210 |  | 52d |
| P2.L8.INT.N.1240 |  | OH - Hang Duct - LP Branch (High) / L8 / North Int | 20d | 2026-01-07 | 2026-02-03 | P2.L8.INT.N.1210 |  | 32d |
| P2.L8.INT.N.1260 |  | OH - Insulate Plumbing / L8 / North Int | 20d | 2026-01-14 | 2026-02-10 | P2.L8.INT.N.1220 |  | 67d |
| P2.L8.INT.N.2100 |  | OH - HVAC Piping (Low) / L8 / North Int | 10d | 2026-01-14 | 2026-01-27 | P2.L8.INT.N.1180 |  | 43d |
| P2.L8.INT.N.1250 |  | OH - HVAC Piping - Test / L8 / North Int | 10d | 2026-01-20 | 2026-02-02 | P2.L8.INT.N.2100 FF+4d |  | 43d |
| P2.L8.INT.N.1290 |  | OH - HVAC Piping - Equip Tie In / L8 / North Int | 15d | 2026-02-03 | 2026-02-23 | P2.L8.INT.N.1250, P2.L8.INT.N.1170, CX.B2.HYDR.1000 |  | 48d |
| P2.L8.INT.N.1300 |  | OH - Insulate HVAC Pipe / L8 / North Int | 10d | 2026-02-03 | 2026-02-16 | P2.L8.INT.N.1250, P2.L8.INT.N.1230 |  | 43d |
| P2.L8.INT.N.2110 |  | OH - Hang Duct - LP Branch (Low) / L8 / North Int | 10d | 2026-02-04 | 2026-02-17 | P2.L8.INT.N.1240 |  | 32d |
| P2.L8.INT.N.1320 |  | OH - Conduit - Low Volt - BAS/Controls / L8 / North Int | 10d | 2026-02-17 | 2026-03-02 | P2.L8.INT.N.1300 |  | 43d |
| P2.L8.INT.N.1350 |  | OH - Conduit - Low Volt - Security / L8 / North Int | 10d | 2026-02-17 | 2026-03-02 | P2.L8.INT.N.1300 |  | 43d |
| P2.L8.INT.N.1310 |  | OH - Insulate LP Duct / L8 / North Int | 10d | 2026-02-18 | 2026-03-03 | P2.L8.INT.N.2110 |  | 32d |
| P2.L8.INT.N.1360 |  | Pull Wire - Low Volt - BAS/Controls / L8 / North Int | 10d | 2026-03-03 | 2026-03-16 | P2.L8.INT.N.1290, P2.L8.INT.N.1320 |  | 43d |
| P2.L8.INT.N.1390 |  | Pull Wire - Low Volt - Security / L8 / North Int | 10d | 2026-03-03 | 2026-03-16 | P2.L8.INT.N.1350 |  | 43d |
| P2.L8.INT.N.1330 |  | OH - Conduit - Low Volt - Fire Alarm / L8 / North Int | 10d | 2026-03-04 | 2026-03-17 | P2.L8.INT.N.1310 |  | 32d |
| P2.L8.INT.N.1340 |  | OH - Conduit - Low Volt - Telecom / L8 / North Int | 10d | 2026-03-04 | 2026-03-17 | P2.L8.INT.N.1310 |  | 32d |
| P2.L8.INT.N.1110 |  | Firestop - Thru Wall / L8 / North Int | 5d | 2026-03-18 | 2026-03-24 | P2.L8.INT.N.1160, P2.L8.INT.N.1180, P2.L8.INT.N.1130, P2.L8.INT.N.1140, P2.L8.INT.N.1150, P2.L8.INT.N.2090, P2.L8.INT.N.2100, P2.L8.INT.N.1320, P2.L8.INT.N.1330, P2.L8.INT.N.1340, P2.L8.INT.N.1350, P2.L8.INT.N.1120 SS |  | 37d |
| P2.L8.INT.N.1370 |  | Pull Wire - Low Volt - Fire Alarm / L8 / North Int | 10d | 2026-03-18 | 2026-03-31 | P2.L8.INT.N.1330 |  | 32d |
| P2.L8.INT.N.1380 |  | Pull Wire - Low Volt - Telecom / L8 / North Int | 10d | 2026-03-18 | 2026-03-31 | P2.L8.INT.N.1340 |  | 32d |
| P2.L8.INT.N.1400 |  | Trades Inspect & Verify R/I Work Completed to Specs / L8 / North Int | 2d | 2026-04-01 | 2026-04-02 | P2.L8.INT.N.1260, P2.L8.INT.N.1270, P2.L8.INT.N.1110, P2.L8.INT.N.1360, P2.L8.INT.N.1370, P2.L8.INT.N.1380, P2.L8.INT.N.1390, P2.L8.INT.N.1280 |  | 32d |
|  | 1 | **Finishes - North Interstitial 8-2855 (12,785 sf)** |  | 2026-04-03 | 2026-06-12 |  |  |  |
| P2.L8.INT.N.2000 |  | Flooring Prep - Epoxy Floors / L8 / North Int | 7d | 2026-04-03 | 2026-04-13 | P2.L8.INT.N.1400 |  | 127d |
| P2.L8.INT.N.2120 |  | Flooring - Epoxy Floors / L8 / North Int | 3d | 2026-04-14 | 2026-04-16 | P2.L8.INT.N.2000 |  | 127d |
| P2.L8.INT.N.2010 |  | Paint - Finish Coat / L8 / North Int | 5d | 2026-04-17 | 2026-04-23 | P2.L8.INT.N.1400, P2.L8.INT.N.2120 |  | 127d |
| P2.L8.INT.N.2020 |  | Doors & Hardware / L8 / North Int | 5d | 2026-04-24 | 2026-04-30 | P2.L8.INT.N.2010 |  | 127d |
| P2.L8.INT.N.2040 |  | Building Signage / L8 / North Int | 5d | 2026-04-24 | 2026-04-30 | P2.L8.INT.N.2010 |  | 179d |
| P2.L8.INT.N.2030 |  | Trim All MEP Finishes / L8 / North Int | 5d | 2026-05-01 | 2026-05-07 | P2.L8.INT.N.2020, P2.L8.INT.N.2010 |  | 174d |
| P2.L8.INT.N.2050 |  | Rough Clean / L8 / North Int | 5d | 2026-05-08 | 2026-05-14 | P2.L8.INT.N.2040, P2.L8.INT.N.2030 |  | 174d |
| P2.L8.INT.N.2060 |  | Prepare Punchlist / L8 / North Int | 5d | 2026-05-15 | 2026-05-21 | P2.L8.INT.N.2050 |  | 174d |
| P2.L8.INT.N.2070 |  | Correct Punchlist / L8 / North Int | 10d | 2026-05-22 | 2026-06-05 | P2.L8.INT.N.2060 FF, P2.L8.INT.N.2060 |  | 174d |
| P2.L8.INT.N.2080 |  | Final Clean / L8 / North Int | 5d | 2026-06-08 | 2026-06-12 | P2.L8.INT.N.2070 |  | 174d |
|  | 1 | **MECHANICAL TOWERS / LEVEL 8** |  | 2025-05-26 | 2026-05-19 |  |  |  |
|  | 4 | **South Mechanical Tower / Rough In & Finish / Level 8** |  | 2025-07-01 | 2026-04-07 |  |  |  |
| P2.L8.SMT.1070 |  | Set & Connect - Mech Equipment / L8 - S. Mech Tower | 10d | 2025-07-01 A | 2025-07-15 A | P2.L7.SMT.1070, P2.8.03.610 | 100% |  |
| P2.L8.SMT.1000 |  | Insulation - Exterior Wall Assembly / L8 - S. Mech Tower | 5d | 2025-07-02 A | 2025-07-09 A | P2.FAC.2.Z1.150 | 100% |  |
| P2.L8.SMT.1020 |  | In Wall - Electrical - CMU / L8 - S. Mech Tower | 10d | 2025-07-10 A | 2025-07-23 A | P2.L8.SMT.1010 SS | 100% |  |
| P2.L8.SMT.1030 |  | In Wall - Mech/Plumbing - CMU / L8 - S. Mech Tower | 10d | 2025-07-10 A | 2025-07-23 A | P2.L8.SMT.1010 SS | 100% |  |
| P2.L8.SMT.1100 |  | HVAC Piping Connections to Shaft Riser / L8 - S. Mech Tower | 20d | 2025-09-02 A | 2025-09-26 A | P2.L8.SMT.1070 | 100% |  |
| P2.L8.SMT.1105 |  | HVAC Duct Connections to Shaft Riser / L8 - S. Mech Tower | 20d | 2025-09-02 A | 2025-09-26 A | P2.L8.SMT.1070 | 100% |  |
| P2.L8.SMT.1010 |  | CMU - Lay Block / L8 - S. Mech Tower | 10d | 2025-09-15 A | 2025-09-18 A | BP4.040.3.100, P2.L8.SMT.1000 | 100% |  |
| P2.L8.SMT.1040 |  | Paint - CMU Block Fill / L8 - S. Mech Tower | 10d | 2025-09-22 A | 2025-09-26 A | P2.L8.SMT.1010 | 100% |  |
| P2.L8.SMT.1050 |  | CMU - Point & Patch / L8 - S. Mech Tower | 10d | 2025-09-22 A | 2025-09-22 A | P2.L8.SMT.1030, P2.L8.SMT.1020, P2.L8.SMT.1040 | 100% |  |
| P2.L8.SMT.1060 |  | Paint Prime & 1st Coat - CMU / L8 - S. Mech Tower | 10d | 2025-10-15 A | 2025-10-17 A | P2.L8.SMT.1050 SS | 100% |  |
| P2.L8.SMT.1080 |  | Set & Connect - Elect Panels and Equipment / L8 - S. Mech Tower | 5d | 2025-10-27 A | 2025-12-02 | P2.L8.SMT.1060 | 60% | 135d |
| P2.L8.SMT.1120 |  | BAS - Equip Tie In / L8 - S. Mech Tower | 5d | 2025-10-27 A | 2025-12-02 | P2.L8.SMT.1070, P2.L8.SMT.1060 | 60% | 147d |
| P2.L8.SMT.1130 |  | Test/Inspect Duct & Piping / L8 - S. Mech Tower | 10d | 2025-12-01 | 2025-12-12 | P2.L8.SMT.1100, P2.L8.SMT.1105 |  | 154d |
| P2.L8.SMT.1110 |  | HVAC Piping - Equip Tie In / L8 - S. Mech Tower | 20d | 2026-01-28 | 2026-02-24 | P2.L8.SMT.1070, CX.B2.HYDR.1000 |  | 104d |
| P2.L8.SMT.1200 |  | Flooring Prep - Epoxy Floors / L8 - S. Mech Tower | 3d | 2026-02-09 | 2026-02-11 | P2.L7.SMT.1270, P2.L8.SMT.1070, P2.L8.SMT.1080 |  | 89d |
| P2.L8.SMT.1250 |  | Flooring - Epoxy Floors / L8 - S. Mech Tower | 2d | 2026-02-12 | 2026-02-13 | P2.L8.SMT.1200 |  | 89d |
| P2.L8.SMT.1090 |  | Panelboards, Interconnect Wiring, and Remaining Room Buildout of All Elec/FA Systems / L8 - S. Mech Tower | 10d | 2026-02-16 | 2026-02-27 | BP1.262.3.200, BP1.262.3.100, P2.L8.SMT.1250, P2.L8.SMT.1080 |  | 89d |
| P2.L8.SMT.1150 |  | Insulate HVAC / Plumbing Pipe / L8 - S. Mech Tower | 5d | 2026-02-25 | 2026-03-03 | P2.L8.SMT.1130, P2.L8.SMT.1110 |  | 104d |
| P2.L8.SMT.1140 |  | Pull Wire - In From Distribution Panels / Out to Branch Circuits / L8 - S. Mech Tower | 5d | 2026-03-02 | 2026-03-06 | P2.L8.SMT.1090 |  | 89d |
| P2.L8.SMT.1160 |  | Electrical Tie in to Equipment / L8 - S. Mech Tower | 5d | 2026-03-09 | 2026-03-13 | P2.L8.SMT.1140, P2.L8.SMT.1070 |  | 106d |
| P2.L8.SMT.1170 |  | Test & Terminate / L8 - S. Mech Tower | 5d | 2026-03-09 | 2026-03-13 | P2.L8.SMT.1140 |  | 89d |
| P2.L8.SMT.1180 |  | Paint - Finish Coat / L8 - S. Mech Tower | 2d | 2026-03-16 | 2026-03-17 | P2.L8.SMT.1170 |  | 89d |
| P2.L8.SMT.1190 |  | Trim All MEPF Finishes / L8 - S. Mech Tower | 2d | 2026-03-18 | 2026-03-19 | P2.L8.SMT.1180 |  | 90d |
| P2.L8.SMT.1340 |  | Wall Protection / L8 - S. Mech Tower | 5d | 2026-03-18 | 2026-03-24 | P2.L8.SMT.1180, BP7.102.3.300 |  | 89d |
| P2.L8.SMT.1210 |  | Doors & Hardware / L8 - S. Mech Tower | 2d | 2026-03-20 | 2026-03-23 | P2.L8.SMT.1190 |  | 90d |
| P2.L8.SMT.1220 |  | Trades Inspect & Verify R/I Work Completed to Specs / L8 - S. Mech Tower | 5d | 2026-03-25 | 2026-03-31 | P2.L8.SMT.1150, P2.L8.SMT.1210, P2.L8.SMT.1120, P2.L8.SMT.1340 |  | 89d |
| P2.L8.SMT.1240 |  | Energize Elec Panels - Lock Doors and Limit Access / L8 - S. Mech Tower | 5d | 2026-04-01 | 2026-04-07 | P2.L8.SMT.1220, CX.B2.SWGR.1010, CX.B2.MVEE.1010 |  | 89d |
| P2.L8.SMT.1230 |  | HVAC System Ready for Start Up / L8 - S. Mech Tower | 0d | 2026-04-07 | 2026-04-07 | P2.L8.SMT.1160 FF, P2.L8.SMT.1240 |  | 89d |
|  | 8 | **East Mechanical Tower / Rough In & Finish / Level 8** |  | 2025-05-26 | 2026-05-19 |  |  |  |
| P2.L8.EMT.1070 |  | Set & Connect - Mech Equipment / L8 - E. Mech Tower | 10d | 2025-05-26 A | 2025-05-29 A | P2.L7.EMT.1070, P2.8.03.630 | 100% |  |
| P2.L8.EMT.1010 |  | CMU - Lay Block / L8 - E. Mech Tower | 10d | 2025-08-14 A | 2025-09-26 A | P2.L8.INT.N.1000 | 100% |  |
| P2.L8.EMT.1100 |  | HVAC Piping Connections to Shaft Riser / L8 - E. Mech Tower | 20d | 2025-09-02 A | 2025-09-26 A | P2.L8.EMT.1070 | 100% |  |
| P2.L8.EMT.1040 |  | Paint - CMU Block Fill / L8 - E. Mech Tower | 10d | 2025-11-10 A | 2025-11-14 A | P2.L8.EMT.1010 | 100% |  |

| ID | WBS | Task | Duration | Start | Finish | Predecessors | Complete | Total float | Constraint |
| --- | --- | --- | --- | --- | --- | --- | --- | --- | --- |
| P2.L8.EMT.1050 |  | CMU - Point & Patch / L8 - E. Mech Tower | 10d | 2025-11-10 A | 2025-11-14 A | P2.L8.EMT.1040, P2.L8.EMT.1010 | 100% |  |  |
| P2.L8.EMT.1060 |  | Paint Prime & 1st Coat - CMU / L8 - E. Mech Tower | 10d | 2025-11-10 A | 2025-11-14 A | P2.L8.EMT.1050 SS | 100% |  |  |
| P2.L8.EMT.1080 |  | Set & Connect - Elect Panels and Equipment / L8 - E. Mech Tower | 5d | 2025-12-01 | 2025-12-05 | P2.L8.EMT.1060 |  | 132d |  |
| P2.L8.EMT.1105 |  | HVAC Duct Connections to Shaft Riser / L8 - E. Mech Tower | 20d | 2025-12-01 | 2025-12-29 | P2.L8.EMT.1070 |  | 134d |  |
| P2.L8.EMT.1120 |  | BAS - Equip Tie In / L8 - E. Mech Tower | 5d | 2025-12-01 | 2025-12-05 | P2.L8.EMT.1070, P2.L8.EMT.1060 |  | 144d |  |
| P2.L8.EMT.1130 |  | Test/Inspect Duct & Piping / L8 - E. Mech Tower | 10d | 2025-12-30 | 2026-01-13 | P2.L8.EMT.1100, P2.L8.EMT.1105 |  | 134d |  |
| P2.L8.EMT.1200 |  | Flooring Prep - Epoxy Floors / L8 - E. Mech Tower | 3d | 2026-01-13 | 2026-01-15 | P2.L7.EMT.1250, P2.L8.EMT.1080 |  | 108d |  |
| P2.L8.EMT.1150 |  | Insulate HVAC / Plumbing Pipe / L8 - E. Mech Tower | 5d | 2026-01-14 | 2026-01-20 | P2.L8.EMT.1130 |  | 134d |  |
| P2.L8.EMT.1280 |  | Flooring - Epoxy Floors / L8 - E. Mech Tower | 2d | 2026-01-16 | 2026-01-19 | P2.L8.EMT.1200 |  | 108d |  |
| P2.L8.EMT.1090 |  | Panelboards, Interconnect Wiring, and Remaining Room Buildout of All Elec/FA Systems / L8 - E. Mech Tower | 10d | 2026-01-20 | 2026-02-02 | BP1.262.3.100, BP1.262.3.200, P2.L8.EMT.1280, P2.L8.EMT.1080 |  | 108d |  |
| P2.L8.EMT.1110 |  | HVAC Piping - Equip Tie In (Chilled Water) / L8 - E. Mech Tower | 20d | 2026-01-28 | 2026-02-24 | P2.L8.EMT.1070, CX.B2.HYDR.1000 |  | 69d |  |
| P2.L8.EMT.1140 |  | Pull Wire - In From Distribution Panels / Out to Branch Circuits / L8 - E. Mech Tower | 5d | 2026-02-03 | 2026-02-09 | P2.L8.EMT.1090 |  | 108d |  |
| P2.L8.EMT.1160 |  | Electrical Tie in to Equipment / L8 - E. Mech Tower | 5d | 2026-02-10 | 2026-02-16 | P2.L8.EMT.1070, P2.L8.EMT.1140 |  | 125d |  |
| P2.L8.EMT.1170 |  | Test & Terminate / L8 - E. Mech Tower | 5d | 2026-02-10 | 2026-02-16 | P2.L8.EMT.1140 |  | 108d |  |
| P2.L8.EMT.1180 |  | Paint - Finish Coat / L8 - E. Mech Tower | 2d | 2026-02-17 | 2026-02-18 | P2.L8.EMT.1170 |  | 108d |  |
| P2.L8.EMT.1190 |  | Trim All MEPF Finishes / L8 - E. Mech Tower | 2d | 2026-02-19 | 2026-02-20 | P2.L8.EMT.1180 |  | 109d |  |
| P2.L8.EMT.1340 |  | Wall Protection / L8 - E. Mech Tower | 5d | 2026-02-19 | 2026-02-25 | P2.L8.EMT.1180, BP7.102.3.300 |  | 108d |  |
| P2.L8.EMT.1210 |  | Doors & Hardware / L8 - E. Mech Tower | 2d | 2026-02-23 | 2026-02-24 | P2.L8.EMT.1190 |  | 109d |  |
| P2.L8.EMT.1250 |  | HVAC Piping - Equip Tie In (Reheat) / L8 - E. Mech Tower | 20d | 2026-02-25 | 2026-03-24 | P2.L8.EMT.1110, CX.B2.HYDR.1000 |  | 69d |  |
| P2.L8.EMT.1220 |  | Trades Inspect & Verify R/I Work Completed to Specs / L8 - E. Mech Tower | 5d | 2026-02-26 | 2026-03-04 | P2.L8.EMT.1150, P2.L8.EMT.1210, P2.L8.EMT.1120, P2.L8.EMT.1340 |  | 108d |  |
| FRG.P2.L8.EMT.1050 |  | AHU Piping Install / L8 - E. Mech Tower - FRAGNET | 20d | 2026-03-18 | 2026-04-14 | FRG.P2.L7.EMT.1050 |  | 79d |  |
| P2.L8.EMT.1260 |  | HVAC Piping - Equip Tie In (Steam) / L8 - E. Mech Tower | 20d | 2026-03-25 | 2026-04-21 | P2.L8.EMT.1250, CX.B2.HYDR.1000 |  | 69d |  |
| P2.L8.EMT.1240 |  | Energize Elec Panels - Lock Doors and Limit Access / L8 - E. Mech Tower | 5d | 2026-04-15 | 2026-04-21 | P2.L8.EMT.1220, CX.B2.SWGR.1010, CX.B2.MVEE.1010, FRG.P2.L8.EMT.1050 |  | 79d |  |
| P2.L8.EMT.1230 |  | HVAC System Ready for Start Up / L8 - E. Mech Tower | 0d | 2026-04-21 | 2026-04-21 | P2.L8.EMT.1160 FF, P2.L8.EMT.1240, FRG.P2.L8.EMT.1050 |  | 79d |  |
| P2.L8.EMT.1270 |  | HVAC Piping - Equip Tie In (Humidification) / L8 - E. Mech Tower | 20d | 2026-04-22 | 2026-05-19 | P2.L8.EMT.1260, P2.L8.EMT.1280, CX.B2.HYDR.1000 |  | 69d |  |
|  | L9 | **L9 PENTHOUSE / BUILDOUT** |  | 2025-05-01 | 2026-08-21 |  |  |  |  |
|  | 1 | **CORE & SUPPORT SPACES / LEVEL 9 - Penthouse** |  | 2025-05-01 | 2026-08-21 |  |  |  |  |
|  | L81 | **ROUGH IN - Core & Support Spaces / Level 9 - Penthouse** |  | 2025-05-01 | 2026-05-22 |  |  |  |  |
|  | Z112 | **South / Level 9 - Penthouse** |  | 2025-05-01 | 2026-05-22 |  |  |  |  |
| P2.PH.S.1000 |  | Layout - All Trades / L9 PH / South | 5d | 2025-05-01 A | 2025-05-07 A | P2.PR.03.610, P2.MR/PS.03.610 | 100% |  |  |
| P2.PH.S.1010 |  | Framing - Top Track / L9 PH / South | 5d | 2025-05-01 A | 2025-05-08 A | P2.PH.S.1000 | 100% |  |  |
| P2.PH.S.1090 |  | Framing - Priority Walls & Door Frames / L9 PH / South | 10d | 2025-05-08 A | 2025-05-22 A | P2.PH.S.1010 | 100% |  |  |
| P2.PH.S.1020 |  | OH - Structural Supports (All Trades) / L9 PH / South | 5d | 2025-05-19 A | 2025-06-18 A | P2.PH.S.1000 | 100% |  |  |
| P2.PH.S.1030 |  | OH - MEPF - Hangers & Supports / L9 PH / South | 5d | 2025-05-19 A | 2025-06-27 A | P2.BIM.MRPH.30.120, P2.PH.S.1000 | 100% |  |  |
| P2.PH.S.1130 |  | Framing - Priority Walls - AHJ Inspections / L9 PH / South | 5d | 2025-05-22 A | 2025-05-22 A | P2.PH.S.1090 | 100% |  |  |
| P2.PH.S.1140 |  | Hang/Tape/Finish - Priority Walls / L9 PH / South | 10d | 2025-05-23 A | 2025-06-06 A | P2.PH.S.1130 | 100% |  |  |
| P2.PH.S.1040 |  | CMU - Drill_Epoxy Masonry Dowels / L9 PH / South | 10d | 2025-05-27 A | 2025-06-18 A | P2.PH.S.1000 | 100% |  |  |
| P2.PH.S.1050 |  | CMU - Lay Block / L9 PH / South | 10d | 2025-05-27 A | 2025-07-30 A | P2.PH.S.1040 | 100% |  |  |
| P2.PH.S.1160 |  | Spray/Seal/Firestop - Head of Wall - Priority Walls / L9 PH / South | 5d | 2025-06-06 A | 2025-06-13 A | P2.PH.S.1140 | 100% |  |  |
| P2.PH.S.1150 |  | Paint Prime & 1st Coat - Priority Walls / L9 PH / South | 10d | 2025-06-13 A | 2025-06-20 A | P2.PH.S.1160 SS | 100% |  |  |
| P2.PH.S.1310 |  | OH - Set & Connect Mech Equipment / L9 PH / South | 20d | 2025-06-16 A | 2025-07-21 A | P2.PH.S.1000, P2.PH.S.1020 | 100% |  |  |
| P2.PH.S.1200 |  | Firestop - Thru Wall - Priority Walls / L9 PH / South | 5d | 2025-06-20 A | 2025-06-30 A | P2.PH.S.1150 | 100% |  |  |
| P2.PH.S.1690 |  | OH - Elevator Priority Conduit / L9 PH / South | 5d | 2025-06-23 A | 2025-09-18 A | P2.PH.S.1030 | 100% |  |  |
| P2.PH.S.1170 |  | OH - Fire Suppression / L9 PH / South | 10d | 2025-06-30 A | 2025-07-11 A | P2.PH.S.1030, P2.PH.S.1150 | 100% |  |  |
| P2.PH.S.1060 |  | In Wall - Electrical - CMU / L9 PH / South | 10d | 2025-07-01 A | 2025-07-15 A | P2.PH.S.1050 SS, P2.PH.S.1200 | 100% |  |  |
| P2.PH.S.1070 |  | In Wall - Plumbing - CMU / L9 PH / South | 10d | 2025-07-01 A | 2025-07-15 A | P2.PH.S.1050 SS, P2.PH.S.1200 | 100% |  |  |
| P2.PH.S.1180 |  | OH - Plumbing Piping / L9 PH / South | 20d | 2025-07-16 A | 2025-08-28 A | P2.PH.S.1030, P2.PH.S.1150 | 100% |  |  |
| P2.PH.S.1100 |  | Paint - CMU Block Fill / L9 PH / South | 10d | 2025-08-04 A | 2025-08-21 A | P2.PH.S.1050 | 100% |  |  |
| P2.PH.S.1280 |  | OH - Insulate Plumbing / L9 PH / South | 10d | 2025-08-04 A | 2025-09-18 A | P2.PH.S.1240 | 100% |  |  |
| P2.PH.S.1240 |  | OH - Plumbing - Test / L9 PH / South | 10d | 2025-08-07 A | 2025-09-04 A | P2.PH.S.1180 | 100% |  |  |
| P2.PH.S.1220 |  | OH - HVAC Piping (West) / L9 PH / South | 15d | 2025-08-12 A | 2026-01-26 | P2.PH.S.1030, FRG.P2.PH.S.1670 | 20% | 50d |  |
| P2.PH.S.1190 |  | OH - Electrical - 480/277v Distribution / L9 PH / South | 10d | 2025-08-13 A | 2025-09-18 A | P2.PH.S.1030, P2.PH.S.1150 | 100% |  |  |
| P2.PH.S.1110 |  | CMU - Point & Patch / L9 PH / South | 10d | 2025-08-18 A | 2025-08-21 A | P2.PH.S.1100, P2.PH.S.1070, P2.PH.S.1060 | 100% |  |  |
| P2.PH.S.1230 |  | OH - Electrical - 208/120v Branch / L9 PH / South | 10d | 2025-08-18 A | 2025-12-02 | P2.PH.S.1190, P2.BIM.MRPH.40.140 | 80% | 85d |  |
| P2.PH.S.1680 |  | Pull Wire - Elevator Priority Conduit / L9 PH / South | 5d | 2025-08-25 A | 2025-08-29 A | P2.PH.S.1690 | 100% |  |  |
| P2.PH.S.1210 |  | OH - Hang Duct - HP Mains / L9 PH / South | 20d | 2025-09-17 A | 2025-12-01 | P2.PH.S.1030 | 95% | 54d |  |
| P2.PH.S.1120 |  | Paint Prime & 1st Coat - CMU / L9 PH / South | 10d | 2025-10-01 A | 2025-10-17 A | P2.PH.S.1110 SS | 100% |  |  |
| P2.PH.S.1400 |  | OH - Conduit - Low Volt - Security / L9 PH / South | 10d | 2025-10-01 A | 2025-12-10 | P2.PH.S.1200 | 20% | 89d |  |
| P2.PH.S.1420 |  | Framing - Balance of Framing & Door Frames / L9 PH / South | 10d | 2025-10-01 A | 2025-10-31 A | P2.PH.S.1170, P2.PH.S.1280, P2.PH.S.1380, P2.PH.S.1390, P2.PH.S.1400, P2.PH.S.1370 | 100% |  |  |
| P2.PH.S.1450 |  | In Wall - Backing/Blocking/Supports / L9 PH / South | 10d | 2025-10-01 A | 2025-10-31 A | P2.PH.S.1420 | 100% |  |  |
| P2.PH.S.1460 |  | AHJ Inspections - Wall Close In / L9 PH / South | 5d | 2025-10-01 A | 2025-10-21 A | P2.PH.S.1450 | 100% |  |  |
| P2.PH.S.1670 |  | Panelboards, Interconnect Wiring, and Remaining Room Buildout of All Systems (Elevator Group 1 & 3) / L9 PH / South | 5d | 2025-10-01 A | 2025-10-07 A | P2.PH.S.1680 | 100% |  |  |
| P2.PH.S.1300 |  | OH - Hang Duct - LP Branch / L9 PH / South | 10d | 2025-10-06 A | 2026-01-02 | P2.PH.S.1260 | 30% | 54d |  |
| P2.PH.S.1370 |  | OH - Conduit - Low Volt - BAS/Controls / L9 PH / South | 10d | 2025-10-06 A | 2025-11-18 A | P2.PH.S.1310 | 100% |  |  |
| P2.PH.S.1470 |  | Hang-Tape-Finish / L9 PH / South | 10d | 2025-10-22 A | 2025-11-28 A | P2.PH.S.1460 | 100% |  |  |
| FRG.P2.PH.S.1650 |  | HVAC Piping - Staging & Layout / L9 PH / South - FRAGNET | 15d | 2025-10-28 A | 2025-11-28 A | FRG.P2.PH.S.1640 | 100% |  |  |
| FRG.P2.PH.S.1640 |  | HVAC Piping Delivery / L9 PH / South - FRAGNET | 0d | 2025-11-13 A | 2025-11-13 A | P2.PH.S.1180 FF | 100% |  | finish on or after 2025-10-14 |
| FRG.P2.PH.S.1660 |  | HVAC Piping - Hanging Steel Racks (West) / L9 PH / South - FRAGNET | 15d | 2025-11-24 A | 2025-12-16 | FRG.P2.PH.S.1650 | 20% | 50d |  |
| P2.PH.S.1250 |  | Pull Wire - Electrical - 480/277v Distribution / L9 PH / South | 10d | 2025-12-01 | 2025-12-12 | P2.PH.S.1190 |  | 97d |  |
| P2.PH.S.1320 |  | OH - Electrical - Equip Tie In / L9 PH / South | 10d | 2025-12-01 | 2025-12-12 | P2.PH.S.1310 |  | 77d |  |

| ID | WBS | Task | Duration | Start | Finish | Predecessors | Complete | Total float | Constraint |
| --- | --- | --- | --- | --- | --- | --- | --- | --- | --- |
| P2.PH.S.1610 |  | Panels Ready to Energize - Lock Doors and Limit Access (Elevator Group 1 & 3) / L9 PH / South | 0d | 2025-12-01 | 2025-12-01 | BP1.262.3.100 FF, P2.PH.S.1670 FF, P2.PH.S.1680 FF |  | 256d |  |
| P2.PH.S.1260 |  | OH - DALT - HP Mains / L9 PH / South | 15d | 2025-12-02 | 2025-12-22 | P2.PH.S.1210 |  | 54d |  |
| P2.PH.S.1360 |  | Pull Wire - Electrical - 208/120v Branch & Equip / L9 PH / South | 20d | 2025-12-15 | 2026-01-13 | P2.PH.S.1230, P2.PH.S.1320 |  | 77d |  |
| FRG.P2.PH.S.1670 |  | HVAC Piping - Hanging Steel Racks (East) / L9 PH / South - FRAGNET | 15d | 2025-12-17 | 2026-01-08 | FRG.P2.PH.S.1660 |  | 50d |  |
| P2.PH.S.1290 |  | OH - Insulate HP Duct / L9 PH / South | 10d | 2025-12-23 | 2026-01-07 | P2.PH.S.1260 |  | 191d |  |
| P2.PH.S.1350 |  | OH - Insulate LP Duct / L9 PH / South | 10d | 2026-01-05 | 2026-01-16 | P2.PH.S.1300 |  | 54d |  |
| P2.PH.S.1380 |  | OH - Conduit - Low Volt - Fire Alarm / L9 PH / South | 10d | 2026-01-19 | 2026-01-30 | P2.PH.S.1310, P2.PH.S.1350 |  | 54d |  |
| P2.PH.S.1390 |  | OH - Conduit - Low Volt - Telecom / L9 PH / South | 10d | 2026-01-19 | 2026-01-30 | P2.PH.S.1350 |  | 54d |  |
| P2.PH.S.1560 |  | OH - HVAC Piping (East) / L9 PH / South | 15d | 2026-01-27 | 2026-02-16 | P2.PH.S.1220 |  | 50d |  |
| P2.PH.S.1480 |  | Spray/Seal/Firestop - Head of Wall / L9 PH / South | 10d | 2026-02-02 | 2026-02-13 | P2.PH.S.1120, P2.PH.S.1470 |  | 54d |  |
| P2.PH.S.1490 |  | Firestop - Thru Wall / L9 PH / South | 10d | 2026-02-02 | 2026-02-13 | P2.PH.S.1470 |  | 54d |  |
| P2.PH.S.1500 |  | Pull Wire - Low Volt - BAS/Controls / L9 PH / South | 10d | 2026-02-02 | 2026-02-13 | P2.PH.S.1470, P2.SUM.175 |  | 54d |  |
| P2.PH.S.1510 |  | Pull Wire - Low Volt - Fire Alarm / L9 PH / South | 10d | 2026-02-02 | 2026-02-13 | P2.PH.S.1470, P2.SUM.175 |  | 54d |  |
| P2.PH.S.1520 |  | Pull Wire - Low Volt - Telecom / L9 PH / South | 10d | 2026-02-02 | 2026-02-13 | P2.PH.S.1470, P2.SUM.175 |  | 54d |  |
| P2.PH.S.1530 |  | Pull Wire - Low Volt - Security / L9 PH / South | 10d | 2026-02-02 | 2026-02-13 | P2.PH.S.1470, P2.SUM.175 |  | 54d |  |
| P2.PH.S.1550 |  | Trades Inspect & Verify R/I Work Completed to Specs / L9 PH / South | 5d | 2026-02-16 | 2026-02-20 | P2.SUM.195, P2.PH.S.1360, P2.PH.S.1500, P2.PH.S.1510, P2.PH.S.1490, P2.PH.S.1480, P2.PH.S.1520, P2.PH.S.1530, P2.PH.S.1250, P2.PR.S.1150 |  | 54d |  |
| P2.PH.S.1270 |  | OH - HVAC Piping - Test / L9 PH / South | 15d | 2026-02-17 | 2026-03-09 | P2.PH.S.1560 |  | 50d |  |
| P2.PH.S.1330 |  | OH - HVAC Piping - Equip Tie In / L9 PH / South | 20d | 2026-03-10 | 2026-04-06 | P2.PH.S.1310, P2.PH.S.1270, CX.B2.HYDR.1000 |  | 50d |  |
| P2.PH.S.1340 |  | OH - Insulate HVAC Pipe / L9 PH / South | 10d | 2026-03-10 | 2026-03-23 | P2.PH.S.1290, P2.PH.S.1270 |  | 148d |  |
| P2.PH.S.1600 |  | Install - High Purity Water Equipment - Lab | 10d | 2026-05-11 | 2026-05-22 | BP1.226.2.150, P2.PH.S.1460 |  | 81d |  |
|  | Z1121 | **North / Level 9 - Penthouse** |  | 2025-05-01 | 2026-04-27 |  |  |  |  |
| P2.PH.N.1010 |  | Framing - Top Track / L9 PH / North | 5d | 2025-05-01 A | 2025-05-08 A | P2.L8.N.1010, P2.PH.N.1000 | 100% |  |  |
| P2.PH.N.1090 |  | Framing - Priority Walls & Door Frames / L9 PH / North | 10d | 2025-05-08 A | 2025-05-22 A | P2.PH.S.1090, P2.PH.N.1010 | 100% |  |  |
| P2.PH.N.1130 |  | Framing - Priority Walls - AHJ Inspections / L9 PH / North | 5d | 2025-05-22 A | 2025-05-22 A | P2.PH.N.1090 | 100% |  |  |
| P2.PH.N.1140 |  | Hang/Tape/Finish - Priority Walls / L9 PH / North | 10d | 2025-05-23 A | 2025-06-06 A | P2.PH.S.1140, P2.PH.N.1130 | 100% |  |  |
| P2.PH.N.1000 |  | Layout - All Trades / L9 PH / North | 5d | 2025-05-27 A | 2025-05-30 A | P2.PR.03.620, P2.BIM.MRPH.30.120, P2.MR/PS.03.630, P2.MR/PS.03.620 | 100% |  |  |
| P2.PH.N.1020 |  | OH - Structural Supports (All Trades) / L9 PH / North | 5d | 2025-06-01 A | 2025-06-18 A | P2.PH.N.1000 | 100% |  |  |
| P2.PH.N.1160 |  | Spray/Seal/Firestop - Head of Wall - Priority Walls / L9 PH / North | 5d | 2025-06-06 A | 2025-06-13 A | P2.PH.N.1140 | 100% |  |  |
| P2.PH.N.1180 |  | OH - Plumbing Piping / L9 PH / North | 15d | 2025-06-09 A | 2025-08-11 A | P2.PH.S.1180, P2.PH.N.1030, P2.PH.N.1150 | 100% |  |  |
| P2.PH.N.1150 |  | Paint Prime & 1st Coat - Priority Walls / L9 PH / North | 10d | 2025-06-13 A | 2025-06-20 A | P2.PH.N.1160 SS | 100% |  |  |
| P2.PH.N.1040 |  | CMU - Drill_Epoxy Masonry Dowels / L9 PH / North | 10d | 2025-06-18 A | 2025-06-25 A | P2.PH.S.1040, P2.PH.N.1000 | 100% |  |  |
| P2.PH.N.1060 |  | In Wall - Electrical - CMU / L9 PH / North | 10d | 2025-06-18 A | 2025-06-25 A | P2.PH.N.1050 SS | 100% |  |  |
| P2.PH.N.1070 |  | In Wall - Plumbing - CMU / L9 PH / North | 10d | 2025-06-18 A | 2025-06-25 A | P2.PH.N.1050 SS | 100% |  |  |
| P2.PH.N.1200 |  | Firestop - Thru Wall - Priority Walls / L9 PH / North | 5d | 2025-06-20 A | 2025-06-30 A | P2.PH.N.1170, P2.PH.N.1180 | 100% |  |  |
| P2.PH.N.1050 |  | CMU - Lay Block / L9 PH / North | 10d | 2025-06-23 A | 2025-08-21 A | P2.PH.S.1050, P2.PH.N.1040 | 100% |  |  |
| P2.PH.N.1310 |  | OH - Set & Connect Mech Equipment / L9 PH / North | 20d | 2025-06-23 A | 2025-06-23 A | P2.PH.N.1020, P2.PH.N.1000 | 100% |  |  |
| P2.PH.N.1170 |  | OH - Fire Suppression / L9 PH / North | 10d | 2025-06-30 A | 2025-07-25 A | P2.PH.N.1030 | 100% |  |  |
| P2.PH.N.1030 |  | OH - MEPF - Hangers & Supports / L9 PH / North | 10d | 2025-07-01 A | 2025-07-15 A | P2.PH.N.1000, P2.BIM.MRPH.30.120 | 100% |  |  |
| P2.PH.N.1280 |  | OH - Insulate Plumbing / L9 PH / North | 10d | 2025-08-04 A | 2025-09-18 A | P2.PH.N.1240 | 100% |  |  |
| P2.PH.N.1240 |  | OH - Plumbing - Test / L9 PH / North | 10d | 2025-08-11 A | 2025-08-28 A | P2.PH.N.1180 | 100% |  |  |
| P2.PH.N.1100 |  | Paint - CMU Block Fill / L9 PH / North | 10d | 2025-08-18 A | 2025-08-21 A | P2.PH.N.1050 | 100% |  |  |
| P2.PH.N.1190 |  | OH - Electrical - 480/277v Distribution / L9 PH / North | 10d | 2025-08-18 A | 2025-09-18 A | P2.PH.N.1030, P2.PH.N.1150 | 100% |  |  |
| P2.PH.N.1700 |  | OH - Elevator Priority Conduit / L9 PH / North | 5d | 2025-08-18 A | 2025-08-28 A | P2.PH.N.1030 | 100% |  |  |
| P2.PH.N.1110 |  | CMU - Point & Patch / L9 PH / North | 10d | 2025-08-25 A | 2025-08-28 A | P2.PH.N.1070, P2.PH.N.1060, P2.PH.N.1100 | 100% |  |  |
| P2.PH.N.1230 |  | OH - Electrical - 208/120v Branch / L9 PH / North | 10d | 2025-08-25 A | 2025-12-03 | P2.PH.N.1190, P2.BIM.MRPH.40.140 | 70% | 76d |  |
| P2.PH.N.1120 |  | Paint Prime & 1st Coat - CMU / L9 PH / North | 10d | 2025-09-01 A | 2025-10-17 A | P2.PH.N.1110 SS | 100% |  |  |
| P2.PH.N.1710 |  | Pull Wire - Elevator Priority Conduit / L9 PH / North | 5d | 2025-09-08 A | 2025-09-11 A | P2.PH.N.1700 | 100% |  |  |
| P2.PH.N.1370 |  | OH - Conduit - Low Volt - BAS/Controls / L9 PH / North | 10d | 2025-09-10 A | 2025-11-18 A | P2.PH.N.1310, P2.PH.N.1230 | 100% |  |  |
| P2.PH.N.1400 |  | OH - Conduit - Low Volt - Security / L9 PH / North | 10d | 2025-09-15 A | 2025-12-15 | P2.PH.N.1230 | 20% | 76d |  |
| P2.PH.N.1420 |  | Framing - Balance of Framing & Door Frames / L9 PH / North | 10d | 2025-10-01 A | 2025-10-31 A | P2.PH.N.1390, P2.PH.N.1400, P2.PH.N.1370, P2.PH.N.1380, P2.PH.N.1280 | 100% |  |  |
| P2.PH.N.1430 |  | In Wall - Plumbing - Framing / L9 PH / North | 10d | 2025-10-01 A | 2025-10-31 A | P2.PH.N.1420 | 100% |  |  |
| P2.PH.N.1440 |  | In Wall - Electrical - Framing / L9 PH / North | 10d | 2025-10-01 A | 2025-10-31 A | P2.PH.N.1230, P2.PH.N.1420 | 100% |  |  |
| P2.PH.N.1450 |  | In Wall - Backing/Blocking/Supports / L9 PH / North | 10d | 2025-10-01 A | 2025-10-31 A | P2.PH.N.1420 | 100% |  |  |
| P2.PH.N.1300 |  | OH - Hang Duct - LP Branch / L9 PH / North | 15d | 2025-10-13 A | 2025-12-24 | P2.PH.N.1200, P2.PH.N.1260 SS | 53% | 59d |  |
| P2.PH.N.1210 |  | OH - Hang Duct - HP Mains / L9 PH / North | 20d | 2025-10-21 A | 2025-12-15 | P2.PH.S.1210, P2.PH.N.1030 | 50% | 59d |  |
| P2.PH.N.1480 |  | Spray/Seal/Firestop - Head of Wall / L9 PH / North | 10d | 2025-11-01 A | 2025-11-17 A | P2.PH.N.1470, P2.PH.N.1120 | 100% |  |  |
| FRG.P2.PH.N.1610 |  | HVAC Piping Delivery / L9 PH / North - FRAGNET | 0d | 2025-11-17 A | 2025-11-17 A | P2.PH.N.1030 FF | 100% |  | finish on or after 2025-10-14 |
| FRG.P2.PH.N.1620 |  | HVAC Piping - Staging & Layout / L9 PH / North - FRAGNET | 10d | 2025-12-01 | 2025-12-12 | FRG.P2.PH.N.1610 |  | 52d |  |
| P2.PH.N.1250 |  | Pull Wire - Electrical - 480/277v Distribution / L9 PH / North | 10d | 2025-12-01 | 2025-12-12 | P2.PH.N.1190 |  | 141d |  |
| P2.PH.N.1660 |  | Panelboards, Interconnect Wiring, and Remaining Room Buildout of All Systems (Elevator Group 2) / L9 PH / North | 5d | 2025-12-01 | 2025-12-05 | P2.PH.N.1710 |  | 211d |  |
| P2.PH.N.1650 |  | Panels Ready to Energize - Lock Doors and Limit Access (Elevator Group 2) / L9 PH / North | 0d | 2025-12-12 | 2025-12-12 | BP1.262.3.100 FF, P2.PH.N.1660 FF, P2.PH.N.1250 FF, P2.PH.N.1710 FF |  | 206d |  |
| FRG.P2.PH.N.1630 |  | HVAC Piping - Hanging Steel Racks (West) / L9 PH / North - FRAGNET | 12d | 2025-12-15 | 2025-12-31 | FRG.P2.PH.N.1620 |  | 52d |  |
| P2.PH.N.1260 |  | OH - DALT - HP Mains / L9 PH / North | 5d | 2025-12-16 | 2025-12-22 | P2.PH.N.1210 |  | 59d |  |
| P2.PH.N.1290 |  | OH - Insulate HP Duct / L9 PH / North | 10d | 2025-12-23 | 2026-01-07 | P2.PH.N.1260 |  | 115d |  |
| P2.PH.N.1350 |  | OH - Insulate LP Duct / L9 PH / North | 10d | 2025-12-26 | 2026-01-09 | P2.PH.N.1300 |  | 123d |  |
| P2.PH.N.1380 |  | OH - Conduit - Low Volt - Fire Alarm / L9 PH / North | 10d | 2025-12-26 | 2026-01-09 | P2.PH.N.1310, P2.PH.N.1300 |  | 59d |  |
| P2.PH.N.1390 |  | OH - Conduit - Low Volt - Telecom / L9 PH / North | 10d | 2025-12-26 | 2026-01-09 | P2.PH.N.1300 |  | 59d |  |
| FRG.P2.PH.N.1680 |  | HVAC Piping - Hanging Steel Racks (East) / L9 PH / North - FRAGNET | 12d | 2026-01-02 | 2026-01-19 | FRG.P2.PH.N.1630 |  | 52d |  |
| P2.PH.N.1460 |  | AHJ Inspections - Wall Close In / L9 PH / North | 5d | 2026-01-12 | 2026-01-16 | P2.PH.N.1440, P2.PH.N.1450, P2.PH.N.1430 |  | 59d |  |
| P2.PH.N.1470 |  | Hang-Tape-Finish / L9 PH / North | 10d | 2026-01-19 | 2026-01-30 | P2.SUM.175, P2.PH.N.1460 |  | 59d |  |

| ID | WBS | Task | Duration | Start | Finish | Predecessors | Complete | Total float |
| --- | --- | --- | --- | --- | --- | --- | --- | --- |
| P2.PH.N.1220 |  | OH - HVAC Piping (West) / L9 PH / North | 20d | 2026-01-20 | 2026-02-16 | P2.PH.N.1030, FRG.P2.PH.N.1680 |  | 52d |
| P2.PH.N.1330 |  | OH - HVAC Piping - Equip Tie In / L9 PH / North | 20d | 2026-01-28 | 2026-02-24 | P2.PH.N.1310, CX.B2.HYDR.1000 |  | 61d |
| P2.PH.N.1490 |  | Firestop - Thru Wall / L9 PH / North | 10d | 2026-02-02 | 2026-02-13 | P2.PH.N.1470 |  | 98d |
| P2.PH.N.1500 |  | Pull Wire - Low Volt - BAS/Controls / L9 PH / North | 10d | 2026-02-02 | 2026-02-13 | P2.PH.N.1470 |  | 59d |
| P2.PH.N.1510 |  | Pull Wire - Low Volt - Fire Alarm / L9 PH / North | 10d | 2026-02-02 | 2026-02-13 | P2.PH.N.1470 |  | 98d |
| P2.PH.N.1520 |  | Pull Wire - Low Volt - Telecom / L9 PH / North | 10d | 2026-02-02 | 2026-02-13 | P2.PH.N.1470 |  | 98d |
| P2.PH.N.1530 |  | Pull Wire - Low Volt - Security / L9 PH / North | 10d | 2026-02-02 | 2026-02-13 | P2.PH.N.1470 |  | 98d |
| P2.PH.N.1560 |  | OH - HVAC Piping (East) / L9 PH / North | 20d | 2026-02-17 | 2026-03-16 | P2.PH.N.1220 |  | 52d |
| P2.PH.N.1320 |  | OH - Electrical - Equip Tie In / L9 PH / North | 10d | 2026-02-25 | 2026-03-10 | P2.PH.N.1310, P2.PH.N.1230, P2.PH.N.1330 |  | 61d |
| P2.PH.N.1360 |  | Pull Wire - Electrical - 208/120v Branch & Equip / L9 PH / North | 20d | 2026-03-11 | 2026-04-07 | P2.PH.N.1230, P2.PH.N.1440, P2.PH.N.1320 |  | 61d |
| P2.PH.N.1270 |  | OH - HVAC Piping - Test / L9 PH / North | 15d | 2026-03-17 | 2026-04-06 | P2.PH.N.1560 |  | 52d |
| P2.PH.N.1340 |  | OH - Insulate HVAC Pipe / L9 PH / North | 10d | 2026-04-07 | 2026-04-20 | P2.PH.N.1290, P2.PH.N.1270 |  | 52d |
| P2.PH.N.1550 |  | Trades Inspect & Verify R/I Work Completed to Specs / L9 PH / North | 5d | 2026-04-21 | 2026-04-27 | P2.PH.N.1480, P2.PH.N.1490, P2.PH.N.1530, P2.PH.N.1250, P2.PH.N.1360, P2.PH.N.1500, P2.PH.N.1510, P2.PH.N.1520, P2.PR.N.1150, P2.PH.N.1340, P2.PH.N.1350 |  | 52d |
|  | 1 | **ROUGH IN & FINISHES / Misc. Spaces 5959, 5930, 5940 (Elevator Group 1) / Level 9 - Penthouse** |  | 2025-06-09 | 2026-01-06 |  |  |  |
| P2.PH.EMR.1.1000 |  | CMU - Lay Block / L9 / EMR.1 | 3d | 2025-06-09 A | 2025-06-27 A | P2.10.EMR.1.1160 | 100% |  |
| P2.10.EMR.1.1160 |  | CMU - Drill_Epoxy Masonry Dowels / L9 / EMR.1 | 3d | 2025-06-18 A | 2025-06-18 A | P2.10.EMR.1.1150, P2.PH.S.1040, P2.FAC.2.Z1.180 | 100% |  |
| P2.10.EMR.1.1150 |  | Layout / L9 / EMR.1 | 5d | 2025-07-01 A | 2025-07-08 A | P2.PH.S.1000, P2.PH.S.1020, P2.PR.03.610, P2.FAC.2.Z1.180 | 100% |  |
| P2.PH.EMR.1.1210 |  | OH - MEPF - Hangers & Supports / L9 / EMR.1 | 5d | 2025-08-18 A | 2025-08-22 A | P2.10.EMR.1.1150 | 100% |  |
| P2.PH.EMR.1.1220 |  | OH - Hang Duct / L9 / EMR.1 | 3d | 2025-09-01 A | 2025-09-03 A | P2.PH.EMR.1.1210, P2.PH.EMR.1.1290 | 100% |  |
| P2.PH.EMR.1.1290 |  | OH - Fire Suppression / L9 / EMR.1 | 3d | 2025-09-02 A | 2025-09-05 A | P2.PH.EMR.1.1210 | 100% |  |
| P2.PH.EMR.1.1250 |  | OH - Insulate Duct / L9 / EMR.1 | 3d | 2025-09-10 A | 2025-09-12 A | P2.PH.EMR.1.1240, P2.L11.5-9.140 | 100% |  |
| P2.PH.EMR.1.1030 |  | CMU - Point & Patch / L9 / EMR.1 | 3d | 2025-09-22 A | 2025-09-25 A | P2.PH.EMR.1.1040 | 100% |  |
| P2.PH.EMR.1.1060 |  | OH - Electrical Conduit / L9 / EMR.1 | 3d | 2025-10-01 A | 2025-10-03 A | P2.PH.EMR.1.1210, P2.PH.EMR.1.1220 | 100% |  |
| P2.PH.EMR.1.1010 |  | In Wall - MEP Rough In / L9 / EMR.1 | 3d | 2025-11-03 A | 2025-11-04 A | P2.PH.EMR.1.1000, P2.PH.EMR.1.1250, P2.PH.EMR.1.1230, P2.PH.EMR.1.1220, P2.PH.EMR.1.1060, P2.PH.EMR.1.1240 | 100% |  |
| P2.PH.EMR.1.1230 |  | OH - HVAC Piping / L9 PH / North | 3d | 2025-11-03 A | 2025-11-05 A | P2.PH.EMR.1.1210, P2.PH.EMR.1.1060 | 100% |  |
| P2.PH.EMR.1.1240 |  | OH - HVAC Piping - Test / L9 / EMR.1 | 3d | 2025-11-06 A | 2025-11-10 A | P2.PH.EMR.1.1230 | 100% |  |
| P2.PH.EMR.1.1020 |  | Inspections - Wall / L9 / EMR.1 | 3d | 2025-11-10 A | 2025-11-14 A | P2.PH.EMR.1.1030 | 100% |  |
| P2.PH.EMR.1.1040 |  | Paint Prime & 1st Coat / L9 / EMR.1 | 3d | 2025-12-01 | 2025-12-03 | P2.PH.EMR.1.1010, P2.L11.5-9.140 |  | 196d |
| P2.PH.EMR.1.1100 |  | Paint - Finish Coat / L9 / EMR.1 | 3d | 2025-12-04 | 2025-12-08 | P2.PH.EMR.1.1030, P2.PH.EMR.1.1020 |  | 196d |
| P2.PH.EMR.1.1260 |  | OH - Insulate HVAC Pipe / L9 / EMR.1 | 3d | 2025-12-04 | 2025-12-08 | P2.PH.EMR.1.1040, P2.PH.EMR.1.1030, P2.L11.5-9.140 |  | 196d |
| P2.PH.EMR.1.1270 |  | Pull Wire - Electrical / L9 / EMR.1 | 3d | 2025-12-09 | 2025-12-11 | P2.PH.EMR.1.1060, P2.PH.EMR.1.1040, P2.PH.EMR.1.1260, P2.PH.EMR.1.1100 |  | 196d |
| P2.PH.EMR.1.1110 |  | Trim All MEPF Finishes / L9 / EMR.1 | 5d | 2025-12-12 | 2025-12-18 | P2.PH.EMR.1.1100, P2.PH.EMR.1.1270 |  | 196d |
| P2.PH.EMR.1.1120 |  | Flooring / L9 / EMR.1 | 3d | 2025-12-19 | 2025-12-23 | P2.PH.EMR.1.1110 |  | 196d |
| P2.PH.EMR.1.1130 |  | Doors & Hardware / L9 / EMR.1 | 3d | 2025-12-24 | 2025-12-29 | P2.PH.EMR.1.1120 |  | 196d |
| P2.PH.EMR.1.1280 |  | Trades Inspect & Verify Work Completed to Specs / L9 / EMR.1 | 5d | 2025-12-30 | 2026-01-06 | P2.PH.EMR.1.1110, P2.PH.EMR.1.1130 |  | 196d |
|  | 3 | **ROUGH IN & FINISHES / Elevator Machine Room (Elevator Group 2) 2803 / Level 9 - Penthouse** |  | 2025-06-18 | 2026-01-09 |  |  |  |
| P2.PH.EMR.2.1030 |  | CMU - Drill_Epoxy Masonry Dowels / L9 / EMR.2 | 3d | 2025-06-18 A | 2025-06-18 A | P2.PH.EMR.2.1000, P2.PH.N.1040, P2.FAC.2.Z1.190 | 100% |  |
| P2.PH.EMR.2.1000 |  | Layout / L9 / EMR.2 | 3d | 2025-07-01 A | 2025-07-03 A | P2.PR.03.620, P2.PH.N.1000, P2.PH.N.1020, P2.FAC.2.Z1.190 | 100% |  |
| P2.PH.EMR.2.1050 |  | CMU - Lay Block / L9 / EMR.2 | 3d | 2025-07-17 A | 2025-07-31 A | P2.PH.EMR.2.1030 | 100% |  |
| P2.PH.EMR.2.1040 |  | OH - Hang Duct / L9 / EMR.2 | 3d | 2025-09-01 A | 2025-09-03 A | P2.PH.EMR.2.1020 | 100% |  |
| P2.PH.EMR.2.1120 |  | CMU - Point & Patch / L9 / EMR.2 | 3d | 2025-09-01 A | 2025-09-05 A | P2.PH.EMR.2.1110 | 100% |  |
| P2.PH.EMR.2.1090 |  | OH - Insulate Duct / L9 / EMR.2 | 3d | 2025-09-04 A | 2025-09-05 A | P2.PH.EMR.2.1080, P2.MR.2-8.140 | 100% |  |
| P2.PH.EMR.2.1110 |  | Paint Prime & 1st Coat / L9 / EMR.2 | 3d | 2025-09-08 A | 2025-09-12 A | P2.PH.EMR.2.1100, P2.MR.2-8.140 | 100% |  |
| P2.PH.EMR.2.1010 |  | OH - MEPF - Hangers & Supports / L9 / EMR.2 | 5d | 2025-10-01 A | 2025-10-07 A | P2.PH.EMR.2.1000 | 100% |  |
| P2.PH.EMR.2.1060 |  | OH - Electrical Conduit / L9 / EMR.2 | 3d | 2025-10-06 A | 2025-10-10 A | P2.PH.EMR.2.1010, P2.PH.EMR.2.1040 | 100% |  |
| P2.PH.EMR.2.1020 |  | OH - Fire Suppression / L9 / EMR.2 | 3d | 2025-10-08 A | 2025-10-10 A | P2.PH.EMR.2.1010 | 100% |  |
| P2.PH.EMR.2.1100 |  | In Wall - MEP Rough In / L9 / EMR.2 | 3d | 2025-10-20 A | 2025-10-23 A | P2.PH.EMR.2.1090, P2.PH.EMR.2.1070, P2.PH.EMR.2.1040, P2.PH.EMR.2.1060, P2.PH.EMR.2.1080, P2.PH.EMR.2.1050, P2.MR.2-8.140 | 100% |  |
| P2.PH.EMR.2.1130 |  | Inspection - Wall / L9 / EMR.2 | 3d | 2025-11-11 A | 2025-11-13 A | P2.PH.EMR.2.1120 | 100% |  |
| P2.PH.EMR.2.1070 |  | OH - HVAC Piping / L9 / EMR.2 | 3d | 2025-12-01 | 2025-12-03 | P2.PH.EMR.2.1010, P2.PH.EMR.2.1060 |  | 193d |
| P2.PH.EMR.2.1080 |  | OH - HVAC Piping - Test / L9 / EMR.2 | 3d | 2025-12-04 | 2025-12-08 | P2.PH.EMR.2.1070 |  | 193d |
| P2.PH.EMR.2.1140 |  | OH - Insulate HVAC Pipe / L9 / EMR.2 | 3d | 2025-12-09 | 2025-12-11 | P2.PH.EMR.2.1110, P2.PH.EMR.2.1120, P2.MR.2-8.140 |  | 193d |
| P2.PH.EMR.2.1150 |  | Paint - Finish Coat / L9 / EMR.2 | 3d | 2025-12-09 | 2025-12-11 | P2.PH.EMR.2.1120, P2.PH.EMR.2.1130 |  | 193d |
| P2.PH.EMR.2.1160 |  | Pull Wire - Electrical / L9 / EMR.2 | 3d | 2025-12-12 | 2025-12-16 | P2.PH.EMR.2.1060, P2.PH.EMR.2.1110, P2.PH.EMR.2.1140, P2.PH.EMR.2.1150 |  | 193d |
| P2.PH.EMR.2.1170 |  | Trim All MEPF Finishes / L9 / EMR.2 | 5d | 2025-12-17 | 2025-12-23 | P2.PH.EMR.2.1150, P2.PH.EMR.2.1160 |  | 193d |
| P2.PH.EMR.2.1180 |  | Flooring / L9 / EMR.2 | 3d | 2025-12-24 | 2025-12-29 | P2.PH.EMR.2.1170 |  | 193d |
| P2.PH.EMR.2.1190 |  | Doors & Hardware / L9 / EMR.2 | 3d | 2025-12-30 | 2026-01-02 | P2.PH.EMR.2.1180 |  | 193d |
| P2.PH.EMR.2.1200 |  | Trades Inspect & Verify Work Completed to Specs / L9 / EMR.2 | 5d | 2026-01-05 | 2026-01-09 | P2.PH.EMR.2.1170, P2.PH.EMR.2.1190 |  | 193d |
|  | 2 | **ROUGH IN & FINISHES / Elevator Lobby 3850 (Elevator Group 3) / Level 9 - Penthouse** |  | 2025-06-30 | 2026-01-30 |  |  |  |
| P2.PH.EL.3.1030 |  | OH - Fire Suppression / L9 / Elevator Lobby (Group 3) | 3d | 2025-06-30 A | 2025-07-16 A | P2.PH.EL.3.1010 | 100% |  |
| P2.PH.EL.3.1000 |  | Layout / L9 / Elevator Lobby (Group 3) | 3d | 2025-07-07 A | 2025-07-10 A | P2.PH.S.1000, P2.PH.S.1030, P2.PR.03.610 | 100% |  |
| P2.PH.EL.3.1010 |  | OH - MEPF - Hangers & Supports / L9 / Elevator Lobby (Group 3) | 5d | 2025-07-08 A | 2025-07-14 A | P2.PH.EL.3.1000 | 100% |  |
| P2.PH.EL.3.1040 |  | OH - Hang Duct / L9 / Elevator Lobby (Group 3) | 3d | 2025-09-01 A | 2025-09-03 A | P2.PH.EL.3.1030, P2.PH.EL.3.1010 | 100% |  |
| P2.PH.EL.3.1080 |  | OH - Insulate Duct / L9 / Elevator Lobby (Group 3) | 3d | 2025-09-03 A | 2025-09-05 A | P2.PH.EL.3.1070, P2.PH.EL.3.1010, P2.FAC.1.F.160, P2.L11.5-9.140 | 100% |  |
| P2.PH.EL.3.1020 |  | Framing Walls / L9 / Elevator Lobby (Group 3) | 3d | 2025-11-03 A | 2025-11-05 A | P2.PH.EL.3.1010 | 100% |  |
| P2.PH.EL.3.1050 |  | OH - Electrical Conduit / L9 / Elevator Lobby (Group 3) | 3d | 2025-12-01 | 2025-12-03 | P2.PH.EL.3.1040, P2.PH.EL.3.1010 |  | 178d |
| P2.PH.EL.3.1060 |  | OH - HVAC Piping / L9 / Elevator Lobby (Group 3) | 3d | 2025-12-04 | 2025-12-08 | P2.PH.EL.3.1050, P2.PH.EL.3.1010 |  | 178d |
| P2.PH.EL.3.1070 |  | OH - HVAC Piping - Test / L9 / Elevator Lobby (Group 3) | 3d | 2025-12-09 | 2025-12-11 | P2.PH.EL.3.1060, P2.PH.EL.3.1010 |  | 178d |
| P2.PH.EL.3.1090 |  | In Wall Rough In / L9 / Elevator Lobby (Group 3) | 3d | 2025-12-12 | 2025-12-16 | P2.PH.EL.3.1020, P2.PH.EL.3.1080, P2.PH.EL.3.1060, P2.PH.EL.3.1050, P2.PH.EL.3.1040, P2.PH.EL.3.1030 |  | 178d |
| P2.PH.EL.3.1100 |  | In Wall - Blocking / L9 / Elevator Lobby (Group 3) | 3d | 2025-12-17 | 2025-12-19 | P2.PH.EL.3.1090 |  | 178d |
| P2.PH.EL.3.1110 |  | Inspections - Wall Close In / L9 / Elevator Lobby (Group 3) | 3d | 2025-12-22 | 2025-12-24 | P2.PH.EL.3.1090, P2.PH.EL.3.1100 |  | 178d |

| ID | WBS | Task | Duration | Start | Finish | Predecessors | Complete | Total float |
| --- | --- | --- | --- | --- | --- | --- | --- | --- |
| P2.PH.EL.3.1120 |  | Hang-Tape-Finish / L9 / Elevator Lobby (Group 3) | 5d | 2025-12-26 | 2026-01-02 | P2.PH.EL.3.1110, P2.FAC.1.F.160, P2.L11.5-9.140 |  | 178d |
| P2.PH.EL.3.1130 |  | Paint Prime & 1st Coat / L9 / Elevator Lobby (Group 3) | 3d | 2026-01-05 | 2026-01-07 | P2.PH.EL.3.1120, P2.FAC.1.F.160, P2.L11.5-9.140 |  | 178d |
| P2.PH.EL.3.1140 |  | Paint - Finish Coat / L9 / Elevator Lobby (Group 3) | 3d | 2026-01-08 | 2026-01-12 | P2.PH.EL.3.1130 |  | 178d |
| P2.PH.EL.3.1150 |  | Trim All MEPF Finishes / L9 / Elevator Lobby (Group 3) | 3d | 2026-01-13 | 2026-01-15 | P2.PH.EL.3.1140 |  | 178d |
| P2.PH.EL.3.1160 |  | Flooring / L9 / Elevator Lobby (Group 3) | 3d | 2026-01-16 | 2026-01-20 | P2.PH.EL.3.1150 |  | 178d |
| P2.PH.EL.3.1170 |  | Doors & Hardware / L9 / Elevator Lobby (Group 3) | 3d | 2026-01-21 | 2026-01-23 | P2.PH.EL.3.1160 |  | 178d |
| P2.PH.EL.3.1180 |  | Trades Inspect & Verify Work Completed to Specs / L9 / EMR.2 | 5d | 2026-01-26 | 2026-01-30 | P2.PH.EL.3.1150, P2.PH.EL.3.1160, P2.PH.EL.3.1170 |  | 178d |
|  | PHF | **FINISHES - Penthouse / Level 9** |  | 2026-02-16 | 2026-08-21 |  |  |  |
|  | Z1 | **Mechanical 9-3925 / 9-2855 / Level 9 - Penthouse** |  | 2026-02-16 | 2026-08-21 |  |  |  |
| P2.L9.F.1200 |  | Floor Prep - Epoxy Floors / L9 PH | 7d | 2026-02-16 | 2026-02-24 | P2.L8.SMT.1250, P2.L8.EMT.1280, P2.PH.S.1310, P2.PH.N.1310 |  | 148d |
| P2.L9.F.1210 |  | Flooring - Epoxy Floors / L9 PH | 3d | 2026-02-25 | 2026-02-27 | P2.L9.F.1200 |  | 148d |
| P2.L9.F.1230 |  | Floor Base / L9 PH | 2d | 2026-03-02 | 2026-03-03 | P2.L9.F.1210 |  | 148d |
| P2.L9.F.1250 |  | Remaining Equipment Post Flooring / L9 PH | 3d | 2026-03-04 | 2026-03-06 | P2.L9.F.1230 |  | 213d |
| P2.L9.F.1260 |  | Remaining MEP Hook-Ups / L9 PH | 5d | 2026-03-09 | 2026-03-13 | P2.L9.F.1250 |  | 213d |
| P2.L9.F.1280 |  | Rough Clean / L9 PH | 5d | 2026-03-16 | 2026-03-20 | P2.L9.F.1260 |  | 213d |
| P2.L9.F.1000 |  | Paint Walls / L9 PH | 3d | 2026-04-28 | 2026-04-30 | P2.PH.S.1550, P2.PH.N.1550, P2.L9.F.1230 |  | 109d |
| P2.L9.F.1010 |  | Waterproof Ceramic Tile / L9 PH | 5d | 2026-05-01 | 2026-05-07 | P2.L9.F.1000 |  | 157d |
| P2.L9.F.1020 |  | T-Grid / L9 PH | 10d | 2026-05-01 | 2026-05-14 | P2.L9.F.1000 |  | 110d |
| P2.L9.F.1030 |  | Ceramic Tile / L9 PH | 5d | 2026-05-08 | 2026-05-14 | P2.L9.F.1010 |  | 157d |
| P2.L9.F.1040 |  | Diffusers in T-Grid / L9 PH | 5d | 2026-05-15 | 2026-05-21 | P2.L9.F.1020 |  | 110d |
| P2.L9.F.1050 |  | Lights & Devices / L9 PH | 10d | 2026-05-22 | 2026-06-05 | P2.L9.F.1040 |  | 110d |
| P2.L9.F.1060 |  | Sprinkler Heads / L9 PH | 4d | 2026-06-08 | 2026-06-11 | P2.L9.F.1050 |  | 118d |
| P2.L9.F.1070 |  | Trim Fire Alarm / L9 PH | 2d | 2026-06-08 | 2026-06-09 | P2.L9.F.1050 |  | 110d |
| P2.L9.F.1080 |  | Trim Security/ LV / L9 PH | 2d | 2026-06-10 | 2026-06-11 | P2.L9.F.1070 |  | 126d |
| P2.L9.F.1090 |  | Doors & Hardware / L9 PH | 10d | 2026-06-10 | 2026-06-23 | P2.L9.F.1070 |  | 110d |
| P2.L9.F.1110 |  | OH Ceiling Signoff / L9 PH | 14d | 2026-06-12 | 2026-07-01 | P2.L9.F.1080 |  | 126d |
| P2.L9.F.1100 |  | Casework/ Equipment / L9 PH | 5d | 2026-06-24 | 2026-06-30 | P2.L9.F.1090, P2.L9.F.1060 |  | 110d |
| P2.L9.F.1130 |  | Plumbing Fixtures & Drinking Fountains / L9 PH | 7d | 2026-07-01 | 2026-07-10 | P2.L9.F.1030, P2.L9.F.1100 |  | 125d |
| P2.L9.F.1140 |  | Trim T-Stats / L9 PH | 2d | 2026-07-01 | 2026-07-02 | P2.L9.F.1080, P2.L9.F.1100 |  | 136d |
| P2.L9.F.1150 |  | Trim Electrical / L9 PH | 5d | 2026-07-01 | 2026-07-08 | P2.L9.F.1140 SS |  | 136d |
| P2.L9.F.1160 |  | Trim Telephone/ Data / L9 PH | 3d | 2026-07-01 | 2026-07-06 | P2.L9.F.1150 SS |  | 136d |
| P2.L9.F.1170 |  | Trim Med Gas / L9 PH | 5d | 2026-07-01 | 2026-07-08 | P2.L9.F.1100 |  | 110d |
| P2.L9.F.1190 |  | Drop Ceiling Tile / L9 PH | 5d | 2026-07-02 | 2026-07-09 | P2.L9.F.1110 |  | 126d |
| P2.L9.F.1180 |  | Building Specialities / L9 PH | 3d | 2026-07-07 | 2026-07-09 | P2.L9.F.1160 |  | 136d |
| P2.L9.F.1220 |  | Work Completion List - Finishes / L9 PH | 7d | 2026-07-13 | 2026-07-21 | P2.L9.F.1170, P2.L9.F.1190, P2.L9.F.1130 |  | 125d |
| P2.L9.F.1240 |  | Interior Building Signage / L9 PH | 3d | 2026-07-22 | 2026-07-24 | P2.L9.F.1220 |  | 125d |
| P2.L9.F.1290 |  | Prepare Punchlist / L9 PH | 3d | 2026-07-27 | 2026-07-29 | P2.L9.F.1260 SS, P2.L9.F.1280, P2.L9.F.1220, P2.L9.F.1240, P2.L9.F.1180 |  | 125d |
| P2.L9.F.1300 |  | Correct Punchlist / L9 PH | 14d | 2026-07-30 | 2026-08-18 | P2.L9.F.1290, P2.L9.F.1260 SS |  | 125d |
| P2.L9.F.1310 |  | Final Clean / L9 PH | 3d | 2026-08-19 | 2026-08-21 | P2.SUM.215, P2.L9.F.1300 |  | 125d |
|  | L10 | **L10 PENTHOUSE ROOF - ROUGH IN & FINISHES** |  | 2025-08-04 | 2026-01-27 |  |  |  |
|  | 1 | **ROUGH IN & FINISHES / Level 10 - Vestibule & Storage** |  | 2025-08-04 | 2026-01-27 |  |  |  |
| P2.10.VES.1.1030 |  | OH - Fire Suppression / L10 / Vestibule (Elevator Group 1) | 3d | 2025-08-04 A | 2025-08-07 A | P2.10.VES.1.1010 | 100% |  |
| P2.10.VES.1.1000 |  | Layout / L10 / Vestibule (Elevator Group 1) | 3d | 2025-08-11 A | 2025-08-14 A | P2.EMRR.03.610, P2.FAC.2.Z1.180, P2.10.EMR.1.1150 | 100% |  |
| P2.10.VES.1.1010 |  | OH - MEPF - Hangers & Supports / L10 / Vestibule (Elevator Group 1) | 5d | 2025-09-01 A | 2025-09-04 A | P2.10.VES.1.1000 | 100% |  |
| P2.10.VES.1.1040 |  | OH - Hang Duct / L10 / Vestibule (Elevator Group 1) | 3d | 2025-09-05 A | 2025-09-09 A | P2.10.VES.1.1030, P2.10.VES.1.1010 | 100% |  |
| P2.10.VES.1.1020 |  | Framing Walls / L9 / L10 / Vestibule (Elevator Group 1) | 3d | 2025-09-08 A | 2025-09-10 A | P2.10.VES.1.1010 | 100% |  |
| P2.10.VES.1.1080 |  | OH - Insulate Duct / L10 / Vestibule (Elevator Group 1) | 3d | 2025-09-08 A | 2025-09-11 A | P2.10.VES.1.1010, P2.L11.5-9.140 | 100% |  |
| P2.10.VES.1.1050 |  | OH - Electrical Conduit / L10 / Vestibule (Elevator Group 1) | 3d | 2025-12-01 | 2025-12-03 | P2.10.VES.1.1040, P2.10.VES.1.1010 |  | 181d |
| P2.10.VES.1.1060 |  | OH - HVAC Piping / L10 / Vestibule (Elevator Group 1) | 3d | 2025-12-04 | 2025-12-08 | P2.10.VES.1.1050, P2.10.VES.1.1010 |  | 181d |
| P2.10.VES.1.1070 |  | OH - HVAC Piping - Test / L10 / Vestibule (Elevator Group 1) | 3d | 2025-12-09 | 2025-12-11 | P2.10.VES.1.1060, P2.10.VES.1.1010 |  | 184d |
| P2.10.VES.1.1090 |  | In Wall Rough In / L10 / Vestibule (Elevator Group 1) | 3d | 2025-12-09 | 2025-12-11 | P2.10.VES.1.1020, P2.10.VES.1.1080, P2.10.VES.1.1060, P2.10.VES.1.1050, P2.10.VES.1.1040, P2.10.VES.1.1030, P2.L11.5-9.140 |  | 181d |
| P2.10.VES.1.1100 |  | In Wall - Blocking / L10 / Vestibule (Elevator Group 1) | 3d | 2025-12-12 | 2025-12-16 | P2.10.VES.1.1090 |  | 181d |
| P2.10.VES.1.1110 |  | Inspections - Wall Close In / L10 / Vestibule (Elevator Group 1) | 3d | 2025-12-17 | 2025-12-19 | P2.10.VES.1.1090, P2.10.VES.1.1100, P2.10.VES.1.1070 |  | 181d |
| P2.10.VES.1.1120 |  | Hang-Tape-Finish / L10 / Vestibule (Elevator Group 1) | 5d | 2025-12-22 | 2025-12-29 | P2.10.VES.1.1110, P2.L11.5-9.140 |  | 181d |
| P2.10.VES.1.1130 |  | Paint Prime & 1st Coat / L10 / Vestibule (Elevator Group 1) | 3d | 2025-12-30 | 2026-01-02 | P2.10.VES.1.1120 |  | 181d |
| P2.10.VES.1.1140 |  | Paint - Finish Coat / L10 / Vestibule (Elevator Group 1) | 3d | 2026-01-05 | 2026-01-07 | P2.10.VES.1.1130 |  | 181d |
| P2.10.VES.1.1150 |  | Trim All MEPF Finishes / L10 / Vestibule (Elevator Group 1) | 3d | 2026-01-08 | 2026-01-12 | P2.10.VES.1.1140 |  | 181d |
| P2.10.VES.1.1160 |  | Flooring / L9 / L10 / Vestibule (Elevator Group 1) | 3d | 2026-01-13 | 2026-01-15 | P2.10.VES.1.1150 |  | 181d |
| P2.10.VES.1.1170 |  | Doors & Hardware / L10 / Vestibule (Elevator Group 1) | 3d | 2026-01-16 | 2026-01-20 | P2.10.VES.1.1160 |  | 181d |
| P2.10.VES.1.1180 |  | Trades Inspect & Verify Work Completed to Specs / L10 / Vestibule (Elevator Group 1) | 5d | 2026-01-21 | 2026-01-27 | P2.10.VES.1.1150, P2.10.VES.1.1160, P2.10.VES.1.1170 |  | 181d |
|  | PHRF | **ROUGH IN & FINISHES / Level 10 - Group 3 - Elevator Lobby** |  | 2025-09-01 | 2026-01-27 |  |  |  |
| P2.10.EL.3.1000 |  | Layout / L10 / Elevator Lobby (Group 3) | 3d | 2025-09-01 A | 2025-09-02 A | P2.10.VES.1.1000 | 100% |  |
| P2.10.EL.3.1010 |  | OH - MEPF - Hangers & Supports / L10 / Elevator Lobby (Group 3) | 5d | 2025-09-02 A | 2025-09-03 A | P2.10.EL.3.1000 | 100% |  |
| P2.10.EL.3.1040 |  | OH - Hang Duct / L10 / Elevator Lobby (Group 3) | 3d | 2025-09-03 A | 2025-09-05 A | P2.10.EL.3.1010 | 100% |  |
| P2.10.EL.3.1080 |  | OH - Insulate Duct / L10 / Elevator Lobby (Group 3) | 3d | 2025-09-08 A | 2025-09-10 A | P2.10.EL.3.1040 | 100% |  |
| P2.10.EL.3.1020 |  | Framing Walls / L9 / L10 / Elevator Lobby (Group 3) | 3d | 2025-11-03 A | 2025-11-06 A | P2.10.EL.3.1010, P2.10.VES.1.1020 | 100% |  |
| P2.10.EL.3.1030 |  | OH - Fire Suppression / L10 / Elevator Lobby (Group 3) | 3d | 2025-12-01 | 2025-12-03 | P2.10.EL.3.1010 |  | 184d |
| P2.10.EL.3.1050 |  | OH - Electrical Conduit / Elevator Lobby (Group 3) | 3d | 2025-12-01 | 2025-12-03 | P2.10.EL.3.1040, P2.10.EL.3.1010 |  | 181d |
| P2.10.EL.3.1060 |  | OH - HVAC Piping / L10 / Elevator Lobby (Group 3) | 3d | 2025-12-04 | 2025-12-08 | P2.10.EL.3.1050, P2.10.EL.3.1010 |  | 181d |
| P2.10.EL.3.1070 |  | OH - HVAC Piping - Test / L10 / Elevator Lobby (Group 3) | 3d | 2025-12-09 | 2025-12-11 | P2.10.EL.3.1060, P2.10.EL.3.1010 |  | 184d |

| ID | WBS | Task | Duration | Start | Finish | Predecessors | Total float |
| --- | --- | --- | --- | --- | --- | --- | --- |
| P2.10.EL.3.1090 |  | In Wall Rough In / L10 / Elevator Lobby (Group 3) | 3d | 2025-12-09 | 2025-12-11 | P2.10.EL.3.1020, P2.10.EL.3.1080, P2.10.EL.3.1060, P2.10.EL.3.1050, P2.10.EL.3.1040, P2.10.EL.3.1030, P2.FAC.1.F.160, P2.L11.EMMR.3.140 | 181d |
| P2.10.EL.3.1100 |  | In Wall - Blocking / L10 / Elevator Lobby (Group 3) | 3d | 2025-12-12 | 2025-12-16 | P2.10.EL.3.1090 | 181d |
| P2.10.EL.3.1110 |  | Inspections - Wall Close In / L10 / Elevator Lobby (Group 3) | 3d | 2025-12-17 | 2025-12-19 | P2.10.EL.3.1090, P2.10.EL.3.1100, P2.10.EL.3.1070 | 181d |
| P2.10.EL.3.1120 |  | Hang-Tape-Finish / L10 / Elevator Lobby (Group 3) | 5d | 2025-12-22 | 2025-12-29 | P2.10.EL.3.1110, P2.FAC.1.F.160, P2.L11.EMMR.3.140 | 181d |
| P2.10.EL.3.1130 |  | Paint Prime & 1st Coat / L10 / Elevator Lobby (Group 3) | 3d | 2025-12-30 | 2026-01-02 | P2.10.EL.3.1120, P2.FAC.1.F.160 | 181d |
| P2.10.EL.3.1140 |  | Paint - Finish Coat / L10 / Elevator Lobby (Group 3) | 3d | 2026-01-05 | 2026-01-07 | P2.10.EL.3.1130 | 181d |
| P2.10.EL.3.1150 |  | Trim All MEPF Finishes / L10 / Elevator Lobby (Group 3) | 3d | 2026-01-08 | 2026-01-12 | P2.10.EL.3.1140 | 181d |
| P2.10.EL.3.1160 |  | Flooring / L9 / L10 / Elevator Lobby (Group 3) | 3d | 2026-01-13 | 2026-01-15 | P2.10.EL.3.1150 | 181d |
| P2.10.EL.3.1170 |  | Doors & Hardware / L10 / Elevator Lobby (Group 3) | 3d | 2026-01-16 | 2026-01-20 | P2.10.EL.3.1160 | 181d |
| P2.10.EL.3.1180 |  | Trades Inspect & Verify Work Completed to Specs / L10 / Elevator Lobby (Group 3) | 5d | 2026-01-21 | 2026-01-27 | P2.10.EL.3.1150, P2.10.EL.3.1160, P2.10.EL.3.1170 | 181d |
|  | L11 | **LEVEL 11 BUILDOUT - Group 3 EMR ***With Elevator WBS - Vertical Systems** |  |  |  |  |  |
|  | EMRF | **Elevator Machine Room** |  |  |  |  |  |
|  | 10 | **Start-up & Commissiong (Draft)** |  | 2025-12-01 | 2027-03-10 |  |  |
|  | 19 | **Generator** |  | 2026-02-11 | 2026-03-31 |  |  |
| CX.GEN.1000 |  | Startup - Generator | 10d | 2026-02-11 | 2026-02-24 | P2.UTL.120 | 189d |
| CX.GEN.1010 |  | Test and PFPT Backup Power - Generator | 10d | 2026-02-25 | 2026-03-10 | CX.GEN.1000 SS, CX.GEN.1000 | 189d |
| CX.GEN.1020 |  | FPT Backup Power - Generator | 15d | 2026-03-11 | 2026-03-31 | CX.GEN.1010 | 189d |
|  | 12 | **Life Safety** |  | 2025-12-22 | 2026-12-24 |  |  |
|  | 1 | **Fire Alarm** |  | 2026-02-02 | 2026-10-27 |  |  |
| CX.FA.1000 |  | Program Fire Alarm System | 25d | 2026-02-02 | 2026-03-06 | CX.B2.SWGR.1010, CX.B2.MVEE.1010 | 193d |
| CX.FA.1010 |  | FA Startup, Testing, Point to Point Checkout | 20d | 2026-03-09 | 2026-04-03 | CX.FA.1000 | 193d |
| CX.FA.1020 |  | PFPT FA System | 15d | 2026-04-06 | 2026-04-24 | CX.FA.1010 | 193d |
| CX.FA.1030 |  | FPT FA System | 10d | 2026-04-27 | 2026-05-08 | CX.FA.1020 | 193d |
| CX.FA.1040 |  | Life Safety Acceptance Testing | 5d | 2026-10-21 | 2026-10-27 | CX.SCRTY.1040, CX.FA.1030, CX.CA.1050 | 79d |
|  | 2 | **Fire Sprinkler** |  | 2025-12-22 | 2026-10-13 |  |  |
| CX.FS.1000 |  | Fire Pump Startup and Program | 5d | 2025-12-22 | 2025-12-29 | P2.1.FP.6950.1060 | 242d |
| CX.FS.1010 |  | Fire Suppression System Leak - Level B1 & B2 | 5d | 2026-06-22 | 2026-06-26 | CX.FS.1000, CX.B2.SWGR.1010, CX.B2.MVEE.1010, CX.B2.MVEE.1020, CX.B2.SWGR.1040 | 144d |
| CX.FS.1020 |  | Fire Suppression System Leak - Level 1 - 8 | 5d | 2026-09-09 | 2026-09-15 | CX.FS.1000, CX.L2.SWGR.1010, CX.L1.SWGR.1010, CX.L3.SWGR.1010, CX.L5.SWGR.1010, CX.L4.SWGR.1010, CX.L6.SWGR.1010, CX.L7.SWGR.1010, CX.PH.AHU.1030, CX.L8.SWGR.1010 | 65d |
| CX.FS.1030 |  | Fire Suppression Tamper/Flow/Pre-Action | 5d | 2026-09-16 | 2026-09-22 | CX.FS.1010, CX.FS.1020 | 89d |
| CX.FS.1040 |  | Fire Suppression System Flush | 5d | 2026-09-23 | 2026-09-29 | CX.FS.1030 | 89d |
| CX.FS.1050 |  | NIH Acceptance Test | 5d | 2026-09-30 | 2026-10-06 | CX.FS.1040 | 89d |
| CX.FS.1060 |  | Fire Suppression AHJ Final | 5d | 2026-10-07 | 2026-10-13 | CX.FS.1050 | 89d |
|  | 3 | **Fire HVAC** |  | 2026-12-11 | 2026-12-24 |  |  |
| CX.FHVAC.1000 |  | Preliminary Inspection - FD | 5d | 2026-12-11 | 2026-12-17 | P2.PIA.110, CX.PH.GSE.1040, CX.PH.HRU.1040, CX.PH.EHF.1040, CX.PH.AHU.1040, CX.L8.GSE.1050, CX.L8.AHU.1040, CX.L8.SWGR.1020 | 52d |
| CX.FHVAC.1010 |  | Final Inspection - FD | 5d | 2026-12-18 | 2026-12-24 | CX.FHVAC.1000 | 52d |
|  | 14 | **Security System** |  | 2026-02-02 | 2026-05-08 |  |  |
| CX.SCRTY.1000 |  | Program Security System | 20d | 2026-02-02 | 2026-02-27 | CX.B2.SWGR.1010, CX.B2.MVEE.1010 | 193d |
| CX.SCRTY.1010 |  | Security Startup, Testing, Point to Point Checkout | 20d | 2026-03-02 | 2026-03-27 | CX.SCRTY.1000 | 193d |
| CX.SCRTY.1020 |  | PFPT Security System | 15d | 2026-03-30 | 2026-04-17 | CX.SCRTY.1010 | 193d |
| CX.SCRTY.1030 |  | FPT Security System | 10d | 2026-04-20 | 2026-05-01 | CX.SCRTY.1020 | 193d |
| CX.SCRTY.1040 |  | NIH Security Demonstrations | 5d | 2026-05-04 | 2026-05-08 | CX.SCRTY.1030 | 193d |
|  | 11 | **BAS System** |  | 2026-02-02 | 2026-06-29 |  |  |
| CX.BAS.1000 |  | Complete Onsite Programming BAS System | 15d | 2026-02-02 | 2026-02-20 | CX.B2.SWGR.1010, CX.B2.MVEE.1010 | 163d |
| CX.BAS.1010 |  | BAS Startup Testing and Point to Point Checkout | 30d | 2026-02-23 | 2026-04-03 | CX.BAS.1000 | 163d |
| CX.BAS.1020 |  | PFPT BAS System | 30d | 2026-04-06 | 2026-05-15 | CX.BAS.1010 | 163d |
| CX.BAS.1030 |  | FPT BAS System | 30d | 2026-05-18 | 2026-06-29 | CX.BLOW.1020, CX.BAS.1020 | 163d |
|  | 13 | **Communications / IT** |  | 2026-02-02 | 2026-04-17 |  |  |
| CX.COMM.1000 |  | Startup and Program Communications | 20d | 2026-02-02 | 2026-02-27 | CX.B2.SWGR.1010, CX.B2.MVEE.1010 | 226d |
| CX.COMM.1010 |  | Startup and Program PA & Nurse Call Systems | 20d | 2026-02-02 | 2026-02-27 | CX.COMM.1000 SS | 236d |
| CX.COMM.1020 |  | PFPT Communications | 20d | 2026-03-02 | 2026-03-27 | CX.COMM.1000 | 226d |
| CX.COMM.1030 |  | PFPT PA & Nurse Call Systems | 10d | 2026-03-02 | 2026-03-13 | CX.COMM.1010 | 236d |
| CX.COMM.1040 |  | FPT PA & Nurse Call Systems | 10d | 2026-03-16 | 2026-03-27 | CX.COMM.1030 | 236d |
| CX.COMM.1050 |  | FPT Communications | 10d | 2026-03-30 | 2026-04-10 | CX.COMM.1020 | 226d |
| CX.COMM.1060 |  | NIH Testing and Communications Demonstration | 5d | 2026-04-13 | 2026-04-17 | CX.COMM.1040, CX.COMM.1050 | 226d |
|  | 20 | **Plumbing and Fixtures** |  | 2026-07-14 | 2026-09-22 |  |  |
| CX.PLUMB.1000 |  | Startup Domestic Plumbing Systems and Equipment | 15d | 2026-07-14 | 2026-08-03 | CX.B2.MPE.1000, CX.B2.MPE.1010 | 67d |
| CX.PLUMB.1010 |  | PFPT Domestic Plumbing Systems and Equipment | 15d | 2026-08-04 | 2026-08-24 | CX.PLUMB.1000 | 67d |
| CX.PLUMB.1020 |  | FPT Domestic Plumbing Systems and Equipment | 10d | 2026-08-25 | 2026-09-08 | CX.PLUMB.1010 | 67d |
| CX.PLUMB.1030 |  | Test Plumbing Fixtures | 10d | 2026-09-09 | 2026-09-22 | CX.PLUMB.1020 | 67d |
|  | 18 | **Sprinkler Systems** |  | 2026-09-16 | 2026-12-07 |  |  |
| CX.FS.2000 |  | Fire Suppression System Leak - Level 1 | 3d | 2026-09-16 | 2026-09-18 | CX.FS.1020 | 65d |
| CX.FS.2010 |  | Fire Suppression System Leak - Level 2 | 3d | 2026-09-21 | 2026-09-23 | CX.FS.2000 | 65d |
| CX.FS.2020 |  | Fire Suppression Leak Test - Level 2.5 | 3d | 2026-09-24 | 2026-09-28 | CX.FS.2010 | 65d |
| CX.FS.2030 |  | Fire Suppression Leak Test - Level 3 | 3d | 2026-09-29 | 2026-10-01 | CX.FS.2020 | 65d |
| CX.FS.2040 |  | Fire Pump Startup and Program | 10d | 2026-10-02 | 2026-10-15 | CX.FS.2030, DDD2180, DDD3560 | 65d |
| CX.FS.2050 |  | Fire Suppression System Flush | 10d | 2026-10-16 | 2026-10-29 | CX.FS.2040 | 65d |
| CX.FS.2060 |  | Fire Suppression PFPT | 10d | 2026-10-30 | 2026-11-12 | CX.FA.1010, CX.FS.2050 | 65d |
| CX.FS.2070 |  | Fire Suppression FPT | 10d | 2026-11-13 | 2026-11-30 | CX.FS.2060 | 65d |
| CX.FS.2080 |  | NIH Acceptance Test | 5d | 2026-12-01 | 2026-12-07 | CX.FS.2070 | 65d |
|  | 17 | **Compressed Air** |  | 2026-08-04 | 2026-10-20 |  |  |

| ID | WBS | Task | Duration | Start | Finish | Predecessors | Total float |
| --- | --- | --- | --- | --- | --- | --- | --- |
| CX.CA.1000 |  | Commpressed Air System Startup | 10d | 2026-08-04 | 2026-08-17 | CX.PLUMB.1000 | 79d |
| CX.CA.1010 |  | Compressed Air System Programming | 15d | 2026-08-18 | 2026-09-08 | CX.CA.1000 | 79d |
| CX.CA.1020 |  | Commpressed Air System PFPT | 5d | 2026-08-18 | 2026-08-24 | CX.CA.1000 | 135d |
| CX.CA.1030 |  | Commpressed Air System FPT | 2d | 2026-08-25 | 2026-08-26 | CX.CA.1020 | 135d |
| CX.CA.1040 |  | Compressed Air System PFPT | 15d | 2026-09-09 | 2026-09-29 | CX.CA.1010 | 79d |
| CX.CA.1050 |  | Compressed Air System FPT | 15d | 2026-09-30 | 2026-10-20 | CX.CA.1040 | 79d |
|  | 1 | **Basement B2/B1** |  | 2025-12-01 | 2026-10-30 |  |  |
|  | 12 | **Glycol Hot water System** |  | 2026-02-13 | 2026-08-10 |  |  |
| CX.B2.GHWS.1000 |  | Startup - Glycol Hot Water System - B2 | 20d | 2026-02-13 | 2026-03-12 | P2.B2.M.5970.1330, P2.B2.WC.1560, P2.B2.LC.1240, CX.B2.MVEE.1010, P2.B2.S.1270, CX.B2.HYDR.1030, CX.B2.SWGR.1010, P2.B2.N.1270, DDD2430, DDD2680, DDD2880, DDD2330, FRG.P2.B2.M.5970.1110 | 22d |
| CX.B2.GHWS.1010 |  | P2P/BAS - Glycol Hot Water System - B2 | 20d | 2026-03-18 | 2026-04-14 | CX.B2.SP.1010, CX.B2.GHWS.1000 | 19d |
| CX.B2.GHWS.1020 |  | Test and Balanc - Glycol Hot Water System - B2 | 20d | 2026-04-15 | 2026-05-12 | CX.B2.GHWS.1010, P2.PH.S.1340 | 132d |
| CX.B2.GHWS.1030 |  | PFPT - Glycol Hot Water System - B2 | 10d | 2026-05-13 | 2026-05-27 | CX.B2.GHWS.1020 | 132d |
| CX.B2.GHWS.1040 |  | FPT - Glycol Hot Water System - B2 | 5d | 2026-08-04 | 2026-08-10 | P2.SUM.225, CX.B2.SS.1030 FF, CX.B2.GHWS.1030 | 85d |
|  | 1 | **MV Electrical Equipment XFMRs and Network Protectors** |  | 2025-12-01 | 2026-06-12 |  |  |
| CX.B2.MVEE.1000 |  | Startup Primary Electrical Utility Power - Electrical Equipment and Network Protector - B2 | 10d | 2025-12-01 | 2025-12-12 | P2.B2.EE.B.1240, P2.B2.EMS.B.1240, P2.B2.ES.A.1240, P2.B2.EMS.A.1240, P2.B2.EE.A.1240, P2.B2.EMVS.A.1240, P2.B2.EMVS.B.1240, P2.B2.ES.B.1240 | 254d |
| CX.B2.MVEE.1010 |  | Start Up Normal Power - Electrical Equipment and Network Protector - B2 | 20d | 2026-01-05 | 2026-01-30 | P2.B2.EE.B.1240, P2.B2.EMS.B.1240, P2.2.HE.5959.1140, P2.2.HE.2949.1140, P2.2.HE.2803.1140, P2.2.HE.5966.1140, P2.8.HE.5959.1140, P2.4.HE.2948.1140, P2.4.HE.3959.1140, P2.6.HE.2947.1140, P2.4.HE.5966.1140, P2.8.HE.2803.1140, P2.6.HE.5966.1140, P2.4.HE.2803.1140, P2.6.HE.5959.1140, P2.6.HE.2803.1140, ENB.155, P2.1.HE.5959.1140, P2.1.HE.3911.1060, P2.1.HE.6940.1140, P2.1.HE.2803.1140, P2.1.HE.2950.1140, P2.3.HE.2803.1140, P2.3.HE.5959.1140, P2.5.HE.3989.1140, P2.3.HE.5968.1140, P2.3.HE.5966.1140, P2.5.HE.2803.1140, P2.5.HE.2949.1140, P2.7.HE.5959.1140, P2.7.HE.2803.1140, P2.5.HE.5966.1140, P2.7.HE.2941.1140, P2.B2.ES.A.1240, P2.B2.EMS.A.1240, P2.B2.EE.A.1240, P2.B2.EE.A.1250, P2.B2.EMVS.A.1240, P2.B2.EMVS.B.1240, P2.B2.EMVS.B.1250, P2.B2.ES.B.1250, P2.B2.ES.B.1240, P2.3.HE.2937.1140 | 26d |
| CX.B2.MVEE.1020 |  | Test and PFPT Main Power SWGR,XMFR,PNLS - Electrical Equipment and Network Protector - B2 | 10d | 2026-05-15 | 2026-05-29 | P2.B2.IT.2806.250, CX.B2.MVEE.1000, CX.B2.MVEE.1010, P2.L1.LC.1270, P2.B2.IT.2903.260 | 147d |
| CX.B2.MVEE.1030 |  | FPT Main Power SWGR,XMFR,PNLS - Electrical Equipment and Network Protector - B2 | 10d | 2026-06-01 | 2026-06-12 | P2.B2.M.5970.1120, P2.UTT.370, CX.B2.MVEE.1020 | 187d |
|  | 2 | **480V Switchgear and ATS** |  | 2025-12-30 | 2026-07-06 |  |  |
| CX.B2.SWGR.1010 |  | Start Up Normal Power - 480V Switgear and ATS - B2 | 20d | 2025-12-30 | 2026-01-27 | P2.B2.EE.B.1240, P2.B2.EMS.B.1240, ENB.155, P2.B2.ES.A.1240, P2.B2.EMS.A.1240, P2.B2.EE.A.1240, P2.B2.EE.A.1250, P2.B2.EMVS.A.1240, P2.B2.EMVS.B.1240, P2.B2.EMVS.B.1250, P2.B2.ES.B.1240, P2.B2.ES.B.1250 | 29d |
| CX.B2.SWGR.1000 |  | Startup Primary Electrical Utility Power - 480V Switgear and ATS - B2 | 15d | 2026-01-07 | 2026-01-27 | P2.B2.EE.B.1240, P2.B2.EMS.B.1240, ENB.170, ENB.155, P2.B2.ES.A.1240, P2.B2.EMS.A.1240, P2.B2.EE.A.1240, P2.B2.EMVS.A.1240, P2.B2.EMVS.B.1240, P2.B2.ES.B.1240 | 284d |
| CX.B2.SWGR.1020 |  | Start Up Emergency Power - 480V Switgear and ATS - B2 | 15d | 2026-01-28 | 2026-02-17 | P2.B2.EMS.B.1240, ENB.170, CX.B2.SWGR.1010, P2.B2.EMS.A.1240, P2.B2.EE.A.1240 | 194d |
| CX.B2.SWGR.1030 |  | Test and PFPT Main Power SWGR - 480V Switgear and ATS - B2 | 15d | 2026-05-15 | 2026-06-05 | P2.B2.IT.2806.250, CX.B2.SWGR.1020, P2.L1.LC.1270, P2.MR.W.190, P2.B2.IT.2903.260 | 132d |
| CX.B2.SWGR.1040 |  | Test and PFPT Backup Power ATS,GEN - 480V Switgear and ATS - B2 | 10d | 2026-06-08 | 2026-06-19 | CX.B2.SWGR.1030 | 132d |
| CX.B2.SWGR.1050 |  | FPT Main Power SWGR - 480V Switgear and ATS - B2 | 10d | 2026-06-08 | 2026-06-19 | P2.B2.M.5970.1120, P2.UTT.370, CX.B2.SWGR.1030 | 182d |
| CX.B2.SWGR.1060 |  | FPT Backup Power ATS,GEN - 480V Switgear and ATS - B2 | 10d | 2026-06-22 | 2026-07-06 | P2.UTT.370, CX.B2.SWGR.1040 | 172d |
|  | 3 | **Chilled hydronic systems (B1, B2 General Air)** |  | 2026-03-04 | 2026-06-24 |  |  |
| CX.B2.CHS.1000 |  | Startup - Chilled Hydronic System - B2 | 20d | 2026-03-04 | 2026-03-31 | P2.B2.M.5970.1330, P2.B2.WC.1520, P2.B2.LC.1240, CX.B2.SWGR.1010, CX.B2.MVEE.1010, CX.B2.HYDR.1040, DDD2480, FRG.P2.B2.M.5970.1170 | 4d |
| CX.B2.CHS.1010 |  | P2P/BAS - Chilled Hydronic System - B2 | 25d | 2026-04-01 | 2026-05-05 | P2.B2.S.1270, CX.B2.CHS.1000 | 4d |
| CX.B2.CHS.1020 |  | Test and Balance - Chilled Hydronic System - B2 | 20d | 2026-05-06 | 2026-06-03 | CX.B2.CHS.1010 | 44d |
| CX.B2.CHS.1030 |  | PFPT - Chilled Hydronic System - B2 | 10d | 2026-06-04 | 2026-06-17 | CX.B2.CHS.1020 | 44d |
| CX.B2.CHS.1040 |  | FPT - Chilled Hydronic System - B2 | 5d | 2026-06-18 | 2026-06-24 | P2.UTT.370, P2.SUM.225, CX.B2.CHS.1030 | 44d |
|  | 11 | **Steam Piping** |  | 2026-03-04 | 2026-03-24 |  |  |
| CX.B2.SP.1000 |  | Steam Blow Off Piping - Steam Piping - B2 | 5d | 2026-03-04 | 2026-03-10 | P2.B2.WC.1560, P2.B2.WC.1520, P2.B3.1350 | 19d |
| CX.B2.SP.1010 |  | Startup Heat XChangers - Steam Piping - B2 | 5d | 2026-03-11 | 2026-03-17 | CX.B2.SP.1000 | 19d |
| CX.B2.SP.1020 |  | Flush Steam System Piping - Steam Piping - B2 | 5d | 2026-03-18 | 2026-03-24 | CX.B2.SP.1010, DDD2330, DDD2430, DDD2880 | 167d |
|  | 10 | **Hydronic Piping** |  | 2025-12-22 | 2026-03-03 |  |  |
| FRG.CX.B2.HYDR.1050 |  | Flush HVAC System Piping - Reheat Steam & Condensate - B2 - FRAGNET | 15d | 2025-12-22 | 2026-01-13 | FRG.P2.B2.M.5970.2100 | 24d |
| CX.B2.HYDR.1000 |  | Flush HVAC System Piping - Hydronic Piping - B2 | 15d | 2026-01-07 | 2026-01-27 | P2.B2.M.5970.1110, FRG.P2.B2.M.5970.1150, P2.B2.M.5985.1080 | 4d |
| CX.B2.HYDR.1020 |  | Startup Hot Water Pump Sets - Hydronic Piping - B2 | 5d | 2026-01-14 | 2026-01-20 | P2.B2.HE.5995.1100, FRG.CX.B2.HYDR.1050 | 24d |
| CX.B2.HYDR.1030 |  | Fill, Test, Balance HW S/R System - Hydronic Piping - B2 | 15d | 2026-01-21 | 2026-02-10 | CX.B2.HYDR.1020 | 24d |
| CX.B2.HYDR.1010 |  | Startup Cold Water Pumps - Hydronic Piping - B2 | 10d | 2026-01-28 | 2026-02-10 | CX.B2.HYDR.1000, P2.B2.HE.5995.1100 | 4d |
| CX.B2.HYDR.1040 |  | Fill, Test, Balance CHW S/R System - Hydronic Piping - B2 | 15d | 2026-02-11 | 2026-03-03 | CX.B2.HYDR.1010 | 4d |
|  | 5 | **AHU B2-3, B2-4, (Electrical Room Conditioning)** |  | 2026-04-22 | 2026-09-22 |  |  |
| CX.B2.AHU.1000 |  | Startup - AHU B2-3, B2-4 - B2 | 5d | 2026-04-22 | 2026-04-28 | P2.B2.EMS.B.1240, P2.B2.M.5970.1320, P2.B2.M.5970.1330, BP1.233.3.400, P2.B2.M.5970.1340, P2.B2.M.5970.1360, P2.B2.M.5970.1350, P2.B2.SC.1290, P2.UTT.140, P2.B2.WC.1280, P2.B2.WC.1640, P2.B3.1350, P2.B2.LC.1550, CX.B2.SWGR.1010, CX.B2.MVEE.1010, DDD3130, FRG.P2.B2.M.5970.2090, P2.B2.N.1570 | 129d |
| CX.B2.AHU.1010 |  | P2P/BAS - AHU B2-3, B2-4 - B2 | 20d | 2026-05-06 | 2026-06-03 | BP1.250.3.100, CX.B2.AHU.1000, CX.B2.CHS.1010, CX.B2.GHWS.1010 | 124d |
| CX.B2.AHU.1020 |  | Test and Balance - AHU B2-3, B2-4 - B2 | 10d | 2026-06-04 | 2026-06-17 | CX.B2.AHU.1010 | 124d |
| CX.B2.AHU.1030 |  | PFPT - AHU B2-3, B2-4 - B2 | 10d | 2026-09-01 | 2026-09-15 | CX.B2.GHWS.1040 FF, P2.B2.IT.2806.250, CX.B2.AHU.1020, CX.B2.CHS.1040, CX.B2.CSH.1030, P2.L1.LC.1270, P2.B2.IT.2903.260 | 72d |
| CX.B2.AHU.1040 |  | FPT - AHU B2-3, B2-4 - B2 | 5d | 2026-09-16 | 2026-09-22 | P2.UTT.370, P2.SUM.225, CX.B2.AHU.1030, CX.B2.CSH.1040 FF | 117d |
|  | 6 | **AHU B2-1 , B2-2 , 1-1 (Cath Lab Animal & Human)** |  | 2026-04-22 | 2026-09-22 |  |  |
| CX.B2.AHU.2000 |  | Startup - AHU B2-1, B2-2, 1-1 - B2 | 5d | 2026-04-22 | 2026-04-28 | P2.B2.M.5970.1320, BP1.233.3.400, P2.B2.M.5970.1360, P2.B2.SC.1290, P2.UTT.140, P2.B2.WC.1280, P2.B2.WC.1640, P2.B2.LC.1550, CX.B2.SWGR.1010, CX.B2.MVEE.1010, P2.B2.N.1570 | 129d |
| CX.B2.AHU.2010 |  | P2P/BAS - AHU B2-1, B2-2, 1-1 - B2 | 20d | 2026-05-06 | 2026-06-03 | BP1.250.3.100, CX.B2.AHU.2000, CX.B2.CHS.1010, CX.B2.GHWS.1010 | 124d |
| CX.B2.AHU.2020 |  | Test and Balance - AHU B2-1, B2-2, 1-1 - B2 | 10d | 2026-06-04 | 2026-06-17 | CX.B2.AHU.2010 | 124d |
| CX.B2.AHU.2030 |  | PFPT - AHU B2-1, B2-2, 1-1 - B2 | 10d | 2026-09-01 | 2026-09-15 | CX.B2.GHWS.1040 FF, P2.B2.IT.2806.250, CX.B2.AHU.2020, CX.B2.CHS.1040, CX.B2.CSH.1030, P2.L1.LC.1270, P2.B2.IT.2903.260 | 72d |
| CX.B2.AHU.2040 |  | FPT - AHU B2-1, B2-2, 1-1 - B2 | 5d | 2026-09-16 | 2026-09-22 | P2.UTT.370, P2.SUM.225, CX.B2.AHU.2030, CX.B2.CSH.1040 FF | 112d |
|  | 7 | **Sterile Processing Lab Testing (Fume Hoods, Dedicated Exhausts, Medical Equip)** |  | 2026-05-22 | 2026-09-08 |  |  |
| CX.B2.SPLT.1000 |  | Startup - Sterile Processing Lab Testing - B2 | 5d | 2026-05-22 | 2026-05-29 | P2.B2.EMS.B.1240, P2.UTT.140, CX.B2.SWGR.1010, CX.B2.MVEE.1010, P2.L5.LC.1500, CX.PH.EHF.1130 | 132d |
| CX.B2.SPLT.1010 |  | P2P/BAS - Sterile Processing Lab Testing - B2 | 5d | 2026-06-01 | 2026-06-05 | BP1.250.3.100, CX.B2.SPLT.1000 | 132d |
| CX.B2.SPLT.1020 |  | Test and Balance - Sterile Processing Lab Testing - B2 | 5d | 2026-06-08 | 2026-06-12 | CX.B2.SPLT.1010 | 132d |
| CX.B2.SPLT.1030 |  | PFPT mechanical/electrical systems - Sterile Processing Lab Testing - B2 | 5d | 2026-08-11 | 2026-08-17 | CX.B2.SPLT.1020, CX.B2.CWS.1030 | 92d |
| CX.B2.SPLT.1040 |  | Fume Hood Balancing and testing - Sterile Processing Lab Testing - B2 | 5d | 2026-08-18 | 2026-08-24 | CX.B2.SPLT.1030, CX.PH.EHF.1140 | 127d |
| CX.B2.SPLT.1050 |  | Fume Hood certification - Sterile Processing Lab Testing - B2 | 5d | 2026-08-25 | 2026-08-31 | CX.B2.SPLT.1040 | 127d |
| CX.B2.SPLT.1060 |  | NIH Acceptance test - Sterile Processing Lab Testing - B2 | 5d | 2026-09-01 | 2026-09-08 | CX.B2.SPLT.1050, CX.B2.CWS.1040 | 127d |
|  | 4 | **Cath-MRI Suite (Fume Hoods, Dedicated Exhausts, Medical Equip)** |  | 2026-05-22 | 2026-09-29 |  |  |
| CX.B2.MRIS.1000 |  | Startup - MRI Suite Testing - B2 | 5d | 2026-05-22 | 2026-05-29 | CX.PH.EHF.1130, P2.B2.HE.5920.1100, P2.B2.HE.5995.1100, P2.B2.LC.1430, OFOI.EQUIP.B2.1020, OFOI.EQUIP.B2.1030 | 167d |
| CX.B2.MRIS.1010 |  | P2P/BAS - MRI Suite Testing - B2 | 5d | 2026-06-01 | 2026-06-05 | CX.B2.MRIS.1000 | 167d |
| CX.B2.MRIS.1020 |  | Test and Balance - MRI Suite Testing - B2 | 5d | 2026-06-11 | 2026-06-17 | CX.B2.AHU.2020 FF, CX.L1.AHU.1020 FF, CX.B2.MRIS.1010 | 164d |
| CX.B2.MRIS.1030 |  | PFPT mechanical/electrical systems - MRI Suite Testing - B2 | 5d | 2026-08-11 | 2026-08-17 | CX.B2.CWS.1030, CX.B2.MRIS.1020 | 127d |
| CX.B2.MRIS.1040 |  | Fume Hood Balancing and testing - MRI Suite Testing - B2 | 5d | 2026-08-18 | 2026-08-24 | CX.PH.EHF.1140, P2.B2.F.LC.2440, CX.B2.MRIS.1030 | 127d |
| CX.B2.MRIS.1050 |  | Fume Hood certification - MRI Suite Testing - B2 | 5d | 2026-08-25 | 2026-08-31 | CX.B2.MRIS.1040 | 127d |

| ID | WBS | Task | Duration | Start | Finish | Predecessors | Total float |
| --- | --- | --- | --- | --- | --- | --- | --- |
| CX.B2.MRIS.1060 |  | NIH Acceptance test - MRI Suite Testing - B2 | 5d | 2026-09-23 | 2026-09-29 | CX.B2.AHU.2040, CX.B2.CWS.1040, CX.L1.AHU.1040, CX.B2.MRIS.1050 | 112d |
|  | 9 | **General Supply & Exhaust Terminal Unit Testing** |  | 2026-06-04 | 2026-10-30 |  |  |
| CX.B2.GSE.1000 |  | Startup/Checkout Terminal Units - General Supply & Exhaust Testing - B2 | 20d | 2026-06-04 | 2026-07-01 | P2.B2.EMS.B.1240, P2.B2.M.5970.1340, P2.UTT.140, P2.B2.LC.1430, P2.B2.LC.1240, CX.B2.SWGR.1010, CX.B2.MVEE.1010, P2.B2.S.1270, P2.B2.S.1500, P2.B2.N.1270, P2.B2.N.1500, CX.L3.AHU.1010, CX.L2.AHU.1010, CX.L4.AHU.2010, CX.L4.AHU.1010, CX.L5.AHU.1010, CX.PH.EHF.1010 | 14d |
| CX.B2.GSE.1010 |  | Start Up and set Supply/Exhaust Valves - General Supply & Exhaust Testing - B2 | 30d | 2026-06-04 | 2026-07-16 | P2.B2.EMS.B.1240, P2.B2.M.5970.1330, P2.B2.M.5970.1340, P2.B2.M.5970.1350, P2.UTT.140, P2.B2.LC.1430, P2.B2.LC.1420, P2.B2.LC.1550, CX.B2.MVEE.1010, CX.B2.SWGR.1010, P2.B2.S.1360, P2.B2.S.1500, P2.B2.N.1360, P2.B2.N.1500, CX.L3.AHU.1010, CX.L2.AHU.1010, CX.L4.AHU.2010, CX.L4.AHU.1010, CX.L5.AHU.1010, CX.PH.EHF.1010 | 4d |
| CX.B2.GSE.1020 |  | P2P/BAS Terminal Units - General Supply & Exhaust Testing - B2 | 15d | 2026-07-17 | 2026-08-06 | BP1.250.3.100, CX.B2.GSE.1010, CX.B2.GSE.1000 | 4d |
| CX.B2.GSE.1030 |  | PFPT Terminal Units - General Supply & Exhaust Testing - B2 | 20d | 2026-08-07 | 2026-09-03 | P2.B2.IT.2806.250, CX.B2.PCW.1030 FF, CX.B2.RWS.1030 FF, CX.B2.GSE.1020, P2.B2.IT.2903.260 | 4d |
| CX.B2.GSE.1040 |  | Preliminary TAB Floor - General Supply & Exhaust Testing - B2 | 30d | 2026-09-04 | 2026-10-16 | P2.B2.BR.1250 FF+10d, P2.B2.BR.2160 FF+10d, P2.B2.F.LC.2260 FF+10d, P2.B2.F.LC.1260 FF+10d, P2.B2.LC.1410 FF+10d, P2.B2.ES.B.1200 FF+10d, P2.B2.EMVS.B.1200 FF+10d, P2.B2.EMVS.A.1200 FF+10d, CX.L5.AHU.1020 FF, P2.B2.EE.A.1200 FF+10d, CX.L4.AHU.2020 FF, P2.B2.EMS.A.1190 FF+10d, CX.L4.AHU.1020 FF, CX.L3.AHU.1020 FF, CX.L2.AHU.1020 FF, P2.B2.ES.A.1210 FF+10d, P2.B2.IT.2806.230 FF+10d, CX.B2.GSE.1030, P2.B2.HE.5920.1090 FF+10d, P2.B2.HE.5995.1090 FF+10d, P2.B2.EMS.B.1200 FF+10d, P2.B2.EE.B.1200 FF+10d, P2.B2.IT.2903.240 FF+10d | 4d |
| CX.B2.GSE.1050 |  | FPT Terminal Units - General Supply & Exhaust Testing - B2 | 10d | 2026-10-19 | 2026-10-30 | P2.UTT.370, P2.SUM.225, CX.B2.PCW.1040 FF, CX.B2.RWS.1040 FF, CX.B2.GSE.1040, CX.L3.AHU.1040, CX.L2.AHU.1040, CX.L5.AHU.1040, CX.PH.EHF.1040 | 89d |
|  | 13 | **Reheat Water systems** |  | 2026-04-21 | 2026-08-10 |  |  |
| CX.B2.RWS.1000 |  | Startup - Reheat Water System - B2 | 20d | 2026-04-21 | 2026-05-18 | P2.B2.M.5970.1320, P2.B2.WC.1560, P2.B2.LC.1430, P2.B2.LC.1240, CX.B2.MVEE.1010, P2.B2.S.1270, CX.B2.HYDR.1030, CX.B2.SWGR.1010, P2.B2.S.1500, P2.B2.N.1270, P2.B2.N.1500, DDD2430, DDD2530, FRG.P2.B2.M.5970.1020, FRG.P2.B2.M.5970.1080, FRG.P2.B2.M.5970.1050 | 40d |
| CX.B2.RWS.1010 |  | P2P/BAS - Reheat Water System - B2 | 20d | 2026-05-19 | 2026-06-16 | BP1.250.3.100, CX.B2.SP.1010, CX.B2.RWS.1000 | 40d |
| CX.B2.RWS.1020 |  | Test and Balance - Reheat Water System - B2 | 10d | 2026-06-17 | 2026-06-30 | CX.B2.RWS.1010 | 40d |
| CX.B2.RWS.1030 |  | PFPT - Reheat Water System - B2 | 10d | 2026-07-01 | 2026-07-15 | CX.B2.RWS.1020 | 40d |
| CX.B2.RWS.1040 |  | FPT - Reheat Water System - B2 | 5d | 2026-08-04 | 2026-08-10 | P2.UTT.370, P2.SUM.225, CX.B2.SS.1030 FF, CX.B2.RWS.1030 | 117d |
|  | 14 | **Steam Station** |  | 2026-05-15 | 2026-08-10 |  |  |
| CX.B2.SS.1000 |  | Startup - Steam Station - B2 | 20d | 2026-05-15 | 2026-06-12 | P2.B2.EMS.B.1240, P2.B2.M.5970.1320, P2.B2.M.5970.1370, P2.B2.WC.1520, P2.B2.WC.1560, P2.B3.1350, P2.B2.LC.1430, P2.B2.LC.1240, P2.B2.S.1270, P2.B2.S.1500, P2.B2.N.1270, P2.B2.N.1500, P2.B2.M.5970.1120 | 65d |
| CX.B2.SS.1010 |  | P2P/BAS - Steam Station - B2 | 15d | 2026-06-15 | 2026-07-06 | BP1.250.3.100, CX.B2.SS.1000 | 85d |
| CX.B2.SS.1040 |  | Test and Balance - Steam Station - B2 | 10d | 2026-07-07 | 2026-07-20 | CX.B2.SS.1010 | 85d |
| CX.B2.SS.1020 |  | PFPT - Steam Station - B2 | 10d | 2026-07-21 | 2026-08-03 | CX.B2.SP.1020, CX.B2.SS.1040, CX.B2.SS.1010 | 85d |
| CX.B2.SS.1030 |  | FPT - Steam Station - B2 | 5d | 2026-08-04 | 2026-08-10 | P2.UTT.370, P2.SUM.225, CX.B2.SS.1020 | 85d |
|  | 15 | **Clean Steam Humidification systems** |  | 2026-06-15 | 2026-09-08 |  |  |
| CX.B2.CSH.1000 |  | Startup - Clean Steam Humidification System - B2 | 20d | 2026-06-15 | 2026-07-13 | P2.B2.EMS.B.1240, P2.B2.M.5970.1320, P2.B2.WC.1560, P2.B3.1350, P2.B2.LC.1430, P2.B2.LC.1240, CX.B2.MVEE.1010, P2.B2.S.1270, CX.B2.SP.1010, CX.B2.SWGR.1010, CX.B2.SS.1000, P2.B2.S.1500, P2.B2.N.1270, P2.B2.N.1500, DDD2880, P2.B2.M.5970.2180, P2.B2.M.5970.2200 | 65d |
| CX.B2.CSH.1010 |  | P2P/BAS - Clean Steam Humidification System - B2 | 15d | 2026-07-14 | 2026-08-03 | BP1.250.3.100, CX.B2.CSH.1000 | 65d |
| CX.B2.CSH.1020 |  | Test and Balance - Clean Steam Humidification System - B2 | 10d | 2026-08-04 | 2026-08-17 | CX.B2.CSH.1010 | 65d |
| CX.B2.CSH.1030 |  | PFPT - Clean Steam Humidification System - B2 | 10d | 2026-08-18 | 2026-08-31 | CX.B2.CSH.1020 | 65d |
| CX.B2.CSH.1040 |  | FPT - Clean Steam Humidification System - B2 | 5d | 2026-09-01 | 2026-09-08 | P2.UTT.370, P2.SUM.225, CX.B2.SS.1030 FF, CX.B2.CSH.1030 | 97d |
|  | 16 | **Water Heaters systems** |  | 2026-05-15 | 2026-08-17 |  |  |
| CX.B2.WHS.1000 |  | Startup - Water Heater System - B2 | 20d | 2026-05-15 | 2026-06-12 | P2.B2.M.5970.1320, P2.B2.M.5970.1330, P2.B2.M.5970.1370, P2.B2.LC.1430, P2.B2.LC.1240, CX.B2.MVEE.1010, P2.B2.S.1270, CX.B2.SP.1010, CX.B2.SWGR.1010, P2.B2.S.1500, P2.B2.N.1270, P2.B2.N.1500 | 67d |
| CX.B2.WHS.1010 |  | P2P/BAS - Water Heater System - B2 | 20d | 2026-06-15 | 2026-07-13 | BP1.250.3.100, CX.B2.WHS.1000 | 97d |
| CX.B2.WHS.1020 |  | Test and Balance - Water Heater System - B2 | 10d | 2026-07-14 | 2026-07-27 | CX.B2.WHS.1010 | 97d |
| CX.B2.WHS.1030 |  | PFPT - Water Heater System - B2 | 10d | 2026-07-28 | 2026-08-10 | CX.B2.WHS.1020 | 97d |
| CX.B2.WHS.1040 |  | FPT - Water Heater System - B2 | 5d | 2026-08-11 | 2026-08-17 | P2.UTT.370, P2.SUM.225, CX.B2.SS.1030 FF, CX.B2.WHS.1030 | 142d |
|  | 17 | **Misc Plumbing Equipment** |  | 2026-05-15 | 2026-08-31 |  |  |
| CX.B2.MPE.1000 |  | Fill/Flush/Test Domestic Water - Misc. Plumbing Equipment - B2 | 20d | 2026-05-15 | 2026-06-12 | P2.B2.M.5970.1320, P2.B2.M.5970.1330, P2.B2.M.5970.1370, P2.B2.LC.1430, P2.B2.LC.1240, CX.B2.MVEE.1010, P2.B2.S.1270, CX.B2.HYDR.1040, CX.B2.SWGR.1010, P2.B2.S.1500, P2.B2.N.1270, P2.B2.N.1500 | 67d |
| CX.B2.MPE.1010 |  | Startup - Misc. Plumbing Equipment - B2 | 20d | 2026-06-15 | 2026-07-13 | BP1.226.2.190, BP1.226.2.160, P2.PH.S.1600, CX.B2.WHS.1000, CX.B2.MPE.1000 | 67d |
| CX.B2.MPE.1020 |  | P2P/BAS - Misc. Plumbing Equipment - B2 | 10d | 2026-07-14 | 2026-07-27 | BP1.250.3.100, CX.B2.MPE.1010 | 87d |
| CX.B2.MPE.1030 |  | Test and Balance - Misc. Plumbing Equipment - B2 | 10d | 2026-07-28 | 2026-08-10 | CX.B2.MPE.1020 | 87d |
| CX.B2.MPE.1040 |  | PFPT - Misc. Plumbing Equipment - B2 | 10d | 2026-08-11 | 2026-08-24 | CX.B2.MPE.1030 | 87d |
| CX.B2.MPE.1050 |  | FPT - Misc. Plumbing Equipment - B2 | 5d | 2026-08-25 | 2026-08-31 | P2.UTT.370, P2.SUM.225, CX.B2.MPE.1040 | 132d |
|  | 18 | **Med Gas Equipment** |  | 2026-04-15 | 2026-10-12 |  |  |
| CX.B2.MGE.1000 |  | Startup - Med Gas Equipment - B2 | 20d | 2026-04-15 | 2026-05-12 | P2.B2.M.5970.1350, P2.B2.LC.1430, P2.B2.LC.1240, P2.B2.S.1270, CX.B2.SWGR.1010, P2.B2.S.1500, P2.B2.N.1270, P2.B2.N.1500, DDD2430, DDD3230, DDD2730 | 119d |
| CX.B2.MGE.1010 |  | P2P/BAS - Med Gas Equipment - B2 | 20d | 2026-05-13 | 2026-06-10 | BP1.250.3.100, CX.B2.MGE.1000 | 119d |
| CX.B2.MGE.1020 |  | Test and Balance - Med Gas Equipment - B2 | 10d | 2026-06-11 | 2026-06-24 | CX.B2.MGE.1010 | 119d |
| CX.B2.MGE.1030 |  | PFPT - Med Gas Equipment - B2 | 10d | 2026-09-22 | 2026-10-05 | P2.L5.F.LC.2270, P2.L3.F.LC.2270, P2.L3.F.LC.3270, P2.L7.F.LC.3270, P2.L7.F.LC.4270, P2.L5.F.LC.3270, P2.B2.F.LC.1270, P2.B2.F.LC.2270, P2.L9.F.1170, CX.B2.MGE.1020, P2.L1.F.LC.1270, P2.L1.F.LC.2270, P2.L7.F.LC.1270, P2.L7.F.LC.2270, P2.L5.F.LC.1270, P2.L3.F.LC.1270, P2.L1.F.LC.3270 | 58d |
| CX.B2.MGE.1040 |  | FPT - Med Gas Equipment - B2 | 5d | 2026-10-06 | 2026-10-12 | P2.UTT.370, P2.SUM.225, CX.B2.MGE.1030 | 103d |
|  | 19 | **Process Chilled Water systems** |  | 2026-05-15 | 2026-08-17 |  |  |
| CX.B2.PCW.1000 |  | Startup - Process Chilled Water System - B2 | 20d | 2026-05-15 | 2026-06-12 | P2.B2.M.5970.1330, P2.B2.M.5970.1370, P2.B2.LC.1430, P2.B2.LC.1240, CX.B2.MVEE.1010, P2.B2.S.1270, CX.B2.HYDR.1040, CX.B2.SWGR.1010, P2.B2.S.1500, P2.B2.N.1270, P2.B2.N.1500, DDD2130, DDD2680, DDD2530, DDD2480, P2.B2.M.5970.1360, FRG.P2.B2.M.2801.1190, FRG.P2.B2.M.5970.1080, P2.L8.S.1340, P2.PH.N.1330, P2.L2.INT.N.1290, P2.L4.S.1330, P2.L4.INT.S.1290, P2.L5.S.1330, P2.L5.N.1330, P2.L6.N.1330, P2.L6.INT.N.1290, P2.L8.N.1330, P2.PH.S.1330, P2.B2.M.5970.1320, P2.L8.N.1340, P2.L1.LC.1330, P2.L3.S.1330, P2.L3.N.1330, P2.L4.N.1330, P2.L5.LC.1330, P2.L6.S.1330, P2.L6.INT.S.1290, P2.L7.S.1330, P2.L7.N.1330, P2.L7.LC.1330, P2.L8.INT.S.1290, P2.L8.INT.N.1290, P2.L1.N.1330, P2.L1.EMT.1110, P2.L2.S.1330, P2.L2.N.1230, P2.L2.INT.S.1290, P2.L3.LC.1230, P2.L4.INT.N.1290, P2.L8.S.1330, P2.B2.S.1330, P2.B2.N.1330, P2.B2.LC.1230 | 22d |
| CX.B2.PCW.1010 |  | P2P/BAS - Process Chilled Water System - B2 | 20d | 2026-06-15 | 2026-07-13 | BP1.250.3.100, CX.B2.CHS.1010, CX.B2.PCW.1000 | 22d |
| CX.B2.PCW.1020 |  | Test and Balance - Process Chilled Water System - B2 | 10d | 2026-07-14 | 2026-07-27 | CX.B2.PCW.1010 | 22d |
| CX.B2.PCW.1030 |  | PFPT - Process Chilled Water System - B2 | 10d | 2026-07-28 | 2026-08-10 | CX.B2.CHS.1040, CX.B2.PCW.1020 | 22d |
| CX.B2.PCW.1040 |  | FPT - Process Chilled Water System - B2 | 5d | 2026-08-11 | 2026-08-17 | P2.UTT.370, P2.SUM.225, CX.B2.PCW.1030 | 129d |
|  | 20 | **MRI Cooling Water systems** |  | 2026-05-15 | 2026-08-17 |  |  |
| CX.B2.CWS.1000 |  | Startup - MRI Cooling Water System - B2 | 20d | 2026-05-15 | 2026-06-12 | P2.B2.M.5970.1330, P2.B2.M.5970.1370, P2.B2.LC.1430, P2.B2.LC.1240, P2.B2.S.1270, CX.B2.HYDR.1040, CX.B2.SWGR.1010, P2.B2.S.1500, P2.B2.N.1270, P2.B2.N.1500, P2.B2.M.5970.1360 | 92d |
| CX.B2.CWS.1010 |  | P2P/BAS - MRI Cooling Water System - B2 | 20d | 2026-06-15 | 2026-07-13 | BP1.250.3.100, CX.B2.CHS.1010, CX.B2.CWS.1000 | 92d |
| CX.B2.CWS.1020 |  | Test and Balance - MRI Cooling Water System - B2 | 10d | 2026-07-14 | 2026-07-27 | CX.B2.CWS.1010 | 92d |
| CX.B2.CWS.1030 |  | PFPT - MRI Cooling Water System - B2 | 10d | 2026-07-28 | 2026-08-10 | CX.B2.CHS.1040, CX.B2.CWS.1020 | 92d |
| CX.B2.CWS.1040 |  | FPT - MRI Cooling Water System - B2 | 5d | 2026-08-11 | 2026-08-17 | P2.UTT.370, P2.SUM.225, CX.B2.CWS.1030 | 137d |
|  | 21 | **GMP Glycol Water systems** |  | 2026-05-15 | 2026-08-17 |  |  |
| CX.B2.GMPGW.1000 |  | Startup - GMP Glycol Water System - B2 | 20d | 2026-05-15 | 2026-06-12 | P2.B2.M.5970.1370, P2.B2.LC.1430, P2.B2.LC.1240, P2.B2.S.1270, CX.B2.HYDR.1030, CX.B2.SWGR.1010, P2.B2.S.1500, P2.B2.N.1270, P2.B2.N.1500, DDD2430, DDD2780, DDD2330, DDD2680, P2.B2.M.5970.1360, FRG.P2.B2.M.5970.1080 | 42d |
| CX.B2.GMPGW.1010 |  | P2P/BAS - GMP Glycol Water System - B2 | 20d | 2026-06-15 | 2026-07-13 | BP1.250.3.100, CX.B2.SP.1010, CX.B2.GMPGW.1000 | 42d |
| CX.B2.GMPGW.1020 |  | Test and Balance - GMP Glycol Water System - B2 | 10d | 2026-07-14 | 2026-07-27 | CX.B2.GMPGW.1010 | 97d |
| CX.B2.GMPGW.1030 |  | PFPT - GMP Glycol Water System - B2 | 10d | 2026-07-28 | 2026-08-10 | CX.B2.GMPGW.1020 | 97d |
| CX.B2.GMPGW.1040 |  | FPT - GMP Glycol Water System - B2 | 5d | 2026-08-11 | 2026-08-17 | P2.SUM.225, CX.B2.SS.1030 FF, CX.B2.GMPGW.1030 | 102d |
|  | 22 | **GMP RH Water systems** |  | 2026-05-15 | 2026-08-17 |  |  |
| CX.B2.GMPRH.1000 |  | Startup - GMP RH Water System - B2 | 20d | 2026-05-15 | 2026-06-12 | P2.B2.M.5970.1370, P2.B2.WC.1560, P2.B2.LC.1430, P2.B2.LC.1240, P2.B2.S.1270, CX.B2.HYDR.1030, CX.B2.SWGR.1010, P2.B2.S.1500, P2.B2.N.1270, P2.B2.N.1500, DDD2430, DDD2880, P2.B2.M.5970.1360, FRG.P2.B2.M.2801.1180, FRG.P2.B2.M.5970.1080 | 92d |
| CX.B2.GMPRH.1010 |  | P2P/BAS - GMP RH Water System - B2 | 20d | 2026-06-15 | 2026-07-13 | BP1.250.3.100, CX.B2.SP.1010, CX.B2.GMPRH.1000 | 92d |
| CX.B2.GMPRH.1020 |  | Test and Balance - GMP RH Water System - B2 | 10d | 2026-07-14 | 2026-07-27 | CX.B2.GMPRH.1010 | 92d |
| CX.B2.GMPRH.1030 |  | PFPT - GMP RH Water System - B2 | 10d | 2026-07-28 | 2026-08-10 | CX.B2.GMPRH.1020 | 92d |
| CX.B2.GMPRH.1040 |  | FPT - GMP RH Water System - B2 | 5d | 2026-08-11 | 2026-08-17 | P2.SUM.225, CX.B2.SS.1030 FF, CX.B2.GMPRH.1030 | 142d |
|  | 10 | **Level 1** |  | 2026-03-27 | 2027-02-04 |  |  |

| ID | WBS | Task | Duration | Start | Finish | Predecessors | Total float |
| --- | --- | --- | --- | --- | --- | --- | --- |
|  | 1 | **480/120 Distribution Panels Dry XFMRs (5 Elec RMs)** |  | 2026-04-03 | 2026-05-29 |  |  |
| CX.L1.SWGR.1000 |  | Start Up - 480/120 Distribution Panels Bry XFMRs - L1 | 10d | 2026-04-03 | 2026-04-16 | P2.L1.S.1550, P2.L1.N.1550, CX.B2.SWGR.1010, P2.L1.LC.1550 | 145d |
| CX.L1.SWGR.1010 |  | PFPT - 480/120 Distribution Panels Bry XFMRs - L1 | 20d | 2026-04-17 | 2026-05-14 | P2.1.HE.6940.1140, P2.1.HE.2950.1140, P2.1.HE.5959.1140, P2.1.HE.2803.1140, CX.L1.SWGR.1000, P2.L1.EMT.1230 | 145d |
| CX.L1.SWGR.1020 |  | FPT - 480/120 Distribution Panels Bry XFMRs - L1 | 10d | 2026-05-15 | 2026-05-29 | P2.SUM.225, CX.L1.SWGR.1010 | 187d |
|  | 2 | **AHU 1-1 (Cath Lab Animal & Human)** |  | 2026-04-22 | 2026-09-15 |  |  |
| CX.L1.AHU.1000 |  | Startup - AHU 1-1 - L1 | 5d | 2026-04-22 | 2026-04-28 | P2.L1.EMT.1240, P2.L1.EMT.1120, P2.B2.SC.1290, P2.B2.WC.1280, P2.B2.WC.1640, P2.1.HE.3911.1060, P2.B2.LC.1550, P2.1.HE.6940.1140, P2.1.HE.2950.1140, P2.1.HE.5959.1140, CX.B2.MVEE.1010, CX.B2.SWGR.1010, DDD2180, DDD2330, DDD2580, DDD2930, DDD3130, DDD3030, DDD3080, FRG.P2.L1.EMT.1000 | 139d |
| CX.L1.AHU.1010 |  | P2P/BAS - AHU 1-1 - L1 | 20d | 2026-05-06 | 2026-06-03 | CX.B2.CHS.1010, CX.B2.GHWS.1010, CX.L1.AHU.1000 | 134d |
| CX.L1.AHU.1020 |  | Test and Balance - AHU 1-1 - L1 | 5d | 2026-06-04 | 2026-06-10 | CX.L1.AHU.1010 | 134d |
| CX.L1.AHU.1030 |  | PFPT - AHU 1-1 - L1 | 5d | 2026-09-01 | 2026-09-08 | CX.B2.GHWS.1040 FF, P2.1.HE.3911.1060, P2.1.HE.6940.1140, P2.1.HE.2950.1140, P2.1.HE.5959.1140, P2.1.HE.2803.1140, CX.B2.CHS.1040, CX.B2.CSH.1030, CX.L1.AHU.1020, P2.L1.EMT.1230 | 77d |
| CX.L1.AHU.1040 |  | FPT - AHU 1-1 - L1 | 5d | 2026-09-09 | 2026-09-15 | P2.SUM.225, CX.B2.CSH.1040 FF, CX.L1.AHU.1030, CX.L1.SWGR.1020 | 117d |
|  | 3 | **MRI Suite (Fume Hoods, Dedicated Exhausts, Medical Equip)** |  | 2026-03-27 | 2026-09-22 |  |  |
| CX.L1.MRIS.1000 |  | Startup - MRI Suite Testing - L1 | 5d | 2026-03-27 | 2026-04-02 | P2.L1.EMT.1240, P2.L1.EMT.1120, P2.L1.S.1500, P2.L1.N.1500, P2.1.HE.3911.1060, P2.1.HE.6940.1140, P2.1.HE.2950.1140, P2.1.HE.5959.1140, CX.B2.MVEE.1010, CX.B2.SWGR.1010, OFOI.EQUIP.L1.1030, OFOI.EQUIP.L1.1040, OFOI.EQUIP.L1.1050, OFOI.EQUIP.L1.1060, OFOI.EQUIP.L1.1000, OFOI.EQUIP.L1.1010, OFOI.EQUIP.L1.1020, P2.L1.LC.1500 | 177d |
| CX.L1.MRIS.1010 |  | P2P/BAS - MRI Suite Testing - L1 | 5d | 2026-04-03 | 2026-04-09 | CX.L1.MRIS.1000 FF, CX.L1.MRIS.1000 | 177d |
| CX.L1.MRIS.1020 |  | Test and Balance - MRI Suite Testing - L1 | 5d | 2026-04-10 | 2026-04-16 | CX.L1.MRIS.1010 FF, CX.L1.MRIS.1010 | 177d |
| CX.L1.MRIS.1030 |  | PFPT mechanical/electrical systems - MRI Suite Testing - L1 | 5d | 2026-08-11 | 2026-08-17 | P2.1.HE.3911.1060, P2.1.HE.6940.1140, P2.1.HE.2950.1140, P2.1.HE.5959.1140, P2.1.HE.2803.1140, CX.L1.MRIS.1020 FF, CX.B2.CWS.1030, CX.L1.MRIS.1020 | 97d |
| CX.L1.MRIS.1040 |  | Fume Hood Balancing and testing - MRI Suite Testing - L1 | 5d | 2026-08-18 | 2026-08-24 | CX.PH.EHF.1140, P2.L1.F.LC.2460, CX.L1.MRIS.1030 FF, CX.L1.MRIS.1030 | 127d |
| CX.L1.MRIS.1050 |  | Fume Hood certification - MRI Suite Testing - L1 | 5d | 2026-08-25 | 2026-08-31 | CX.L1.MRIS.1040 | 127d |
| CX.L1.MRIS.1060 |  | NIH Acceptance test - MRI Suite Testing - L1 | 5d | 2026-09-16 | 2026-09-22 | CX.B2.CWS.1040, CX.L1.MRIS.1050, CX.L1.AHU.1040 | 117d |
|  | 4 | **CT Suite ( Medical Equip & Systems)** |  | 2026-03-27 | 2026-08-31 |  |  |
| CX.L1.CTS.1000 |  | Startup - CT Suite Testing - L1 | 5d | 2026-03-27 | 2026-04-02 | P2.L1.EMT.1240, P2.L1.EMT.1120, P2.L1.S.1500, P2.L1.N.1500, P2.1.HE.3911.1060, P2.1.HE.6940.1140, P2.1.HE.2950.1140, P2.1.HE.5959.1140, CX.B2.MVEE.1010, CX.B2.SWGR.1010, OFOI.EQUIP.L1.1070, OFOI.EQUIP.L1.1080, OFOI.EQUIP.L1.1090, OFOI.EQUIP.L1.1100, P2.L1.LC.1500, DDD2530 | 172d |
| CX.L1.CTS.1010 |  | P2P/BAS - CT Suite Testing - L1 | 5d | 2026-04-03 | 2026-04-09 | CX.L1.CTS.1000 | 172d |
| CX.L1.CTS.1020 |  | Test and Balance - CT Suite Testing - L1 | 5d | 2026-04-10 | 2026-04-16 | CX.L1.CTS.1010 | 172d |
| CX.L1.CTS.1030 |  | PFPT mechanical/electrical systems - CT Suite Testing - L1 | 5d | 2026-08-11 | 2026-08-17 | P2.1.HE.3911.1060, P2.1.HE.6940.1140, P2.1.HE.2950.1140, P2.1.HE.5959.1140, P2.1.HE.2803.1140, CX.B2.CWS.1030, CX.L1.CTS.1020 | 92d |
| CX.L1.CTS.1040 |  | Room Balancing - CT Suite Testing - L1 | 5d | 2026-08-18 | 2026-08-24 | CX.L1.CTS.1030 | 152d |
| CX.L1.CTS.1050 |  | NIH Acceptance test - CT Suite Testing - L1 | 5d | 2026-08-25 | 2026-08-31 | CX.B2.CWS.1040, CX.L1.CTS.1040 | 152d |
|  | 5 | **General Supply & Exhaust Terminal Unit Testing** |  | 2026-06-04 | 2027-02-04 |  |  |
| CX.L1.GSE.1000 |  | Startup/Checkout Terminal Units - General Supply & Exhaust Testing - L1 | 20d | 2026-06-04 | 2026-07-01 | P2.L1.EMT.1240, P2.L1.EMT.1120, P2.L1.S.1500, P2.L1.S.1550, P2.L1.N.1550, P2.L1.N.1500, P2.1.HE.3911.1060, P2.1.HE.6940.1140, P2.1.HE.2950.1140, P2.1.HE.5959.1140, CX.B2.MVEE.1010, CX.B2.SWGR.1010, CX.L3.AHU.1010, P2.L1.LC.1550, CX.L2.AHU.1010, P2.L1.LC.1500, CX.L4.AHU.2010, CX.L4.AHU.1010, CX.L5.AHU.1010, CX.PH.EHF.1010, RFP.014.1040, DDD2780 | 64d |
| CX.L1.GSE.1010 |  | Start Up and set Supply/Exhaust Valves - General Supply & Exhaust Testing - L1 | 35d | 2026-07-10 | 2026-08-27 | P2.L1.S.1550, P2.L1.N.1550, CX.B2.MVEE.1010, CX.B2.SWGR.1010, CX.L3.AHU.1010, P2.L1.LC.1550, CX.L2.GSE.1010, CX.L2.AHU.1010, CX.L4.AHU.2010, CX.L4.AHU.1010, CX.L5.AHU.1010, CX.PH.EHF.1010 | 24d |
| CX.L1.GSE.1020 |  | P2P/BAS Terminal Units - General Supply & Exhaust Testing - L1 | 20d | 2026-08-28 | 2026-09-25 | CX.L1.GSE.1000, CX.L1.GSE.1010 | 24d |
| CX.L1.GSE.1030 |  | PFPT Terminal Units - General Supply & Exhaust Testing - L1 | 20d | 2026-09-28 | 2026-10-23 | P2.1.HE.3911.1060, P2.1.HE.6940.1140, P2.1.HE.2950.1140, P2.1.HE.5959.1140, P2.1.HE.2803.1140, CX.B2.PCW.1030 FF, CX.B2.RWS.1030 FF, CX.L1.GSE.1020, P2.L1.EMT.1230 | 24d |
| CX.L1.GSE.1040 |  | Preliminary TAB Floor - General Supply & Exhaust Testing - L1 | 50d | 2026-10-26 | 2027-01-07 | P2.L1.S.1420 FF+15d, P2.L1.BR.4160 FF+15d, P2.L1.BR.3160 FF+15d, P2.L1.BR.2160 FF+15d, P2.L1.BR.1160 FF+15d, P2.L1.F.CS.2140 FF+15d, P2.L1.F.CS.1140 FF+15d, P2.1.HE.2803.1130 FF+15d, P2.1.HE.2950.1130 FF+15d, P2.1.HE.5959.1130 FF+15d, P2.1.HE.3911.1140 FF+15d, P2.1.HE.6940.1130 FF+15d, P2.L1.N.1420 FF+15d, P2.L1.F.LC.3260 FF+15d, P2.L1.F.LC.2260 FF+15d, CX.L5.AHU.1020 FF, CX.L4.AHU.2020 FF, P2.L1.F.LC.1260 FF+15d, CX.L4.AHU.1020 FF, CX.L3.AHU.1020 FF, P2.L1.LC.1420 FF+15d, CX.L2.AHU.1020 FF, P2.L1.BR.5160 FF+15d, CX.L1.GSE.1030, CX.L2.GSE.1040, P2.L1.EMT.1210 FF+15d | 24d |
| CX.L1.GSE.1050 |  | FPT Terminal Units - General Supply & Exhaust Testing - L1 | 20d | 2027-01-08 | 2027-02-04 | CX.B2.PCW.1040 FF, CX.B2.RWS.1040 FF, CX.L3.AHU.1040, CX.L2.AHU.1040, CX.L1.GSE.1040, CX.L5.AHU.1040, CX.PH.EHF.1040 | 24d |
|  | 6 | **Level 2** |  | 2026-03-18 | 2026-10-20 |  |  |
|  | 1 | **480/120 Distribution Panels Dry XFMRs (4 Elec RMs)** |  | 2026-03-18 | 2026-05-12 |  |  |
| CX.L2.SWGR.1000 |  | Start Up - 480/120 Distribution Panels Bry XFMRs - L2 | 10d | 2026-03-18 | 2026-03-31 | P2.L2.S.1550, P2.2.HE.5959.1140, P2.L2.N.1550, P2.2.HE.2949.1140, P2.2.HE.2803.1140, P2.2.HE.5966.1140, P2.L2.INT.S.1400, P2.L2.INT.N.1400, P2.L2.SMT.1240, P2.L2.EMT.1240, CX.B2.MVEE.1010, CX.B2.SWGR.1010 | 157d |
| CX.L2.SWGR.1010 |  | PFPT - 480/120 Distribution Panels Bry XFMRs - L2 | 20d | 2026-04-01 | 2026-04-28 | P2.2.IT.5957.250, P2.2.HE.5966.1140, P2.2.IT.3910.250, P2.2.IT.2818.250, P2.L2.SMT.1230, P2.L2.EMT.1230, CX.L2.SWGR.1000 | 157d |
| CX.L2.SWGR.1020 |  | FPT - 480/120 Distribution Panels Bry XFMRs - L2 | 10d | 2026-04-29 | 2026-05-12 | P2.SUM.225, CX.L2.SWGR.1010 | 184d |
|  | 2 | **AHU 2-1** |  | 2026-04-16 | 2026-09-15 |  |  |
| CX.L2.AHU.1000 |  | Startup - AHU 2-1 - L2 | 5d | 2026-04-16 | 2026-04-22 | P2.L2.INT.N.1400 FF, P2.L2.S.1500, P2.L2.INT.S.1400 FF, P2.L2.S.1550, P2.2.HE.5959.1140, P2.L2.N.1550, P2.L2.N.1430, P2.2.HE.2949.1140, P2.2.HE.2803.1140, P2.L4.S.1550, P2.2.HE.5966.1140, P2.L4.N.1550, P2.B2.SC.1290, P2.B2.WC.1280, P2.B2.WC.1640, P2.L2.INT.S.1400, P2.L2.INT.S.1360, P2.L2.INT.N.1360, P2.L1.S.1550, P2.L1.N.1550, P2.L2.INT.N.1400, P2.L4.INT.S.1400, P2.L4.INT.N.1400, P2.L2.SMT.1240, P2.L2.SMT.1120, P2.L2.EMT.1240, P2.L2.EMT.1120, P2.L3.S.1550, P2.L3.N.1550, CX.B2.MVEE.1010, CX.B2.SWGR.1010, P2.B2.S.1550, P2.B2.N.1550, P2.L2.N.1550 FF, P2.L2.S.1550 FF, P2.L3.LC.1550, DDD2330, DDD2180, DDD2280, DDD2270, DDD3030, DDD2980, DDD3130, DDD2580, DDD2930, DDD3080, FRG.P2.L2.EMT.1010 | 23d |
| CX.L2.AHU.1010 |  | P2P/BAS - AHU 2-1 - L2 | 10d | 2026-05-06 | 2026-05-19 | CX.B2.CHS.1010, CX.B2.GHWS.1010, CX.L2.AHU.1000 | 14d |
| CX.L2.AHU.1020 |  | Test and Balance - AHU 2-1 - L2 | 15d | 2026-05-20 | 2026-06-10 | CX.L2.AHU.1010 | 94d |
| CX.L2.AHU.1030 |  | PFPT - AHU 2-1 - L2 | 5d | 2026-09-01 | 2026-09-08 | P2.2.IT.5957.250, P2.2.HE.5966.1140, P2.2.IT.3910.250, P2.2.IT.2818.250, P2.L2.SMT.1230, P2.L2.EMT.1230, CX.B2.CHS.1040, CX.B2.GHWS.1040 FF, CX.B2.CSH.1030, CX.L2.AHU.1020 | 77d |
| CX.L2.AHU.1040 |  | FPT - AHU 2-1 - L2 | 5d | 2026-09-09 | 2026-09-15 | P2.SUM.225, CX.B2.CSH.1040 FF, CX.L2.AHU.1030, CX.L2.SWGR.1020 | 102d |
|  | 3 | **General Supply & Exhaust Terminal Unit Testing** |  | 2026-06-04 | 2026-10-20 |  |  |
| CX.L2.GSE.1000 |  | Startup/Checkout Terminal Units - General Supply & Exhaust Testing - L2 | 20d | 2026-06-04 | 2026-07-01 | P2.L2.S.1500, P2.2.HE.5959.1140, P2.L2.N.1430, P2.2.HE.2949.1140, P2.2.HE.2803.1140, P2.2.HE.5966.1140, P2.L2.INT.S.1360, P2.L2.INT.N.1360, P2.L2.SMT.1240, P2.L2.SMT.1120, P2.L2.EMT.1240, P2.L2.EMT.1120, CX.B2.MVEE.1010, CX.B2.SWGR.1010, CX.L3.AHU.1010, CX.L2.AHU.1010, CX.L4.AHU.2010, CX.L4.AHU.1010, CX.L5.AHU.1010, CX.PH.EHF.1010, DDD2780 | 59d |
| CX.L2.GSE.1010 |  | Start Up and set Supply/Exhaust Valves - General Supply & Exhaust Testing - L2 | 25d | 2026-06-04 | 2026-07-09 | P2.L2.S.1500, P2.L2.N.1430, P2.L2.INT.S.1360, P2.L2.INT.N.1360, P2.L2.SMT.1240, P2.L2.SMT.1120, P2.L2.EMT.1240, P2.L2.EMT.1120, CX.B2.MVEE.1010, CX.B2.SWGR.1010, CX.L3.AHU.1010, CX.L2.AHU.1010, CX.L4.AHU.2010, CX.L4.AHU.1010, CX.L5.AHU.1010, CX.PH.EHF.1010 | 24d |
| CX.L2.GSE.1020 |  | P2P/BAS Terminal Units - General Supply & Exhaust Testing - L2 | 10d | 2026-07-10 | 2026-07-23 | CX.L2.GSE.1000, CX.L2.GSE.1010 | 54d |
| CX.L2.GSE.1030 |  | PFPT Terminal Units - General Supply & Exhaust Testing - L2 | 10d | 2026-07-28 | 2026-08-10 | P2.2.IT.5957.250, P2.2.HE.5966.1140, P2.2.IT.3910.250, P2.2.IT.2818.250, P2.L2.SMT.1230, P2.L2.EMT.1230, CX.B2.PCW.1030 FF, CX.B2.RWS.1030 FF, CX.L2.GSE.1020 | 52d |
| CX.L2.GSE.1040 |  | Preliminary TAB Floor - General Supply & Exhaust Testing - L2 | 25d | 2026-08-11 | 2026-09-15 | P2.L2.S.1420, P2.L2.N.1410, P2.2.HE.2803.1130, P2.2.HE.5959.1130, P2.2.IT.5957.230, P2.2.HE.5966.1130, P2.2.HE.2949.1130, P2.2.IT.3910.230, P2.2.IT.2818.230, P2.L2.F.CS.1140, P2.L2.F.CS.2140, P2.L2.BR.1160, P2.L2.BR.3250, P2.L2.BR.2160, P2.L2.BR.4250, P2.L2.INT.S.2020, P2.L2.INT.N.2020, P2.L2.SMT.1210, P2.L2.EMT.1210, CX.L5.AHU.1020 FF, CX.L4.AHU.2020 FF, CX.L4.AHU.1020 FF, CX.L3.AHU.1020 FF, CX.L2.AHU.1020 FF, CX.L2.GSE.1030 | 52d |
| CX.L2.GSE.1050 |  | FPT Terminal Units - General Supply & Exhaust Testing - L2 | 10d | 2026-10-07 | 2026-10-20 | P2.SUM.225, CX.B2.PCW.1040 FF, CX.B2.RWS.1040 FF, CX.L3.AHU.1040, CX.L2.GSE.1040, CX.L2.AHU.1040, CX.L5.AHU.1040, CX.PH.EHF.1040 | 97d |
|  | 4 | **Level 3** |  | 2026-04-02 | 2027-02-04 |  |  |
|  | 1 | **480/120 Distribution Panels Dry XFMRs (5 Elec RMs)** |  | 2026-04-09 | 2026-06-04 |  |  |
| CX.L3.SWGR.1000 |  | Start Up - 480/120 Distribution Panels Bry XFMRs - L3 | 10d | 2026-04-09 | 2026-04-22 | P2.L3.EMT.1240, P2.L3.SMT.1240, P2.L3.S.1550, P2.3.HE.5959.1140, P2.L3.N.1550, P2.3.HE.5968.1140, CX.B2.MVEE.1010, P2.3.HE.5966.1140, P2.3.HE.2803.1140, CX.B2.SWGR.1010, P2.L3.LC.1550, P2.3.HE.2937.1140 | 141d |
| CX.L3.SWGR.1010 |  | PFPT - 480/120 Distribution Panels Bry XFMRs - L3 | 20d | 2026-04-23 | 2026-05-20 | P2.L3.SMT.1230, P2.L3.EMT.1230, P2.3.HE.5959.1140, P2.3.HE.5968.1140, P2.3.HE.5966.1140, P2.3.HE.2803.1140, CX.L3.SWGR.1000, P2.3.HE.2937.1140 | 141d |
| CX.L3.SWGR.1020 |  | FPT - 480/120 Distribution Panels Bry XFMRs - L3 | 10d | 2026-05-21 | 2026-06-04 | P2.SUM.225, CX.L3.SWGR.1010 | 163d |
|  | 2 | **UPS** |  | 2026-04-09 | 2026-06-11 |  |  |
| CX.L3.UPS.1000 |  | Start Up - UPS - L3 | 5d | 2026-04-09 | 2026-04-15 | P2.L3.SMT.1120, P2.L3.EMT.1240, P2.L3.EMT.1120, P2.L3.SMT.1240, P2.L3.S.1550, P2.L3.S.1500, P2.3.HE.5959.1140, P2.L3.N.1550, P2.L3.N.1500, P2.3.HE.5968.1140, CX.B2.MVEE.1010, P2.3.HE.5966.1140, P2.3.HE.2803.1140, CX.B2.SWGR.1010, P2.L3.LC.1430, P2.L3.LC.1550, P2.3.HE.2937.1140 | 168d |
| CX.L3.UPS.1010 |  | PFPT - UPS - L3 | 10d | 2026-04-16 | 2026-04-29 | P2.L3.SMT.1230, P2.L3.EMT.1230, P2.3.HE.5959.1140, P2.3.HE.5968.1140, P2.3.HE.5966.1140, P2.3.HE.2803.1140, CX.L3.UPS.1000, P2.3.HE.2937.1140 | 168d |
| CX.L3.UPS.1020 |  | FPT - UPS - L3 | 5d | 2026-06-05 | 2026-06-11 | P2.SUM.225, CX.L3.UPS.1010, CX.L3.SWGR.1020 | 163d |
|  | 3 | **AHU 3-1** |  | 2026-04-16 | 2026-09-15 |  |  |
| CX.L3.AHU.1000 |  | Startup - AHU 3-1 - L3 | 5d | 2026-04-16 | 2026-04-22 | P2.L3.SMT.1120, P2.L2.S.1550, P2.L3.EMT.1240, P2.L3.EMT.1120, P2.L2.N.1550, P2.L3.SMT.1240, P2.L4.S.1550, P2.L4.N.1550, P2.B2.SC.1290, P2.B2.WC.1280, P2.B2.WC.1640, P2.L2.INT.S.1400, P2.L1.S.1550, P2.L1.N.1550, P2.L2.INT.N.1400, P2.L4.INT.S.1400, P2.L4.INT.N.1400, P2.L3.S.1550, P2.L3.S.1500, P2.3.HE.5959.1140, P2.L3.N.1550, P2.L3.N.1500, P2.3.HE.5968.1140, CX.B2.MVEE.1010, P2.3.HE.5966.1140, P2.3.HE.2803.1140, CX.B2.SWGR.1010, P2.B2.S.1550, P2.B2.N.1550, P2.L1.LC.1550, P2.L3.LC.1430, P2.L3.LC.1550, P2.3.HE.2937.1140, DDD2330, DDD2180, DDD2280, DDD2580, DDD3030, DDD2980, DDD2930, DDD3080, DDD2270, DDD3130, FRG.P2.L3.EMT.1010 | 23d |
| CX.L3.AHU.1010 |  | P2P/BAS - AHU 3-1 - L3 | 10d | 2026-05-06 | 2026-05-19 | CX.B2.CHS.1010, CX.B2.GHWS.1010, CX.L3.AHU.1000 | 14d |
| CX.L3.AHU.1020 |  | Test and Balance - AHU 3-1 - L3 | 15d | 2026-05-20 | 2026-06-10 | CX.L3.AHU.1010 | 94d |
| CX.L3.AHU.1030 |  | PFPT - AHU 3-1 - L3 | 5d | 2026-09-01 | 2026-09-08 | P2.L3.SMT.1230, P2.L3.EMT.1230, P2.3.HE.5959.1140, P2.3.HE.5968.1140, P2.3.HE.5966.1140, P2.3.HE.2803.1140, CX.B2.CHS.1040, CX.B2.GHWS.1040 FF, CX.B2.CSH.1030, CX.L3.AHU.1020, P2.3.HE.2937.1140 | 77d |
| CX.L3.AHU.1040 |  | FPT - AHU 3-1 - L3 | 5d | 2026-09-09 | 2026-09-15 | P2.SUM.225, CX.B2.CSH.1040 FF, CX.L3.AHU.1030, CX.L3.UPS.1020 | 102d |
|  | 5 | **MRI Suite (Fume Hoods, Dedicated Exhausts, Medical Equip)** |  | 2026-04-02 | 2026-09-08 |  |  |
| CX.L3.MRIS.1000 |  | Startup - MRI Suite Testing - L3 | 5d | 2026-04-02 | 2026-04-08 | P2.3.HE.5959.1140, P2.3.HE.5968.1140, P2.3.HE.5966.1140, P2.3.HE.2803.1140, OFOI.EQUIP.L3.1000, OFOI.EQUIP.L3.1010, P2.L3.LC.1430, P2.3.HE.2937.1140, DDD2530 | 223d |
| CX.L3.MRIS.1010 |  | P2P/BAS - MRI Suite Testing - L3 | 5d | 2026-04-09 | 2026-04-15 | CX.L3.MRIS.1000 | 223d |
| CX.L3.MRIS.1020 |  | Test and Balance - MRI Suite Testing - L3 | 5d | 2026-04-16 | 2026-04-22 | CX.L3.MRIS.1010 | 223d |
| CX.L3.MRIS.1030 |  | PFPT mechanical/electrical systems - MRI Suite Testing - L3 | 5d | 2026-08-11 | 2026-08-17 | CX.B2.CWS.1030, CX.L3.MRIS.1020 | 147d |

| ID | WBS | Task | Duration | Start | Finish | Predecessors | Total float |
| --- | --- | --- | --- | --- | --- | --- | --- |
| CX.L3.MRIS.1040 |  | Fume Hood Balancing and testing - MRI Suite Testing - L3 | 5d | 2026-08-18 | 2026-08-24 | CX.PH.EHF.1140, P2.L3.F.CS.1310, CX.L3.MRIS.1030 | 147d |
| CX.L3.MRIS.1050 |  | Fume Hood certification - MRI Suite Testing - L3 | 5d | 2026-08-25 | 2026-08-31 | CX.L3.MRIS.1040 | 147d |
| CX.L3.MRIS.1060 |  | NIH Acceptance test - MRI Suite Testing - L3 | 5d | 2026-09-01 | 2026-09-08 | CX.B2.CWS.1040, CX.L3.MRIS.1050 | 147d |
|  | 4 | **General Supply & Exhaust Terminal Unit Testing** |  | 2026-06-04 | 2027-02-04 |  |  |
| CX.L3.GSE.1000 |  | Startup/Checkout Terminal Units - General Supply & Exhaust Testing - L3 | 10d | 2026-06-04 | 2026-06-17 | P2.L3.SMT.1120, P2.L3.EMT.1240, P2.L3.EMT.1120, P2.L3.SMT.1240, P2.L3.S.1500, P2.3.HE.5959.1140, P2.L3.N.1500, P2.3.HE.5968.1140, CX.B2.MVEE.1010, P2.3.HE.5966.1140, P2.3.HE.2803.1140, CX.B2.SWGR.1010, CX.L3.AHU.1010, CX.L2.AHU.1010, CX.L4.AHU.2010, CX.L4.AHU.1010, P2.L3.LC.1430, CX.L5.AHU.1010, CX.PH.EHF.1010, P2.3.HE.2937.1140, DDD2780 | 89d |
| CX.L3.GSE.1010 |  | Start Up and set Supply/Exhaust Valves - General Supply & Exhaust Testing - L3 | 40d | 2026-07-24 | 2026-09-18 | P2.L3.SMT.1120, P2.L3.EMT.1120, P2.L3.S.1500, P2.L3.N.1500, CX.B2.MVEE.1010, CX.B2.SWGR.1010, CX.L3.AHU.1010, CX.L2.AHU.1010, CX.L4.GSE.1000, CX.L4.AHU.2010, CX.L4.AHU.1010, P2.L3.LC.1430, CX.L5.AHU.1010, CX.PH.EHF.1010 | 24d |
| CX.L3.GSE.1020 |  | P2P/BAS Terminal Units - General Supply & Exhaust Testing - L3 | 20d | 2026-09-21 | 2026-10-16 | CX.L3.GSE.1000, CX.L3.GSE.1010 | 24d |
| CX.L3.GSE.1030 |  | PFPT Terminal Units - General Supply & Exhaust Testing - L3 | 15d | 2026-10-19 | 2026-11-06 | P2.L3.SMT.1230, P2.L3.EMT.1230, P2.3.HE.5959.1140, P2.3.HE.5968.1140, P2.3.HE.5966.1140, CX.B2.PCW.1030 FF, P2.3.HE.2803.1140, CX.B2.RWS.1030 FF, CX.L3.GSE.1020, P2.3.HE.2937.1140 | 24d |
| CX.L3.GSE.1040 |  | Preliminary TAB Floor - General Supply & Exhaust Testing - L3 | 40d | 2026-11-09 | 2027-01-07 | P2.L3.F.CS.1140 FF+10d, P2.3.HE.5968.1130 FF+10d, P2.3.HE.5966.1130 FF+10d, P2.3.HE.2803.1130 FF+10d, P2.3.HE.5959.1130 FF+10d, P2.L3.N.1420 FF+10d, P2.L3.S.1420 FF+10d, P2.L3.F.LC.2260 FF+10d, P2.L3.F.LC.1260 FF+10d, P2.L3.LC.1410 FF+10d, CX.L5.AHU.1020 FF, CX.L4.AHU.2020 FF, CX.L4.AHU.1020 FF, P2.L3.BR.4160 FF+10d, CX.L3.AHU.1020 FF, CX.L2.AHU.1020 FF, P2.L3.BR.3160 FF+10d, P2.L3.BR.2160 FF+10d, P2.L3.BR.1160 FF+10d, P2.L3.F.CS.2140 FF+10d, CX.L3.GSE.1030, CX.L4.GSE.1040, P2.L3.EMT.1210 FF+10d, P2.L3.SMT.1210 FF+10d, P2.L3.F.LC.3260 FF+10d, P2.3.HE.2937.1130 FF+10d | 24d |
| CX.L3.GSE.1050 |  | FPT Terminal Units - General Supply & Exhaust Testing - L3 | 20d | 2027-01-08 | 2027-02-04 | P2.SUM.225, CX.L3.AHU.1040 FF, CX.B2.PCW.1040 FF, CX.B2.RWS.1040 FF, CX.L3.GSE.1040, CX.L3.AHU.1040, CX.L2.AHU.1040, CX.L5.AHU.1040, CX.PH.EHF.1040 | 24d |
|  | 5 | **Level 4** |  | 2026-04-15 | 2026-10-20 |  |  |
|  | 1 | **480/120 Distribution Panels Dry XFMRs (5 Elec RMs)** |  | 2026-04-15 | 2026-06-10 |  |  |
| CX.L4.SWGR.1000 |  | Start Up - 480/120 Distribution Panels Bry XFMRs - L4 | 10d | 2026-04-15 | 2026-04-28 | P2.L4.S.1550, P2.4.HE.2948.1140, P2.4.HE.3959.1140, P2.L4.N.1550, P2.4.HE.5966.1140, P2.4.HE.2803.1140, P2.L4.INT.S.1400, P2.L4.INT.N.1400, P2.L4.EMT.1250, P2.L4.SMT.1240, P2.L5.S.1550, P2.L5.N.1550, CX.B2.SWGR.1010, CX.B2.MVEE.1010 | 137d |
| CX.L4.SWGR.1010 |  | PFPT - 480/120 Distribution Panels Bry XFMRs - L4 | 20d | 2026-04-29 | 2026-05-27 | P2.4.HE.5966.1140, P2.4.IT.2818.250, P2.4.IT.3930.250, P2.4.IT.3875.250, P2.L4.SMT.1230, P2.L4.EMT.1240, CX.L4.SWGR.1000 | 137d |
| CX.L4.SWGR.1020 |  | FPT - 480/120 Distribution Panels Bry XFMRs - L4 | 10d | 2026-05-28 | 2026-06-10 | P2.B2.M.5970.1120, P2.UTL.130, CX.L4.SWGR.1010 | 164d |
|  | 2 | **AHU 4-2, 4-1** |  | 2026-04-16 | 2026-09-29 |  |  |
| CX.L4.AHU.1000 |  | Startup - AHU 4-1, 4-2 - L4 | 10d | 2026-04-16 | 2026-04-29 | P2.L2.S.1550, P2.L2.N.1550, P2.L4.S.1550, P2.L4.S.1500, P2.L4.N.1500, P2.4.HE.2948.1140, P2.4.HE.3959.1140, P2.L4.N.1550, P2.4.HE.5966.1140, P2.4.HE.2803.1140, P2.4.IT.2818.240, P2.4.IT.3930.240, P2.B2.WC.1280, P2.B2.SC.1290, P2.B2.WC.1640, P2.L2.INT.S.1400, P2.L1.S.1550, P2.L1.N.1550, P2.L4.INT.S.1400, P2.L2.INT.N.1400, P2.L4.INT.N.1400, P2.L4.INT.N.1360, P2.L4.SMT.1120, P2.L4.EMT.1250, P2.L3.S.1550, P2.L4.EMT.1230, P2.L4.EMT.1130, P2.L4.SMT.1240, P2.L3.N.1550, CX.B2.SWGR.1010, CX.B2.MVEE.1010, P2.B2.S.1550, P2.B2.N.1550, P2.L1.LC.1550, P2.L3.LC.1550, DDD2330, DDD2280, DDD2180, DDD3130, DDD3030, DDD2270, DDD2580, DDD2980, DDD3080, FRG.P2.L4.SMT.1030 | 8d |
| CX.L4.AHU.1010 |  | P2P/BAS - AHU 4-1, 4-2 - L4 | 20d | 2026-05-06 | 2026-06-03 | CX.B2.CHS.1010, CX.B2.GHWS.1010, CX.L4.AHU.1000 | 4d |
| CX.L4.AHU.1020 |  | Test and Balance - AHU 4-1, 4-2 - L4 | 20d | 2026-06-04 | 2026-07-01 | CX.L4.AHU.1010 | 79d |
| CX.L4.AHU.1030 |  | PFPT - AHU 4-1, 4-2 - L4 | 10d | 2026-09-01 | 2026-09-15 | P2.4.HE.5966.1140, P2.4.IT.2818.250, P2.4.IT.3930.250, P2.4.IT.3875.250, P2.L4.SMT.1230, P2.L4.EMT.1240, CX.B2.CHS.1040, CX.B2.GHWS.1040 FF, CX.B2.CSH.1030, CX.L4.AHU.1020 | 97d |
| CX.L4.AHU.1040 |  | FPT - AHU 4-1, 4-2 - L4 | 10d | 2026-09-16 | 2026-09-29 | P2.B2.M.5970.1120, P2.UTL.130, CX.B2.CSH.1040 FF, CX.L4.AHU.1030, CX.L4.SWGR.1020 | 97d |
|  | 3 | **AHU 4-3** |  | 2026-04-16 | 2026-10-06 |  |  |
| CX.L4.AHU.2000 |  | Startup - AHU 4-3 - L4 | 5d | 2026-04-16 | 2026-04-22 | P2.L2.S.1550, P2.L2.N.1550, P2.L4.S.1550, P2.L4.S.1500, P2.L4.N.1500, P2.4.HE.2948.1140, P2.4.HE.3959.1140, P2.L4.N.1550, P2.4.HE.5966.1140, P2.4.HE.2803.1140, P2.4.IT.2818.240, P2.4.IT.3930.240, P2.B2.WC.1280, P2.B2.WC.1640, P2.L2.INT.S.1400, P2.L1.S.1550, P2.L1.N.1550, P2.L4.INT.S.1400, P2.L2.INT.N.1400, P2.L4.INT.N.1400, P2.L4.INT.N.1360, P2.L4.SMT.1120, P2.L4.EMT.1250, P2.L3.S.1550, P2.L4.EMT.1230, P2.L4.EMT.1130, P2.L4.SMT.1240, P2.L3.N.1550, CX.B2.SWGR.1010, CX.B2.MVEE.1010, P2.B2.S.1550, P2.B2.N.1550, P2.L1.LC.1550, P2.L3.LC.1550, DDD2130, DDD2930, FRG.P2.L4.EMT.1020 | 23d |
| CX.L4.AHU.2010 |  | P2P/BAS - AHU 4-3 - L4 | 10d | 2026-05-06 | 2026-05-19 | CX.B2.CHS.1010, CX.B2.GHWS.1010, CX.L4.AHU.2000 | 14d |
| CX.L4.AHU.2020 |  | Test and Balance - AHU 4-3 - L4 | 15d | 2026-05-20 | 2026-06-10 | CX.L4.AHU.2010 | 94d |
| CX.L4.AHU.2030 |  | PFPT - AHU 4-3 - L4 | 5d | 2026-09-01 | 2026-09-08 | P2.4.HE.5966.1140, P2.4.IT.2818.250, P2.4.IT.3930.250, P2.4.IT.3875.250, P2.L4.SMT.1230, P2.L4.EMT.1240, CX.B2.CHS.1040, CX.B2.GHWS.1040 FF, CX.B2.CSH.1030, CX.L4.AHU.2020 | 112d |
| CX.L4.AHU.2040 |  | FPT - AHU 4-3 - L4 | 5d | 2026-09-30 | 2026-10-06 | P2.B2.M.5970.1120, P2.UTL.130, CX.B2.CSH.1040 FF, CX.L4.AHU.2030, CX.L4.AHU.1040 | 97d |
|  | 4 | **General Supply & Exhaust Terminal Unit Testing** |  | 2026-06-04 | 2026-10-20 |  |  |
| CX.L4.GSE.1000 |  | Start Up and set Supply/Exhaust Valves - General Supply & Exhaust Testing - L4 | 35d | 2026-06-04 | 2026-07-23 | P2.L4.S.1500, P2.L4.N.1500, P2.L4.INT.S.1400, P2.L4.INT.N.1360, P2.L4.SMT.1120, P2.L4.EMT.1130, P2.L4.EMT.1230, CX.B2.SWGR.1010, CX.B2.MVEE.1010, CX.L3.AHU.1010, CX.L2.AHU.1010, CX.L4.AHU.2010, CX.L4.AHU.1010, CX.L5.AHU.1010, CX.PH.EHF.1010 | 24d |
| CX.L4.GSE.1010 |  | Startup/Checkout Terminal Units - General Supply & Exhaust Testing - L4 | 10d | 2026-06-04 | 2026-06-17 | P2.L4.S.1500, P2.L4.N.1500, P2.4.HE.2948.1140, P2.4.HE.3959.1140, P2.4.HE.5966.1140, P2.4.HE.2803.1140, P2.4.IT.2818.240, P2.4.IT.3930.240, P2.L4.INT.S.1400, P2.L4.INT.N.1360, P2.L4.SMT.1120, P2.L4.EMT.1250, P2.L4.EMT.1130, P2.L4.EMT.1230, P2.L4.SMT.1240, CX.B2.SWGR.1010, CX.B2.MVEE.1010, CX.L3.AHU.1010, CX.L2.AHU.1010, CX.L4.AHU.2010, CX.L4.AHU.1010, CX.L5.AHU.1010, CX.PH.EHF.1010, DDD2780 | 84d |
| CX.L4.GSE.1020 |  | P2P/BAS Terminal Units - General Supply & Exhaust Testing - L4 | 10d | 2026-07-24 | 2026-08-06 | CX.L4.GSE.1010, CX.L4.GSE.1000 | 59d |
| CX.L4.GSE.1030 |  | PFPT Terminal Units - General Supply & Exhaust Testing - L4 | 10d | 2026-08-07 | 2026-08-20 | P2.4.IT.2818.250, P2.4.IT.3930.250, P2.4.IT.3875.250, P2.L4.SMT.1230, P2.L4.EMT.1240, CX.B2.PCW.1030 FF, CX.B2.RWS.1030 FF, CX.L4.GSE.1020 | 59d |
| CX.L4.GSE.1040 |  | Preliminary TAB Floor - General Supply & Exhaust Testing - L4 | 20d | 2026-08-21 | 2026-09-18 | P2.L4.INT.S.2020 FF+10d, P2.L4.BR.1160 FF+10d, P2.L4.F.CS.3140 FF+10d, P2.L4.F.CS.2140 FF+10d, P2.L4.F.CS.1140 FF+10d, P2.4.IT.3875.230 FF+10d, P2.4.IT.2818.230 FF+10d, P2.4.IT.3930.230 FF+10d, P2.4.HE.2803.1130 FF+10d, P2.4.HE.5966.1130 FF+10d, P2.L4.EMT.1220 FF+10d, P2.L4.SMT.1210 FF+10d, P2.L4.INT.N.2020 FF+10d, CX.L5.AHU.1020 FF, CX.L4.AHU.2020 FF, CX.L4.AHU.1020 FF, CX.L3.AHU.1020 FF, CX.L2.AHU.1020 FF, P2.4.HE.2948.1130 FF+10d, P2.4.HE.3959.1130 FF+10d, CX.L4.GSE.1030 | 59d |
| CX.L4.GSE.1050 |  | FPT Terminal Units - General Supply & Exhaust Testing - L4 | 10d | 2026-10-07 | 2026-10-20 | P2.B2.M.5970.1120, P2.UTL.130, CX.B2.PCW.1040 FF, CX.B2.RWS.1040 FF, CX.L3.AHU.1040, CX.L2.AHU.1040, CX.L4.GSE.1040, CX.L4.AHU.2040, CX.L5.AHU.1040, CX.PH.EHF.1040 | 97d |
|  | 2 | **Level 5** |  | 2026-04-01 | 2027-03-04 |  |  |
|  | 1 | **480/120 Distribution Panels Dry XFMRs (4 Elec RMs)** |  | 2026-04-01 | 2026-05-27 |  |  |
| CX.L5.SWGR.1000 |  | Start Up - 480/120 Distribution Panels Bry XFMRs - L5 | 10d | 2026-04-01 | 2026-04-14 | P2.L5.SMT.1240, P2.L5.EMT.1240, P2.5.HE.2949.1140, CX.B2.SWGR.1010, P2.5.HE.3989.1140, CX.B2.MVEE.1010, P2.5.HE.5966.1140, P2.5.HE.2803.1140 | 147d |
| CX.L5.SWGR.1010 |  | PFPT - 480/120 Distribution Panels Bry XFMRs - L5 | 20d | 2026-04-15 | 2026-05-12 | P2.L5.EMT.1230, P2.5.HE.2949.1140, P2.5.HE.3989.1140, P2.5.HE.5966.1140, P2.5.HE.2803.1140, CX.L5.SWGR.1000 | 147d |
| CX.L5.SWGR.1020 |  | FPT - 480/120 Distribution Panels Bry XFMRs - L5 | 10d | 2026-05-13 | 2026-05-27 | CX.L5.SWGR.1010 | 169d |
|  | 2 | **BSL/Sterility - 3 Lab ( Medical Equip & Systems)** |  | 2026-08-11 | 2026-11-10 |  |  |
| CX.L5.BSL.1000 |  | Startup - BSL3 & Sterility Lab Testing - L5 | 5d | 2026-08-11 | 2026-08-17 | CX.PH.EHF.1110, P2.L5.SMT.1240, P2.L5.SMT.1120, P2.L5.SMT.1230, P2.L5.F.LC.4050, P2.L5.EMT.1240, P2.L5.EMT.1120, P2.L5.S.1500, P2.L5.N.1500, P2.5.HE.2949.1140, CX.B2.SWGR.1010, P2.5.HE.3989.1140, CX.B2.MVEE.1010, P2.5.HE.5966.1140, P2.5.HE.2803.1140, CX.L6.AHU.2010, P2.L5.LC.1550, CX.L7.AHU.2010, P2.L5.LC.1500, DDD2530 | 77d |
| CX.L5.BSL.1010 |  | P2P/BAS - BSL3 & Sterility Lab Testing - L5 | 5d | 2026-08-18 | 2026-08-24 | CX.L5.BSL.1000 | 77d |
| CX.L5.BSL.1020 |  | Test and Balance - BSL3 & Sterility Lab Testing - L5 | 5d | 2026-08-25 | 2026-08-31 | CX.L5.BSL.1010 | 77d |
| CX.L5.BSL.1030 |  | PFPT mechanical/electrical systems - BSL3 & Sterility Lab Testing - L5 | 5d | 2026-09-01 | 2026-09-08 | P2.5.HE.3989.1140, P2.5.HE.5966.1140, CX.B2.GMPRH.1030, CX.L5.BSL.1020 | 77d |
| CX.L5.BSL.1040 |  | Room Balancing - BSL3 & Sterility Lab Testing - L5 | 5d | 2026-09-09 | 2026-09-15 | CX.L7.AHU.2020 FF, CX.L6.AHU.2020 FF, CX.L5.BSL.1030 | 77d |
| CX.L5.BSL.1050 |  | Fume Hood Balancing and testing - BSL3 & Sterility Lab Testing - L5 | 5d | 2026-09-16 | 2026-09-22 | CX.PH.EHF.1140, P2.L5.F.LC.4160, P2.L5.F.LC.4230, P2.L5.F.LC.2410, P2.L5.F.LC.4090, P2.L5.F.LC.4130, CX.L5.BSL.1040 | 77d |
| CX.L5.BSL.1060 |  | Fume Hood certification - BSL3 & Sterility Lab Testing - L5 | 5d | 2026-09-23 | 2026-09-29 | CX.L5.BSL.1050 | 77d |
| CX.L5.BSL.1070 |  | Test Lab Equipment (Washer/Disinfector) - BSL3 & Sterility Lab Testing - L5 | 5d | 2026-09-30 | 2026-10-06 | CX.L5.BSL.1060 | 77d |
| CX.L5.BSL.1080 |  | Install Carbon Filters - BSL3 & Sterility Lab Testing - L5 | 10d | 2026-10-07 | 2026-10-20 | CX.L5.BSL.1070 | 77d |
| CX.L5.BSL.1090 |  | Certify Room - BSL3 & Sterility Lab Testing - L5 | 10d | 2026-10-21 | 2026-11-03 | CX.L5.BSL.1080 | 82d |
| CX.L5.BSL.1100 |  | NIH Acceptance test - BSL3 & Sterility Lab Testing - L5 | 5d | 2026-11-04 | 2026-11-10 | CX.B2.GMPRH.1040 FF, CX.L5.BSL.1090, CX.L7.AHU.2040, CX.L6.AHU.2040 | 82d |
|  | 3 | **AHU 5-1, 5-2** |  | 2026-04-16 | 2026-09-29 |  |  |
| CX.L5.AHU.1000 |  | Startup - AHU 5-1, 5-2 - L5 | 10d | 2026-04-16 | 2026-04-29 | P2.L2.S.1550, P2.L5.SMT.1240, P2.L5.SMT.1230, P2.L2.N.1550, P2.L5.SMT.1120, P2.L5.F.LC.4050, P2.L5.EMT.1240, P2.L5.EMT.1120, P2.L4.S.1550, P2.L2.INT.N.2250, P2.L4.N.1550, P2.B2.WC.1280, P2.B2.SC.1290, P2.B2.WC.1640, P2.L2.INT.S.1400, P2.L1.S.1550, P2.L4.INT.S.1400, P2.L2.INT.N.1400, P2.L4.INT.N.1400, P2.L1.N.1550, P2.L3.S.1550, P2.L3.N.1550, P2.L5.S.1500, P2.L5.N.1500, P2.5.HE.2949.1140, CX.B2.SWGR.1010, P2.5.HE.3989.1140, CX.B2.MVEE.1010, P2.B2.S.1550, P2.5.HE.5966.1140, P2.5.HE.2803.1140, P2.B2.N.1550, P2.L1.LC.1550, P2.L5.LC.1500, P2.L3.LC.1550, DDD2180, DDD2130, DDD2980, DDD2930, DDD2330, DDD3130, DDD2580, DDD3030, DDD3080, FRG.P2.L5.SMT.1040 | 8d |
| CX.L5.AHU.1010 |  | P2P/BAS - AHU 5-1, 5-2 - L5 | 20d | 2026-05-06 | 2026-06-03 | CX.B2.CHS.1010, CX.B2.GHWS.1010, CX.L5.AHU.1000 | 4d |
| CX.L5.AHU.1020 |  | Test and Balance - AHU 5-1, 5-2 - L5 | 20d | 2026-06-04 | 2026-07-01 | CX.L5.AHU.1010 | 79d |
| CX.L5.AHU.1030 |  | PFPT - AHU 5-1, 5-2 - L5 | 10d | 2026-09-01 | 2026-09-15 | P2.L5.EMT.1230, P2.5.HE.2949.1140, CX.B2.CHS.1040, CX.B2.GHWS.1040 FF, P2.5.HE.3989.1140, CX.B2.CSH.1030, P2.5.HE.5966.1140, P2.5.HE.2803.1140, CX.L5.AHU.1020 | 92d |
| CX.L5.AHU.1040 |  | FPT - AHU 5-1, 5-2 - L5 | 10d | 2026-09-16 | 2026-09-29 | CX.B2.CSH.1040 FF, CX.L5.SWGR.1020, CX.L5.AHU.1030 | 92d |
|  | 4 | **General Supply & Exhaust Terminal Unit Testing** |  | 2026-07-01 | 2027-03-04 |  |  |
| CX.L5.GSE.1000 |  | Startup/Checkout Terminal Units - General Supply & Exhaust Testing - L5 | 20d | 2026-07-01 | 2026-07-29 | CX.PH.EHF.1100, P2.L5.SMT.1240, P2.L5.SMT.1230, P2.L5.SMT.1120, P2.L5.F.LC.4050, P2.L5.EMT.1240, P2.L5.EMT.1120, P2.L2.INT.N.2250, P2.L5.S.1500, P2.L5.N.1500, P2.5.HE.2949.1140, CX.B2.SWGR.1010, P2.5.HE.3989.1140, CX.B2.MVEE.1010, P2.5.HE.5966.1140, P2.5.HE.2803.1140, CX.L6.AHU.1010, P2.L5.LC.1550, P2.L5.LC.1500, CX.L7.AHU.1010, DDD2780 | 40d |
| CX.L5.GSE.1010 |  | Start Up and set Supply/Exhaust Valves - General Supply & Exhaust Testing - L5 | 35d | 2026-07-31 | 2026-09-18 | CX.PH.EHF.1100, P2.L5.SMT.1230, P2.L5.SMT.1120, P2.L5.F.LC.4050, P2.L5.EMT.1120, P2.L2.INT.N.2250, P2.L5.S.1500, P2.L5.N.1500, CX.B2.SWGR.1010, CX.B2.MVEE.1010, CX.L6.AHU.1010, P2.L5.LC.1550, P2.L5.LC.1500, CX.L7.AHU.1010, CX.L6.GSE.1000 | 4d |
| CX.L5.GSE.1020 |  | P2P/BAS Terminal Units - General Supply & Exhaust Testing - L5 | 25d | 2026-09-21 | 2026-10-23 | CX.L5.GSE.1000, CX.L5.GSE.1010 | 4d |
| CX.L5.GSE.1030 |  | PFPT Terminal Units - General Supply & Exhaust Testing - L5 | 20d | 2026-10-26 | 2026-11-20 | P2.L5.EMT.1230, CX.B2.PCW.1030 FF, P2.5.HE.2949.1140, CX.B2.RWS.1030 FF, P2.5.HE.3989.1140, P2.5.HE.5966.1140, P2.5.HE.2803.1140, CX.L5.GSE.1020 | 4d |
| CX.L5.GSE.1040 |  | Preliminary TAB Floor - General Supply & Exhaust Testing - L5 | 60d | 2026-11-23 | 2027-02-18 | P2.5.HE.2803.1130 FF+20d, P2.5.HE.2949.1130 FF+20d, P2.5.HE.3989.1130 FF+20d, P2.L5.N.1420 FF+20d, P2.L5.S.1420 FF+20d, P2.L5.F.LC.1260 FF+20d, P2.L5.LC.1420 FF+20d, CX.L7.AHU.1020 FF, CX.L6.AHU.1020 FF, P2.L5.BR.2250 FF+20d, P2.L5.BR.1160 FF+20d, P2.L5.F.CS.1140 FF+20d, P2.L5.F.CS.2140 FF+20d, P2.5.HE.5966.1130 FF+20d, P2.L5.EMT.1210 FF+20d, P2.L5.SMT.1210 FF+20d, CX.L5.GSE.1030, P2.L5.F.LC.3260 FF+20d, CX.L6.GSE.1040, P2.L5.F.LC.2260 FF+20d | 4d |
| CX.L5.GSE.1050 |  | FPT Terminal Units - General Supply & Exhaust Testing - L5 | 10d | 2027-02-19 | 2027-03-04 | CX.PH.EHF.1040, CX.B2.PCW.1040 FF, CX.B2.RWS.1040 FF, CX.L6.AHU.1040, CX.L5.GSE.1040, CX.L7.AHU.1040 | 4d |
|  | 3 | **Level 6** |  | 2026-04-01 | 2026-12-01 |  |  |
|  | 1 | **480/120 Distribution Panels Dry XFMRs (5 Elec RMs)** |  | 2026-04-15 | 2026-06-10 |  |  |
| CX.L6.SWGR.1000 |  | Start Up - 480/120 Distribution Panels Bry XFMRs - L6 | 10d | 2026-04-15 | 2026-04-28 | P2.L6.S.1550, P2.6.HE.2947.1140, P2.6.HE.5966.1140, P2.L6.N.1550, P2.6.HE.5959.1140, P2.6.HE.2803.1140, P2.L6.EMT.1240, P2.L6.EMT.1230, P2.L6.SMT.1240, CX.B2.SWGR.1010, CX.B2.MVEE.1010 | 137d |
| CX.L6.SWGR.1010 |  | PFPT - 480/120 Distribution Panels Bry XFMRs - L6 | 20d | 2026-04-29 | 2026-05-27 | P2.6.IT.2818.250, P2.6.IT.3929.250, P2.6.IT.2865.250, CX.L6.SWGR.1000 | 137d |
| CX.L6.SWGR.1020 |  | FPT - 480/120 Distribution Panels Bry XFMRs - L6 | 10d | 2026-05-28 | 2026-06-10 | CX.L6.SWGR.1010 | 154d |
|  | 5 | **UPS** |  | 2026-04-15 | 2026-06-17 |  |  |

| ID | WBS | Task | Duration | Start | Finish | Predecessors | Total float |
| --- | --- | --- | --- | --- | --- | --- | --- |
| CX.L6.UPS.1000 |  | Start Up - UPS - L6 | 5d | 2026-04-15 | 2026-04-21 | P2.L6.S.1550, P2.L6.S.1500, P2.L6.N.1500, P2.6.HE.2947.1140, P2.6.HE.5966.1140, P2.L6.N.1550, P2.6.HE.5959.1140, P2.6.HE.2803.1140, P2.L6.INT.S.1400, P2.L6.INT.S.1360, P2.L6.INT.N.1360, P2.L6.SMT.1120, P2.L6.SMT.1230, P2.L6.INT.N.1400, P2.L6.EMT.1240, P2.L6.EMT.1230, P2.L6.EMT.1120, P2.L6.SMT.1240, CX.B2.SWGR.1010, CX.B2.MVEE.1010 | 179d |
| CX.L6.UPS.1010 |  | PFPT - UPS - L6 | 10d | 2026-04-22 | 2026-05-05 | P2.6.IT.2818.250, P2.6.IT.3929.250, P2.6.IT.2865.250, CX.L6.UPS.1000 | 179d |
| CX.L6.UPS.1020 |  | FPT - UPS - L6 | 5d | 2026-06-11 | 2026-06-17 | CX.L6.UPS.1010, CX.L6.SWGR.1020 | 154d |
|  | 2 | **AHU 6-1, 6-2** |  | 2026-05-19 | 2026-09-29 |  |  |
| CX.L6.AHU.1000 |  | Startup - AHU 6-1, 6-2 - L6 | 10d | 2026-05-19 | 2026-06-02 | P2.L6.S.1550, P2.L6.S.1500, P2.L8.S.1550, P2.L8.N.1550, P2.L6.N.1500, P2.6.HE.2947.1140, P2.6.HE.5966.1140, P2.L6.N.1550, P2.6.HE.5959.1140, P2.6.HE.2803.1140, P2.L8.INT.S.1400, P2.L8.INT.N.1400, P2.L6.INT.S.1400, P2.L6.INT.S.1360, P2.L6.INT.N.1360, P2.L6.SMT.1230, P2.L6.SMT.1120, P2.L6.INT.N.1400, P2.L6.EMT.1240, P2.L6.EMT.1230, P2.L6.EMT.1120, P2.L6.SMT.1240, P2.L5.S.1550, P2.L5.N.1550, P2.L7.S.1550, CX.B2.SWGR.1010, CX.B2.MVEE.1010, P2.L7.N.1550, P2.L7.LC.1550, P2.L5.LC.1550, DDD2330, DDD2180, DDD3130, DDD2580, DDD3030, DDD3080, FRG.P2.L6.SMT.1040 | 0d |
| CX.L6.AHU.1010 |  | P2P/BAS - AHU 6-1, 6-2 - L6 | 20d | 2026-06-03 | 2026-06-30 | CX.B2.CHS.1010, CX.B2.GHWS.1010, CX.L6.AHU.1000 | 0d |
| CX.L6.AHU.1020 |  | Test and Balance - AHU 6-1, 6-2 - L6 | 20d | 2026-07-01 | 2026-07-29 | CX.L6.AHU.1010 | 75d |
| CX.L6.AHU.1030 |  | PFPT - AHU 6-1, 6-2 - L6 | 10d | 2026-09-01 | 2026-09-15 | P2.6.IT.2818.250, P2.6.IT.3929.250, P2.6.IT.2865.250, CX.B2.CHS.1040, CX.B2.GHWS.1040 FF, CX.B2.CSH.1030, CX.L6.AHU.1020 | 92d |
| CX.L6.AHU.1040 |  | FPT - AHU 6-1, 6-2 - L6 | 10d | 2026-09-16 | 2026-09-29 | CX.B2.CSH.1040 FF, CX.L6.AHU.1030, CX.L6.UPS.1020 | 92d |
|  | 3 | **AHU 6-3, 6-4** |  | 2026-04-01 | 2026-10-13 |  |  |
| CX.L6.AHU.2000 |  | Startup - AHU 6-3, 6-4 - L6 | 10d | 2026-04-01 | 2026-04-14 | P2.L6.N.1500, P2.6.HE.2947.1140, P2.6.HE.5966.1140, P2.6.HE.5959.1140, P2.6.HE.2803.1140, P2.L6.INT.N.1360, P2.L6.EMT.1240, P2.L6.EMT.1230, P2.L6.EMT.1120, CX.B2.SWGR.1010, CX.B2.MVEE.1010, P2.L5.LC.1550, DDD2930, DDD2130, FRG.P2.L6.EMT.1040 | 139d |
| CX.L6.AHU.2010 |  | P2P/BAS - AHU 6-3, 6-4 - L6 | 20d | 2026-07-14 | 2026-08-10 | CX.B2.CHS.1010, CX.B2.GHWS.1010, CX.B2.GMPGW.1010, CX.L6.AHU.2000 | 77d |
| CX.L6.AHU.2020 |  | Test and Balance - AHU 6-3, 6-4 - L6 | 20d | 2026-08-11 | 2026-09-08 | CX.L6.AHU.2010 | 82d |
| CX.L6.AHU.2030 |  | PFPT - AHU 6-3, 6-4 - L6 | 10d | 2026-09-09 | 2026-09-22 | P2.6.IT.3929.250, P2.6.IT.2865.250, CX.B2.CHS.1040, CX.B2.GHWS.1040 FF, CX.B2.CSH.1030, CX.B2.GMPGW.1040, CX.L6.AHU.2020 | 102d |
| CX.L6.AHU.2040 |  | FPT - AHU 6-3, 6-4 - L6 | 10d | 2026-09-30 | 2026-10-13 | CX.B2.CSH.1040 FF, CX.L6.AHU.1040, CX.L6.AHU.2030 | 97d |
|  | 4 | **General Supply & Exhaust Terminal Unit Testing** |  | 2026-07-01 | 2026-12-01 |  |  |
| CX.L6.GSE.1010 |  | Startup/Checkout Terminal Units - General Supply & Exhaust Testing - L6 | 20d | 2026-07-01 | 2026-07-29 | CX.PH.EHF.1100, P2.L6.S.1500, P2.L6.N.1500, P2.6.HE.2947.1140, P2.6.HE.5966.1140, P2.6.HE.5959.1140, P2.6.HE.2803.1140, P2.L6.INT.S.1360, P2.L6.INT.N.1360, P2.L6.SMT.1230, P2.L6.SMT.1120, P2.L6.EMT.1240, P2.L6.EMT.1230, P2.L6.EMT.1120, P2.L6.SMT.1240, CX.B2.SWGR.1010, CX.B2.MVEE.1010, CX.L6.AHU.1010, CX.L7.AHU.1010, DDD2780 | 40d |
| CX.L6.GSE.1000 |  | Start Up and set Supply/Exhaust Valves - General Supply & Exhaust Testing - L6 | 10d | 2026-07-17 | 2026-07-30 | CX.PH.EHF.1100, CX.B2.SWGR.1010, CX.B2.MVEE.1010, CX.B2.GSE.1010, CX.L6.AHU.1010, CX.L7.AHU.1010 | 4d |
| CX.L6.GSE.1020 |  | P2P/BAS Terminal Units - General Supply & Exhaust Testing - L6 | 10d | 2026-07-31 | 2026-08-13 | CX.L6.GSE.1010, CX.L6.GSE.1000 | 39d |
| CX.L6.GSE.1030 |  | PFPT Terminal Units - General Supply & Exhaust Testing - L6 | 10d | 2026-08-14 | 2026-08-27 | P2.6.IT.2818.250, P2.6.IT.3929.250, P2.6.IT.2865.250, CX.B2.PCW.1030 FF, CX.B2.RWS.1030 FF, CX.L6.GSE.1020 | 39d |
| CX.L6.GSE.1040 |  | Preliminary TAB Floor - General Supply & Exhaust Testing - L6 | 25d | 2026-10-19 | 2026-11-20 | P2.L6.BR.2160 FF+10d, P2.L6.BR.1250 FF+10d, P2.L6.F.CS.2140 FF+10d, P2.L6.F.CS.1140 FF+10d, P2.6.IT.3929.230 FF+10d, P2.6.IT.2865.230 FF+10d, P2.6.IT.2818.230 FF+10d, P2.6.HE.5959.1130 FF+10d, P2.6.HE.2803.1130 FF+10d, P2.6.HE.2947.1130 FF+10d, P2.6.HE.5966.1130 FF+10d, P2.L6.EMT.1210 FF+10d, P2.L6.SMT.1210 FF+10d, P2.L6.INT.N.2020 FF+10d, P2.L6.INT.S.2020 FF+10d, CX.L7.AHU.1020 FF, CX.L6.AHU.1020 FF, CX.B2.GSE.1040, P2.L6.N.1420 FF+10d, P2.L6.S.1420 FF+10d, CX.L6.GSE.1030 | 4d |
| CX.L6.GSE.1050 |  | FPT Terminal Units - General Supply & Exhaust Testing - L6 | 5d | 2026-11-23 | 2026-12-01 | CX.PH.EHF.1040, CX.B2.PCW.1040 FF, CX.B2.RWS.1040 FF, CX.L6.AHU.1040, CX.L7.AHU.1040, CX.L6.GSE.1040, CX.L6.AHU.2040 | 69d |
|  | 7 | **Level 7** |  | 2026-05-12 | 2027-03-10 |  |  |
|  | 1 | **480/120 Distribution Panels Dry XFMRs (5 Elec RMs)** |  | 2026-05-19 | 2026-07-15 |  |  |
| CX.L7.SWGR.1000 |  | Start Up - 480/120 Distribution Panels Bry XFMRs - L7 | 10d | 2026-05-19 | 2026-06-02 | P2.L7.SMT.1240, P2.L7.SMT.1230, P2.L7.EMT.1240, P2.L7.EMT.1230, P2.L7.S.1550, CX.B2.SWGR.1010, CX.B2.MVEE.1010, P2.7.HE.2803.1140, P2.7.HE.2941.1140, P2.L7.N.1550, P2.7.HE.5959.1140, P2.L7.LC.1550 | 113d |
| CX.L7.SWGR.1010 |  | PFPT - 480/120 Distribution Panels Bry XFMRs - L7 | 20d | 2026-06-03 | 2026-06-30 | CX.L7.SWGR.1000 | 113d |
| CX.L7.SWGR.1020 |  | FPT - 480/120 Distribution Panels Bry XFMRs - L7 | 10d | 2026-07-01 | 2026-07-15 | CX.L7.SWGR.1010 | 125d |
|  | 5 | **AHU 7-1, 7-2** |  | 2026-05-19 | 2026-10-08 |  |  |
| CX.L7.AHU.1000 |  | Startup - AHU 7-1, 7-2 - L7 | 10d | 2026-05-19 | 2026-06-02 | P2.L7.SMT.1240, P2.L7.SMT.1120, P2.L7.SMT.1230, P2.L7.EMT.1240, P2.L7.EMT.1120, P2.L7.EMT.1230, P2.L6.S.1550, P2.L8.S.1550, P2.L8.N.1550, P2.L6.N.1550, P2.L8.INT.S.1400, P2.L8.INT.N.1400, P2.L6.INT.S.1400, P2.L6.INT.N.1400, P2.L5.S.1550, P2.L5.N.1550, P2.L7.S.1550, P2.L7.S.1500, P2.L7.N.1500, CX.B2.SWGR.1010, CX.B2.MVEE.1010, P2.7.HE.2803.1140, P2.7.HE.2941.1140, P2.L7.N.1550, P2.7.HE.5959.1140, P2.L7.LC.1550, P2.L7.LC.1500, P2.L5.LC.1550, DDD2180, DDD3030, DDD3080, DDD2330, DDD3130, FRG.P2.L7.SMT.1050 | 0d |
| CX.L7.AHU.1010 |  | P2P/BAS - AHU 7-1, 7-2 - L7 | 20d | 2026-06-03 | 2026-06-30 | CX.B2.CHS.1010, CX.B2.GHWS.1010, CX.L7.AHU.1000 | 0d |
| CX.L7.AHU.1020 |  | Test and Balance - AHU 7-1, 7-2 - L7 | 20d | 2026-07-01 | 2026-07-29 | CX.L7.AHU.1010 | 75d |
| CX.L7.AHU.1030 |  | PFPT - AHU 7-1, 7-2 - L7 | 10d | 2026-09-11 | 2026-09-24 | P2.L7.F.LC.5050, CX.B2.CHS.1040, CX.B2.GHWS.1040 FF, CX.B2.CSH.1030, CX.L7.AHU.1020 | 75d |
| CX.L7.AHU.1040 |  | FPT - AHU 7-1, 7-2 - L7 | 10d | 2026-09-25 | 2026-10-08 | CX.B2.CSH.1040 FF, CX.L7.AHU.1030, CX.L7.SWGR.1020 | 75d |
|  | 2 | **AHU 7-3, 7-4** |  | 2026-05-12 | 2026-10-22 |  |  |
| CX.L7.AHU.2000 |  | Startup - AHU 7-3, 7-4 - L7 | 10d | 2026-05-12 | 2026-05-26 | P2.L7.SMT.1240, P2.L7.EMT.1240, P2.L7.EMT.1120, P2.L7.EMT.1230, P2.L7.N.1500, CX.B2.SWGR.1010, CX.B2.MVEE.1010, P2.7.HE.2803.1140, P2.7.HE.2941.1140, P2.7.HE.5959.1140, P2.L7.LC.1500, P2.L5.LC.1550, DDD2930, FRG.P2.L7.EMT.1050 | 100d |
| CX.L7.AHU.2010 |  | P2P/BAS - AHU 7-3, 7-4 - L7 | 20d | 2026-07-14 | 2026-08-10 | CX.B2.CHS.1010, CX.B2.GHWS.1010, CX.B2.GMPGW.1010, CX.L7.AHU.2000 | 77d |
| CX.L7.AHU.2020 |  | Test and Balance - AHU 7-3, 7-4 - L7 | 20d | 2026-08-11 | 2026-09-08 | CX.L7.AHU.2010 | 82d |
| CX.L7.AHU.2030 |  | PFPT - AHU 7-3, 7-4 - L7 | 10d | 2026-09-11 | 2026-09-24 | P2.L7.F.LC.5050, CX.B2.CHS.1040, CX.B2.GHWS.1040 FF, CX.B2.GMPGW.1040, CX.B2.CSH.1030, CX.L7.AHU.2020 | 85d |
| CX.L7.AHU.2040 |  | FPT - AHU 7-3, 7-4 - L7 | 10d | 2026-10-09 | 2026-10-22 | CX.B2.CSH.1040 FF, CX.B2.RWS.1040, CX.L7.AHU.2030, CX.L7.AHU.1040 | 75d |
|  | 3 | **Sterility Lab Testing (Fume Hoods, Dedicated Exhausts, Medical Equip)** |  | 2026-08-11 | 2026-10-13 |  |  |
| CX.L7.SLT.1000 |  | Startup - Sterility Lab Testing - L7 | 5d | 2026-08-11 | 2026-08-17 | CX.PH.EHF.1120, P2.L7.SMT.1240, P2.L7.SMT.1120, P2.L7.SMT.1230, P2.L7.EMT.1240, P2.L7.EMT.1120, P2.L7.EMT.1230, P2.L7.S.1500, P2.L7.N.1500, CX.B2.SWGR.1010, CX.B2.MVEE.1010, P2.7.HE.2803.1140, P2.7.HE.2941.1140, P2.7.HE.5959.1140, P2.L7.LC.1500, CX.L8.AHU.1010 | 42d |
| CX.L7.SLT.1010 |  | P2P/BAS - Sterility Lab Testing - L7 | 5d | 2026-08-18 | 2026-08-24 | CX.L7.SLT.1000 | 112d |
| CX.L7.SLT.1020 |  | Test and Balance - Sterility Lab Testing - L7 | 5d | 2026-09-01 | 2026-09-08 | CX.L8.AHU.1020 FF, CX.L7.SLT.1010 | 107d |
| CX.L7.SLT.1030 |  | PFPT mechanical/electrical systems - Sterility Lab Testing - L7 | 5d | 2026-09-11 | 2026-09-17 | P2.L7.F.LC.5050, CX.B2.GMPRH.1030, CX.L7.SLT.1020 | 105d |
| CX.L7.SLT.1040 |  | Fume Hood Balancing and testing - Sterility Lab Testing - L7 | 5d | 2026-09-18 | 2026-09-24 | P2.L7.F.LC.2410, CX.PH.EHF.1140, P2.L7.F.LC.3410, P2.L6.F.CS.1310, CX.PH.EHF.1140 FF, CX.L7.SLT.1030 | 105d |
| CX.L7.SLT.1050 |  | Fume Hood certification - Sterility Lab Testing - L7 | 5d | 2026-09-25 | 2026-10-01 | CX.L7.SLT.1040 | 105d |
| CX.L7.SLT.1060 |  | NIH Acceptance test - Sterility Lab Testing - L7 | 5d | 2026-10-07 | 2026-10-13 | CX.B2.GMPRH.1040 FF, CX.L7.SLT.1050, CX.L8.AHU.1040 | 102d |
|  | 6 | **Freezer (Fume Hoods, Dedicated Exhausts, Medical Equip)** |  | 2026-05-12 | 2026-10-13 |  |  |
| CX.L7.FRZ.1000 |  | Startup - Freezer Testing - L7 | 5d | 2026-05-12 | 2026-05-18 | P2.L7.SMT.1240, P2.L7.SMT.1120, P2.L7.SMT.1230, P2.L7.EMT.1240, P2.L7.EMT.1120, P2.L7.EMT.1230, P2.L7.S.1500, P2.L7.N.1500, CX.B2.SWGR.1010, CX.B2.MVEE.1010, P2.7.HE.2803.1140, P2.7.HE.2941.1140, P2.7.HE.5959.1140, P2.L7.LC.1500 | 105d |
| CX.L7.FRZ.1010 |  | P2P/BAS - Freezer Testing - L7 | 5d | 2026-05-19 | 2026-05-26 | CX.L7.FRZ.1000 | 175d |
| CX.L7.FRZ.1020 |  | Test and Balance - Freezer Testing - L7 | 5d | 2026-05-27 | 2026-06-02 | CX.L7.FRZ.1010 | 175d |
| CX.L7.FRZ.1030 |  | PFPT mechanical/electrical systems - Freezer Testing - L7 | 5d | 2026-09-11 | 2026-09-17 | P2.L7.F.LC.5050, CX.L7.FRZ.1020 | 105d |
| CX.L7.FRZ.1040 |  | Fume Hood Balancing and testing - Freezer Testing - L7 | 5d | 2026-09-18 | 2026-09-24 | CX.PH.EHF.1140, CX.L7.FRZ.1030, P2.L7.F.LC.1410 | 105d |
| CX.L7.FRZ.1050 |  | Fume Hood certification - Freezer Testing - L7 | 5d | 2026-09-25 | 2026-10-01 | CX.L7.FRZ.1040 | 105d |
| CX.L7.FRZ.1060 |  | NIH Acceptance test - Freezer Testing - L7 | 5d | 2026-10-07 | 2026-10-13 | CX.L7.SLT.1060 FF, CX.L7.FRZ.1050 | 102d |
|  | 4 | **General Supply & Exhaust Terminal Unit Testing** |  | 2026-07-01 | 2027-03-10 |  |  |
| CX.L7.GSE.1000 |  | Startup/Checkout Terminal Units - General Supply & Exhaust Testing - L7 | 10d | 2026-07-01 | 2026-07-15 | CX.PH.EHF.1100, P2.L7.SMT.1240, P2.L7.SMT.1120, P2.L7.SMT.1230, P2.L7.EMT.1240, P2.L7.EMT.1120, P2.L7.EMT.1230, P2.L7.S.1550, P2.L7.S.1500, P2.L7.N.1500, CX.B2.SWGR.1010, CX.B2.MVEE.1010, P2.7.HE.2803.1140, P2.7.HE.2941.1140, P2.L7.N.1550, P2.7.HE.5959.1140, CX.L6.AHU.1010, P2.L7.LC.1500, CX.L7.AHU.1010, DDD2780, P2.L7.LC.1350 | 40d |
| CX.L7.GSE.1010 |  | Start Up and set Supply/Exhaust Valves - General Supply & Exhaust Testing - L7 | 40d | 2026-07-16 | 2026-09-10 | CX.PH.EHF.1100, P2.L7.SMT.1120, P2.L7.EMT.1120, P2.L7.S.1550, P2.L7.S.1500, P2.L7.N.1500, CX.B2.SWGR.1010, CX.B2.MVEE.1010, P2.L7.N.1550, CX.L6.AHU.1010, P2.L7.LC.1500, CX.L7.AHU.1010, CX.L8.GSE.1010 | 0d |
| CX.L7.GSE.1020 |  | P2P/BAS Terminal Units - General Supply & Exhaust Testing - L7 | 25d | 2026-09-11 | 2026-10-15 | CX.L7.GSE.1000, CX.L7.GSE.1010 | 0d |
| CX.L7.GSE.1030 |  | PFPT Terminal Units - General Supply & Exhaust Testing - L7 | 20d | 2026-10-16 | 2026-11-12 | P2.L7.F.LC.5050, CX.B2.PCW.1030 FF, CX.B2.RWS.1030 FF, CX.L7.GSE.1020 | 0d |
| CX.L7.GSE.1040 |  | Preliminary TAB Floor - General Supply & Exhaust Testing - L7 | 60d | 2026-11-13 | 2027-02-10 | P2.L7.N.1090 FF+20d, P2.L7.S.1090 FF+20d, P2.L7.F.LC.2260 FF+20d, CX.L7.AHU.1020 FF, P2.L7.F.LC.1260 FF+20d, CX.L6.AHU.1020 FF, P2.L7.LC.1420 FF+20d, P2.L7.BR.2160 FF+20d, P2.L7.BR.1250 FF+20d, P2.7.HE.5959.1130 FF+20d, P2.7.HE.2803.1130 FF+20d, P2.7.HE.2941.1130 FF+20d, P2.L7.EMT.1210 FF+20d, P2.L7.SMT.1210 FF+20d, P2.L7.F.LC.4260 FF+20d, P2.L7.F.LC.3260 FF+20d, CX.L8.GSE.1040, CX.L7.GSE.1030 | 0d |
| CX.L7.GSE.1050 |  | FPT Terminal Units - General Supply & Exhaust Testing - L7 | 20d | 2027-02-11 | 2027-03-10 | CX.PH.EHF.1040, CX.B2.PCW.1040 FF, CX.B2.RWS.1040 FF, CX.L7.AHU.2040, CX.L7.AHU.1040, CX.L6.AHU.1040, CX.L7.GSE.1040 | 0d |
|  | 8 | **Level 8** |  | 2026-04-22 | 2026-10-15 |  |  |
|  | 1 | **480/120 Distribution Panels Dry XFMRs (2 Elec RMs)** |  | 2026-04-22 | 2026-05-29 |  |  |
| CX.L8.SWGR.1000 |  | Start Up - 480/120 Distribution Panels Bry XFMRs - L8 | 5d | 2026-04-22 | 2026-04-28 | P2.L8.S.1550, P2.L8.N.1550, P2.8.HE.2803.1140, P2.8.HE.5959.1140, P2.L8.SMT.1240, P2.L8.SMT.1230, P2.L8.EMT.1240, P2.L8.EMT.1230, CX.B2.SWGR.1010, CX.B2.MVEE.1010 | 152d |
| CX.L8.SWGR.1010 |  | PFPT - 480/120 Distribution Panels Bry XFMRs - L8 | 5d | 2026-05-15 | 2026-05-21 | P2.8.IT.3903.250, P2.8.IT.2822.250, P2.8.IT.3948.250, CX.L8.SWGR.1000 | 140d |
| CX.L8.SWGR.1020 |  | FPT - 480/120 Distribution Panels Bry XFMRs - L8 | 5d | 2026-05-22 | 2026-05-29 | CX.L8.SWGR.1010 | 172d |
|  | 2 | **AHU 8-1, 8-2** |  | 2026-05-20 | 2026-10-06 |  |  |
| CX.L8.AHU.1000 |  | Startup - AHU 8-1, 8-2 - L8 | 10d | 2026-05-20 | 2026-06-03 | P2.L8.S.1500, P2.L8.N.1500, P2.8.HE.2803.1140, P2.8.HE.5959.1140, P2.L8.INT.S.1360, P2.L8.INT.N.1360, P2.L8.EMT.1240, P2.L8.EMT.1120, P2.L8.EMT.1230, CX.B2.SWGR.1010, CX.B2.MVEE.1010, P2.L7.LC.1550, DDD2330, DDD2930, DDD3080, DDD2180, DDD2130, DDD3130, DDD3030, FRG.P2.B2.M.5970.2090, FRG.P2.L8.EMT.1050, P2.L8.EMT.1270 | 69d |
| CX.L8.AHU.1010 |  | P2P/BAS - AHU 8-1, 8-2 - L8 | 20d | 2026-07-14 | 2026-08-10 | CX.B2.CHS.1010, CX.B2.GHWS.1010, CX.B2.GMPGW.1010, CX.L8.AHU.1000 | 42d |

| ID | WBS | Task | Duration | Start | Finish | Predecessors | Total float |
| --- | --- | --- | --- | --- | --- | --- | --- |
| CX.L8.AHU.1020 |  | Test and Balance - AHU 8-1, 8-2 - L8 | 20d | 2026-08-11 | 2026-09-08 | CX.L8.AHU.1010 | 87d |
| CX.L8.AHU.1030 |  | PFPT - AHU 8-1, 8-2 - L8 | 10d | 2026-09-09 | 2026-09-22 | P2.8.IT.3903.250, P2.8.IT.2822.250, P2.8.IT.3948.250, CX.B2.CHS.1040, CX.B2.GHWS.1040 FF, CX.B2.CSH.1030, CX.B2.GMPGW.1040, CX.L8.AHU.1020 | 92d |
| CX.L8.AHU.1040 |  | FPT - AHU 8-1, 8-2 - L8 | 10d | 2026-09-23 | 2026-10-06 | CX.B2.CSH.1040 FF, CX.L8.AHU.1030, CX.L8.SWGR.1020 | 92d |
|  | 3 | **General Supply & Exhaust Terminal Unit Testing** |  | 2026-07-01 | 2026-10-15 |  |  |
| CX.L8.GSE.1000 |  | Startup/Checkout Terminal Units - General Supply & Exhaust Testing - L8 | 20d | 2026-07-01 | 2026-07-29 | CX.PH.EHF.1100, P2.L8.S.1550, P2.L8.S.1500, P2.L8.N.1550, P2.L8.N.1500, P2.8.HE.2803.1140, P2.8.HE.5959.1140, P2.L8.INT.S.1360, P2.L8.INT.S.1400, P2.L8.INT.N.1400, P2.L8.INT.N.1360, P2.L8.SMT.1240, P2.L8.SMT.1120, P2.L8.SMT.1230, P2.L8.EMT.1240, P2.L8.EMT.1120, P2.L8.EMT.1230, CX.B2.SWGR.1010, CX.B2.MVEE.1010, CX.L6.AHU.1010, CX.L7.AHU.1010, DDD2780 | 30d |
| CX.L8.GSE.1010 |  | Start Up and set Supply/Exhaust Valves - General Supply & Exhaust Testing - L8 | 10d | 2026-07-01 | 2026-07-15 | CX.PH.EHF.1100, P2.L8.S.1550, P2.L8.S.1500, P2.L8.N.1550, P2.L8.N.1500, P2.L8.INT.S.1360, P2.L8.INT.S.1400, P2.L8.INT.N.1400, P2.L8.INT.N.1360, P2.L8.SMT.1120, P2.L8.EMT.1120, CX.B2.SWGR.1010, CX.B2.MVEE.1010, CX.L6.AHU.1010, CX.L7.AHU.1010 | 0d |
| CX.L8.GSE.1020 |  | P2P/BAS Terminal Units - General Supply & Exhaust Testing - L8 | 10d | 2026-07-30 | 2026-08-12 | CX.L8.GSE.1010, CX.L8.GSE.1000 | 30d |
| CX.L8.GSE.1030 |  | PFPT Terminal Units - General Supply & Exhaust Testing - L8 | 10d | 2026-08-13 | 2026-08-26 | P2.8.IT.3903.250, P2.8.IT.2822.250, P2.8.IT.3948.250, CX.B2.PCW.1030 FF, CX.B2.RWS.1030 FF, CX.L8.GSE.1020 | 30d |
| CX.L8.GSE.1040 |  | Preliminary TAB Floor - General Supply & Exhaust Testing - L8 | 25d | 2026-08-27 | 2026-10-01 | P2.L8.INT.S.2020 FF+10d, P2.L8.BR.1250 FF+10d, P2.L8.F.CS.2140 FF+10d, P2.L8.F.CS.1140 FF+10d, P2.8.IT.3948.230 FF+10d, P2.8.IT.3903.230 FF+10d, P2.8.IT.2822.230 FF+10d, P2.8.HE.2803.1130 FF+10d, P2.L8.EMT.1210 FF+10d, P2.L8.SMT.1210 FF+10d, P2.L8.INT.N.2020 FF+10d, CX.L7.AHU.1020 FF, CX.L6.AHU.1020 FF, P2.8.HE.5959.1130 FF+10d, P2.L8.N.1420 FF+10d, P2.L8.S.1420 FF+10d, CX.L8.GSE.1030 | 30d |
| CX.L8.GSE.1050 |  | FPT Terminal Units - General Supply & Exhaust Testing - L8 | 5d | 2026-10-09 | 2026-10-15 | CX.PH.EHF.1040, CX.B2.PCW.1040 FF, CX.B2.RWS.1040 FF, CX.L7.AHU.1040, CX.L6.AHU.1040, CX.L8.GSE.1040, CX.L8.AHU.1040 | 90d |
|  | 9 | **Penthouse** |  | 2026-02-16 | 2026-12-17 |  |  |
|  | 5 | **AHU 9-1, 9-2** |  | 2026-04-28 | 2026-09-15 |  |  |
| CX.PH.AHU.1000 |  | Startup - AHU 9-1, 9-2 - PH | 5d | 2026-04-28 | 2026-05-04 | P2.PH.S.1550, P2.PH.N.1550, CX.B2.SWGR.1010, CX.B2.MVEE.1010, DDD3080, DDD2930 | 123d |
| CX.PH.AHU.1010 |  | P2P/BAS - AHU 9-1, 9-2 - PH | 10d | 2026-05-06 | 2026-05-19 | CX.B2.CHS.1010, CX.B2.GHWS.1010, CX.PH.AHU.1000 | 122d |
| CX.PH.AHU.1020 |  | Test and Balance - AHU 9-1, 9-2 - PH | 15d | 2026-05-20 | 2026-06-10 | CX.PH.AHU.1010 | 122d |
| CX.PH.AHU.1030 |  | PFPT - AHU 9-1, 9-2 - PH | 5d | 2026-09-01 | 2026-09-08 | CX.B2.CHS.1040, CX.B2.GHWS.1040 FF, CX.B2.CSH.1030, CX.PH.AHU.1020 | 65d |
| CX.PH.AHU.1040 |  | FPT - AHU 9-1, 9-2 - PH | 5d | 2026-09-09 | 2026-09-15 | CX.B2.CSH.1040 FF, CX.PH.AHU.1030 | 92d |
|  | 2 | **Exhaust Fans** |  | 2026-02-23 | 2026-10-06 |  |  |
| CX.PH.EHF.1150 |  | Startup - Exhaust Fans - Lab - PH | 5d | 2026-02-23 | 2026-02-27 | P2.PH.S.1550, P2.PH.S.1500, P2.PH.N.1500, CX.B2.SWGR.1010, CX.B2.MVEE.1010 | 54d |
| CX.PH.EHF.1000 |  | Startup - Exhaust Fans - Clinical - PH | 7d | 2026-03-02 | 2026-03-10 | CX.PH.EHF.1150, P2.PH.S.1550, P2.PH.S.1500, P2.PH.N.1500, CX.B2.SWGR.1010, CX.B2.MVEE.1010 | 54d |
| CX.PH.EHF.1100 |  | P2P/BAS - Exhaust Fans - Lab - PH | 5d | 2026-03-02 | 2026-03-06 | CX.PH.EHF.1150 | 81d |
| CX.PH.EHF.1010 |  | P2P/BAS - Exhaust Fans - Clinical - PH | 10d | 2026-03-11 | 2026-03-24 | CX.PH.EHF.1000 | 54d |
| CX.PH.EHF.1160 |  | Startup - Exhaust Fans - Level 5 BSL Sterility - PH | 5d | 2026-04-28 | 2026-05-04 | P2.PH.S.1550, P2.PH.S.1500, P2.PH.N.1550, P2.PH.N.1500, CX.B2.SWGR.1010, CX.B2.MVEE.1010, CX.PH.EHF.1000 | 52d |
| CX.PH.EHF.1110 |  | P2P/BAS - Exhaust Fans - Level 5 BSL Sterility - PH | 5d | 2026-05-05 | 2026-05-11 | CX.PH.EHF.1160 | 140d |
| CX.PH.EHF.1170 |  | Startup - Exhaust Fans - Level 7 Sterility PH | 3d | 2026-05-05 | 2026-05-07 | CX.PH.EHF.1160, P2.PH.S.1550, P2.PH.S.1500, P2.PH.N.1550, P2.PH.N.1500, CX.B2.SWGR.1010, CX.B2.MVEE.1010 | 52d |
| CX.PH.EHF.1120 |  | P2P/BAS - Exhaust Fans - Level 7 Sterility PH | 5d | 2026-05-08 | 2026-05-14 | CX.PH.EHF.1170 | 102d |
| CX.PH.EHF.1180 |  | Startup - Exhaust Fans - Cath - Central Steril - PH | 5d | 2026-05-08 | 2026-05-14 | CX.PH.EHF.1170, P2.PH.S.1550, P2.PH.S.1500, P2.PH.N.1550, P2.PH.N.1500, CX.B2.SWGR.1010, CX.B2.MVEE.1010 | 52d |
| CX.PH.EHF.1130 |  | P2P/BAS - Exhaust Fans - Cath - Central Steril - PH | 5d | 2026-05-15 | 2026-05-21 | CX.PH.EHF.1180 | 132d |
| CX.PH.EHF.1190 |  | Startup - Exhaust Fans - ISO - BSC - ETO - PH | 10d | 2026-05-15 | 2026-05-29 | CX.PH.EHF.1180, P2.PH.S.1550, P2.PH.S.1500, P2.PH.N.1550, P2.PH.N.1500, CX.B2.SWGR.1010, CX.B2.MVEE.1010 | 52d |
| CX.PH.EHF.1140 |  | P2P/BAS - Exhaust Fans - ISO - BSC - ETO - PH | 10d | 2026-06-01 | 2026-06-12 | CX.PH.EHF.1190 | 142d |
| CX.PH.EHF.1020 |  | Test and Balance - Exhaust Fans - PH | 15d | 2026-08-18 | 2026-09-08 | CX.B2.AHU.2020 FF, CX.PH.EHF.1100 FF, CX.PH.EHF.1110 FF, CX.PH.EHF.1120 FF, CX.PH.EHF.1130 FF, CX.PH.EHF.1010 FF, CX.PH.EHF.1140 FF, CX.L8.AHU.1020 FF, CX.PH.AHU.1020 FF, CX.L7.AHU.2020 FF, CX.L7.AHU.1020 FF, CX.L6.AHU.2020 FF, CX.L6.AHU.1020 FF, CX.L5.AHU.1020 FF, CX.L4.AHU.2020 FF, CX.L4.AHU.1020 FF, CX.L3.AHU.1020 FF, CX.L2.AHU.1020 FF, CX.L1.AHU.1020 FF | 87d |
| CX.PH.EHF.1030 |  | PFPT - Exhaust Fans - PH | 10d | 2026-09-09 | 2026-09-22 | CX.PH.EHF.1020 | 87d |
| CX.PH.EHF.1040 |  | FPT - Exhaust Fans - PH | 10d | 2026-09-23 | 2026-10-06 | CX.PH.EHF.1030, CX.PH.AHU.1040 | 87d |
|  | 3 | **Heat Recovery Units** |  | 2026-06-01 | 2026-12-10 |  |  |
| CX.PH.HRU.1000 |  | Startup - Heat Recovery Units - PH | 20d | 2026-06-01 | 2026-06-26 | CX.PH.EHF.1190, CX.PH.EHF.1150, CX.PH.EHF.1160, CX.PH.EHF.1170, CX.PH.EHF.1180, P2.PH.S.1550, P2.PH.S.1500, P2.PH.N.1550, P2.PH.N.1500, CX.B2.SWGR.1010, CX.B2.MVEE.1010, CX.PH.EHF.1000 | 52d |
| CX.PH.HRU.1010 |  | P2P/BAS - Heat Recovery Units - PH | 60d | 2026-06-29 | 2026-09-22 | CX.PH.HRU.1000, CX.B2.GHWS.1010 | 52d |
| CX.PH.HRU.1020 |  | Test and Balance - Heat Recovery Units - PH | 30d | 2026-09-23 | 2026-11-03 | CX.PH.HRU.1010, CX.PH.EHF.1020 FF | 52d |
| CX.PH.HRU.1030 |  | PFPT - Heat Recovery Units - PH | 15d | 2026-11-04 | 2026-11-24 | CX.PH.HRU.1020, CX.B2.GHWS.1040 FF | 52d |
| CX.PH.HRU.1040 |  | FPT - Heat Recovery Units - PH | 10d | 2026-11-25 | 2026-12-10 | CX.PH.HRU.1030, CX.PH.EHF.1040, CX.PH.EHF.1040 FF | 52d |
|  | 1 | **General Supply & Exhaust Terminal Unit Testing** |  | 2026-04-28 | 2026-10-13 |  |  |
| CX.PH.GSE.1000 |  | Startup/Checkout Terminal Units - General Supply & Exhaust Testing - PH | 5d | 2026-04-28 | 2026-05-04 | CX.PH.EHF.1100, P2.PH.S.1550, P2.PH.S.1500, P2.PH.N.1550, P2.PH.N.1500, CX.B2.SWGR.1010, CX.B2.MVEE.1010, DDD2780 | 172d |
| CX.PH.GSE.1010 |  | P2P/BAS Terminal Units - General Supply & Exhaust Testing - PH | 10d | 2026-05-05 | 2026-05-18 | CX.PH.GSE.1000 | 172d |
| CX.PH.GSE.1020 |  | PFPT Terminal Units - General Supply & Exhaust Testing - PH | 10d | 2026-07-28 | 2026-08-10 | CX.PH.GSE.1010, CX.B2.PCW.1030 FF, CX.B2.RWS.1030 FF | 124d |
| CX.PH.GSE.1030 |  | Preliminary TAB - General Supply & Exhaust Testing - PH | 5d | 2026-08-11 | 2026-08-17 | CX.PH.GSE.1020, P2.L9.F.1090 FF+2d, P2.PH.N.1420 FF+2d, P2.PH.S.1420 FF+2d | 124d |
| CX.PH.GSE.1040 |  | FPT Terminal Units - General Supply & Exhaust Testing - PH | 5d | 2026-10-07 | 2026-10-13 | CX.PH.GSE.1030, CX.PH.EHF.1040, CX.B2.PCW.1040 FF, CX.B2.RWS.1040 FF | 89d |
|  | 4 | **High Purity Water System** |  | 2026-02-16 | 2026-12-17 |  |  |
| CX.PH.HPRT.1000 |  | Startup - High Purity Water System - PH | 20d | 2026-02-16 | 2026-03-13 | P2.B2.M.5970.1510, P2.PH.S.1500, P2.PH.N.1500, CX.B2.SWGR.1010, CX.B2.MVEE.1010 | 216d |
| CX.PH.HPRT.1010 |  | P2P/BAS - High Purity Water System - PH | 20d | 2026-03-16 | 2026-04-10 | CX.PH.HPRT.1000 | 216d |
| CX.PH.HPRT.1020 |  | PFPT - High Purity Water System - PH | 10d | 2026-04-13 | 2026-04-24 | CX.PH.HPRT.1010 | 216d |
| CX.PH.HPRT.1030 |  | FPT - High Purity Water System - PH | 5d | 2026-12-11 | 2026-12-17 | CX.PH.HPRT.1020, CX.PH.HRU.1040 | 57d |
|  | 15 | **OHD Perimeter Blowers** |  | 2026-02-02 | 2026-03-20 |  |  |
| CX.BLOW.1000 |  | Startup Blower Systems at OH Doors | 15d | 2026-02-02 | 2026-02-20 | CX.B2.SWGR.1010, CX.B2.MVEE.1010 | 203d |
| CX.BLOW.1010 |  | PFPT Blower Systems at OH Doors | 15d | 2026-02-23 | 2026-03-13 | CX.BLOW.1000 | 203d |
| CX.BLOW.1020 |  | FPT Blower Systems at OH Doors | 5d | 2026-03-16 | 2026-03-20 | CX.BLOW.1010 | 203d |
|  | 16 | **Vacuum/Air/Oxygen Systems** |  | 2026-03-16 | 2026-04-10 |  |  |
| CX.VAO.1000 |  | System Startup | 5d | 2026-03-16 | 2026-03-20 | P2.B2.M.2930.1020, P2.FAC.3.Z1.140, P2.FAC.3.Z1.130, P2.FAC.3.Z3.180, P2.FAC.3.Z3.170, BP2.089.3.100, P2.B2.M.2930.1010, P2.L9.F.1260 | 231d |
| CX.VAO.1010 |  | QC Testing | 5d | 2026-03-23 | 2026-03-27 | CX.VAO.1000 | 231d |
| CX.VAO.1020 |  | System Monitoring Testing | 5d | 2026-03-30 | 2026-04-03 | CX.VAO.1010 | 231d |
| CX.VAO.1030 |  | Room Commissioning Verification | 5d | 2026-04-06 | 2026-04-10 | CX.VAO.1020 | 231d |
|  | 21 | **Purified Lab Water** |  | 2026-05-26 | 2026-06-22 |  |  |
| CX.PRLW.1000 |  | System Startup | 5d | 2026-05-26 | 2026-06-01 | P2.B2.M.5970.1510, P2.PH.S.1600, BP1.226.2.160 | 181d |
| CX.PRLW.1010 |  | QC Testing | 5d | 2026-06-02 | 2026-06-08 | CX.PRLW.1000 | 181d |
| CX.PRLW.1020 |  | System Monitoring Testing | 5d | 2026-06-09 | 2026-06-15 | CX.PRLW.1010 | 181d |
| CX.PRLW.1030 |  | Room Commissioning Verification | 5d | 2026-06-16 | 2026-06-22 | CX.PRLW.1020 | 181d |
|  | 22 | **Carbon Dioxide/Nitrous Oxide** |  | 2026-10-21 | 2026-11-17 |  |  |
| CX.CDNO.1000 |  | System Startup | 5d | 2026-10-21 | 2026-10-27 | CX.L5.BSL.1080 | 77d |
| CX.CDNO.1010 |  | QC Testing | 5d | 2026-10-28 | 2026-11-03 | CX.CDNO.1000 | 77d |
| CX.CDNO.1020 |  | System Monitoring Testing | 5d | 2026-11-04 | 2026-11-10 | CX.CDNO.1010 | 77d |
| CX.CDNO.1030 |  | Room Commissioning Verification | 5d | 2026-11-11 | 2026-11-17 | CX.CDNO.1020 | 77d |
|  | 11 | **Punchlist/Life Safety Testing & Inspection/Acceptance (Draft)** |  | 2026-06-22 | 2027-04-21 |  |  |

| ID | WBS | Task | Duration | Start | Finish | Predecessors | Total float |
| --- | --- | --- | --- | --- | --- | --- | --- |
| P2.PIA.110 |  | Pre-Testing Fire Alarm Systems | 20d | 2026-06-22 | 2026-07-20 | CX.B2.SWGR.1040, CX.B2.SWGR.1030, CX.B2.MVEE.1020 | 149d |
| P2.PIA.100 |  | Contractor & A/E Punchlist & Punchlist Correction | 90d | 2026-08-20 | 2026-12-29 | P2.L6.CL.1310 FF, P2.B2.CL.1310 FF, P2.L8.INT.S.2080 FF, P2.L4.CL.1310 FF, P2.L2.INT.S.2080 FF, P2.L6.BR.2190 FF, P2.L6.BR.1300 FF, P2.B2.BR.1300 FF, P2.L4.BR.1190 FF, P2.L6.F.CS.2290 FF, P2.B3.2070 FF, P2.B2.BR.2190 FF, P2.B2.EXBR.1350 FF, P2.L8.BR.1300 FF, P2.L2.CL.1310 FF, P2.L4.F.CS.3290 FF, P2.L2.BR.4300 FF, P2.B2.EXBR.1280 FF, P2.L8.F.CS.2290 FF, P2.L6.F.CS.1290 FF, P2.L4.F.CS.2290 FF, P2.6.IT.3929.250 FF, P2.L2.BR.3300 FF, P2.L4.F.CS.1290 FF, P2.6.IT.2865.250 FF, P2.L8.F.CS.1290 FF, P2.6.IT.2818.250 FF, P2.L2.BR.2190 FF, P2.4.IT.3875.250 FF, P2.4.IT.2818.250 FF, P2.UTT.320 FF, P2.8.IT.3948.250 FF, P2.4.IT.3930.250 FF, P2.8.IT.3903.250 FF, P2.L2.BR.1190 FF, P2.L2.F.CS.2290 FF, P2.8.IT.2822.250 FF, P2.B2.IT.2806.250 FF, P2.L3.F.CS.1290 FF, P2.L1.BR.4190 FF, P2.L1.BR.3190 FF, P2.L1.BR.2190 FF, P2.FAC.Z2.9030 FF, P2.L9.F.1310 FF, P2.FAC.Z1.9030 FF, P2.L1.BR.1190 FF, P2.L1.F.CS.2290 FF, P2.L1.F.CS.1290 FF, P2.FAC.F.9030 FF, P2.L6.INT.N.2080 FF, P2.B2.F.LC.2390 FF, P2.L4.INT.N.2080 FF, P2.B2.F.LC.1390 FF, P2.B2.LC.1550 FF, P2.L6.INT.S.2080 FF, P2.L8.INT.N.2080 FF, P2.L2.INT.N.2080 FF, P2.L4.INT.S.2080 FF, P2.L7.F.LC.2390 FF, P2.PR.EMMR.2.9030 FF, P2.PR.S.9030 FF, P2.L5.F.LC.1390 FF, P2.PR.N.9030 FF, P2.L1.F.LC.3390 FF, P2.L3.F.LC.1390 FF, P2.L7.F.LC.1390 FF, P2.MR.2-8.9030 FF, P2.L1.F.LC.2390 FF, P2.MR.5-8.9030 FF, P2.L5.CL.1310 FF, P2.MR.EMT.9030 FF, P2.L1.F.LC.1390 FF, P2.L3.CL.1310 FF, P2.L7.CL.1310 FF, P2.L5.BR.2300 FF, P2.MR.E.9030 FF, P2.L3.BR.4190 FF, P2.MR.C.9030 FF, P2.L7.BR.2190 FF, P2.L5.BR.1190 FF, P2.MR.W.9030 FF, P2.L3.BR.3190 FF, P2.L3.BR.2190 FF, P2.L7.BR.1300 FF, P2.LR.L7.9030 FF, P2.L5.F.CS.1290 FF, P2.LR.L2.9030 FF, P2.L5.F.CS.2290 FF, P2.FAC.Z3.9030 FF, P2.L1.CL.1310 FF, P2.L3.BR.1190 FF, P2.L3.F.CS.2290 FF, P2.L1.BR.5190 FF, P2.L2.F.CS.1290 FF, P2.L5.F.LC.3390 FF, P2.L7.F.LC.4390 FF, P2.L3.F.LC.3390 FF, P2.L5.F.LC.2390 FF, P2.L7.F.LC.3390 FF, P2.L11.EMMR.3.9030 FF, P2.L11.5-9.9030 FF, P2.L3.F.LC.2390 FF, P2.PH.EMR.1.1280, P2.PH.EMR.2.1200, P2.PH.EL.3.1180, P2.10.VES.1.1180, P2.10.EL.3.1180, P2.B2.IT.2903.260 FF, P2.L8.CL.1310 FF, BP2.070.3.110 | 37d |
| P2.PIA.120 |  | Final Life Safety Testing & Inspection | 15d | 2026-12-30 | 2027-01-20 | CX.PH.GSE.1040, CX.PH.HRU.1020, CX.PH.EHF.1020, P2.PIA.100, P2.PIA.110, P2.1.FP.6950.1060, CX.FS.1060, CX.FA.1040, CX.BAS.1030, CX.PH.AHU.1020, P2.GP1.14.1610, P2.GP3.14.1610, P2.GP4.14.1610, P2.2-9.9000, P2.5-9.9000, P2.2-8.9000, P2.2-10.9000, P2.3-9.9000, P2.3-10.9000, P2.5-8.9000, P2.5-10.9000, P2.6-9.9000 | 37d |
| P2.PIA.140 |  | Cleanroom Final Wipe Down & Lock Down | 20d | 2026-12-30 | 2027-01-27 | P2.PIA.100 | 45d |
| P2.PIA.150 |  | Final Intergrated System Testing | 20d | 2027-03-11 | 2027-04-07 | CX.PH.HPRT.1030, CX.PH.GSE.1040, P2.PIA.120 SS+13d, P2.PIA.140 SS+5d, P2.CLO.130, CX.CDNO.1030, CX.PRLW.1030, CX.VAO.1030, P2.PT.2010, P2.ETV.1140, P2.SUM.265 FF, P2.SUM.245, CX.FS.2080, CX.COMM.1060, CX.FHVAC.1010, CX.B2.AHU.1040, CX.B2.CHS.1040, CX.B2.SWGR.1050, CX.B2.GHWS.1040 FF, CX.B2.SWGR.1060, CX.B2.SWGR.1000, CX.B2.MVEE.1030, CX.CA.1030, CX.B2.SS.1030, CX.B2.RWS.1040, CX.B2.GSE.1050, CX.B2.SPLT.1060, CX.B2.AHU.2040, CX.B2.CWS.1040, CX.B2.PCW.1040, CX.B2.MGE.1040, CX.B2.MPE.1050, CX.B2.WHS.1040, CX.B2.CSH.1040, CX.L1.MRIS.1060, CX.B2.MRIS.1060, CX.B2.GMPRH.1040, CX.B2.GMPGW.1040, CX.L2.GSE.1050, CX.L1.GSE.1050, CX.L4.GSE.1050, CX.L3.GSE.1050, CX.L5.GSE.1050, CX.L5.BSL.1100, CX.L6.GSE.1050, P2.CLO.180 FF+5d, CX.L8.GSE.1050, CX.L7.GSE.1050, CX.L7.FRZ.1060 | 0d |
| P2.PIA.130 |  | Final Acceptance Inspections & Certifications | 10d | 2027-04-08 | 2027-04-21 | CX.PH.HPRT.1030, CX.PH.GSE.1040, P2.PIA.120 SS+13d, P2.PIA.140 SS+5d, P2.CLO.130, P2.PIA.150, CX.CDNO.1030, CX.PRLW.1030, CX.VAO.1030, P2.PT.2010, P2.ETV.1140, P2.SUM.265 FF, P2.SUM.245, CX.FS.2080, CX.COMM.1060, CX.FHVAC.1010, CX.B2.AHU.1040, CX.B2.CHS.1040, CX.B2.SWGR.1050, CX.B2.GHWS.1040 FF, CX.B2.SWGR.1060, CX.B2.SWGR.1000, CX.B2.MVEE.1030, CX.CA.1030, CX.B2.SS.1030, CX.B2.RWS.1040, CX.B2.GSE.1050, CX.B2.SPLT.1060, CX.B2.AHU.2040, CX.B2.CWS.1040, CX.B2.PCW.1040, CX.B2.MGE.1040, CX.B2.MPE.1050, CX.B2.WHS.1040, CX.B2.CSH.1040, CX.L1.MRIS.1060, CX.B2.MRIS.1060, CX.B2.GMPRH.1040, CX.B2.GMPGW.1040, CX.L2.GSE.1050, CX.L1.GSE.1050, CX.L1.CTS.1050, CX.L4.GSE.1050, CX.L3.MRIS.1060, CX.L3.GSE.1050, CX.L5.GSE.1050, CX.L5.BSL.1100, CX.L6.GSE.1050, P2.CLO.180 FF+5d, CX.L8.GSE.1050, CX.L7.GSE.1050, CX.L7.FRZ.1060 | 0d |
| EXS.131 |  | Substantial Completion - Phase 0,1,2 | 0d | 2027-04-21 | 2027-04-21 | EXS.105 FF, P2.SUM.235 FF, P1A.GARV.520 FF, PCO.185.146 FF, P2.GP1.14.1710 FF, P2.GP2.14.1710 FF, P2.GP3.14.1710 FF, P2.GP4.14.1710 FF, P2.2-9.9030 FF, P2.5-9.9030 FF, P2.2-8.9030 FF, P2.2-10.9030 FF, P2.3-9.9030 FF, P2.3-10.9030 FF, P2.5-8.9030 FF, P2.5-10.9030 FF, P2.6-9.9030 FF, P2.PIA.130 FF, P2.PIA.150, P2.PIA.150 FF, P2.DMSR.160 FF | 645d |
|  | 9 | **Phase 0,1,2 Close Out Records** |  | 2026-02-02 | 2027-02-11 |  |  |
| P2.CLO.140 |  | Prepare & Submit - O&M (Draft) | 90d | 2026-02-02 | 2026-06-08 | CX.B2.SWGR.1010, CX.B2.MVEE.1010 | 51d |
| P2.CLO.150 |  | Review & Approve - O&M (Draft) | 15d | 2026-06-09 | 2026-06-29 | P2.CLO.140 | 51d |
| P2.CLO.100 |  | Prepare & Submit - As-Built Records (Draft) | 60d | 2026-06-30 | 2026-09-23 | P2.CLO.150 | 51d |
| P2.CLO.120 |  | Review & Approve - As-Built Records (Draft) | 20d | 2026-09-24 | 2026-10-21 | P2.CLO.100 | 51d |
| P2.CLO.110 |  | Prepare & Submit - As-Built Records (Final) | 30d | 2026-11-09 | 2026-12-22 | P2.CLO.120, CX.B2.MVEE.1020 FF, CX.B2.SWGR.1030 FF, CX.B2.SWGR.1040 FF, CX.B2.AHU.1030, CX.B2.SWGR.1040, CX.B2.SWGR.1030, CX.B2.MVEE.1020, CX.B2.SS.1020, CX.B2.RWS.1030, CX.B2.GSE.1030, CX.B2.AHU.2030, CX.B2.CWS.1030, CX.B2.PCW.1030, CX.B2.MGE.1030, CX.B2.MPE.1040, CX.B2.WHS.1030, CX.B2.CSH.1030, CX.L1.MRIS.1030, CX.L1.AHU.1030, CX.L1.SWGR.1010, CX.B2.GMPRH.1030, CX.B2.GMPGW.1030, CX.L3.AHU.1030, CX.L3.UPS.1010, CX.L3.SWGR.1010, CX.L2.GSE.1030, CX.L2.AHU.1030, CX.L2.SWGR.1010, CX.L1.GSE.1030, CX.L1.CTS.1030, CX.L3.GSE.1030 | 39d |
| P2.CLO.160 |  | Prepare & Submit - O&M (Final) | 30d | 2026-11-09 | 2026-12-22 | P2.CLO.150, CX.GEN.1020, CX.PLUMB.1030, CX.B2.AHU.1030, CX.B2.CHS.1030, CX.B2.SWGR.1040, CX.B2.SWGR.1030, CX.B2.MVEE.1020, CX.B2.SS.1020, CX.B2.RWS.1030, CX.B2.GHWS.1030, CX.B2.GSE.1030, CX.B2.SPLT.1030, CX.B2.AHU.2030, CX.B2.CWS.1030, CX.B2.PCW.1030, CX.B2.MGE.1030, CX.B2.MPE.1040, CX.B2.WHS.1030, CX.B2.CSH.1030, CX.L1.AHU.1030, CX.L1.SWGR.1010, CX.B2.GMPRH.1030, CX.B2.GMPGW.1030, CX.L3.AHU.1030, CX.L3.UPS.1010, CX.L3.SWGR.1010, CX.L2.GSE.1030, CX.L2.AHU.1030, CX.L2.SWGR.1010, CX.L1.GSE.1030, CX.L1.CTS.1030, CX.L3.GSE.1030 | 34d |
| P2.CLO.130 |  | Review & Approve - As-Built Records (Final) | 15d | 2026-12-23 | 2027-01-14 | P2.CLO.110 | 39d |
| P2.CLO.170 |  | Review & Approve - O&M (Final) | 15d | 2026-12-23 | 2027-01-14 | P2.CLO.160 | 34d |
| P2.CLO.180 |  | O&M Training and Instruction | 20d | 2027-01-15 | 2027-02-11 | P2.CLO.170 | 34d |
|  | 15 | **Site Improvements** |  | 2025-12-01 | 2026-10-23 |  |  |
|  | 11 | **Generator Utility Yard** |  | 2025-12-01 | 2026-02-24 |  |  |
| P2.UTL.100 |  | Set/Assemble - ICU, Surgery Back-up Generators | 20d | 2025-12-01 | 2025-12-29 | P2.MDE.150, BP1.263.3.100 | 189d |
| P2.UTL.110 |  | Final Controls, Power Feeders, Terminations - ICU, Surgery Back-up Generators | 20d | 2025-12-30 | 2026-01-27 | P2.UTL.100 | 189d |
| P2.UTL.120 |  | Start up/Pre-check list - ICU, Surgery Back-up Generators | 10d | 2026-01-28 | 2026-02-10 | P2.UTL.110 | 189d |
| P2.UTL.130 |  | Burn in Emergency Generators - ICU, Surgery Back-up Generators | 10d | 2026-02-11 | 2026-02-24 | P2.UTL.120 | 229d |
|  | 3 | **O2 YARD** |  | 2025-12-01 | 2026-10-23 |  |  |
| P2.SITE.414 |  | NIH - Vendor Prep/Submit Shop Drawings to DB Team | 20d | 2025-12-01 | 2025-12-29 | P2C.DES.210 | 214d |
| P2.SITE.404 |  | DB Team - Coordinate Owner Furnished O2 Equipment | 40d | 2025-12-30 | 2026-02-24 | P2.SITE.414 | 214d |
| P2.SITE.2 |  | Rough in MEP to Pad | 20d | 2026-02-25 | 2026-03-24 | P2.UTL.100, P2.SITE.404 | 214d |
| P2.SITE.1 |  | Install Site Access, Curb, Pads & Roads | 20d | 2026-08-21 | 2026-09-18 | P1.BG.BF.170, P2.DES.VMU.680 FF, P2.SITE.2 | 109d |
| P2.SITE.3 |  | Owner Install 02 Equipment | 5d | 2026-09-21 | 2026-09-25 | P2.SITE.404, P2.SITE.1, P2.UTT.330 | 109d |
| P2.SITE.4 |  | Install Yard Fence | 10d | 2026-09-28 | 2026-10-09 | P2.SITE.3 | 109d |
| P2.SITE.5 |  | Final Topping Pavement & Markings | 10d | 2026-10-12 | 2026-10-23 | P2.SITE.4, BP8.320.3.110 | 109d |
|  | 4 | **MICRO-BIO RETENTION PONDS** |  | 2026-01-20 | 2026-07-27 |  |  |
|  | 1 | **Pond 1** |  | 2026-01-20 | 2026-07-27 |  |  |
| P2.SITE.6 |  | FRP Basin Walls (Anti-Ram) - Pond 1 | 5d | 2026-01-20 | 2026-01-26 | P1.UTL.290, BP8.323.3.100, BP8.320.3.100, P2.HZ.E.141 | 134d |
| P2.SITE.7 |  | Concrete Cure - Pond 1 | 2d | 2026-01-27 | 2026-01-28 | P2.SITE.6 | 134d |
| P2.SITE.11 |  | Install Stone Veneer - Pond 1 | 5d | 2026-01-29 | 2026-02-04 | P2.SITE.7, P2.FAD.ST.150 | 134d |
| P2.SITE.8 |  | East Walkway Storm Infrastructure Install & Back-fill - Pond 1 | 5d | 2026-01-29 | 2026-02-04 | P2.SITE.7 | 243d |
| P2.SITE.9 |  | Storm Infrastructure,Waterproofing & Base Layer - Pond 1 | 5d | 2026-01-29 | 2026-02-04 | P2.SITE.7 | 288d |
| P2.SITE.10 |  | Micro-Bio Plantings, Media, Mulch, and Final Cap Install - Pond 1 | 5d | 2026-07-21 | 2026-07-27 | P2.SITE.8, P2.SITE.9, P2.SITE.45 | 172d |
|  | 2 | **Pond 2** |  | 2026-01-27 | 2026-07-27 |  |  |
| P2.SITE.64 |  | FRP Basin Walls (Anti-Ram) - Pond 2 | 5d | 2026-01-27 | 2026-02-02 | P2.SITE.6, P2.HZ.E.141 | 149d |
| P2.SITE.74 |  | Concrete Cure - Pond 2 | 2d | 2026-02-03 | 2026-02-04 | P2.SITE.64 | 149d |
| P2.SITE.114 |  | Install Stone Veneer - Pond 2 | 5d | 2026-02-05 | 2026-02-11 | P2.SITE.74 | 149d |
| P2.SITE.94 |  | Storm Infrastructure,Waterproofing & Base Layer - Pond 2 | 5d | 2026-02-05 | 2026-02-11 | P2.SITE.74 | 283d |
| P2.SITE.104 |  | Micro-Bio Plantings, Media, Mulch, and Final Cap Install - Pond 2 | 5d | 2026-07-21 | 2026-07-27 | P2.SITE.94, P2.SITE.45 | 172d |
|  | 3 | **Pond 3** |  | 2026-02-03 | 2026-07-27 |  |  |
| P2.SITE.124 |  | FRP Basin Walls (Anti-Ram) - Pond 3 | 5d | 2026-02-03 | 2026-02-09 | P2.HZ.E.141, P2.SITE.64 | 170d |
| P2.SITE.134 |  | Concrete Cure - Pond 3 | 2d | 2026-02-10 | 2026-02-11 | P2.SITE.124 | 238d |
| P2.SITE.144 |  | Storm Infrastructure,Waterproofing & Base Layer - Pond 3 | 5d | 2026-02-12 | 2026-02-18 | P2.SITE.134 | 278d |
| P2.SITE.164 |  | Install Stone Veneer - Pond 3 | 5d | 2026-02-12 | 2026-02-18 | P2.SITE.134, P2.FAD.ST.150 | 238d |
| P2.SITE.154 |  | Micro-Bio Plantings, Media, Mulch, and Final Cap Install - Pond 3 | 5d | 2026-07-21 | 2026-07-27 | P2.SITE.144, P2.SITE.45 | 172d |
|  | 4 | **Pond 4** |  | 2026-02-10 | 2026-07-27 |  |  |
| P2.SITE.174 |  | FRP Basin Walls (Anti-Ram) - Pond 4 | 5d | 2026-02-10 | 2026-02-16 | P2.SITE.124 | 170d |
| P2.SITE.184 |  | Concrete Cure - Pond 4 | 2d | 2026-02-17 | 2026-02-18 | P2.SITE.174 | 178d |
| P2.SITE.194 |  | Storm Infrastructure,Waterproofing & Base Layer - Pond 4 | 5d | 2026-02-19 | 2026-02-25 | P2.SITE.184 | 273d |
| P2.SITE.214 |  | Install Stone Veneer - Pond 4 | 5d | 2026-02-19 | 2026-02-25 | P2.SITE.184, P2.FAD.ST.150 | 178d |
| P2.SITE.204 |  | Micro-Bio Plantings, Media, Mulch, and Final Cap Install - Pond 4 | 5d | 2026-07-21 | 2026-07-27 | P2.SITE.194, P2.SITE.45 | 172d |
|  | 5 | **Pond 5** |  | 2026-03-19 | 2026-07-27 |  |  |
| P2.SITE.224 |  | FRP Basin Walls (Anti-Ram) - Pond 5 | 5d | 2026-03-19 | 2026-03-25 | P2.SITE.174, P2.SITE.37 | 148d |
| P2.SITE.234 |  | Concrete Cure - Pond 5 | 2d | 2026-03-26 | 2026-03-27 | P2.SITE.224 | 206d |
| P2.SITE.244 |  | Storm Infrastructure,Waterproofing & Base Layer - Pond 5 | 5d | 2026-03-30 | 2026-04-03 | P2.SITE.234 | 246d |
| P2.SITE.264 |  | Install Stone Veneer - Pond 5 | 5d | 2026-03-30 | 2026-04-03 | P2.SITE.234, P2.FAD.ST.150 | 206d |
| P2.SITE.254 |  | Micro-Bio Plantings, Media, Mulch, and Final Cap Install - Pond 5 | 5d | 2026-07-21 | 2026-07-27 | P2.SITE.244, P2.SITE.45 | 172d |
|  | 6 | **Pond 6** |  | 2026-05-13 | 2026-07-27 |  |  |
| P2.SITE.274 |  | FRP Basin Walls (Anti-Ram) - Pond 6 | 5d | 2026-05-13 | 2026-05-19 | P2.HZ.W.91, P2.SITE.224 | 114d |
| P2.SITE.284 |  | Concrete Cure - Pond 6 | 2d | 2026-05-20 | 2026-05-21 | P2.SITE.274 | 207d |
| P2.SITE.314 |  | Install Stone Veneer - Pond 6 | 5d | 2026-05-22 | 2026-05-29 | P2.SITE.284, P2.FAD.ST.150 | 212d |
| P2.SITE.294 |  | Storm Infrastructure,Waterproofing & Base Layer - Pond 6 | 5d | 2026-06-11 | 2026-06-17 | P2.SITE.284, P1.UTL.370 | 194d |
| P2.SITE.304 |  | Micro-Bio Plantings, Media, Mulch, and Final Cap Install - Pond 6 | 5d | 2026-07-21 | 2026-07-27 | P2.SITE.294, P2.SITE.45 | 172d |
|  | 5 | **SITE HARDSCAPES** |  | 2026-01-22 | 2026-07-27 |  |  |

| ID | WBS | Task | Duration | Start | Finish | Predecessors | Total float |
| --- | --- | --- | --- | --- | --- | --- | --- |
|  | 1 | **Building Perimeter Walkway** |  | 2026-01-22 | 2026-07-27 |  |  |
|  | 1 | **North Walkways** |  | 2026-01-22 | 2026-03-11 |  |  |
| P2.SITE.12 |  | Rain Leader Installation to Micro-Bio Ponds (North) | 3d | 2026-01-22 | 2026-01-26 | P2.SITE.6 FF | 134d |
| P2.SITE.13 |  | FRP North Concrete Bases & Walks | 5d | 2026-01-27 | 2026-02-02 | P2.SITE.12, BP8.320.3.100, P2.FAC.5.Z3.180 | 134d |
| P2.SITE.14 |  | North Concrete Bases Cure | 2d | 2026-02-03 | 2026-02-04 | P2.SITE.13 | 134d |
| P2.SITE.15 |  | North Walkway Paver Base and Install | 20d | 2026-02-05 | 2026-03-04 | P2.SITE.11, P2.SITE.14, P2.SITE.114 FF | 134d |
| P2.SITE.16 |  | Stone & Plantings at Walkways | 5d | 2026-03-05 | 2026-03-11 | P2.SITE.15, P2.FAD.ST.150 | 148d |
|  | 2 | **West Walkways** |  | 2026-02-17 | 2026-04-17 |  |  |
| P2.SITE.17 |  | Rain Leader Installation to Micro-Bio Ponds (West) | 2d | 2026-02-17 | 2026-02-18 | P2.SITE.174, P1.BGS.330 | 176d |
| P2.SITE.18 |  | FRP West Concrete Bases & Walks | 5d | 2026-02-19 | 2026-02-25 | P2.SITE.17, P1.BGS.330, P2.FAC.1.Z2.160, BP8.320.3.100 | 176d |
| P2.SITE.19 |  | West Concrete Bases Cure | 2d | 2026-02-26 | 2026-02-27 | P2.SITE.18 | 176d |
| P2.SITE.20 |  | West Walkway Paver Base and Install | 5d | 2026-03-02 | 2026-03-06 | P2.SITE.214, P2.SITE.19 | 176d |
| P2.SITE.21 |  | Stone & Plantings at Walkways | 20d | 2026-03-09 | 2026-04-03 | P2.SITE.20 | 241d |
| P2.SITE.22 |  | Pedestrian Bridge Installation | 10d | 2026-04-06 | 2026-04-17 | P2.SITE.21 | 241d |
|  | 3 | **South Walkways** |  | 2026-05-20 | 2026-07-27 |  |  |
| P2.SITE.23 |  | FRP Anti-Ram Walls Foundations | 5d | 2026-05-20 | 2026-05-27 | P2.SITE.274 | 114d |
| P2.SITE.24 |  | Rough in Site Lighting at Walls | 5d | 2026-05-28 | 2026-06-03 | P2.SITE.23 | 114d |
| P2.SITE.25 |  | FRP South Concrete Bases & Walks | 5d | 2026-06-04 | 2026-06-10 | P2.SITE.24, P2.FAC.5.Z1.210, BP8.320.3.100 | 114d |
| P2.SITE.26 |  | South Concrete Bases Cure | 2d | 2026-06-11 | 2026-06-12 | P2.SITE.25 | 142d |
| P2.SITE.27 |  | Install Stone Veneer | 5d | 2026-06-15 | 2026-06-19 | P2.SITE.26 | 142d |
| P2.SITE.28 |  | South Walkway Paver Base and Install | 20d | 2026-06-22 | 2026-07-20 | P2.SITE.27 | 172d |
| P2.SITE.29 |  | Stone, Lights, & Plantings at Walkways | 5d | 2026-07-21 | 2026-07-27 | P2.SITE.28, P2.SITE.45 | 172d |
|  | 2 | **Pesestrian Sidewalks** |  | 2026-06-22 | 2026-07-27 |  |  |
| P2.SITE.33 |  | FRP East Pedestrian Walkways | 5d | 2026-06-22 | 2026-06-26 | P2.SITE.27, P2.FAC.5.Z3.180 | 142d |
| P2.SITE.30 |  | FRP North Curb & Gutter | 5d | 2026-06-29 | 2026-07-06 | P1.UTL.230, P2.SITE.8, P2.SITE.33 | 142d |
| P2.SITE.31 |  | FRP West Curb & Gutter | 5d | 2026-07-07 | 2026-07-13 | P2.SITE.264, P2.SITE.164, P2.SITE.114, P2.SITE.30 | 142d |
| P2.SITE.34 |  | FRP North Pedestrian Walkways | 5d | 2026-07-07 | 2026-07-13 | P2.SITE.30 | 162d |
| P2.SITE.32 |  | FRP South Curb & Gutter | 5d | 2026-07-14 | 2026-07-20 | P2.SITE.31 | 142d |
| P2.SITE.35 |  | FRP West Pedestrian Walkways | 5d | 2026-07-14 | 2026-07-20 | P2.SITE.31 | 177d |
| P2.SITE.36 |  | FRP South Pedestrian Walkways | 5d | 2026-07-21 | 2026-07-27 | P2.SITE.32 | 142d |
|  | 1 | **Building Area & Surrounding Roads** |  | 2026-03-05 | 2026-05-22 |  |  |
| P2.SIP.145 |  | Shift Construction Fence around Building | 5d | 2026-03-05 | 2026-03-11 | P2.SITE.15 | 148d |
| P2.SIP.140 |  | Remove/Restore Temporary Island In-fills | 20d | 2026-03-30 | 2026-04-24 | P2.SITE.39 | 186d |
| P2.SIP.155 |  | Final Site Finishes/Furnishings/Boulders | 20d | 2026-04-27 | 2026-05-22 | P2.SITE.40, P2.SIP.140 | 186d |
|  | 6 | **ROADWAYS / PAVING / MARKINGS / SIGNAGE** |  | 2026-03-12 | 2026-07-01 |  |  |
|  | 1 | **North Roadway Loop** |  | 2026-03-12 | 2026-04-01 |  |  |
| P2.SITE.37 |  | Road Base Course | 5d | 2026-03-12 | 2026-03-18 | P1.UTL.310, P2.SITE.16, P2.SIP.145 | 148d |
| P2.SITE.38 |  | Road Surface Layer | 5d | 2026-03-19 | 2026-03-25 | P2.SITE.37, BP8.320.3.110 | 186d |
| P2.SITE.39 |  | Road Pavement Markings | 2d | 2026-03-26 | 2026-03-27 | P2.SITE.38, BP8.320.3.110 | 186d |
| P2.SITE.40 |  | Road Final Signage | 3d | 2026-03-30 | 2026-04-01 | P2.SITE.39 | 203d |
|  | 2 | **West Building Roadway** |  | 2026-03-19 | 2026-04-08 |  |  |
| P2.SITE.324 |  | Road Base Course | 5d | 2026-03-19 | 2026-03-25 | P1.UTL.320, P1.UTL.330, P2.SITE.37 | 243d |
| P2.SITE.334 |  | Road Surface Layer | 5d | 2026-03-26 | 2026-04-01 | P2.SITE.324, BP8.320.3.110 | 248d |
| P2.SITE.344 |  | Road Pavement Markings | 2d | 2026-04-02 | 2026-04-03 | P2.SITE.334, BP8.320.3.110 | 248d |
| P2.SITE.354 |  | Road Final Signage | 3d | 2026-04-06 | 2026-04-08 | P2.SITE.344 | 248d |
|  | 3 | **South Roadway & Access Drive** |  | 2026-06-11 | 2026-07-01 |  |  |
| P2.SITE.364 |  | Road Base Course | 5d | 2026-06-11 | 2026-06-17 | P1.UTL.340, P1.UTL.350, P1.UTL.370, P2.SITE.324 | 189d |
| P2.SITE.374 |  | Road Surface Layer | 5d | 2026-06-18 | 2026-06-24 | P2.SITE.364, BP8.320.3.110 | 189d |
| P2.SITE.384 |  | Road Pavement Markings | 2d | 2026-06-25 | 2026-06-26 | P2.SITE.374, BP8.320.3.110 | 189d |
| P2.SITE.394 |  | Road Final Signage | 3d | 2026-06-29 | 2026-07-01 | P2.SITE.384 | 189d |
|  | 7 | **SITE FURNISHINGS / SITE LIGHTING / PLANTINGS** |  | 2026-05-26 | 2026-09-08 |  |  |
| P2.SITE.46 |  | Install Building Exterior Signage | 5d | 2026-05-26 | 2026-06-01 | P2.SIP.155 | 211d |
| P2.SITE.47 |  | Rough in Site Light at Subgrade | 20d | 2026-06-04 | 2026-07-01 | P2.SITE.24 | 153d |
| P2.SITE.44 |  | Install Walkway Handrails | 5d | 2026-06-29 | 2026-07-06 | P2.SITE.33 | 187d |
| P2.SITE.48 |  | FRP Light Foundatations | 20d | 2026-07-02 | 2026-07-30 | P2.SITE.47 | 153d |
| P2.SITE.45 |  | Install Benches & Trashcans | 5d | 2026-07-14 | 2026-07-20 | P2.SITE.34, BP8.129.3.100, P2.SIP.155 FF | 162d |
| P2.SITE.50 |  | Install Plantings, Stones, and Greenery at East Walkway | 10d | 2026-07-21 | 2026-08-03 | P2.SITE.33, P2.SITE.45 | 167d |
| P2.SITE.41 |  | Install Plaground Surface | 10d | 2026-07-28 | 2026-08-10 | P2.SITE.36, P2.SIP.155 | 142d |
| P2.SITE.49 |  | Install Site Lights (Pole, Wall, and Canopy) | 15d | 2026-07-31 | 2026-08-20 | P2.SITE.48, BP1.265.3.120, BP1.265.3.110 | 154d |
| P2.SITE.54 |  | Stabilize Site | 1d | 2026-07-31 | 2026-07-31 | P2.SITE.48 | 153d |
| P2.SITE.42 |  | Install Playground Equipment | 10d | 2026-08-11 | 2026-08-24 | P2.SITE.41, BP8.116.3.100 | 142d |
| P2.SITE.51 |  | Install Plantings, Stones, and Greenery at Ring Road | 5d | 2026-08-11 | 2026-08-17 | P2.SITE.41, P2.SITE.45 | 147d |
| P2.SITE.52 |  | Install Plantings & Stone at South Entrances | 5d | 2026-08-18 | 2026-08-24 | P2.SITE.51, P2.SITE.45 | 147d |
| P2.SITE.43 |  | Install Playground & Other Decorative Fence/Gates | 10d | 2026-08-25 | 2026-09-08 | P2.SITE.42, BP8.323.3.200 | 142d |
| P2.SITE.53 |  | Install Plantings and Greenery at Island | 5d | 2026-08-25 | 2026-08-31 | P2.SITE.52, P2.SITE.45, BP2.070.3.110 | 147d |
|  | 9 | **Phase 1 & 2 - Demobilization & Site Restoration** |  | 2026-08-03 | 2026-11-13 |  |  |
| P2.DMSR.120 |  | Remove Overhead Pedestrian Pathways/Protection | 15d | 2026-08-03 | 2026-08-21 | P2.SITE.54 | 153d |
| P2.DMSR.160 |  | Site Punchlist - Phase 1 and 2 | 15d | 2026-10-26 | 2026-11-13 | P2.SITE.264, P2.SITE.254, P2.SITE.204, P2.SITE.214, P2.SITE.154, P2.SITE.164, P2.SITE.104, P2.SITE.114, P2.SITE.11, P2.SITE.10, P2.SITE.5, P2.SITE.40, P2.SITE.35, P2.SITE.29, P2.SITE.22, P2.SITE.304, P2.SITE.314, P2.SITE.53, P2.SITE.54, P2.SITE.49, P2.SITE.50, P2.SITE.44, P2.SITE.45, P2.SITE.46, P2.SITE.394, P2.SITE.43, P2.SITE.354, P2.DMSR.120, P2.FAD.FM.250 | 109d |
|  | 11 | **PHASE 3 - NIH MOVES (Draft)** |  | 2027-04-22 | 2027-08-24 |  |  |
| P3.NIH.100 |  | NIH Department Moves | 125d | 2027-04-22 | 2027-08-24 | EXS.130 | 0d |

| ID | WBS | Task | Duration | Start | Finish | Predecessors | Total float |
| --- | --- | --- | --- | --- | --- | --- | --- |
|  | 6 | **PHASE 4 - NIH DECOMMISSION CRC F WING (Draft)** |  | 2027-08-02 | 2027-10-18 |  |  |
| P4.NIH.100 |  | DcX Existing CRC Labs for Turnover to Contractor | 78d | 2027-08-02 | 2027-10-18 | P3.NIH.100 SS+102d | 0d |
| EXS.151 |  | Phase 3 & 4 - NIH Complete | 0d | 2027-10-18 | 2027-10-18 | EXS.120 FF, P3.NIH.100, P4.NIH.100 | 465d |
|  | 12 | **PHASE 5 - PRECONSTRUCTION (Draft)** |  | 2027-04-22 | 2027-10-25 |  |  |
| P5.PREC.100 |  | Phase 5 Preconstruction Planning - Logistics, Barrier Walls, Material Handling | 40d | 2027-04-22 | 2027-06-17 | MOD.P5.XXX.160, P3.NIH.100 SS | 40d |
| P5.PREC.120 |  | Phase 5 Preconstruction Planning - Selective Investigations Existing Condtions | 30d | 2027-05-06 | 2027-06-17 | P5.PREC.100 SS+10d | 40d |
| P5.PREC.110 |  | Phase 5 Prefabrication | 90d | 2027-06-18 | 2027-10-25 | P5.PREC.100, P5.DES.340 | 86d |
| P5.PWS.290 |  | Prepare & Submit - Site Specific Phase 5 Logistics Plan | 20d | 2027-06-18 | 2027-07-16 | P5.PREC.100, P5.PREC.120 | 50d |
| P5.PWS.300 |  | Review & Approve - Site Specific Phase 5 Logistics Plan | 15d | 2027-07-19 | 2027-08-06 | P5.PWS.290 | 50d |
|  | 7 | **PHASE 5 - CONSTRUCTION - CRC RENOVATION (Draft)** |  | 2027-10-19 | 2029-01-25 |  |  |
| P5.CRC.110 |  | Mobilization/Set up Barrier Walls/ICRA Measures (Floors B2- L4) | 35d | 2027-10-19 | 2027-11-22 | P5.DEMO.2.100, P5.PWS.300, EXS.150, EXS.170 | 0d |
| P5.CRC.100 |  | Decommission MEP Systems/Cut/Cap/Make Safe for Demo (Floors B2- L4) | 56d | 2027-11-23 | 2028-01-17 | P5.CRC.110 | 0d |
| P5.CRC.120 |  | Interior Demolition (Floors L1- L7) | 100d | 2028-01-04 | 2028-04-12 | P5.SUM.255 FF, P5.CRC.100 SS+42d | 0d |
| P5.CRC.180 |  | Levels 5-6 Demo & Finish Work to support SRLM to CRC connections (FLS req) | 60d | 2028-01-04 | 2028-03-03 | P5.CRC.100 SS+42d | 37d |
| P5.CRC.160 |  | MEP Rough in & Partitions (Floors L1- L7) | 125d | 2028-02-29 | 2028-07-02 | P5.PREC.110, P5.BIM.L3.50.100, P5.BIM.L2.50.100, P5.BIM.L1.50.100, P5.CRC.120 SS+56d, P5.BIM.L6.50.100, P5.BIM.L5.50.100, P5.BIM.L4.50.100 | 0d |
| P5.CRC.190 |  | Levels 5-6 SRLM to CRC Connection for FLS & Egress | 20d | 2028-03-04 | 2028-03-23 | P5.CRC.180 | 37d |
| P5.CRC.200 |  | FM Inspections, Approval, & Shut down of Stair 3-9 | 20d | 2028-03-24 | 2028-04-12 | P5.CRC.190 | 37d |
| P5.CRC.130 |  | Renovation & Interior Fit Out (Floors L1- L7) | 170d | 2028-05-20 | 2028-11-05 | P5.CRC.200, P5.CRC.100, P5.SUM.265 FF, P5.3-9.1050 FF, P5.CRC.120 SS+56d, P5.CRC.160 SS+81d | 0d |
| P5.CRC.170 |  | Demobilize Field Offices at MLP-14 Garage | 84d | 2028-08-15 | 2028-11-06 | P5.CRC.160, P5.CRC.120, P5.CRC.130 SS+87d | 55d |
| P5.CRC.140 |  | Commissioning/Punchlist | 56d | 2028-11-06 | 2028-12-31 | P5.CRC.130, P5.CRC.170 FF, P5.PT.1040 FF | 0d |
| P5.CRC.150 |  | Acceptance Inspections & Certifications | 25d | 2029-01-01 | 2029-01-25 | P5.CRC.140, P5.CLO.213, P5.DMSR.200, P5.SUM.275 FF, P5.CLO.170 FF+10d | 0d |
|  | 1 | **Stair 3-9 Connection from SRLM to CRC** |  | 2027-10-19 | 2028-09-26 |  |  |
| P5.3-9.1000 |  | Work-Plan Investigation of Lab Office 6F512 for Reinforcing of Roof Beam (Stair 3-9) | 20d | 2027-10-19 | 2027-11-15 | P4.NIH.100, P2A.DES.555 | 77d |
| P5.3-9.1080 |  | Work-Plan Development for Reinforcing of Roof Beam (Stair 3-9) | 20d | 2027-11-16 | 2027-12-15 | P5.3-9.1000 | 77d |
| P5.3-9.1010 |  | NIH Notification - Review and Approval of Roof Beam Reinforcing Work Plan (Stair 3-9) | 20d | 2027-12-16 | 2028-01-14 | P5.3-9.1080 | 77d |
| P5.3-9.1060 |  | NIH Notification - Confirmation and Approval of Roof Beam Reinforcing Work Plan (Stair 3-9) | 20d | 2028-03-24 | 2028-04-20 | P5.3-9.1010, P5.CRC.190 | 28d |
| P5.3-9.1070 |  | NIH Vacate Lab Office 6F512 | 20d | 2028-04-21 | 2028-05-18 | P5.3-9.1060 | 28d |
| P5.3-9.1020 |  | Utilty Shut down Survey & Notification | 30d | 2028-05-19 | 2028-06-30 | P5.3-9.1070 | 28d |
| P5.3-9.1030 |  | Pull back Grid, Reroute Utilities, and Clear Lab Office for Structural Work | 20d | 2028-07-03 | 2028-07-31 | P5.3-9.1020, P5.3-9.1070 | 28d |
| P5.3-9.1040 |  | Cut & Reinforce Existing Down-Turned Beam in CRC - Lab Office 6F512 | 20d | 2028-08-01 | 2028-08-28 | P5.3-9.1030 | 28d |
| P5.3-9.1050 |  | Complete Stair 3-9 final conditions and door connection, and Comissioning | 20d | 2028-08-29 | 2028-09-26 | P5.3-9.1040 | 28d |
|  | 5 | **Phase 5 - Demobilization & Site Restoration** |  | 2028-10-09 | 2028-12-27 |  |  |
| P5.DMSR.160 |  | Remove Vehicle Inspection Station | 20d | 2028-10-09 | 2028-11-06 | P5.CRC.130 FF | 2d |
| P5.DMSR.180 |  | Restore Site Lighting Along Center Drive/Cloister Ct | 20d | 2028-10-16 | 2028-11-10 | P5.DMSR.160 SS+5d | 7d |
| P5.DMSR.170 |  | Restore Center Drive & Complete Site Finishes along Center Drive | 20d | 2028-11-06 | 2028-12-05 | P5.DMSR.160, P2.SUM.275, P5.DMSR.180 FF+10d | 2d |
| P5.DMSR.190 |  | Restore Shoulder & Complete Site Finishes at Cloister Ct | 20d | 2028-11-06 | 2028-12-05 | P5.DMSR.160, P5.DMSR.180 FF+10d, P5.DMSR.160 SS | 2d |
| P5.DMSR.200 |  | Site Punchlist Phase 5 | 15d | 2028-12-06 | 2028-12-27 | P5.DMSR.190, P5.DMSR.170 | 2d |
|  | 8 | **PHASE 5 - CLOSE OUT (Draft)** |  | 2028-07-03 | 2028-12-27 |  |  |
| P5.CLO.140 |  | Prepare & Submit - As-Built Records (Draft) | 45d | 2028-07-03 | 2028-09-05 | P5.CRC.160 | 20d |
| P5.CLO.150 |  | Review & Approve - As-Built Records (Draft) | 15d | 2028-09-06 | 2028-09-26 | P5.CLO.140 | 38d |
| P5.CLO.193 |  | Prepare & Submit - O&M (Final) | 30d | 2028-09-25 | 2028-11-06 | P5.CLO.140, P5.CRC.130 FF | 7d |
| P5.CLO.160 |  | Prepare & Submit - As-Built Records (Final) | 20d | 2028-11-06 | 2028-12-05 | P5.CRC.130, P5.CLO.150 | 10d |
| P5.CLO.203 |  | Review & Approve - O&M (Final) | 15d | 2028-11-06 | 2028-11-28 | P5.CLO.193 | 7d |
| P5.CLO.213 |  | O&M Training and Instruction | 15d | 2028-11-29 | 2028-12-19 | P5.CLO.203 | 7d |
| P5.CLO.170 |  | Review & Approve - As-Built Records (Final) | 15d | 2028-12-06 | 2028-12-27 | P5.CLO.160 | 10d |
|  | 14 | **Shut Down Consideration** |  |  |  |  |  |

## Version 2 (data date 2026-01-01, saved 2026-01-26, file U41.xer)

Last finish 2029-01-25 → 2029-02-13 (+19d). Complete tasks 4724 → 5133.

Added:

| ID | Task |
| --- | --- |
| 2 | **Phase 2.1 - Construction** |
| 1 | **PH2.1 - PCO 815** |
| 1 | **PH2.1 - PCO 815 - DOOR ASSEMBLIES [5-3990]** |
| 2 | **PH2.1 - PCO 815 - MOVE DOOR [C5-3920 SOUTH]** |
| 3 | **PH2.1 - PCO 815 - SIGN-OUT ROOM [5-3966]** |
| 4 | **PH2.1 - PCO 815 - PYXIS SUPPLY ROOM [5-3948]** |
| 2 | **PH2.1 - PCO 816** |
| 1 | **PH2.1 - PCO 816 - ADDED POWER, DATA & BLOCKING FOR OF/OI MONITORS [5-2929]** |
| 2 | **PH2.1 - PCO 816 - DEMO & REMOVE BSC0150.0 (4") [5-3960]** |
| 3 | **PH2.1 - PCO 816 - MOVE BSCO0150 (4') & ADD INSTALL NEW FUME HOOD [5-2925]** |
| 4 | **PH2.1 - PCO 816 - DEMO & REMOVE BENCHES & ADD POWER AND CA FOR OF/OI CONCENTRATOR [5-2920]** |
| 5 | **PH2.1 - PCO 816 - MOVE SNKL02.01 AND SNKL02.03 & ADD GAS CONNECTIONS ON NORTH WALL [5-2920]** |
| 6 | **PH2.1 - PCO 816 - MOVE SNKL02.01 AND SNKL02.03 & ADD REF0284 & FRZ0963 CONNECTIONS [5-2920]** |
| 8 | **PH2.1 - PCO 816 - ADDED CFH145.02 & CFH145.03 CA & VAC SERVICE FITTIGS [5-2920]** |
| 10 | **PH2.1 - PCO 816 - DEMO & REMOVE COUNTERTOP & SHELVING & ADD REF0318 CONNECTIONS [5-2901]** |
| 7 | **PH2.1 - PCO 816 - ADDED BSC0150.1 (4') VAC AND CONNECTIONS [5-2824]** |
| 9 | **PH2.1 - PCO 816 - MOVE BENCH & FLOOR MOUNTED EQUIPMENT [5-2824]** |
| 11 | **PH2.1 - PCO 816 - REVISED DARK ROOMS TO SLIDE READING ROOMS [5-2822 & 5-2820A]** |
| 12 | **PH2.1 - PCO 816 - DEMO & REMOVE BENCH AND SHELVING & ADD BCSO CABINET W CONNECTIONS [5-2817]** |
| 13 | **PH2.1 - PCO 816 - DEMO & REMOVE FIXED BENCHES TO ACCOMMODATE LOCKERS AND OF/OI DISPENSERS [5-2815]** |
| 14 | **PH2.1 - PCO 816 - DEMO & REMOVE MOB BENCHES & ADD BCSO CABINET W CONNECTIONS [5-2815]** |
| 15 | **PH2.1 - PCO 816 - ADDED DOORS TO CONTROL ACCESS [5-2813]** |
| 16 | **PH2.1 - PCO 816 - DEMO & REMOVE TWO BSC0150 (4') & ADD TWO BSCO (6') CABINETS [5-3960]** |
| 17 | **PH2.1 - PCO 816 - ADD TWO MOBLE STAINLESS STEEL MOBLE TABLES [5-3960]** |
| 18 | **PH2.1 - PCO 816 - MOVE VENT PASS-THROUGH [ 5-3960]** |
| 19 | **PH2.1 - PCO 816 - ADDED GAS LAB WALL OUTLET AT FIXED BENCH [5-2820]** |
| 20 | **PH2.1 - PCO 816 - ADDED VAC CONNECTIONS FOR TWO BSCO150.1 (4') [5-2820]** |
| 21 | **PH2.1 - PCO 816 - ADDED VIEWING WINDOW [5-2811B]** |
| 22 | **PH2.1 - PCO 816 - ADDED (CA), (VAC) & CFH145.07 FUTURE FITTING PREP. [5-2845-02]** |
| 23 | **PH2.1 - PCO 816 - DEMO & REMOVE BSC0150 (4') & ADD MOBILE LAB BENCH AND MOBILE CABINET [5-2845-01]** |
| 24 | **PH2.1 - PCO 816 - DEMO & MOVE BSCO150(4'), ADD VAC CONNS & INSTALL MOB BENCH AND EQUIP [5-2845-01]** |
| 25 | **PH2.1 - PCO 816 - ADDED VENT PASS-THROUGH [5-2825]** |
| 26 | **PH2.1 - PCO 816 - ADDED VENT PASS-THROUGH [5-2829]** |
| 27 | **PH2.1 - PCO 816 - ADDED BSC0150.1(4') VACUUM (VAC) FITTINGS & CONNECTIONS [5-2845-07]** |
| 28 | **PH2.1 - PCO 816 - DEMO & REMOVE THREE BSC0150(4') & ADD THREE BCSO(6') W CONNS [5-2845-11]** |
| 29 | **PH2.1 - PCO 816 - ADDED BSCO150 (4') VACCUM (VAC) FITTINGS & CONNECTIONS [5-2845-11]** |
| 30 | **PH2.1 - PCO 816 - REORGANIZE BOTH ANA0314 & MOVE MOBILE BENCHES [5-2845-11]** |
| 3 | **PH2.1 - PCO 818** |
| 1 | **PH2.1 - PCO 818 - (DPM_01) LEVELS 2 & 3 MODIFICATIONS - RFP 075** |
| 2 | **PH2.1 - PCO 818 - ROOM 2-3946 (LOUNGE TO WORKROOM)** |
| 3 | **PH2.1 - PCO 818 - DOOR 3-2835AB (S-7 TO SL-11A CONVERSION)** |
| 4 | **PH2.1 - PCO 818 - STERILE STORAGE ROOMS (3-2950A, 3-2940A, 3-3913)** |
| 5 | **PH2.1 - PCO 818 - SUB-STERILE 3-3911 (ICE MAKER)** |
| 6 | **PH2.1 - PCO 818 - DOOR 3-2835AA (MRI RETROFIT)** |
| 7 | **PH2.1 - PCO 818 - PROJECT CLOSEOUT - ALL** |
| 8 | **PH2.1 - PCO 821** |
| 1 | **PH2.1 - PCO 821 - (RAD_02) LEVEL 01 CENTRAL PREP MODIFICATIONS - RFP 078** |
| 5 | **PH2.1 - PCO 822** |
| 1 | **PH2.1 - PCO 822 - (RAD_04) CONFERENCE ROOM 1-2810 MODIFICATIONS - RFP 079** |
| 4 | **PH2.1 - RFP 014** |
| 1 | **PH2.1 - RFP 014 ADDED CLINICAL ISOLATION ROOMS - PRECON** |
| 2 | **PH2.1 - RFP 014 ADDED CLINICAL ISOLATION ROOMS [1-3918]** |
| 3 | **PH2.1 - RFP 014 ADDED CLINICAL ISOLATION ROOMS [3-2865]** |
| 4 | **PH2.1 - RFP 014 ADDED CLINICAL ISOLATION ROOMS [3-5930]** |

Changed:

| ID | Task | Start | Finish | Complete | Total float | Other |
| --- | --- | --- | --- | --- | --- | --- |
| 1 | **EXECUTIVE SUMMARY** |  | 2029-01-25 → 2029-02-13 (+19d) |  |  |  |
| EXS.105 | Phase 0,1 & 2 |  | 2027-04-21 → 2027-05-10 (+19d) | 70% → 71% | 645d → 626d |  |
| EXS.130 | Substantial Completion - Phase 0,1,2 | 2027-04-21 → 2027-05-10 (+19d) | 2027-04-21 → 2027-05-10 (+19d) |  | 0d → -19d |  |
| EXS.120 | Phase 3 & 4 - NCI Lab Move & DcX | 2027-04-22 → 2027-05-11 (+19d) | 2027-10-18 → 2027-11-06 (+19d) |  | 465d → 446d |  |
| EXS.170 | Phase 2.1 - Construction | 2027-04-22 → 2027-05-11 (+19d) | 2027-10-18 → 2027-11-06 (+19d) |  | 0d → -19d |  |
| EXS.150 | Phase 3 & 4 - NIH Complete | 2027-10-18 → 2027-11-06 (+19d) | 2027-10-18 → 2027-11-06 (+19d) |  | 0d → -19d |  |
| EXS.125 | Phase 5 - Demo, Renovation, Commissioning - West Wing Labs | 2027-10-19 → 2027-11-07 (+19d) | 2029-01-25 → 2029-02-13 (+19d) |  | 0d → -19d |  |
| EXS.140 | Phase 5 Complete | 2029-01-25 → 2029-02-13 (+19d) | 2029-01-25 → 2029-02-13 (+19d) |  | 0d → -19d |  |
| ENB.150 | ESSEG - P00002 - ESSEG Period of Performance (Including feeder changeover) (ESUM.420 - ESSEG CPM) |  |  | 64% → 67% |  |  |
| ENB.160 | ESSEG - Substantial Completion - Phase 2-5 Feeder Transistions (ESUM.120 - ESSEG CPM) |  |  | 4% → 11% |  |  |
| ENB.170 | ESSEG - Emergency Power Energized/Fully Commissioned (ESUM.550 - ESSEG CPM) |  |  | 71% → 95% |  |  |
| 3 | **RFP 015 - B2 Sterile Proccessing** |  | 2026-01-27 → 2026-02-26 (+30d) |  |  |  |
| RFP.015.1300 | Remaining Balance - Construction Cost RFP Review/ Approve - RFP 015 | 2025-08-06 A → 2025-08-11 A (+5d) |  |  |  |  |
| RFP.015.1250 | CMU Wall Construction - RFP 015 Construction |  | 2025-12-03 → 2026-01-06 (+34d) |  | 59d → 27d |  |
| RFP.015.1330 | Issue Revised Shop Drawings - RFP 015 Construction | 2025-12-01 → 2026-01-02 (+32d) | 2025-12-12 → 2026-01-15 (+34d) |  | 34d → 2d |  |
| RFP.015.1260 | Complete Framing on Top of CMU Wall - RFP 015 Construction | 2025-12-04 → 2026-01-07 (+34d) | 2025-12-05 → 2026-01-08 (+34d) |  | 59d → 27d |  |
| RFP.015.1280 | AHJ Wall inspection - RFP 015 Construction | 2025-12-08 → 2026-01-09 (+32d) | 2025-12-12 → 2026-01-15 (+34d) |  | 59d → 27d |  |
| RFP.015.1340 | Demo Existing Overhead - RFP 015 Construction | 2025-12-15 → 2026-01-16 (+32d) | 2025-12-19 → 2026-01-22 (+34d) |  | 34d → 2d |  |
| RFP.015.1350 | Install Revised MEP Overhead - RFP 015 Construction | 2025-12-22 → 2026-01-23 (+32d) | 2026-01-13 → 2026-02-12 (+30d) |  | 34d → 2d |  |
| RFP.015.1270 | Insulate OH Plumbing - RFP 015 Construction | 2026-01-14 → 2026-02-13 (+30d) | 2026-01-20 → 2026-02-19 (+30d) |  | 34d → 2d |  |
| RFP.015.1290 | Hang Tape Finish - RFP 015 Construction | 2026-01-21 → 2026-02-20 (+30d) | 2026-01-27 → 2026-02-26 (+30d) |  | 34d → 2d |  |
| 4 | **PCO 225 - RF & Magnetic Shielding** |  | 2026-02-19 → 2026-03-20 (+29d) |  |  |  |
| PCO.225.1140 | Review/ Approve - RF (Copper Shielding) |  | 2025-12-01 A | 97% → 100% | 17d → none |  |
| PCO.225.1180 | L1 Magnetic & RF Shielding Assembly Install (Floor, Walls & Ceiling) | 2025-12-02 → 2026-01-02 (+31d) | 2026-02-11 → 2026-03-12 (+29d) |  | 17d → -4d |  |
| PCO.225.1310 | B2 Parent Wall Framing - Magnetic Shielding | 2025-12-01 → 2026-01-02 (+32d) | 2025-12-05 → 2026-01-08 (+34d) |  | 13d → 41d |  |
| PCO.225.1380 | B2 In -Wall MEP Instal - Magnetic Shielding | 2025-12-08 → 2026-01-09 (+32d) | 2025-12-19 → 2026-01-22 (+34d) |  | 13d → 41d |  |
| PCO.225.1320 | B2 Cieling Joist Framing - Magnetic Shielding | 2025-12-22 → 2026-01-23 (+32d) | 2025-12-29 → 2026-01-29 (+31d) |  | 13d → 41d |  |
| PCO.225.1230 | B2 RF Shielding Assembly Install (Floor, Walls & Ceiling) | 2025-12-30 → 2026-01-30 (+31d) | 2026-01-20 → 2026-02-19 (+30d) |  | 13d → 41d |  |
| PCO.225.1240 | L1 RF Shielding Assembly Install (Floor, Walls & Ceiling) | 2026-01-21 → 2026-02-20 (+30d) | 2026-02-10 → 2026-03-12 (+30d) |  | 13d → 136d | was named L3 RF Shielding Assembly Install (Floor, Walls & Ceiling) |
| PCO.225.1250 | Inspection of RF Shielding - B2 | 2026-01-21 → 2026-02-20 (+30d) | 2026-01-21 → 2026-02-20 (+30d) |  | 63d → 41d |  |
| PCO.225.1270 | B2 RF Shielding Slab Infill | 2026-01-22 → 2026-02-23 (+32d) | 2026-01-28 → 2026-02-27 (+30d) |  | 63d → 41d |  |
| PCO.225.1190 | Inspection of Magnetic & RF Shielding - L1 | 2026-02-12 → 2026-03-13 (+29d) | 2026-02-12 → 2026-03-13 (+29d) |  | 17d → -4d |  |
| PCO.225.1260 | Inspection of RF Shielding - L1 | 2026-02-11 → 2026-03-13 (+30d) | 2026-02-11 → 2026-03-13 (+30d) |  | 13d → 136d | was named Inspection of RF Shielding - L3 |
| PCO.225.1220 | L1 RF Shielding Slab Infill | 2026-02-13 → 2026-03-16 (+31d) | 2026-02-19 → 2026-03-20 (+29d) |  | 17d → -4d |  |
| PCO.225.1280 | L1 RF Shielding Slab Infill | 2026-02-12 → 2026-03-16 (+32d) | 2026-02-18 → 2026-03-20 (+30d) |  | 13d → 136d | was named L3 RF Shielding Slab Infill |
| 15 | **PCO 0816 - Phase 2 - (DLM_02) Level 5 Lab Modifications - RFP 073 Package** |  | 2025-12-24 → 2025-12-12 (-12d) |  |  |  |
| PCO.0816.1090 | Enginering Coordination - PCO 0816 (DLM_02) |  | 2025-12-09 → 2025-12-02 A (-7d) | 53% → 100% | 336d → none |  |
| PCO.0816.1100 | Internal Review- PCO 0816 (DLM_02) | 2025-12-10 → 2025-12-03 A (-7d) | 2025-12-16 → 2025-12-03 A (-13d) | 0% → 100% | 336d → none |  |
| PCO.0816.1110 | Compile Design Submittal - PCO 0816 (DLM_02) | 2025-12-17 → 2025-12-04 A (-13d) | 2025-12-23 → 2025-12-11 A (-12d) | 0% → 100% | 336d → none |  |
| PCO.0816.1120 | Submit To NIH - PCO 0816 (DLM_02) | 2025-12-24 → 2025-12-12 A (-12d) | 2025-12-24 → 2025-12-12 A (-12d) | 0% → 100% | 336d → none |  |
| 14 | **PCO 0817 - Phase 2C - DLM_3 Level 6 Design - RFP 074 Package** |  | 2026-04-21 → 2026-05-21 (+30d) |  |  |  |
| PCO.0817.1220 | Goverment Shut-Down - PCO 0817 (DLM_03) |  | 2025-12-01 → 2026-01-02 (+32d) |  | 254d → 232d |  |
| PCO.0817.1060 | Meeting #1 - ZGF + NIH - Information Gathering - PCO 0817 (DLM_03) | 2025-12-02 → 2026-01-05 (+34d) | 2025-12-02 → 2026-01-05 (+34d) |  | 254d → 232d |  |
| PCO.0817.1070 | ZGF Draft Design Development - PCO 0817 (DLM_03) | 2025-12-03 → 2026-01-06 (+34d) | 2025-12-23 → 2026-01-26 (+34d) |  | 254d → 232d |  |
| PCO.0817.1080 | Meeting #2 - ZGF + NIH - Preliminary Design - PCO 0817 (DLM_03) | 2025-12-24 → 2026-01-27 (+34d) | 2025-12-24 → 2026-01-27 (+34d) |  | 254d → 232d |  |
| PCO.0817.1090 | NIH Draft Review + Aproval - PCO 0817 (DLM_03) | 2025-12-26 → 2026-01-28 (+33d) | 2026-01-02 → 2026-02-03 (+32d) |  | 254d → 232d |  |
| PCO.0817.1100 | ZGF Interim Design Development - PCO 0817 (DLM_03) | 2026-01-05 → 2026-02-04 (+30d) | 2026-01-23 → 2026-02-24 (+32d) |  | 254d → 232d |  |
| PCO.0817.1110 | Meeting #3 - ZGF + NIH - Preliminary Design - PCO 0817 (DLM_03) | 2026-01-26 → 2026-02-25 (+30d) | 2026-01-26 → 2026-02-25 (+30d) |  | 254d → 232d |  |
| PCO.0817.1120 | NIH Interim Review + Aproval - PCO 0817 (DLM_03) | 2026-01-27 → 2026-02-26 (+30d) | 2026-02-02 → 2026-03-04 (+30d) |  | 254d → 232d |  |
| PCO.0817.1130 | ZGF Final Design Development - PCO 0817 (DLM_03) | 2026-02-03 → 2026-03-05 (+30d) | 2026-02-23 → 2026-03-25 (+30d) |  | 254d → 232d |  |
| PCO.0817.1140 | Meeting #4 - ZGF + NIH - Final Design Review - PCO 0817 (DLM_03) | 2026-02-24 → 2026-03-26 (+30d) | 2026-02-24 → 2026-03-26 (+30d) |  | 254d → 232d |  |
| PCO.0817.1150 | Meeting #5 - ZGF + NIH - NIH Leadership - PCO 0817 (DLM_03) | 2026-02-25 → 2026-03-27 (+30d) | 2026-03-03 → 2026-04-02 (+30d) |  | 254d → 232d |  |
| PCO.0817.1160 | Meeting #6 - ZGF + NIH - NIH Leadership - PCO 0817 (DLM_03) | 2026-03-04 → 2026-04-03 (+30d) | 2026-03-10 → 2026-04-09 (+30d) |  | 254d → 232d |  |
| PCO.0817.1170 | Meeting #7 - ZGF + NIH - NIH Leadership - PCO 0817 (DLM_03) | 2026-03-11 → 2026-04-10 (+30d) | 2026-03-17 → 2026-04-16 (+30d) |  | 254d → 232d |  |
| PCO.0817.1180 | Concept Design Development + Enginering Coordination - PCO 0817 (DLM_03) | 2026-03-18 → 2026-04-17 (+30d) | 2026-03-31 → 2026-04-30 (+30d) |  | 254d → 232d |  |
| PCO.0817.1190 | Internal Review - PCO 0817 (DLM_03) | 2026-04-01 → 2026-05-01 (+30d) | 2026-04-07 → 2026-05-07 (+30d) |  | 254d → 232d |  |
| PCO.0817.1200 | Compile Design Submittal - PCO 0817 (DLM_03) | 2026-04-08 → 2026-05-08 (+30d) | 2026-04-14 → 2026-05-14 (+30d) |  | 254d → 232d |  |
| PCO.0817.1210 | Submit To NIH - PCO 0817 (DLM_03) | 2026-04-15 → 2026-05-15 (+30d) | 2026-04-21 → 2026-05-21 (+30d) |  | 254d → 232d |  |
| 12 | **PCO 0819 - Phase 2C & 5 - DPM_2_3_4 IR_1 Levels 2 & 3 Design - RFP 76** |  | 2026-07-21 → 2026-08-20 (+30d) |  |  |  |
| PCO.0819.1050 | Goverment Shut-Down - PCO 0819 (DPM_2_3_4 IR_1) |  | 2025-12-01 → 2026-01-02 (+32d) |  | 191d → 169d |  |
| PCO.0819.1070 | Meeting #1 - ZGF + NIH - Information Gathering - PCO 0819 (DPM_2_3_4 IR_1) | 2025-12-02 → 2026-01-05 (+34d) | 2025-12-02 → 2026-01-05 (+34d) |  | 191d → 169d |  |
| PCO.0819.1080 | ZGF Meeting Prep + Coordination with NIH - PCO 0819 (DPM_2_3_4 IR_1) | 2025-12-03 → 2026-01-06 (+34d) | 2025-12-23 → 2026-01-26 (+34d) |  | 191d → 169d |  |
| PCO.0819.1090 | Meeting #2 - ZGF + NIH - Information Gathering - PCO 0819 (DPM_2_3_4 IR_1) | 2025-12-24 → 2026-01-27 (+34d) | 2025-12-24 → 2026-01-27 (+34d) |  | 191d → 169d |  |
| PCO.0819.1100 | ZGF Draft Design Development - PCO 0819 (DPM_2_3_4 IR_1) | 2025-12-26 → 2026-01-28 (+33d) | 2026-01-09 → 2026-02-10 (+32d) |  | 191d → 169d |  |
| PCO.0819.1110 | Meeting #3 - ZGF + NIH - Preliminary Design - PCO 0819 (DPM_2_3_4 IR_1) | 2026-01-12 → 2026-02-11 (+30d) | 2026-01-12 → 2026-02-11 (+30d) |  | 191d → 169d |  |
| PCO.0819.1120 | NIH Draft Review + Approval - PCO 0819 (DPM_2_3_4 IR_1) | 2026-01-13 → 2026-02-12 (+30d) | 2026-01-19 → 2026-02-18 (+30d) |  | 191d → 169d |  |
| PCO.0819.1130 | ZGF Interim Design Development - PCO 0819 (DPM_2_3_4 IR_1) | 2026-01-20 → 2026-02-19 (+30d) | 2026-02-02 → 2026-03-04 (+30d) |  | 191d → 169d |  |
| PCO.0819.1140 | Meeting #4 - Preliminary Design Review - PCO 0819 (DPM_2_3_4 IR_1) | 2026-02-03 → 2026-03-05 (+30d) | 2026-02-03 → 2026-03-05 (+30d) |  | 191d → 169d |  |
| PCO.0819.1150 | NIH Interim Review + Comment - PCO 0819 (DPM_2_3_4 IR_1) | 2026-02-04 → 2026-03-06 (+30d) | 2026-02-10 → 2026-03-12 (+30d) |  | 191d → 169d |  |
| PCO.0819.1160 | ZGF Interim Design Development - PCO 0819 (DPM_2_3_4 IR_1) | 2026-02-11 → 2026-03-13 (+30d) | 2026-02-24 → 2026-03-26 (+30d) |  | 191d → 169d |  |

| ID | Task | Start | Finish | Complete | Total float |
| --- | --- | --- | --- | --- | --- |
| PCO.0819.1170 | Meeting #5 - Preliminary Design Review - PCO 0819 (DPM_2_3_4 IR_1) | 2026-02-25 → 2026-03-27 (+30d) | 2026-02-25 → 2026-03-27 (+30d) |  | 191d → 169d |
| PCO.0819.1180 | NIH Interim Review + Aproval - PCO 0819 (DPM_2_3_4 IR_1) | 2026-02-26 → 2026-03-30 (+32d) | 2026-03-04 → 2026-04-03 (+30d) |  | 191d → 169d |
| PCO.0819.1190 | ZGF Final Design Development - PCO 0819 (DPM_2_3_4 IR_1) | 2026-03-05 → 2026-04-06 (+32d) | 2026-03-18 → 2026-04-17 (+30d) |  | 191d → 169d |
| PCO.0819.1200 | Meeting #6 - Concept Design Progress - PCO 0819 (DPM_2_3_4 IR_1) | 2026-03-19 → 2026-04-20 (+32d) | 2026-03-19 → 2026-04-20 (+32d) |  | 191d → 169d |
| PCO.0819.1210 | NIH Final Review + Comment - PCO 0819 (DPM_2_3_4 IR_1) | 2026-03-20 → 2026-04-21 (+32d) | 2026-03-26 → 2026-04-27 (+32d) |  | 191d → 169d |
| PCO.0819.1220 | ZGF Final Design Development - PCO 0819 (DPM_2_3_4 IR_1) | 2026-03-27 → 2026-04-28 (+32d) | 2026-04-16 → 2026-05-18 (+32d) |  | 191d → 169d |
| PCO.0819.1230 | Meeting #7 - Concept Design - PCO 0819 (DPM_2_3_4 IR_1) | 2026-04-17 → 2026-05-19 (+32d) | 2026-04-23 → 2026-05-26 (+33d) |  | 191d → 169d |
| PCO.0819.1240 | Meeting #8 - NIH Leadership - PCO 0819 (DPM_2_3_4 IR_1) | 2026-04-24 → 2026-05-27 (+33d) | 2026-04-30 → 2026-06-02 (+33d) |  | 191d → 169d |
| PCO.0819.1250 | Meeting #9 - NIH Leadership - PCO 0819 (DPM_2_3_4 IR_1) | 2026-05-01 → 2026-06-03 (+33d) | 2026-05-07 → 2026-06-09 (+33d) |  | 191d → 169d |
| PCO.0819.1260 | Meeting #10 - NIH Leadership - PCO 0819 (DPM_2_3_4 IR_1) | 2026-05-08 → 2026-06-10 (+33d) | 2026-05-14 → 2026-06-16 (+33d) |  | 191d → 169d |
| PCO.0819.1270 | Engineering Coordination - PCO 0819 (DPM_2_3_4 IR_1) | 2026-05-15 → 2026-06-17 (+33d) | 2026-06-12 → 2026-07-15 (+33d) |  | 191d → 169d |
| PCO.0819.1280 | Internal Review - PCO 0819 (DPM_2_3_4 IR_1) | 2026-06-15 → 2026-07-16 (+31d) | 2026-06-26 → 2026-07-29 (+33d) |  | 191d → 169d |
| PCO.0819.1290 | Compile Design Submittal - PCO 0819 (DPM_2_3_4 IR_1) | 2026-06-29 → 2026-07-30 (+31d) | 2026-07-20 → 2026-08-19 (+30d) |  | 191d → 169d |
| PCO.0819.1300 | Submit To NIH - PCO 0819 (DPM_2_3_4 IR_1) | 2026-07-21 → 2026-08-20 (+30d) | 2026-07-21 → 2026-08-20 (+30d) |  | 191d → 169d |
| 11 | **PCO 0820 - Phase 2C & 5 - RAD_1_3_5 RADIS Level 01 Design - RFP 077** |  | 2026-07-28 → 2026-08-27 (+30d) |  |  |
| PCO.0820.1050 | Goverment Shut-Down - PCO 0820 (RAD_1_3_5) |  | 2025-12-01 → 2026-01-02 (+32d) |  | 186d → 164d |
| PCO.0820.1070 | Meeting #1 - ZGF + NIH - Information Gathering - PCO 0820 (RAD_1_3_5) | 2025-12-02 → 2026-01-05 (+34d) | 2025-12-02 → 2026-01-05 (+34d) |  | 186d → 164d |
| PCO.0820.1080 | ZGF Meeting Prep + Coordination with NIH - PCO 0820 (RAD_1_3_5) | 2025-12-03 → 2026-01-06 (+34d) | 2025-12-23 → 2026-01-26 (+34d) |  | 186d → 164d |
| PCO.0820.1090 | Meeting #2 - ZGF + NIH - Information Gathering - PCO 0820 (RAD_1_3_5) | 2025-12-24 → 2026-01-27 (+34d) | 2025-12-24 → 2026-01-27 (+34d) |  | 186d → 164d |
| PCO.0820.1100 | ZGF Draft Design Development - PCO 0820 (RAD_1_3_5) | 2025-12-26 → 2026-01-28 (+33d) | 2026-01-09 → 2026-02-10 (+32d) |  | 186d → 164d |
| PCO.0820.1110 | Meeting #3 - ZGF + NIH - Preliminary Design - PCO 0820 (RAD_1_3_5) | 2026-01-12 → 2026-02-11 (+30d) | 2026-01-12 → 2026-02-11 (+30d) |  | 186d → 164d |
| PCO.0820.1120 | NIH Draft Review + Approval - PCO 0820 (RAD_1_3_5) | 2026-01-13 → 2026-02-12 (+30d) | 2026-01-19 → 2026-02-18 (+30d) |  | 186d → 164d |
| PCO.0820.1130 | ZGF Interim Design Development - PCO 0820 (RAD_1_3_5) | 2026-01-20 → 2026-02-19 (+30d) | 2026-02-02 → 2026-03-04 (+30d) |  | 186d → 164d |
| PCO.0820.1140 | Meeting #4 - Preliminary Design Review - PCO 0820 (RAD_1_3_5) | 2026-02-03 → 2026-03-05 (+30d) | 2026-02-03 → 2026-03-05 (+30d) |  | 186d → 164d |
| PCO.0820.1150 | NIH Interim Review + Comment - PCO 0820 (RAD_1_3_5) | 2026-02-04 → 2026-03-06 (+30d) | 2026-02-10 → 2026-03-12 (+30d) |  | 186d → 164d |
| PCO.0820.1160 | ZGF Interim Design Development - PCO 0820 (RAD_1_3_5) | 2026-02-11 → 2026-03-13 (+30d) | 2026-02-24 → 2026-03-26 (+30d) |  | 186d → 164d |
| PCO.0820.1170 | Meeting #5 - Preliminary Design Review - PCO 0820 (RAD_1_3_5) | 2026-02-25 → 2026-03-27 (+30d) | 2026-02-25 → 2026-03-27 (+30d) |  | 186d → 164d |
| PCO.0820.1180 | NIH Interim Review + Aproval - PCO 0820 (RAD_1_3_5) | 2026-02-26 → 2026-03-30 (+32d) | 2026-03-04 → 2026-04-03 (+30d) |  | 186d → 164d |
| PCO.0820.1190 | ZGF Final Design Development - PCO 0820 (RAD_1_3_5) | 2026-03-05 → 2026-04-06 (+32d) | 2026-03-18 → 2026-04-17 (+30d) |  | 186d → 164d |
| PCO.0820.1200 | Meeting #6 - Concept Design Progress - PCO 0820 (RAD_1_3_5) | 2026-03-19 → 2026-04-20 (+32d) | 2026-03-19 → 2026-04-20 (+32d) |  | 186d → 164d |
| PCO.0820.1210 | NIH Final Review + Comment - PCO 0820 (RAD_1_3_5) | 2026-03-20 → 2026-04-21 (+32d) | 2026-03-26 → 2026-04-27 (+32d) |  | 186d → 164d |
| PCO.0820.1220 | ZGF Final Design Development - PCO 0820 (RAD_1_3_5) | 2026-03-27 → 2026-04-28 (+32d) | 2026-04-16 → 2026-05-18 (+32d) |  | 186d → 164d |
| PCO.0820.1230 | Meeting #7 - Concept Design - PCO 0820 (RAD_1_3_5) | 2026-04-17 → 2026-05-19 (+32d) | 2026-04-23 → 2026-05-26 (+33d) |  | 186d → 164d |
| PCO.0820.1240 | Meeting #8 - NIH Leadership - PCO 0820 (RAD_1_3_5) | 2026-04-24 → 2026-05-27 (+33d) | 2026-04-30 → 2026-06-02 (+33d) |  | 186d → 164d |
| PCO.0820.1250 | Meeting #9 - NIH Leadership - PCO 0820 (RAD_1_3_5) | 2026-05-01 → 2026-06-03 (+33d) | 2026-05-07 → 2026-06-09 (+33d) |  | 186d → 164d |
| PCO.0820.1260 | Meeting #10 - NIH Leadership - PCO 0820 (RAD_1_3_5) | 2026-05-08 → 2026-06-10 (+33d) | 2026-05-14 → 2026-06-16 (+33d) |  | 186d → 164d |
| PCO.0820.1270 | Engineering Coordination - PCO 0820 (RAD_1_3_5) | 2026-05-15 → 2026-06-17 (+33d) | 2026-06-12 → 2026-07-15 (+33d) |  | 186d → 164d |
| PCO.0820.1280 | Internal Review - PCO 0820 (RAD_1_3_5) | 2026-06-15 → 2026-07-16 (+31d) | 2026-07-06 → 2026-08-05 (+30d) |  | 186d → 164d |
| PCO.0820.1290 | Compile Design Submittal - PCO 0820 (RAD_1_3_5) | 2026-07-07 → 2026-08-06 (+30d) | 2026-07-27 → 2026-08-26 (+30d) |  | 186d → 164d |
| PCO.0820.1300 | Submit To NIH - PCO 0820 (RAD_1_3_5) | 2026-07-28 → 2026-08-27 (+30d) | 2026-07-28 → 2026-08-27 (+30d) |  | 186d → 164d |
| 9 | **PCO 0821 - Phase 2 - (RAD_02) Level 01 Central Prep Modifications - RFP 078** |  | 2025-12-08 → 2025-12-12 (+4d) |  |  |
| PCO.0821.1110 | Compile Design Submittal - PCO 0821 (RAD_02) | 2025-12-01 → 2025-12-03 A (+2d) | 2025-12-05 → 2025-12-11 A (+6d) | 0% → 100% | 348d → none |
| PCO.0821.1120 | Submit To NIH - PCO 0821 (RAD_02) | 2025-12-08 → 2025-12-12 A (+4d) | 2025-12-08 → 2025-12-12 A (+4d) | 0% → 100% | 348d → none |
| 5 | **PCO 0823 - Phase 2 - (RAD_06) Flooring in MRI Zone II and Zone III Spaces - RFP 080** |  | 2026-01-14 → 2026-02-13 (+30d) |  |  |
| PCO.823.1100 | BIM Coordination - PC0 0823 (RAD_06) | 2025-12-01 → 2026-01-02 (+32d) | 2025-12-05 → 2026-01-08 (+34d) |  | 199d → 177d |
| PCO.823.1110 | Review Impact to Installed Work - PC0 0823 (RAD_06) | 2025-12-08 → 2026-01-09 (+32d) | 2025-12-12 → 2026-01-15 (+34d) |  | 199d → 177d |
| PCO.823.1120 | Shop Drawing Revision and Submit per BIM Coordination - PC0 0823 (RAD_06) | 2025-12-15 → 2026-01-16 (+32d) | 2025-12-19 → 2026-01-22 (+34d) |  | 199d → 177d |
| PCO.823.1130 | NIH Review and Approve - PC0 0823 (RAD_06) | 2025-12-22 → 2026-01-23 (+32d) | 2026-01-06 → 2026-02-05 (+30d) |  | 199d → 177d |
| PCO.823.1140 | Incorporate Changes in the Field (Demo/Rework) - PC0 0823 (RAD_06) | 2026-01-07 → 2026-02-06 (+30d) | 2026-01-13 → 2026-02-12 (+30d) |  | 199d → 177d |
| PCO.823.1150 | Trades - Construction Starts - PC0 0823 (RAD_06) | 2026-01-14 → 2026-02-13 (+30d) | 2026-01-14 → 2026-02-13 (+30d) |  | 199d → 177d |
| 7 | **PCO 0824 - Phase 2 - (SINKS_01) Clinical Scrub Sink Equipment Modifications - RFP 081** |  | 2026-03-03 → 2026-03-16 (+13d) |  |  |
| PCO.824.1100 | BIM Coordination - PC0 0824 (SINK_01) | 2025-12-01 A | 2025-12-05 A | 0% → 100% | 18d → none |
| PCO.824.1110 | Review Impact to Installed Work - PC0 0824 (SINK_01) | 2025-12-08 A | 2025-12-12 A | 0% → 100% | 18d → none |
| PCO.824.1120 | Shop Drawing Revision and Submit per BIM Coordination - PC0 0824 (SINK_01) | 2025-12-15 A | 2025-12-19 → 2026-01-05 (+17d) | 0% → 60% | 18d → 9d |
| PCO.824.1130 | NIH Review and Approve - PC0 0824 (SINK_01) | 2025-12-22 → 2026-01-06 (+15d) | 2026-01-06 → 2026-01-19 (+13d) |  | 18d → 9d |
| PCO.824.1140 | Incorporate Changes in the Field (Demo/Rework) - PC0 0824 (SINK_01) | 2025-12-22 → 2026-01-06 (+15d) | 2025-12-29 → 2026-01-12 (+14d) |  | 38d → 29d |
| PCO.824.1150 | Long Lead Equip./ Material - Lead/Fab/Deliver - PC0 0824(SINK_01) | 2026-01-07 → 2026-01-20 (+13d) | 2026-03-03 → 2026-03-16 (+13d) |  | 186d → 177d |
| PCO.824.1160 | Spool/Fab/Deliver MEP - PC0 0824 (SINK_01) | 2026-01-07 → 2026-01-20 (+13d) | 2026-01-27 → 2026-02-09 (+13d) |  | 18d → 9d |
| PCO.824.1170 | Trades - Construction Starts - PC0 0824 (SINK_01) | 2026-01-28 → 2026-02-10 (+13d) | 2026-01-28 → 2026-02-10 (+13d) |  | 18d → 9d |
| 17 | **PCO 0830 - Phase 2C - (SINKS_05) Lab Fixtures Modifications - RFP 085** |  | 2026-04-14 → 2026-04-30 (+16d) |  |  |
| PCO.830.1090 | BIM Coordination - PC0 0830 (SINK_05) | 2025-12-01 A | 2025-12-05 A | 0% → 100% | 33d → none |
| PCO.830.1100 | Review Impact to Installed Work - PC0 0830 (SINK_05) | 2025-12-08 A | 2025-12-12 → 2026-01-08 (+27d) |  | 33d → 21d |
| PCO.830.1110 | Shop Drawing Revision and Submit per BIM Coordination - PC0 0830 (SINK_05) | 2025-12-15 A | 2025-12-29 → 2026-01-15 (+17d) | 0% → 50% | 33d → 21d |
| PCO.830.1120 | NIH Review and Approve - PC0 0830 (SINK_05) | 2025-12-30 → 2026-01-16 (+17d) | 2026-01-13 → 2026-01-29 (+16d) |  | 33d → 21d |
| PCO.830.1130 | Incorporate Changes in the Field (Demo/Rework) - PC0 0830 (SINK_05) | 2025-12-30 → 2026-01-16 (+17d) | 2026-01-06 → 2026-01-22 (+16d) |  | 53d → 41d |
| PCO.830.1140 | Long Lead Equip./ Material - Lead/Fab/Deliver - PC0 0830 (SINK_05) | 2026-01-14 → 2026-01-30 (+16d) | 2026-04-14 → 2026-04-30 (+16d) |  | 121d → 109d |
| PCO.830.1150 | Spool/Fab/Deliver MEP - PC0 0830 (SINK_05) | 2026-01-14 → 2026-01-30 (+16d) | 2026-02-03 → 2026-02-19 (+16d) |  | 33d → 21d |
| PCO.830.1160 | Trades - Construction Starts - PC0 0830 (SINK_05) | 2026-02-04 → 2026-02-20 (+16d) | 2026-02-04 → 2026-02-20 (+16d) |  | 33d → 21d |
| 18 | **PCO 0831 - Phase 2C - (NCI_01_02) NCI Lab Modifications - RFP 086** |  | 2026-06-01 → 2026-06-02 (+1d) |  |  |
| PCO.831.1120 | Engineering Coordination - PC0 0831 (NCI_01_02) |  | 2025-12-04 → 2025-11-26 A (-8d) | 20% → 100% | 0d → none |

| ID | Task | Start | Finish | Duration | Complete | Total float |
| --- | --- | --- | --- | --- | --- | --- |
| PCO.831.1130 | Compile Final Bulletin Submission - PC0 0831 (NCI_01_02) | 2025-12-05 → 2025-11-28 A (-7d) | 2025-12-10 → 2025-12-03 A (-7d) |  | 0% → 100% | 0d → none |
| PCO.831.1140 | NIH Review - PC0 0831 (NCI_01_02) | 2025-12-11 → 2025-12-04 A (-7d) | 2025-12-12 → 2025-12-10 A (-2d) |  | 0% → 100% | 0d → none |
| PCO.831.1150 | Finalize Coordination & Print - Bulletin - PC0 0831 (NCI_01_02) | 2025-12-15 → 2025-12-11 A (-4d) | 2025-12-19 → 2025-12-18 A (-1d) |  | 0% → 100% | 0d → none |
| PCO.831.1160 | Issue - Bulletin - PC0 0831 (NCI_01_02) | 2025-12-22 → 2025-12-19 A (-3d) | 2025-12-22 → 2025-12-19 A (-3d) |  | 0% → 100% | 0d → none |
| PCO.831.1170 | BIM Coordination - PC0 0831 (NCI_01_02) | 2025-12-23 → 2025-12-22 A (-1d) | 2026-01-21 → 2026-01-22 (+1d) |  | 0% → 25% | 0d → -1d |
| PCO.831.1180 | Review Impact to Installed Work - PC0 0831 (NCI_01_02) | 2026-01-22 → 2026-01-23 (+1d) | 2026-01-28 → 2026-01-29 (+1d) |  |  | 0d → -1d |
| PCO.831.1190 | Shop Drawing Revision and Submit per BIM Coordination - PC0 0831 (NCI_01_02) | 2026-01-29 → 2026-01-30 (+1d) | 2026-02-11 → 2026-02-12 (+1d) |  |  | 0d → -1d |
| PCO.831.1200 | D-B Review and Approve - PC0 0831 (NCI_01_02) | 2026-02-12 → 2026-02-13 (+1d) | 2026-02-25 → 2026-02-26 (+1d) |  |  | 0d → -1d |
| PCO.831.1210 | Incorporate Changes in the Field (Demo/Rework) - PC0 0831 (NCI_01_02) | 2026-02-12 → 2026-02-13 (+1d) | 2026-02-18 → 2026-02-19 (+1d) |  |  | 22d → 21d |
| PCO.831.1220 | NIH Review and Approve - PC0 0831 (NCI_01_02) | 2026-02-26 → 2026-02-27 (+1d) | 2026-02-27 → 2026-03-02 (+3d) |  |  | 0d → -1d |
| PCO.831.1230 | Long Lead Equip./ Material - Lead/Fab/Deliver - PC0 0831 (NCI_01_02) | 2026-03-02 → 2026-03-03 (+1d) | 2026-06-01 → 2026-06-02 (+1d) |  |  | 148d → 147d |
| PCO.831.1240 | Spool/Fab/Deliver MEP - PC0 0831 (NCI_01_02) | 2026-03-02 → 2026-03-03 (+1d) | 2026-03-20 → 2026-03-23 (+3d) |  |  | 0d → -1d |
| PCO.831.1250 | Trades - Construction Starts - PC0 0831 (NCI_01_02) | 2026-03-23 → 2026-03-24 (+1d) | 2026-03-23 → 2026-03-24 (+1d) |  |  | 0d → -1d |
| 5 | **Construction Phase Summary** |  | 2029-01-25 → 2029-02-13 (+19d) |  |  |  |
| 3 | **Phase 2 Above Grade Structure** |  | 2028-11-03 → 2028-11-22 (+19d) |  |  |  |
| P2SUM.208 | Phase 2- MEP Rough in & Partitions Summary (B3,B2,B1 Levels) |  | 2026-04-21 → 2026-06-05 (+45d) |  | 66% → 62% | 34d → 2d |
| P2SUM.218 | Phase 2- MEP Utility Tunnel Build Out Summary (Below L1) |  | 2026-01-13 → 2026-02-12 (+30d) |  |  | 94d → 72d |
| P2.SUM.195 | Phase 2 - MEP Rough in & Partitions Summary (L1 - Penthouse) |  | 2026-02-13 → 2026-03-17 (+32d) |  |  | 54d → 32d |
| P2.SUM.165 | Phase 2 - Exterior Enclosure & Roofing Summary (L2 - Penthouse) |  | 2026-08-13 → 2026-09-15 (+33d) |  |  | 109d → 87d |
| P2.SUM.255 | Phase 2 - Vertical Transportation Summary |  | 2026-07-13 → 2026-07-15 (+2d) |  |  | 197d → 195d |
| P2.SUM.235 | Phase 2 - Permanent Power Active | 2026-01-30 → 2026-02-26 (+27d) | 2026-01-30 → 2026-02-26 (+27d) |  |  | 311d → 292d |
| P2.SUM.205 | Phase 2 - Interior Finishes-Fit Out Summary (Below L1) | 2026-03-04 → 2026-03-27 (+23d) | 2026-12-02 → 2027-01-05 (+34d) | 191d → 196d |  | 55d → 33d |
| P2.SUM.215 | Phase 2 - Interior Finishes-Fit Out Summary (L1 - Penthouse) | 2026-03-04 → 2026-03-27 (+23d) | 2026-08-18 → 2026-09-18 (+31d) | 118d → 123d |  | 125d → 103d |
| P2.SUM.225 | Phase 2 - Pre-functional & Functional Commissioning Summary | 2026-04-30 → 2026-05-15 (+15d) | 2027-01-07 → 2027-02-01 (+25d) | 174d → 180d |  | 39d → 22d |
| P2.SUM.245 | Phase 2 - Start up HVAC Systems to Support Commissioning | 2026-04-28 → 2026-06-12 (+45d) | 2026-04-28 → 2026-06-12 (+45d) |  |  | 219d → 187d |
| P2.SUM.275 | Phase 2 - Removal & Restoration of Center Drive (Post Phase 2 Completion) | 2026-08-03 → 2026-09-02 (+30d) | 2028-11-03 → 2028-11-22 (+19d) | 575d → 566d |  | 2d → -11d |
| P2.SUM.265 | Phase 2 - Level 5 Commissioning, Life Safety Testing & Acceptance Inspections | 2026-10-14 → 2026-10-28 (+14d) | 2027-04-21 → 2027-05-10 (+19d) | 132d → 135d |  | 0d → -13d |
| 4 | **Phase 5 - CRC F Wing Renovation (Draft)** | 2027-10-19 → 2027-11-08 (+20d) | 2029-01-25 → 2029-02-13 (+19d) |  |  |  |
| P5.SUM.255 | Phase 5 - Mobilization/DcX MEP Systems/Interior Demo Summary | 2027-10-19 → 2027-11-08 (+20d) | 2028-04-12 → 2028-05-01 (+19d) | 123d → 122d |  | 0d → -13d |
| P5.SUM.265 | Phase 5 - MEP Systems Rough in & Interior Fit Out Summary | 2028-02-29 → 2028-03-20 (+20d) | 2028-11-03 → 2028-11-22 (+19d) | 176d → 175d |  | 0d → -13d |
| P5.SUM.275 | Phase 5 - Commissioning/Punchlist/Acceptance Summary | 2028-11-06 → 2028-11-27 (+21d) | 2029-01-25 → 2029-02-13 (+19d) |  |  | 0d → -13d |
| 3 | **PERMITTING** |  | 2027-08-20 → 2027-09-09 (+20d) |  |  |  |
| 7 | **Demolition Permits** |  | 2027-08-20 → 2027-09-09 (+20d) |  |  |  |
| 2 | **Phase 5** | 2027-06-18 → 2027-07-08 (+20d) | 2027-08-20 → 2027-09-09 (+20d) |  |  |  |
| 1 | **Phase 5 - CRC** | 2027-06-18 → 2027-07-08 (+20d) | 2027-08-20 → 2027-09-09 (+20d) |  |  |  |
| P5.DEMO.1.100 | Prepare & Submit Demo Permit - CRC - Phase 5 | 2027-06-18 → 2027-07-08 (+20d) | 2027-07-09 → 2027-07-28 (+19d) |  |  | 40d → 27d |
| P5.DEMO.2.100 | Review & Approve Demo Permit - CRC - Phase 5 | 2027-07-12 → 2027-07-29 (+17d) | 2027-08-20 → 2027-09-09 (+20d) |  |  | 40d → 27d |
| 4 | **NIH/AHJ** |  | 2025-12-01 → 2026-01-02 (+32d) |  |  |  |
| P2C.NIH.110 | SRLM Life Safety AHJ Permit Review (from 100% IFC Phase 2 Design) 2C |  | 2025-12-01 → 2026-01-02 (+32d) |  |  | 98d → 76d |
| 4 | **PRECONSTRUCTION** |  | 2026-09-30 → 2026-10-20 (+20d) |  |  |  |
| 2 | **Phases 0-2 - Buy Out, Submittals, Approval, Fabrication, Mock-ups** |  | 2026-07-22 → 2026-08-20 (+29d) |  |  |  |
| 8 | **Bid Package 1** |  | 2026-05-10 → 2026-06-10 (+31d) |  |  |  |
| 3 | **Modular Ceilings** |  | 2025-12-01 → 2026-01-01 (+31d) |  |  |  |
| BP1.095.3.220 | Lead/Fab/Deliver - Ceiling Level Components |  | 2025-12-01 → 2026-01-01 (+31d) |  |  | 323d → 292d |
| 9 | **Plumbing** |  | 2026-05-10 → 2026-06-10 (+31d) |  |  |  |
| BP1.223.3.100 | Lead/Fab/Deliver - Domestic Water Softeners |  | 2025-12-31 → 2026-01-31 (+31d) |  |  | 236d → 205d |
| BP1.226.2.150 | Lead/Fab/Deliver - High Purity Water Equipment - Lab | 2025-12-01 → 2026-01-01 (+31d) | 2026-05-10 → 2026-06-10 (+31d) |  |  | 115d → 84d |
| 8 | **Electrical** |  | 2025-12-12 → 2026-01-02 (+21d) |  |  |  |
| BP1.265.2.120 | Review/Approve - Lighting - Roadway |  | 2025-12-01 → 2026-01-02 (+32d) |  |  | 316d → 302d |
| BP1.265.3.120 | Lead/Fab/Deliver - Lighting - Roadway |  | 2025-12-12 → 2026-01-02 (+21d) |  | 88% → 100% | 453d → 433d |
| 10 | **Low Voltage** |  | 2025-12-12 → 2026-01-01 (+20d) |  |  |  |
| BP1.274.3.100 | Lead/Fab/Deliver - Audio-Video Systems and Equipment |  | 2025-12-02 → 2026-01-01 (+30d) |  | 98% → 100% | 372d → 343d |
| BP1.275.3.100 | Lead/Fab/Deliver - LV Paging |  | 2025-12-01 → 2026-01-01 (+31d) |  |  | 155d → 124d |
| BP1.271.3.110 | Lead/Fab/Deliver - Intercommunications and Program Systems |  | 2025-12-12 → 2026-01-01 (+20d) |  | 88% → 100% | 362d → 343d |
| 9 | **Bid Package 2** |  | 2026-05-14 → 2026-06-15 (+32d) |  |  |  |
| 16 | **Fa ade Maintenance Equipment** |  | 2026-02-24 → 2026-03-26 (+30d) |  |  |  |
| P2.FAD.FM.250 | Landing Platform Procurement | 2025-12-01 → 2026-01-02 (+32d) | 2026-02-24 → 2026-03-26 (+30d) |  |  | 279d → 257d |
| 18 | **Exterior Glazing** |  | 2026-05-14 → 2026-06-15 (+32d) |  |  |  |
| Glass & Glazing | **Glass & Glazing Preconstruction & Procurement** |  | 2026-05-14 → 2026-06-15 (+32d) |  |  |  |
| P2.FAD.GG.215 | Lead/Fab/Deliver - Doors/Frames - Aluminum Storefront (Doors Only - Framing with Curtain Wall) |  | 2025-12-28 → 2026-01-28 (+31d) |  |  | 326d → 295d |
| P2.FAD.GG.310 | Deliver Storefront Doors | 2026-05-08 → 2026-06-09 (+32d) | 2026-05-14 → 2026-06-15 (+32d) |  |  | 137d → 116d |
| 21 | **Exterior Expansion Joints** |  | 2025-12-28 → 2026-01-28 (+31d) |  |  |  |
| BP2.079.3.200 | Lead/Fab/Deliver - Stainless Steel Covers |  | 2025-12-28 → 2026-01-28 (+31d) |  |  | 43d → 19d |
| BP2.079.3.230 | Lead/Fab/Deliver - Joint Slide Seismic Covers |  | 2025-12-28 → 2026-01-28 (+31d) |  |  | 43d → 19d |
| 23 | **Roofing** |  | 2026-04-03 → 2026-05-06 (+33d) |  |  |  |
| BP2.070.3.100 | Lead/Fab/Deliver - Roofing - Sheet Metal |  | 2025-12-15 → 2026-01-15 (+31d) |  |  | 371.01d → 348.01d |
| BP2.070.3.110 | Lead/Fab/Deliver - Roofing - Vegetated | 2026-03-05 → 2026-04-07 (+33d) | 2026-04-03 → 2026-05-06 (+33d) |  |  | 192d → 159d |
| 12 | **Bid Package 5** |  | 2026-05-17 → 2026-06-17 (+31d) |  |  |  |
| 3 | **Drywall & Related** |  | 2025-12-21 → 2025-11-22 (-29d) |  |  |  |
| BP4.134.3.130 | Lead/Fab/Deliver - Radiation Protection Lead Gypsum Board | 2025-12-01 → 2025-11-10 A (-21d) | 2025-12-21 → 2025-11-22 A (-29d) |  | 0% → 100% | 85d → none |

| ID | Task | Start | Finish | Complete | Total float |
| --- | --- | --- | --- | --- | --- |
| 4 | **Doors Frames & Hardware** |  | 2026-05-17 → 2026-06-17 (+31d) |  |  |
| BP5.081.2.410 | Review/Approve - Doors/Frame - GFRP (LSP) |  | 2025-12-19 → 2026-02-12 (+55d) | 57% → 14% | 150d → 113d |
| BP5.081.3.410 | Lead/Fab/Deliver - Doors/Frames - HM/Hardware | 2025-12-01 → 2025-04-11 A (-234d) | 2026-05-17 → 2025-12-24 A (-144d) | 0% → 100% | 137d → none |
| BP5.081.3.300 | Lead/Fab/Deliver - Doors & Hardware | 2025-12-01 → 2025-12-18 A (+17d) | 2026-03-30 → 2026-04-30 (+31d) |  | 304d → 273d |
| BP4.134.3.100 | Lead/Fab/Deliver - RF Frames/ Doors (Shielded) | 2025-12-02 → 2026-01-01 (+30d) | 2026-03-10 → 2026-04-09 (+30d) |  | 205d → 175d |
| BP5.083.3.120 | Lead/Fab/Deliver - Doors - Lead Lined | 2025-12-01 → 2026-01-01 (+31d) | 2026-05-17 → 2026-06-17 (+31d) |  | 137d → 106d |
| BP5.081.3.420 | Lead/Fab/Deliver - Doors/Frame/HDW - GFRP (LSP) | 2025-12-20 → 2026-02-13 (+55d) | 2026-02-27 → 2026-04-23 (+55d) |  | 216d → 161d |
| 13 | **Bid Package 6** |  | 2026-07-22 → 2026-07-17 (-5d) |  |  |
| 1 | **Headwalls** |  | 2026-05-08 → 2026-06-11 (+34d) |  |  |
| BP6.102.2.100 | Review/Approve - Headwalls |  | 2025-12-19 → 2026-01-22 (+34d) |  | 156d → 134d |
| BP6.102.3.100 | Lead/Fab/Deliver - Headwalls | 2025-12-20 → 2026-01-23 (+34d) | 2026-05-08 → 2026-06-11 (+34d) |  | 226d → 192d |
| 2 | **Lab Casework** |  | 2026-03-10 → 2026-04-10 (+31d) |  |  |
| BP6.123.3.100 | Lead/Fab/Deliver - Lab Casework | 2025-12-01 → 2026-01-01 (+31d) | 2026-03-10 → 2026-04-10 (+31d) |  | 203d → 172d |
| 3 | **Laboratory/Med Equipment** |  | 2026-07-22 → 2026-07-17 (-5d) |  |  |
| BP6.117.1.100 | Prep/Submit - Equipment - Patient Care | 2025-12-01 A | 2025-12-29 → 2025-12-01 A (-28d) | 0% → 100% | 115d → none |
| BP6.117.1.110 | Prep/Submit - Equipment - Operating Room | 2025-12-30 → 2025-12-01 A (-29d) | 2026-01-27 → 2025-12-01 A (-57d) | 0% → 100% | 115d → none |
| BP6.117.1.120 | Prep/Submit - Equipment - Radiology | 2026-01-28 → 2025-12-01 A (-58d) | 2026-02-24 → 2026-01-29 (-26d) |  | 115d → 133d |
| BP6.117.2.100 | Review/Approve - Equipment - Patient Care | 2025-12-30 → 2025-12-01 A (-29d) | 2026-02-17 → 2026-02-19 (+2d) |  | 120d → 118d |
| BP6.117.2.120 | Review/Approve - Equipment - Radiology | 2026-02-25 → 2025-12-01 A (-86d) | 2026-04-14 → 2026-03-19 (-26d) |  | 115d → 133d |
| BP6.115.3.140 | Lead/Fab/Deliver - Biological Safety Cabinets | 2025-12-01 → 2026-01-01 (+31d) | 2026-03-09 → 2026-04-09 (+31d) |  | 296d → 265d |
| BP6.117.2.110 | Review/Approve - Equipment - Operating Room | 2026-02-18 → 2026-02-20 (+2d) | 2026-04-07 → 2026-04-09 (+2d) |  | 120d → 118d |
| BP6.117.3.100 | Lead/Fab/Deliver - Equipment - Patient Care | 2026-02-18 → 2026-02-20 (+2d) | 2026-05-27 → 2026-05-29 (+2d) |  | 221d → 219d |
| BP6.117.3.120 | Lead/Fab/Deliver - Equipment - Radiology | 2026-04-15 → 2026-03-20 (-26d) | 2026-07-22 → 2026-06-26 (-26d) |  | 165d → 191d |
| BP6.117.3.110 | Lead/Fab/Deliver - Equipment - Operating Room | 2026-04-08 → 2026-04-10 (+2d) | 2026-07-15 → 2026-07-17 (+2d) |  | 172d → 170d |
| 4 | **Cold Rooms** |  | 2026-02-18 → 2026-02-09 (-9d) |  |  |
| BP6.132.3.100 | Lead/Fab/Deliver - Cold Rooms | 2025-12-01 → 2025-12-31 A (+30d) | 2026-02-18 → 2026-02-09 (-9d) | 0% → 50% | 19d → 28d |
| 5 | **Cleanroom GFRP** |  | 2026-03-10 → 2026-04-10 (+31d) |  |  |
| BP6.092.3.100 | Lead/Fab/Deliver - Cleanroom GFRP | 2025-12-01 → 2026-01-01 (+31d) | 2026-03-10 → 2026-04-10 (+31d) |  | 162d → 131d |
| 14 | **Bid Package 7** |  | 2026-07-21 → 2026-08-20 (+30d) |  |  |
| 1 | **Paint & Wall Covering** |  | 2026-02-18 → 2026-03-21 (+31d) |  |  |
| BP7.097.3.100 | Lead/Fab/Deliver - Wall Covering | 2025-12-01 → 2026-01-01 (+31d) | 2026-02-18 → 2026-03-21 (+31d) |  | 295d → 264d |
| 2 | **Building Specialties** |  | 2026-04-26 → 2026-05-27 (+31d) |  |  |
| BP7.102.2.110 | Review/Approve - Cubicle Curtains and Track |  | 2025-12-12 → 2025-12-19 A (+7d) | 71% → 100% | 205d → none |
| BP7.100.3.100 | Lead/Fab/Deliver - Building Specialties | 2025-12-01 → 2026-01-01 (+31d) | 2026-01-19 → 2026-02-19 (+31d) |  | 317d → 286d |
| BP7.102.3.110 | Lead/Fab/Deliver - Cubicle Curtains and Track | 2025-12-13 → 2026-01-01 (+19d) | 2026-01-23 → 2026-02-11 (+19d) |  | 296d → 277d |
| BP7.102.3.120 | Lead/Fab/Deliver - Toilet Compartment | 2025-12-01 → 2026-01-01 (+31d) | 2026-01-11 → 2026-02-11 (+31d) |  | 256d → 225d |
| BP7.102.3.130 | Lead/Fab/Deliver - Partitions - Demountable | 2025-12-01 → 2026-01-01 (+31d) | 2026-04-26 → 2026-05-27 (+31d) |  | 204d → 173d |
| BP7.102.3.140 | Lead/Fab/Deliver - Partitions - Folding Panel | 2025-12-01 → 2026-01-01 (+31d) | 2026-04-26 → 2026-05-27 (+31d) |  | 203d → 172d |
| BP7.102.3.200 | Lead/Fab/Deliver - Toilet Partitions | 2025-12-01 → 2026-01-01 (+31d) | 2026-01-19 → 2026-02-19 (+31d) |  | 387d → 356d |
| BP7.102.3.300 | Lead/Fab/Deliver - Wall Protection / Crash Guards | 2025-12-01 → 2026-01-01 (+31d) | 2026-02-18 → 2026-03-21 (+31d) |  | 47d → 16d |
| BP7.105.3.100 | Lead/Fab/Deliver - Metal Lockers | 2025-12-01 → 2026-01-01 (+31d) | 2026-03-09 → 2026-04-09 (+31d) |  | 192d → 161d |
| 4 | **Carpet & Resilient** |  | 2026-01-29 → 2026-03-01 (+31d) |  |  |
| BP7.096.3.100 | Lead/Fab/Deliver - Carpet | 2025-12-01 → 2026-01-01 (+31d) | 2026-01-29 → 2026-03-01 (+31d) |  | 277d → 246d |
| 5 | **Tile** |  | 2026-01-29 → 2026-03-01 (+31d) |  |  |
| BP7.093.3.100 | Lead/Fab/Deliver - Tile | 2025-12-01 → 2026-01-01 (+31d) | 2026-01-29 → 2026-03-01 (+31d) |  | 262d → 231d |
| 6 | **Ornamental Metals** |  | 2026-03-21 → 2026-04-24 (+34d) |  |  |
| BP4.055.2.310 | Review/Approve - Formed Metal Panels |  | 2025-12-12 → 2026-01-15 (+34d) |  | 171d → 149d |
| BP7.057.3.100 | Lead/Fab/Deliver - Ornamental Metals | 2025-12-01 → 2026-01-01 (+31d) | 2026-02-18 → 2026-03-21 (+31d) |  | 278d → 247d |
| BP4.055.3.520 | Lead/Fab/Deliver - Formed Metal Panels | 2025-12-13 → 2026-01-16 (+34d) | 2026-03-21 → 2026-04-24 (+34d) |  | 247d → 213d |
| 7 | **Interior Glass** |  | 2026-02-18 → 2026-03-21 (+31d) |  |  |
| BP2.088.3.100 | Lead/Fab/Deliver - Glazing - Decorative |  | 2025-12-28 → 2026-01-28 (+31d) |  | 351d → 320d |
| BP2.134.3.140 | Lead/Fab/Deliver - Radiation Protection Lead Glass |  | 2025-12-28 → 2026-01-28 (+31d) |  | 274d → 243d |
| BP7.088.3.100 | Lead/Fab/Deliver - Interior Glass |  | 2026-02-18 → 2026-03-21 (+31d) |  | 250d → 219d |
| 8 | **Millwork** |  | 2026-02-03 → 2026-03-06 (+31d) |  |  |
| BP7.062.3.100 | Lead/Fab/Deliver - Millwork |  | 2026-02-02 → 2026-03-05 (+31d) |  | 237d → 206d |
| BP7.064.3.100 | Lead/Fab/Deliver - Cabinets |  | 2026-02-02 → 2026-03-05 (+31d) |  | 239d → 208d |
| BP7.123.3.100 | Lead/Fab/Deliver - Solid Surfacing Countertops |  | 2026-02-03 → 2026-03-06 (+31d) |  | 220d → 189d |
| 9 | **Signage** |  | 2026-01-19 → 2026-02-19 (+31d) |  |  |
| BP7.101.3.100 | Lead/Fab/Deliver - Signage | 2025-12-01 → 2026-01-01 (+31d) | 2026-01-19 → 2026-02-19 (+31d) |  | 338d → 307d |
| 10 | **Stretched Fabric Wall System** |  | 2025-12-10 → 2026-01-10 (+31d) |  |  |
| BP7.097.3.110 | Lead/Fab/Deliver - Stretched-Fabric Wall Systems |  | 2025-12-10 → 2026-01-10 (+31d) |  | 327d → 296d |
| 11 | **Appliances** | 2025-12-01 → 2026-01-02 (+32d) | 2026-07-21 → 2026-08-20 (+30d) |  |  |
| BP7.113.0.100 | Buyout - Appliances | 2025-12-01 → 2026-01-02 (+32d) | 2026-01-13 → 2026-02-12 (+30d) |  | 48d → 26d |
| BP7.113.1.100 | Prep/Submit - Appliances | 2026-01-14 → 2026-02-13 (+30d) | 2026-02-10 → 2026-03-12 (+30d) |  | 48d → 26d |
| BP7.113.2.100 | Review/Approve - Appliances | 2026-02-11 → 2026-03-13 (+30d) | 2026-03-31 → 2026-04-30 (+30d) |  | 48d → 26d |
| BP7.113.3.100 | Lead/Fab/Deliver - Appliances | 2026-04-01 → 2026-05-01 (+30d) | 2026-07-21 → 2026-08-20 (+30d) |  | 69d → 39d |
| 15 | **Bid Package 8** |  | 2026-03-05 → 2026-04-05 (+31d) |  |  |
| 6 | **OH Coiling Doors** |  | 2026-03-05 → 2026-04-05 (+31d) |  |  |
| BP8.083.3.100 | Lead/Fab/Deliver - Doors - Overhead Coiling |  | 2026-03-05 → 2026-04-05 (+31d) |  | 39d → 308d |
| 1 | **Playfield & Equipment** |  | 2026-02-18 → 2026-03-21 (+31d) |  |  |

| ID | Task | Start | Finish | Complete | Total float |
| --- | --- | --- | --- | --- | --- |
| BP8.116.3.100 | Lead/Fab/Deliver - Playfield & Equipment | 2025-12-01 → 2026-01-01 (+31d) | 2026-02-18 → 2026-03-21 (+31d) |  | 378d → 347d |
| 2 | **Decorative Fence and Gates** |  | 2026-01-19 → 2026-02-19 (+31d) |  |  |
| BP8.323.3.200 | Lead/Fab/Deliver - Decorative Fence and Gates | 2025-12-01 → 2026-01-01 (+31d) | 2026-01-19 → 2026-02-19 (+31d) |  | 422d → 391d |
| 3 | **Anti-Ram Bollards** |  | 2026-01-19 → 2026-02-19 (+31d) |  |  |
| BP8.323.3.100 | Lead/Fab/Deliver - Anti-Ram Bollards | 2025-12-01 → 2026-01-01 (+31d) | 2026-01-19 → 2026-02-19 (+31d) |  | 190d → 159d |
| 4 | **Site Furnishings** |  | 2026-01-19 → 2026-02-19 (+31d) |  |  |
| BP8.129.3.100 | Lead/Fab/Deliver - Site Furnishings | 2025-12-01 → 2026-01-01 (+31d) | 2026-01-19 → 2026-02-19 (+31d) |  | 408d → 377d |
| 1 | **Bid Package 9** |  | 2026-03-05 → 2026-04-05 (+31d) |  |  |
| 7 | **Hydraulic Lift** |  | 2026-03-05 → 2026-04-05 (+31d) |  |  |
| BP9.111.3.110 | Lead/Fab/Deliver - Hydraulic Lift |  | 2026-03-05 → 2026-04-05 (+31d) |  | 25d → 294d |
| 1 | **Mock Ups** |  | 2026-09-18 → 2026-10-20 (+32d) |  |  |
| 1 | **Exterior Mock-ups** |  | 2026-09-18 → 2026-10-20 (+32d) |  |  |
| 2 | **Visual Mock-up** |  | 2026-09-18 → 2026-10-20 (+32d) |  |  |
| P2.DES.VMU.670 | Visual Mock Up Onsite |  | 2026-08-20 → 2026-09-22 (+33d) |  | 109d → 87d |
| P2.DES.VMU.680 | Remove Visual Mockup | 2026-08-21 → 2026-09-23 (+33d) | 2026-09-18 → 2026-10-20 (+32d) |  | 109d → 87d |
| 4 | **OFOI Equipment** |  | 2026-09-30 → 2026-09-10 (-20d) |  |  |
| 3 | **PCO 708 - Medical Equipment Procurement** |  | 2026-01-15 → 2026-01-30 (+15d) |  |  |
| OFOI.PWS.1280 | Internal (DOR Review) - Shop Drawings - Major Medical Equipment - B2 |  | 2025-12-01 → 2025-12-23 A (+22d) |  | 83d → none |
| OFOI.PWS.1300 | Internal (DOR Review) - Shop Drawings - Major Medical Equipment - L3 |  | 2026-01-14 → 2026-01-29 (+15d) |  | 28d → 27d |
| OFOI.PWS.1290 | Internal (DOR Review) - Shop Drawings - Major Medical Equipment - L1 |  | 2025-12-26 → 2026-01-05 (+10d) | 0% → 80% | 35d → 30d |
| OFOI.PWS.1220 | Ready to start Construction Activities - Major Medical Equipment - B2 | 2025-12-01 → 2025-11-03 A (-28d) | 2025-12-01 → 2025-11-03 A (-28d) | 0% → 100% | 83d → none |
| OFOI.PWS.1170 | D-B Team - BIM Shop Drawings - Major Medical Equipment - L1 | 2025-12-01 A | 2025-12-08 A | 0% → 100% | 35d → none |
| OFOI.PWS.1200 | D-B Team - BIM Shop Drawings - Major Medical Equipment - L3 | 2025-12-01 A | 2025-12-12 → 2026-01-15 (+34d) |  | 28d → 27d |
| OFOI.PWS.1130 | External (NIH Review) - Shop Drawings - Major Medical Equipment - B2 | 2025-12-01 → 2026-01-02 (+32d) | 2025-12-01 → 2026-01-02 (+32d) |  | 83d → 62d |
| OFOI.PWS.1230 | Ready to start Construction Activities - Major Medical Equipment - L1 | 2025-12-26 → 2026-01-05 (+10d) | 2025-12-29 → 2026-01-06 (+8d) |  | 35d → 30d |
| OFOI.PWS.1180 | External (NIH Review) - Shop Drawings - Major Medical Equipment - L1 | 2025-12-29 → 2026-01-06 (+8d) | 2025-12-29 → 2026-01-06 (+8d) |  | 35d → 30d |
| OFOI.PWS.1240 | Ready to start Construction Activities - Major Medical Equipment - L3 | 2026-01-14 → 2026-01-29 (+15d) | 2026-01-15 → 2026-01-30 (+15d) |  | 28d → 27d |
| OFOI.PWS.1210 | External (NIH Review) - Shop Drawings - Major Medical Equipment - L3 | 2026-01-15 → 2026-01-30 (+15d) | 2026-01-15 → 2026-01-30 (+15d) |  | 28d → 27d |
| 2 | **OFOI Equipment Deliveries** | 2026-03-20 → 2026-03-16 (-4d) | 2026-09-30 → 2026-09-10 (-20d) |  |  |
| 1 | **B2 - OFOI Equipment Deliveries** | 2026-05-15 → 2026-06-17 (+33d) | 2026-08-05 → 2026-09-04 (+30d) |  |  |
| OFOI.EQUIP.B2.1020 | MRI (IV) - Equipment / MRI Room B2-2820 & MRI EQ Room B202820A | 2026-05-15 → 2026-06-17 (+33d) | 2026-05-21 → 2026-06-23 (+33d) |  | 167d → 145d |
| OFOI.EQUIP.B2.1030 | MRI/CT - Equipment / MRI/CT Room B2-2840 & MRI EQ Room B202840A | 2026-05-15 → 2026-06-17 (+33d) | 2026-05-21 → 2026-06-23 (+33d) |  | 167d → 145d |
| OFOI.EQUIP.B2.1000 | Cath Lab 1 (III) - Equipment / B2-2822 | 2026-07-30 → 2026-08-31 (+32d) | 2026-08-05 → 2026-09-04 (+30d) |  | 117d → 95d |
| OFOI.EQUIP.B2.1010 | Cath Lab 2 (III) - Equipment / B2-2842 | 2026-07-30 → 2026-08-31 (+32d) | 2026-08-05 → 2026-09-04 (+30d) |  | 117d → 95d |
| OFOI.EQUIP.B2.1040 | XR EQ - Equipment / B2-2826 | 2026-07-30 → 2026-08-31 (+32d) | 2026-08-05 → 2026-09-04 (+30d) |  | 117d → 95d |
| OFOI.EQUIP.B2.1050 | XR EQ - Equipment / B2-2846 | 2026-07-30 → 2026-08-31 (+32d) | 2026-08-05 → 2026-09-04 (+30d) |  | 117d → 95d |
| 2 | **L1 - OFOI Equipment Deliveries** | 2026-03-20 → 2026-04-20 (+31d) | 2026-03-26 → 2026-04-24 (+29d) |  |  |
| OFOI.EQUIP.L1.1000 | MRI 3T (1) - Equipment / MRI Room 1-2855 & MRI EQ (III) Room 1-2839 | 2026-03-20 → 2026-04-20 (+31d) | 2026-03-26 → 2026-04-24 (+29d) |  | 177d → 156d |
| OFOI.EQUIP.L1.1010 | MRI 3T (2) - Equipment / MRI Room 1-2835 & MRI EQ (III) Room 1-2839 | 2026-03-20 → 2026-04-20 (+31d) | 2026-03-26 → 2026-04-24 (+29d) |  | 177d → 156d |
| OFOI.EQUIP.L1.1020 | MRI 3T (3) - Equipment / MRI Room 1-2815 & MRI EQ (III) Room 1-2819 | 2026-03-20 → 2026-04-20 (+31d) | 2026-03-26 → 2026-04-24 (+29d) |  | 177d → 156d |
| OFOI.EQUIP.L1.1030 | MRI 1.5T (4) - Equipment / MRI Room 1-2805 & MRI EQ (III) Room 1-2809 | 2026-03-20 → 2026-04-20 (+31d) | 2026-03-26 → 2026-04-24 (+29d) |  | 177d → 156d |
| OFOI.EQUIP.L1.1040 | MRI 1.5T (5) - Equipment / MRI Room 1-2825 & MRI EQ (III) Room 1-2829 | 2026-03-20 → 2026-04-20 (+31d) | 2026-03-26 → 2026-04-24 (+29d) |  | 177d → 156d |
| OFOI.EQUIP.L1.1050 | MRI 1.5T (6) - Equipment / MRI Room 1-2845 & MRI EQ (III) Room 1-2829 | 2026-03-20 → 2026-04-20 (+31d) | 2026-03-26 → 2026-04-24 (+29d) |  | 177d → 156d |
| OFOI.EQUIP.L1.1060 | MRI 1.5T (FUTURE) (7) - Equipment / MRI Room 1-2865 & MRI EQ (III) Room 1-2849 | 2026-03-20 → 2026-04-20 (+31d) | 2026-03-26 → 2026-04-24 (+29d) |  | 177d → 156d |
| OFOI.EQUIP.L1.1070 | CT (1) - Equipment / CT Room 1-3912 | 2026-03-20 → 2026-04-20 (+31d) | 2026-03-26 → 2026-04-24 (+29d) |  | 172d → 151d |
| OFOI.EQUIP.L1.1080 | CT (2) - Equipment / CT Room 1-3910 | 2026-03-20 → 2026-04-20 (+31d) | 2026-03-26 → 2026-04-24 (+29d) |  | 172d → 151d |
| OFOI.EQUIP.L1.1090 | CT (3) - Equipment / CT Room 1-3916 | 2026-03-20 → 2026-04-20 (+31d) | 2026-03-26 → 2026-04-24 (+29d) |  | 172d → 151d |
| OFOI.EQUIP.L1.1100 | CT (4) - Equipment / CT Room 1-3918 | 2026-03-20 → 2026-04-20 (+31d) | 2026-03-26 → 2026-04-24 (+29d) |  | 172d → 151d |
| 3 | **L3 - OFOI Equipment Deliveries** | 2026-03-26 → 2026-03-16 (-10d) | 2026-09-30 → 2026-09-10 (-20d) |  |  |
| OFOI.EQUIP.L3.1000 | MRI (1) - Equipment / MRI Room 3-2825 & MRI EQ Room 3-2825B | 2026-03-26 → 2026-03-16 (-10d) | 2026-04-01 → 2026-03-20 (-12d) |  | 205d → 213d |
| OFOI.EQUIP.L3.1010 | MRI (2) - Equipment / MRI Room 3-2815 & MRI EQ Room 3-2815A | 2026-03-26 → 2026-03-16 (-10d) | 2026-04-01 → 2026-03-20 (-12d) |  | 205d → 213d |
| OFOI.EQUIP.L3.1020 | Hybrid OR (1) - Equipment / Hybrid OR Room 3-2805 | 2026-09-11 → 2026-08-21 (-21d) | 2026-09-17 → 2026-08-27 (-21d) |  | 87d → 101d |
| OFOI.EQUIP.L3.1030 | Hybrid OR (2) - Equipment / Hybrid OR Room 3-2845 | 2026-09-11 → 2026-08-21 (-21d) | 2026-09-17 → 2026-08-27 (-21d) |  | 87d → 101d |
| OFOI.EQUIP.L3.1040 | Hybrid OR (3) - Equipment / Hybrid OR Room 3-2855 | 2026-09-11 → 2026-08-21 (-21d) | 2026-09-17 → 2026-08-27 (-21d) |  | 87d → 101d |
| OFOI.EQUIP.L3.1050 | Hybrid OR (4) - Equipment / Hybrid OR Room 3-2835 | 2026-09-11 → 2026-08-21 (-21d) | 2026-09-17 → 2026-08-27 (-21d) |  | 87d → 101d |
| OFOI.EQUIP.L3.1120 | IR Procedure (1) - Equipment / IR Procedure Room 3-2905 | 2026-09-18 → 2026-08-28 (-21d) | 2026-09-24 → 2026-09-03 (-21d) |  | 82d → 96d |
| OFOI.EQUIP.L3.1130 | IR Procedure (2) - Equipment / IR Procedure Room 3-2915 | 2026-09-18 → 2026-08-28 (-21d) | 2026-09-24 → 2026-09-03 (-21d) |  | 82d → 96d |
| OFOI.EQUIP.L3.1140 | IR Procedure (3) - Equipment / IR Procedure Room 3-2925 | 2026-09-18 → 2026-08-28 (-21d) | 2026-09-24 → 2026-09-03 (-21d) |  | 82d → 96d |
| OFOI.EQUIP.L3.1060 | OR (1) - Equipment / OR Room 3-2865 | 2026-09-24 → 2026-09-03 (-21d) | 2026-09-30 → 2026-09-10 (-20d) |  | 78d → 92d |
| OFOI.EQUIP.L3.1070 | OR (2) - Equipment / OR Room 3-2940 | 2026-09-24 → 2026-09-03 (-21d) | 2026-09-30 → 2026-09-10 (-20d) |  | 78d → 92d |
| OFOI.EQUIP.L3.1080 | OR (3) - Equipment / OR Room 3-2950 | 2026-09-24 → 2026-09-03 (-21d) | 2026-09-30 → 2026-09-10 (-20d) |  | 78d → 92d |
| OFOI.EQUIP.L3.1090 | OR (4) - Equipment / OR Room 3-3911 | 2026-09-24 → 2026-09-03 (-21d) | 2026-09-30 → 2026-09-10 (-20d) |  | 78d → 92d |
| OFOI.EQUIP.L3.1100 | OR (5) - Equipment / OR Room 3-3915 | 2026-09-24 → 2026-09-03 (-21d) | 2026-09-30 → 2026-09-10 (-20d) |  | 78d → 92d |
| OFOI.EQUIP.L3.1110 | OR (6) - Equipment / OR Room 3-3925 | 2026-09-24 → 2026-09-03 (-21d) | 2026-09-30 → 2026-09-10 (-20d) |  | 78d → 92d |
| OFOI.EQUIP.L3.1150 | GI Minor Procedure (1) - Equipment / GR Minor Procedure Room 3-3920 | 2026-09-24 → 2026-09-03 (-21d) | 2026-09-30 → 2026-09-10 (-20d) |  | 78d → 92d |
| OFOI.EQUIP.L3.1160 | GI Minor Procedure (2) - Equipment / GR Minor Procedure Room 3-3930 | 2026-09-24 → 2026-09-03 (-21d) | 2026-09-30 → 2026-09-10 (-20d) |  | 78d → 92d |
| OFOI.EQUIP.L3.1170 | Minor Procedure (2) - Equipment / Minor Procedure Room 3-3910 | 2026-09-24 → 2026-09-03 (-21d) | 2026-09-30 → 2026-09-10 (-20d) |  | 78d → 92d |
| OFOI.EQUIP.L3.1180 | Minor Procedure (3) - Equipment / Minor Procedure Room 3-3916 | 2026-09-24 → 2026-09-03 (-21d) | 2026-09-30 → 2026-09-10 (-20d) |  | 78d → 92d |
| 13 | **PHASES 0, 1, 2 - CONSTRUCTION** |  | 2028-09-05 → 2028-09-25 (+20d) |  |  |
| 10 | **Phase 1 - Construction** |  | 2026-06-24 → 2026-07-27 (+33d) |  |  |

| ID | Task | Start | Finish | Complete | Total float |
| --- | --- | --- | --- | --- | --- |
| 6 | **SIte Utilities** |  | 2026-06-24 → 2026-07-27 (+33d) |  |  |
| 2 | **Water Line** |  | 2026-06-24 → 2026-07-27 (+33d) |  |  |
| P1.UTL.250 | Water - SRLM Hydrant - South (02/C-U301-PH1) | 2026-06-11 → 2026-07-14 (+33d) | 2026-06-17 → 2026-07-20 (+33d) |  | 144d → 122d |
| P1.UTL.230 | Water - SRLM Hydrant - North (07/C-U301-PH1) | 2026-06-18 → 2026-07-21 (+33d) | 2026-06-24 → 2026-07-27 (+33d) |  | 144d → 122d |
| 3 | **Storm** |  | 2026-06-10 → 2026-07-13 (+33d) |  |  |
| 4 | **Storm - Catch Basin CB20-24 to MB-1 Outfall** | 2025-12-12 → 2026-01-13 (+32d) | 2026-01-05 → 2026-02-02 (+28d) |  |  |
| P1.UTL.300 | Storm - CB20-24 - CB20-23 - CB20-22 - CB20-21 | 2025-12-12 → 2026-01-13 (+32d) | 2025-12-18 → 2026-01-19 (+32d) |  | 144d → 124d |
| P1.UTL.360 | Storm - CB20-21 - CB20-20 - MB1 Outfall | 2025-12-19 → 2026-01-20 (+32d) | 2025-12-26 → 2026-01-26 (+31d) |  | 144d → 124d |
| P1.UTL.290 | Storm - Trench Drain TD20-20 | 2025-12-29 → 2026-01-27 (+29d) | 2026-01-05 → 2026-02-02 (+28d) |  | 144d → 124d |
| 5 | **Storm - Micro-Basin Drains** | 2026-02-03 → 2026-03-06 (+31d) | 2026-06-10 → 2026-07-13 (+33d) |  |  |
| P1.UTL.310 | Storm - MB20-22A - MB20-22 - MH20-22 | 2026-02-03 → 2026-03-06 (+31d) | 2026-02-09 → 2026-03-12 (+31d) |  | 170d → 147d |
| P1.UTL.320 | Storm - MB20-24 - MH20-24 | 2026-02-10 → 2026-03-13 (+31d) | 2026-02-16 → 2026-03-19 (+31d) |  | 250d → 227d |
| P1.UTL.330 | Storm - MB20-25 - MH20-25 | 2026-02-17 → 2026-03-20 (+31d) | 2026-02-23 → 2026-03-26 (+31d) |  | 250d → 227d |
| P1.UTL.340 | Storm - MB20-26 - MH20-26 | 2026-05-20 → 2026-06-22 (+33d) | 2026-05-27 → 2026-06-26 (+30d) |  | 189d → 167d |
| P1.UTL.350 | Storm - TD20-27 - MH20-27A | 2026-05-28 → 2026-06-29 (+32d) | 2026-06-03 → 2026-07-06 (+33d) |  | 189d → 167d |
| P1.UTL.370 | Storm - CB10-11 - CB10-12 | 2026-06-04 → 2026-07-07 (+33d) | 2026-06-10 → 2026-07-13 (+33d) |  | 189d → 167d |
| 8 | **Structure** |  | 2026-05-05 → 2026-06-05 (+31d) |  |  |
| 10 | **Deep Foundations, Below Grade Structure & U/G Utilities** |  | 2025-12-26 → 2026-01-26 (+31d) |  |  |
| 5 | **West Tower Crane** |  | 2025-12-26 → 2026-01-26 (+31d) |  |  |
| P1.BGS.320 | Waterproof - Hatch - West Tower Crane | 2025-12-12 → 2026-01-13 (+32d) | 2025-12-18 → 2026-01-19 (+32d) |  | 211d → 191d |
| P1.BGS.330 | Backfill - West Tower Crane | 2025-12-19 → 2026-01-20 (+32d) | 2025-12-26 → 2026-01-26 (+31d) |  | 211d → 191d |
| 4 | **Tunnels** |  | 2026-05-05 → 2026-06-05 (+31d) |  |  |
| 2 | **Utility** |  | 2026-04-07 → 2026-05-07 (+30d) |  |  |
| 6 | **Mechanical Fit Out & Finishes** |  | 2026-04-07 → 2026-05-07 (+30d) |  |  |
| P2.UTT.380 | Testing and Insualtion of Balance Piping - Utility Tunnel |  | 2025-12-05 → 2026-01-08 (+34d) |  | 94d → 72d |
| P2.UTT.430 | Lighting, Power, Comm, Fire Alarm - Utility Tunnel | 2025-12-08 → 2026-01-09 (+32d) | 2025-12-29 → 2026-01-29 (+31d) |  | 94d → 72d |
| P2.UTT.140 | Test/Outages/Restore Services - Utility Tunnel | 2025-12-30 → 2026-01-30 (+31d) | 2026-01-13 → 2026-02-12 (+30d) |  | 94d → 72d |
| P2.UTT.300 | Interior Finishes - Pipe ID - Utility Tunnel | 2026-01-14 → 2026-02-13 (+30d) | 2026-01-27 → 2026-02-26 (+30d) |  | 94d → 72d |
| P2.UTT.340 | Interior Finishes, Ceiling & Walls - Utility Tunnel | 2026-01-28 → 2026-02-27 (+30d) | 2026-02-24 → 2026-03-26 (+30d) |  | 94d → 72d |
| P2.UTT.350 | Interior Finishes - Paint - Utility Tunnel | 2026-02-25 → 2026-03-27 (+30d) | 2026-03-10 → 2026-04-09 (+30d) |  | 94d → 72d |
| P2.UTT.360 | Interior Finishes - Flooring - Utility Tunnel | 2026-03-11 → 2026-04-10 (+30d) | 2026-03-24 → 2026-04-23 (+30d) |  | 94d → 72d |
| P2.UTT.370 | Interior Finishes - Device Trim-Out - Utility Tunnel | 2026-03-25 → 2026-04-24 (+30d) | 2026-04-07 → 2026-05-07 (+30d) |  | 94d → 72d |
| 1 | **Pedestrian** |  | 2026-05-05 → 2026-06-05 (+31d) |  |  |
| 3 | **Finishes** | 2026-03-11 → 2026-04-10 (+30d) | 2026-05-05 → 2026-06-05 (+31d) |  |  |
| P2.UTT.310 | Pedestrian Tunnel MEP Rough in Tunnel | 2026-03-11 → 2026-04-10 (+30d) | 2026-04-07 → 2026-05-07 (+30d) |  | 201d → 179d |
| P2.UTT.320 | Pedestrian Tunnel Interior Finishes, Pipe ID, Painting | 2026-04-08 → 2026-05-08 (+30d) | 2026-05-05 → 2026-06-05 (+31d) |  | 201d → 179d |
| P2.UTT.330 | Pedestrian Tunnel MEP Rough in PPG | 2026-04-08 → 2026-05-08 (+30d) | 2026-05-05 → 2026-06-05 (+31d) |  | 204d → 182d |
| 15 | **Phase 2 - Construction** |  | 2028-09-05 → 2028-09-25 (+20d) |  |  |
| 3 | **PH 2 BUILDING ENVELOPE** |  | 2026-08-20 → 2026-09-22 (+33d) |  |  |
| 9 | **PH2 Facade by Sectors** |  | 2026-08-20 → 2026-09-22 (+33d) |  |  |
| 5 | **Sector F** |  | 2026-07-06 → 2026-08-04 (+29d) |  |  |
| 3 | **Glass & Glazing - Sector F** |  | 2026-05-29 → 2026-06-29 (+31d) |  |  |
| P2.FAC.3.F.120 | Curtainwall _ Storefront Door (CL Z5.3 - Z6.1 @ ZJ.5) / Sector F | 2026-05-15 → 2026-06-16 (+32d) | 2026-05-18 → 2026-06-17 (+30d) |  | 137d → 116d |
| P2.FAC.3.F.130 | Curtainwall _ Storefront Door (CL ZA.7 - ZB @ Z9.5) / Sector Z3 (Stair 2-8) | 2026-05-28 → 2026-06-26 (+29d) | 2026-05-29 → 2026-06-29 (+31d) |  | 137d → 116d |
| 4 | **Metal Panels & Louvers - Sector F** |  | 2026-02-16 → 2026-03-11 (+23d) |  |  |
| P2.FAC.4.F.110 | Metal Panels @ SRLM/CRC Connection (CL Z9.1/ZF to Z5.8/ZG.5) / Sector F |  | 2026-01-12 → 2025-12-31 A (-12d) | 75% → 100% | 215d → none |
| P2.FAC.4.F.120 | Metal Panels @ SRLM/CRC Connection (CL Z5.8/ZG.5 to Z5.3/ZJ.5 and east face at Z6.3/ZJ.5 to ZH.8) / Sector F | 2026-01-13 → 2025-12-08 A (-36d) | 2026-02-09 → 2026-03-04 (+23d) |  | 215d → 198d |
| P2.FAC.4.F.200 | C3 - Metal Panels @ Group 3 EMR / Sector F | 2026-02-10 → 2026-03-05 (+23d) | 2026-02-16 → 2026-03-11 (+23d) |  | 220d → 203d |
| 5 | **Facade Finish Work - Sector F** |  | 2026-06-05 → 2026-07-07 (+32d) |  |  |
| P2.FAC.5.F.210 | Brick Tie-in at Existing Building (South-Tie In) / Sector F | 2025-12-01 → 2026-01-02 (+32d) | 2025-12-12 → 2026-01-15 (+34d) |  | 256d → 242d |
| P2.FAC.5.F.200 | Brick Tie-in at Existing Building (East - Level 2 Roof) / Sector F | 2025-12-15 → 2026-01-16 (+32d) | 2025-12-29 → 2026-01-29 (+31d) |  | 256d → 242d |
| P2.FAC.5.F.110 | Expansion Joint _ EJ-08 / Sector F | 2025-12-29 → 2026-01-29 (+31d) | 2026-01-05 → 2026-02-04 (+30d) |  | 215d → 198d |
| P2.FAC.5.F.150 | Caulk & Seal / Sector F | 2026-02-10 → 2026-03-05 (+23d) | 2026-02-16 → 2026-03-11 (+23d) |  | 215d → 198d |
| P2.FAC.5.F.130 | Exterior Receptacles & Lights / Sector F | 2026-02-17 → 2026-03-12 (+23d) | 2026-02-23 → 2026-03-18 (+23d) |  | 215d → 198d |
| P2.FAC.5.F.120 | Exterior Signage / Sector F | 2026-06-01 → 2026-06-30 (+29d) | 2026-06-05 → 2026-07-07 (+32d) |  | 142d → 121d |
| P2.FAC.5.F.160 | Exterior LV Systems / Sector F | 2026-06-01 → 2026-06-30 (+29d) | 2026-06-05 → 2026-07-07 (+32d) |  | 142d → 121d |
| 2 | **Quality Control Inspections - Sector F** | 2026-06-08 → 2026-07-08 (+30d) | 2026-07-06 → 2026-08-04 (+29d) |  |  |
| P2.FAC.F.9000 | Trades Inspect & Verify Work Completed to Specs - Sector F | 2026-06-08 → 2026-07-08 (+30d) | 2026-06-12 → 2026-07-14 (+32d) |  | 142d → 121d |
| P2.FAC.F.9010 | Inspect & Prepare Punchlist - Sector F | 2026-06-15 → 2026-07-15 (+30d) | 2026-06-19 → 2026-07-21 (+32d) |  | 142d → 121d |
| P2.FAC.F.9020 | Correct Punchlist - Sector F | 2026-06-22 → 2026-07-22 (+30d) | 2026-06-26 → 2026-07-28 (+32d) |  | 142d → 121d |
| P2.FAC.F.9030 | NIH Acceptance of Facade - Sector F | 2026-06-29 → 2026-07-29 (+30d) | 2026-07-06 → 2026-08-04 (+29d) |  | 142d → 121d |
| 6 | **Sector Z1** |  | 2026-08-20 → 2026-09-22 (+33d) |  |  |
| 4 | **Metal Panels & Louvers - Sector Z1** |  | 2025-12-12 → 2026-01-15 (+34d) |  |  |
| P2.FAC.3.Z1.150 | Metal Panels behind parapets / Sector Z1 | 2025-12-01 → 2026-01-02 (+32d) | 2025-12-12 → 2026-01-15 (+34d) |  | 264d → 242d |
| 3 | **Glass & Glazing - Sector Z1** |  | 2026-05-20 → 2026-06-19 (+30d) |  |  |
| P2.FAC.3.Z1.160 | Curtainwall _ Storefront Door (CL ZJ.5 - ZK @ Z0.5) / Sector Z1 (Vestibule 6900) | 2026-05-19 → 2026-06-18 (+30d) | 2026-05-20 → 2026-06-19 (+30d) |  | 137d → 116d |
| 5 | **Facade Finish Work - Sector Z1** |  | 2026-07-16 → 2026-08-17 (+32d) |  |  |
| P2.FAC.5.Z1.190 | Caulk & Seal / Sector Z1 | 2026-01-06 → 2025-12-15 A (-22d) | 2026-01-12 → 2025-12-19 A (-24d) | 0% → 100% | 30d → none |
| P2.FAC.5.Z1.230 | Canopy Structure @ Entrance Stair / Sector Z1 | 2025-12-01 → 2025-12-29 A (+28d) | 2025-12-05 → 2026-01-08 (+34d) |  | 264d → 242d |
| P2.FAC.5.Z1.110 | Expansion Joints / Sector Z1 | 2025-12-29 → 2026-01-29 (+31d) | 2026-01-05 → 2026-02-04 (+30d) |  | 30d → 13d |

| ID | Task | Start | Finish | Complete | Total float |
| --- | --- | --- | --- | --- | --- |
| P2.FAC.5.Z1.120 | Soffit Framing / Sector Z1 | 2026-06-11 → 2026-07-14 (+33d) | 2026-06-17 → 2026-07-20 (+33d) |  | 119d → 97d |
| P2.FAC.5.Z1.140 | Metal Panel Facade Columns / Sector Z1 | 2026-06-11 → 2026-07-14 (+33d) | 2026-06-17 → 2026-07-20 (+33d) |  | 114d → 92d |
| P2.FAC.5.Z1.170 | Canopy Glass @ South - Mech Tower / Sector Z1 | 2026-06-11 → 2026-07-14 (+33d) | 2026-06-17 → 2026-07-20 (+33d) |  | 129d → 107d |
| P2.FAC.5.Z1.150 | Soffit Finish Panels / Sector Z1 | 2026-06-18 → 2026-07-21 (+33d) | 2026-06-24 → 2026-07-27 (+33d) |  | 114d → 92d |
| P2.FAC.5.Z1.240 | Canopy Glass @ Entrance Stair / Sector Z1 | 2026-06-18 → 2026-07-21 (+33d) | 2026-06-24 → 2026-07-27 (+33d) |  | 129d → 107d |
| P2.FAC.5.Z1.130 | R/I MEP @ Soffit / Sector Z1 | 2026-06-25 → 2026-07-28 (+33d) | 2026-07-01 → 2026-08-03 (+33d) |  | 114d → 92d |
| P2.FAC.5.Z1.160 | Exterior Lights & Receptacles / Sector Z1 | 2026-07-02 → 2026-08-04 (+33d) | 2026-07-09 → 2026-08-10 (+32d) |  | 114d → 92d |
| P2.FAC.5.Z1.165 | Exterior LV Systems / Sector Z1 | 2026-07-02 → 2026-08-04 (+33d) | 2026-07-09 → 2026-08-10 (+32d) |  | 119d → 97d |
| P2.FAC.5.Z1.180 | Exterior Signage / Sector Z1 | 2026-07-10 → 2026-08-11 (+32d) | 2026-07-16 → 2026-08-17 (+32d) |  | 114d → 92d |
| 6 | **Quality Control Inspections - Sector Z1** | 2026-07-24 → 2026-08-25 (+32d) | 2026-08-20 → 2026-09-22 (+33d) |  |  |
| P2.FAC.Z1.9000 | Trades Inspect & Verify Work Completed to Specs / Sector Z1 | 2026-07-24 → 2026-08-25 (+32d) | 2026-07-30 → 2026-08-31 (+32d) |  | 109d → 87d |
| P2.FAC.Z1.9010 | Inspect & Prepare Punchlist / Sector Z1 | 2026-07-31 → 2026-09-01 (+32d) | 2026-08-06 → 2026-09-08 (+33d) |  | 109d → 87d |
| P2.FAC.Z1.9020 | Correct Punchlist / Sector Z1 | 2026-08-07 → 2026-09-09 (+33d) | 2026-08-13 → 2026-09-15 (+33d) |  | 109d → 87d |
| P2.FAC.Z1.9030 | NIH Acceptance of Facade / Sector Z1 | 2026-08-14 → 2026-09-16 (+33d) | 2026-08-20 → 2026-09-22 (+33d) |  | 109d → 87d |
| 7 | **Sector Z2** |  | 2026-05-22 → 2026-06-23 (+32d) |  |  |
| 4 | **Metal Panels & Louvers - Sector Z2** |  | 2026-01-06 → 2026-02-05 (+30d) |  |  |
| P2.FAC.3.Z2.120 | Metal Panels Soffits @ Level 4 West & Center Hockey Sticks / Sector Z2 |  | 2025-12-02 → 2025-12-05 A (+3d) | 80% → 100% | 66d → none |
| P2.FAC.3.Z2.200 | Metal Roof @ Clerestories / Sector Z2 | 2025-12-15 A | 2025-12-22 A | 0% → 100% | 258.01d → none |
| P2.FAC.3.Z2.140 | Metal Panels behind parapets / Sector Z2 | 2025-12-01 → 2026-01-02 (+32d) | 2025-12-05 → 2026-01-08 (+34d) |  | 269d → 247d |
| P2.FAC.3.Z2.110 | Metal Panels @ West Clerestory / Sector Z2 | 2025-12-30 → 2026-01-30 (+31d) | 2026-01-06 → 2026-02-05 (+30d) |  | 37d → 20d |
| 3 | **Glass & Glazing - Sector Z2** |  | 2026-05-22 → 2026-06-23 (+32d) |  |  |
| P2.FAC.3.Z2.210 | Curtainwall _ Storefront Door (CL ZD - ZE @ Z2) / Sector Z2 (Stair 2-10) | 2026-05-21 → 2026-06-22 (+32d) | 2026-05-22 → 2026-06-23 (+32d) |  | 137d → 116d |
| 5 | **Facade Finish Work - Sector Z2** |  | 2026-04-17 → 2026-05-20 (+33d) |  |  |
| P2.FAC.5.Z2.220 | Caulk & Seal / Sector Z2 | 2026-01-07 → 2025-12-08 A (-30d) | 2026-01-13 → 2025-12-19 A (-25d) | 0% → 100% | 44d → none |
| P2.FAC.5.Z2.110 | Soffit Framing @ West Tower / Sector Z2 | 2026-03-09 → 2026-04-09 (+31d) | 2026-03-13 → 2026-04-15 (+33d) |  | 176d → 153d |
| P2.FAC.5.Z2.120 | R/I MEP _ Soffit @ West Tower / Sector Z2 | 2026-03-16 → 2026-04-16 (+31d) | 2026-03-20 → 2026-04-22 (+33d) |  | 176d → 153d |
| P2.FAC.5.Z2.140 | Soffit Framing @ Center Tower / Sector Z2 | 2026-03-16 → 2026-04-16 (+31d) | 2026-03-20 → 2026-04-22 (+33d) |  | 176d → 153d |
| P2.FAC.5.Z2.130 | Metal Panel Facade Columns @ West Tower / Sector Z2 | 2026-03-23 → 2026-04-23 (+31d) | 2026-03-27 → 2026-04-29 (+33d) |  | 176d → 153d |
| P2.FAC.5.Z2.160 | R/I MEP _ Soffit @ Center Tower / Sector Z2 | 2026-03-23 → 2026-04-23 (+31d) | 2026-03-27 → 2026-04-29 (+33d) |  | 176d → 153d |
| P2.FAC.5.Z2.150 | Soffit Finish Panels @ West Tower / Sector Z2 | 2026-03-30 → 2026-04-30 (+31d) | 2026-04-03 → 2026-05-06 (+33d) |  | 176d → 153d |
| P2.FAC.5.Z2.170 | Metal Panel Facade Columns @ Center Tower / Sector Z2 | 2026-03-30 → 2026-04-30 (+31d) | 2026-04-03 → 2026-05-06 (+33d) |  | 176d → 153d |
| P2.FAC.5.Z2.180 | Soffit Finish Panels @ Center Tower / Sector Z2 | 2026-04-06 → 2026-05-07 (+31d) | 2026-04-10 → 2026-05-13 (+33d) |  | 176d → 153d |
| P2.FAC.5.F.180 | Exterior LV Systems / Sector Z2 | 2026-04-13 → 2026-05-14 (+31d) | 2026-04-17 → 2026-05-20 (+33d) |  | 176d → 153d |
| P2.FAC.5.Z2.190 | Exterior Lights& Receptacles / Sector Z2 | 2026-04-13 → 2026-05-14 (+31d) | 2026-04-17 → 2026-05-20 (+33d) |  | 176d → 153d |
| P2.FAC.5.Z2.200 | Exterior Signage / Sector Z2 | 2026-04-13 → 2026-05-14 (+31d) | 2026-04-17 → 2026-05-20 (+33d) |  | 176d → 153d |
| 6 | **Quality Control Inspections - Sector Z2** | 2026-04-20 → 2026-05-21 (+31d) | 2026-05-15 → 2026-06-18 (+34d) |  |  |
| P2.FAC.Z2.9000 | Trades Inspect & Verify Work Completed to Specs / Sector Z2 | 2026-04-20 → 2026-05-21 (+31d) | 2026-04-24 → 2026-05-28 (+34d) |  | 176d → 153d |
| P2.FAC.Z2.9010 | Inspect & Prepare Punchlist / Sector Z2 | 2026-04-27 → 2026-05-29 (+32d) | 2026-05-01 → 2026-06-04 (+34d) |  | 176d → 153d |
| P2.FAC.Z2.9020 | Correct Punchlist / Sector Z2 | 2026-05-04 → 2026-06-05 (+32d) | 2026-05-08 → 2026-06-11 (+34d) |  | 176d → 153d |
| P2.FAC.Z2.9030 | NIH Acceptance of Facade / Sector Z2 | 2026-05-11 → 2026-06-12 (+32d) | 2026-05-15 → 2026-06-18 (+34d) |  | 176d → 153d |
| 8 | **Sector Z3** |  | 2026-05-27 → 2026-06-25 (+29d) |  |  |
| 4 | **Metal Panels & Louvers - Sector Z3** |  | 2026-02-06 → 2026-03-05 (+27d) |  |  |
| P2.FAC.3.Z3.120 | Metal Panels @ East Mech Tower (Z10.2/ZD.5 to Z9.1/ZF ) / Sector Z3 |  | 2026-02-06 → 2026-02-26 (+20d) | 0% → 80% | 256d → 242d |
| P2.FAC.3.Z3.170 | Metal Panels @ East Mech Tower (Z9/ZC to Z10.2/ZD.5) / Sector Z3 |  | 2025-12-05 → 2026-01-05 (+31d) | 50% → 80% | 64d → 50d |
| P2.FAC.3.Z3.130 | Metal Panels Soffits @ Level 4 East Hockey Sticks / Sector Z3 |  | 2025-12-03 A | 80% → 100% | 66d → none |
| P2.FAC.3.Z3.150 | Metal Panels @ North Penthouse Perimeter (Z4/ZF.3 to Z6/ZB.9) / Sector Z3 | 2025-12-01 → 2026-01-02 (+32d) | 2025-12-12 → 2026-01-15 (+34d) |  | 37d → 20d |
| P2.FAC.3.Z3.140 | Metal Panels @ North Penthouse Perimeter (Z6/ZB.9 to Z7.7/ZF.4) / Sector Z3 | 2025-12-15 → 2026-01-16 (+32d) | 2025-12-29 → 2026-01-29 (+31d) |  | 37d → 20d |
| P2.FAC.3.Z3.160 | Metal Panels @ Group 2 EMR / Sector Z3 | 2025-12-30 → 2026-01-30 (+31d) | 2026-01-13 → 2026-02-12 (+30d) |  | 244d → 222d |
| P2.FAC.3.Z3.190 | Metal Panels @ Center & East Clerestories / Sector Z3 | 2026-01-07 → 2026-02-06 (+30d) | 2026-01-20 → 2026-02-19 (+30d) |  | 229d → 207d |
| P2.FAC.3.Z3.250 | Metal Panels behind parapet / Sector Z3 | 2026-01-21 → 2026-02-20 (+30d) | 2026-02-03 → 2026-03-05 (+30d) |  | 229d → 207d |
| 3 | **Glass & Glazing - Sector Z3** |  | 2026-05-27 → 2026-06-25 (+29d) |  |  |
| P2.FAC.4.Z3.240 | Aluminum Folding Doors _ Levels 1 & 3 (CL ZB.5-ZC) / Sector Z3 | 2025-12-01 → 2026-01-02 (+32d) | 2025-12-12 → 2026-01-15 (+34d) |  | 254d → 232d |
| P2.FAC.3.Z3.260 | Curtainwall _ Storefront Door (CL ZA - ZA.7 @ Z7.7) / Sector Z3 (Stair 2-9) | 2026-05-26 → 2026-06-24 (+29d) | 2026-05-27 → 2026-06-25 (+29d) |  | 137d → 116d |
| 5 | **Facade Finish Work - Sector Z3** |  | 2026-04-08 → 2026-05-11 (+33d) |  |  |
| P2.FAC.5.Z3.150 | Caulk & Seal / Sector Z3 | 2025-12-08 A | 2025-12-12 A | 0% → 100% | 64d → none |
| P2.FAC.5.Z3.130 | Expansion Joints / Sector Z3 | 2026-01-19 → 2026-02-18 (+30d) | 2026-01-23 → 2026-02-24 (+32d) |  | 256d → 242d |
| P2.FAC.5.Z3.220 | Soffit Framing / Sector Z3 | 2026-03-05 → 2026-04-07 (+33d) | 2026-03-11 → 2026-04-13 (+33d) |  | 183d → 160d |
| P2.FAC.5.Z3.230 | R/I MEP _ Soffit / Sector Z3 | 2026-03-12 → 2026-04-14 (+33d) | 2026-03-18 → 2026-04-20 (+33d) |  | 183d → 160d |
| P2.FAC.5.Z3.140 | Metal Panel Facade Columns / Sector Z3 | 2026-03-19 → 2026-04-21 (+33d) | 2026-03-25 → 2026-04-27 (+33d) |  | 183d → 160d |
| P2.FAC.5.Z3.240 | Soffit Finish Panels / Sector Z3 | 2026-03-26 → 2026-04-28 (+33d) | 2026-04-01 → 2026-05-04 (+33d) |  | 183d → 160d |
| P2.FAC.5.F.190 | Exterior LV Systems / Sector Z3 | 2026-04-02 → 2026-05-05 (+33d) | 2026-04-08 → 2026-05-11 (+33d) |  | 183d → 160d |
| P2.FAC.5.Z3.110 | Exterior Signage / Sector Z3 | 2026-04-02 → 2026-05-05 (+33d) | 2026-04-08 → 2026-05-11 (+33d) |  | 183d → 160d |
| P2.FAC.5.Z3.120 | Exterior Lights & Receptacles / Sector Z3 | 2026-04-02 → 2026-05-05 (+33d) | 2026-04-08 → 2026-05-11 (+33d) |  | 183d → 160d |
| 6 | **Quality Control Inspections - Sector Z3** | 2026-04-09 → 2026-05-12 (+33d) | 2026-05-06 → 2026-06-09 (+34d) |  |  |
| P2.FAC.Z3.9000 | Trades Inspect & Verify Work Completed to Specs / Sector Z3 | 2026-04-09 → 2026-05-12 (+33d) | 2026-04-15 → 2026-05-18 (+33d) |  | 183d → 160d |
| P2.FAC.Z3.9010 | Inspect & Prepare Punchlist / Sector Z3 | 2026-04-16 → 2026-05-19 (+33d) | 2026-04-22 → 2026-05-26 (+34d) |  | 183d → 160d |
| P2.FAC.Z3.9020 | Correct Punchlist / Sector Z3 | 2026-04-23 → 2026-05-27 (+34d) | 2026-04-29 → 2026-06-02 (+34d) |  | 183d → 160d |
| P2.FAC.Z3.9030 | NIH Acceptance of Facade / Sector Z3 | 2026-04-30 → 2026-06-03 (+34d) | 2026-05-06 → 2026-06-09 (+34d) |  | 183d → 160d |
| 4 | **PH 2 - Roofing** |  | 2026-02-17 → 2026-03-09 (+20d) |  |  |
| 8 | **L2 - Low Roof / East Mech Tower Shaft** |  | 2026-02-17 → 2026-03-09 (+20d) |  |  |

| ID | Task | Start | Finish | Complete | Total float |
| --- | --- | --- | --- | --- | --- |
| 1 | **Weathertightness Prep** |  | 2025-12-03 → 2026-01-06 (+34d) |  |  |
| P2.LR.L2.180 | Roofing - Temp Watertight Systems / Low Roof - L2 | 2025-12-01 → 2026-01-02 (+32d) | 2025-12-03 → 2026-01-06 (+34d) |  | 72d → 50d |
| 3 | **Roofing Finishes** | 2025-12-30 → 2026-01-30 (+31d) | 2026-01-27 → 2026-02-26 (+30d) |  |  |
| P2.LR.L2.200 | Roofing - Permanent Systems / Low Roof - L2 | 2025-12-30 → 2026-01-30 (+31d) | 2026-01-06 → 2026-02-05 (+30d) |  | 256d → 242d |
| P2.LR.L2.210 | Area Drain Flood Testing / Low Roof - L2 | 2026-01-07 → 2026-02-06 (+30d) | 2026-01-07 → 2026-02-06 (+30d) |  | 256d → 242d |
| P2.LR.L2.220 | Electronic Leak Detection Testing & Corrections / Low Roof - L2 | 2026-01-08 → 2026-02-09 (+32d) | 2026-01-09 → 2026-02-10 (+32d) |  | 256d → 242d |
| P2.LR.L2.230 | Metal Panels / Low Roof - L2 | 2026-01-12 → 2026-02-11 (+30d) | 2026-01-16 → 2026-02-17 (+32d) |  | 256d → 242d |
| P2.LR.L2.235 | Roof Ballasts, Copings, & Metal Trim / Low Roof - L2 | 2026-01-19 → 2026-02-18 (+30d) | 2026-01-23 → 2026-02-24 (+32d) |  | 264d → 242d |
| P2.LR.L2.240 | Roof Trim Out - All Trades / Low Roof - L2 | 2026-01-26 → 2026-02-25 (+30d) | 2026-01-27 → 2026-02-26 (+30d) |  | 264d → 242d |
| 4 | **Quality Control Inspections** | 2026-02-09 → 2026-02-27 (+18d) | 2026-02-17 → 2026-03-09 (+20d) |  |  |
| P2.LR.L2.9000 | Trades Inspect & Verify Work Completed to Specs / Low Roof - L2 | 2026-02-09 → 2026-02-27 (+18d) | 2026-02-10 → 2026-03-02 (+20d) |  | 256d → 242d |
| P2.LR.L2.9010 | Inspect & Prepare Punchlist / Low Roof - L2 | 2026-02-11 → 2026-03-03 (+20d) | 2026-02-11 → 2026-03-03 (+20d) |  | 256d → 242d |
| P2.LR.L2.9020 | Correct Punchlist / Low Roof - L2 | 2026-02-12 → 2026-03-04 (+20d) | 2026-02-13 → 2026-03-05 (+20d) |  | 256d → 242d |
| P2.LR.L2.9030 | Final Inspection & Acceptance / Low Roof - L2 | 2026-02-16 → 2026-03-06 (+18d) | 2026-02-17 → 2026-03-09 (+20d) |  | 256d → 242d |
| 14 | **L7 - Low Roof / @ Grid Z6/ZJ** |  | 2025-12-23 → 2026-01-21 (+29d) |  |  |
| 4 | **Roofing Finishes** |  | 2025-12-12 → 2026-01-12 (+31d) |  |  |
| P2.LR.L7.210 | Area Drain Flood Testing / Low Roof - L7 | 2025-12-01 A | 2025-12-01 A | 0% → 100% | 57d → none |
| P2.LR.L7.220 | Electronic Leak Detection Testing & Corrections / Low Roof - L7 | 2025-12-02 → 2025-12-09 A (+7d) | 2025-12-03 → 2025-12-09 A (+6d) | 0% → 100% | 57d → none |
| P2.LR.L7.230 | Metal Panels / Low Roof - L7 | 2025-12-04 → 2026-01-02 (+29d) | 2025-12-10 → 2026-01-08 (+29d) |  | 57d → 38d |
| P2.LR.L7.240 | Roof Trim Out - All Trades / Low Roof - L7 | 2025-12-11 → 2026-01-09 (+29d) | 2025-12-12 → 2026-01-12 (+31d) |  | 57d → 38d |
| 6 | **Quality Control Inspections** | 2025-12-15 → 2026-01-13 (+29d) | 2025-12-23 → 2026-01-21 (+29d) |  |  |
| P2.LR.L7.9000 | Trades Inspect & Verify Work Completed to Specs / Low Roof - L7 | 2025-12-15 → 2026-01-13 (+29d) | 2025-12-16 → 2026-01-14 (+29d) |  | 57d → 38d |
| P2.LR.L7.9010 | Inspect & Prepare Punchlist / Low Roof - L7 | 2025-12-17 → 2026-01-15 (+29d) | 2025-12-17 → 2026-01-15 (+29d) |  | 57d → 38d |
| P2.LR.L7.9020 | Correct Punchlist / Low Roof - L7 | 2025-12-18 → 2026-01-16 (+29d) | 2025-12-19 → 2026-01-19 (+31d) |  | 57d → 38d |
| P2.LR.L7.9030 | Final Inspection & Acceptance / Low Roof - L7 | 2025-12-22 → 2026-01-20 (+29d) | 2025-12-23 → 2026-01-21 (+29d) |  | 57d → 38d |
| 6 | **L9 - MAIN ROOF** |  | 2026-02-05 → 2026-03-02 (+25d) |  |  |
| 1 | **Main Roof / West Tower** |  | 2026-01-22 → 2026-02-16 (+25d) |  |  |
| 1 | **Rooftop MEP** |  | 2025-12-08 → 2026-01-09 (+32d) |  |  |
| P2.MR.W.190 | Elec Connections to MEP / Main Roof - West |  | 2025-12-08 → 2026-01-09 (+32d) |  | 61d → 39d |
| P2.MR.W.180 | MEP - Piping & Equip Tie In / Main Roof - West | 2025-12-01 → 2026-01-02 (+32d) | 2025-12-05 → 2026-01-08 (+34d) |  | 32d → 10d |
| 2 | **Roofing Finishes** |  | 2026-01-13 → 2026-01-22 (+9d) |  |  |
| P2.MR.W.270 | Roofing - Standing Seam - Clerestory | 2026-01-07 → 2025-12-10 A (-28d) | 2026-01-13 → 2025-12-31 A (-13d) | 0% → 100% | 37d → none |
| P2.MR.W.240 | Metal Panels / Main Roof - West | 2025-12-08 → 2026-01-09 (+32d) | 2025-12-12 → 2026-01-15 (+34d) |  | 52d → 30d |
| P2.MR.W.250 | Roof Trim Out - All Trades / Main Roof - West | 2025-12-15 → 2026-01-16 (+32d) | 2025-12-19 → 2026-01-22 (+34d) |  | 52d → 30d |
| 6 | **Quality Control Inspections** | 2026-01-14 → 2026-02-06 (+23d) | 2026-01-22 → 2026-02-16 (+25d) |  |  |
| P2.MR.W.9000 | Trades Inspect & Verify Work Completed to Specs / Main Roof - West | 2026-01-14 → 2026-02-06 (+23d) | 2026-01-15 → 2026-02-09 (+25d) |  | 37d → 20d |
| P2.MR.W.9010 | Inspect & Prepare Punchlist / Main Roof - West | 2026-01-16 → 2026-02-10 (+25d) | 2026-01-16 → 2026-02-10 (+25d) |  | 37d → 20d |
| P2.MR.W.9020 | Correct Punchlist / Main Roof - West | 2026-01-19 → 2026-02-11 (+23d) | 2026-01-20 → 2026-02-12 (+23d) |  | 37d → 20d |
| P2.MR.W.9030 | Final Inspection & Acceptance / Main Roof - West | 2026-01-21 → 2026-02-13 (+23d) | 2026-01-22 → 2026-02-16 (+25d) |  | 37d → 20d |
| 2 | **Main Roof / Center Tower** |  | 2026-02-05 → 2026-03-02 (+25d) |  |  |
| 2 | **Roofing Finishes** |  | 2026-01-27 → 2026-01-19 (-8d) |  |  |
| P2.MR.C.240 | Metal Panels / Main Roof - Center |  | 2025-12-09 → 2026-01-12 (+34d) |  | 292d → 270d |
| P2.MR.C.260 | Ladders & Stairs / Main Roof - Center |  | 2025-12-11 → 2025-12-31 A (+20d) | 60% → 100% | 295d → none |
| P2.MR.C.270 | Roofing - Standing Seam - Clerestory | 2026-01-21 → 2025-12-09 A (-43d) | 2026-01-27 → 2025-12-19 A (-39d) | 0% → 100% | 264d → none |
| P2.MR.C.250 | Roof Trim Out - All Trades / Main Roof - Center | 2025-12-10 → 2026-01-13 (+34d) | 2025-12-16 → 2026-01-19 (+34d) |  | 292d → 270d |
| 6 | **Quality Control Inspections** | 2026-01-28 → 2026-02-20 (+23d) | 2026-02-05 → 2026-03-02 (+25d) |  |  |
| P2.MR.C.9000 | Trades Inspect & Verify Work Completed to Specs / Main Roof - Center | 2026-01-28 → 2026-02-20 (+23d) | 2026-01-29 → 2026-02-23 (+25d) |  | 264d → 247d |
| P2.MR.C.9010 | Inspect & Prepare Punchlist / Main Roof - Center | 2026-01-30 → 2026-02-24 (+25d) | 2026-01-30 → 2026-02-24 (+25d) |  | 264d → 247d |
| P2.MR.C.9020 | Correct Punchlist / Main Roof - Center | 2026-02-02 → 2026-02-25 (+23d) | 2026-02-03 → 2026-02-26 (+23d) |  | 264d → 247d |
| P2.MR.C.9030 | Final Inspection & Acceptance / Main Roof - Center | 2026-02-04 → 2026-02-27 (+23d) | 2026-02-05 → 2026-03-02 (+25d) |  | 264d → 247d |
| 3 | **Main Roof / East Tower** |  | 2025-12-23 → 2026-01-26 (+34d) |  |  |
| 2 | **Roofing Finishes** |  | 2025-12-12 → 2026-01-15 (+34d) |  |  |
| P2.MR.E.260 | Ladders & Stairs / Main Roof - East | 2025-12-08 → 2025-12-15 A (+7d) | 2025-12-12 → 2025-12-18 A (+6d) | 0% → 100% | 294d → none |
| P2.MR.E.240 | Metal Panels / Main Roof - East | 2025-12-01 → 2026-01-02 (+32d) | 2025-12-05 → 2026-01-08 (+34d) |  | 294d → 272d |
| P2.MR.E.250 | Roof Trim Out - All Trades / Main Roof - East | 2025-12-08 → 2026-01-09 (+32d) | 2025-12-12 → 2026-01-15 (+34d) |  | 294d → 272d |
| 8 | **Quality Control Inspections** | 2025-12-15 → 2026-01-16 (+32d) | 2025-12-23 → 2026-01-26 (+34d) |  |  |
| P2.MR.E.9000 | Trades Inspect & Verify Work Completed to Specs / Main Roof - East | 2025-12-15 → 2026-01-16 (+32d) | 2025-12-16 → 2026-01-19 (+34d) |  | 294d → 272d |
| P2.MR.E.9010 | Inspect & Prepare Punchlist / Main Roof - East | 2025-12-17 → 2026-01-20 (+34d) | 2025-12-17 → 2026-01-20 (+34d) |  | 294d → 272d |
| P2.MR.E.9020 | Correct Punchlist / Main Roof - East | 2025-12-18 → 2026-01-21 (+34d) | 2025-12-19 → 2026-01-22 (+34d) |  | 294d → 272d |
| P2.MR.E.9030 | Final Inspection & Acceptance / Main Roof - East | 2025-12-22 → 2026-01-23 (+32d) | 2025-12-23 → 2026-01-26 (+34d) |  | 294d → 272d |
| 10 | **Main Roof / East Mechanical Tower** |  | 2026-01-20 → 2026-02-18 (+29d) |  |  |
| 3 | **Rooftop MEP** |  | 2025-12-24 → 2026-01-26 (+33d) |  |  |
| P2.MR.EMT.1130 | HVAC Duct - R/I / Main Roof - East Mech Tower |  | 2025-12-10 → 2026-01-12 (+33d) | 20% → 30% | 24d → 3d |
| P2.MR.EMT.1150 | MEP - Piping & Equip Tie In / Main Roof - East Mech Tower | 2025-12-11 → 2026-01-13 (+33d) | 2025-12-17 → 2026-01-19 (+33d) |  | 24d → 3d |
| P2.MR.EMT.1160 | Elect Connections to MEP / Main Roof - East Mech Tower | 2025-12-18 → 2026-01-20 (+33d) | 2025-12-24 → 2026-01-26 (+33d) |  | 34d → 13d |
| 4 | **Roofing Finishes** |  | 2026-01-09 → 2026-02-09 (+31d) |  |  |
| P2.MR.EMT.2030 | Roof Pavers (RS-01) / Main Roof - East Mech Tower | 2025-12-18 → 2026-01-20 (+33d) | 2026-01-02 → 2026-02-02 (+31d) |  | 24d → 3d |
| P2.MR.EMT.2050 | Roof Trim Out - All Trades / Main Roof - East Mech Tower | 2026-01-05 → 2026-02-03 (+29d) | 2026-01-09 → 2026-02-09 (+31d) |  | 24d → 3d |
| 5 | **Quality Control Inspections** | 2026-01-12 → 2026-02-10 (+29d) | 2026-01-20 → 2026-02-18 (+29d) |  |  |
| P2.MR.EMT.9000 | Trades Inspect & Verify Work Completed to Specs / Main Roof - East Mech Tower | 2026-01-12 → 2026-02-10 (+29d) | 2026-01-13 → 2026-02-11 (+29d) |  | 24d → 3d |

| ID | Task | Start | Finish | Complete | Total float |
| --- | --- | --- | --- | --- | --- |
| P2.MR.EMT.9010 | Inspect & Prepare Punchlist / Main Roof - East Mech Tower | 2026-01-14 → 2026-02-12 (+29d) | 2026-01-14 → 2026-02-12 (+29d) |  | 24d → 3d |
| P2.MR.EMT.9020 | Correct Punchlist / Main Roof - East Mech Tower | 2026-01-15 → 2026-02-13 (+29d) | 2026-01-16 → 2026-02-16 (+31d) |  | 24d → 3d |
| P2.MR.EMT.9030 | Final Inspection & Acceptance / Main Roof - East Mech Tower | 2026-01-19 → 2026-02-17 (+29d) | 2026-01-20 → 2026-02-18 (+29d) |  | 24d → 3d |
| 11 | **Main Roof / Stair 5-8** |  | 2025-12-23 → 2026-01-22 (+30d) |  |  |
| 2 | **Roofing Finishes** |  | 2025-12-12 → 2026-01-13 (+32d) |  |  |
| P2.MR.5-8.220 | Electronic Leak Detection Testing & Corrections / Main Roof - Stair 5-8 | 2025-12-02 → 2025-12-08 A (+6d) | 2025-12-03 → 2025-12-08 A (+5d) | 0% → 100% | 57d → none |
| P2.MR.5-8.210 | Flood Test / Main Roof - Stair 5-8 | 2025-12-01 → 2026-01-02 (+32d) | 2025-12-01 → 2026-01-02 (+32d) |  | 57d → 37d |
| P2.MR.5-8.230 | Metal Panels / Main Roof - Stair 5-8 | 2025-12-04 → 2026-01-05 (+32d) | 2025-12-10 → 2026-01-09 (+30d) |  | 57d → 37d |
| P2.MR.5-8.240 | Roof Trim Out - All Trades / Main Roof - Stair 5-8 | 2025-12-11 → 2026-01-12 (+32d) | 2025-12-12 → 2026-01-13 (+32d) |  | 57d → 37d |
| 6 | **Quality Control Inspections** | 2025-12-15 → 2026-01-14 (+30d) | 2025-12-23 → 2026-01-22 (+30d) |  |  |
| P2.MR.5-8.9000 | Trades Inspect & Verify Work Completed to Specs / Main Roof - Stair 5-8 | 2025-12-15 → 2026-01-14 (+30d) | 2025-12-16 → 2026-01-15 (+30d) |  | 57d → 37d |
| P2.MR.5-8.9010 | Inspect & Prepare Punchlist / Main Roof - Stair 5-8 | 2025-12-17 → 2026-01-16 (+30d) | 2025-12-17 → 2026-01-16 (+30d) |  | 57d → 37d |
| P2.MR.5-8.9020 | Correct Punchlist / Main Roof - Stair 5-8 | 2025-12-18 → 2026-01-19 (+32d) | 2025-12-19 → 2026-01-20 (+32d) |  | 57d → 37d |
| P2.MR.5-8.9030 | Final Inspection & Acceptance / Main Roof - Stair 5-8 | 2025-12-22 → 2026-01-21 (+30d) | 2025-12-23 → 2026-01-22 (+30d) |  | 57d → 37d |
| 7 | **Main Roof / Stair 2-8** |  | 2025-12-23 → 2026-01-22 (+30d) |  |  |
| 2 | **Roofing Finishes** |  | 2025-12-12 → 2026-01-13 (+32d) |  |  |
| P2.MR.2-8.220 | Electronic Leak Detection Testing & Corrections / Main Roof - Stair 2-8 | 2025-12-02 → 2025-12-08 A (+6d) | 2025-12-03 → 2025-12-08 A (+5d) | 0% → 100% | 57d → none |
| P2.MR.2-8.210 | Flood Test / Main Roof - Stair 2-8 | 2025-12-01 → 2026-01-02 (+32d) | 2025-12-01 → 2026-01-02 (+32d) |  | 57d → 37d |
| P2.MR.2-8.230 | Metal Panels / Main Roof - Stair 2-8 | 2025-12-04 → 2026-01-05 (+32d) | 2025-12-10 → 2026-01-09 (+30d) |  | 57d → 37d |
| P2.MR.2-8.240 | Roof Trim Out - All Trades / Main Roof - Stair 2-8 | 2025-12-11 → 2026-01-12 (+32d) | 2025-12-12 → 2026-01-13 (+32d) |  | 57d → 37d |
| 6 | **Quality Control Inspections** | 2025-12-15 → 2026-01-14 (+30d) | 2025-12-23 → 2026-01-22 (+30d) |  |  |
| P2.MR.2-8.9000 | Trades Inspect & Verify Work Completed to Specs / Main Roof - Stair 2-8 | 2025-12-15 → 2026-01-14 (+30d) | 2025-12-16 → 2026-01-15 (+30d) |  | 57d → 37d |
| P2.MR.2-8.9010 | Inspect & Prepare Punchlist / Main Roof - Stair 2-8 | 2025-12-17 → 2026-01-16 (+30d) | 2025-12-17 → 2026-01-16 (+30d) |  | 57d → 37d |
| P2.MR.2-8.9020 | Correct Punchlist / Main Roof - Stair 2-8 | 2025-12-18 → 2026-01-19 (+32d) | 2025-12-19 → 2026-01-20 (+32d) |  | 57d → 37d |
| P2.MR.2-8.9030 | Final Inspection & Acceptance / Main Roof - Stair 2-8 | 2025-12-22 → 2026-01-21 (+30d) | 2025-12-23 → 2026-01-22 (+30d) |  | 57d → 37d |
| 4 | **L10 - PENTHOUSE ROOF** |  | 2026-01-22 → 2026-02-19 (+28d) |  |  |
| 1 | **Penthouse Roof - South Side** |  | 2026-01-22 → 2026-02-19 (+28d) |  |  |
| 1 | **Rooftop MEP** |  | 2026-01-20 → 2026-02-19 (+30d) |  |  |
| P2.PR.S.1130 | HVAC Duct - R/I / Penthouse Roof - South Side |  | 2025-12-12 → 2026-01-15 (+34d) |  | 72d → 50d |
| P2.PR.S.1150 | MEP - Piping & Equip Tie In / Penthouse Roof - South Side | 2026-01-14 → 2026-02-13 (+30d) | 2026-01-20 → 2026-02-19 (+30d) |  | 72d → 50d |
| 2 | **Roofing Finishes** |  | 2026-01-13 → 2026-02-02 (+20d) |  |  |
| P2.PR.S.2030 | Roof Pavers (RS-01) / Penthouse Roof - South Side | 2025-12-01 → 2025-12-09 A (+8d) | 2025-12-29 → 2026-01-19 (+21d) | 0% → 40% | 274d → 260d |
| P2.PR.S.2040 | Metal Panels / Penthouse Roof - South Side | 2025-12-30 → 2026-01-20 (+21d) | 2026-01-06 → 2026-01-26 (+20d) |  | 274d → 260d |
| P2.PR.S.2050 | Roof Trim Out - All Trades / Penthouse Roof - South Side | 2026-01-07 → 2026-01-27 (+20d) | 2026-01-13 → 2026-02-02 (+20d) |  | 274d → 260d |
| 6 | **Quality Control Inspections** | 2026-01-14 → 2026-02-03 (+20d) | 2026-01-22 → 2026-02-11 (+20d) |  |  |
| P2.PR.S.9000 | Trades Inspect & Verify Work Completed to Specs / Penthouse Roof - South Side | 2026-01-14 → 2026-02-03 (+20d) | 2026-01-15 → 2026-02-04 (+20d) |  | 274d → 260d |
| P2.PR.S.9010 | Inspect & Prepare Punchlist / Penthouse Roof - South Side | 2026-01-16 → 2026-02-05 (+20d) | 2026-01-16 → 2026-02-05 (+20d) |  | 274d → 260d |
| P2.PR.S.9020 | Correct Punchlist / Penthouse Roof - South Side | 2026-01-19 → 2026-02-06 (+18d) | 2026-01-20 → 2026-02-09 (+20d) |  | 274d → 260d |
| P2.PR.S.9030 | Final Inspection & Acceptance / Penthouse Roof - South Side | 2026-01-21 → 2026-02-10 (+20d) | 2026-01-22 → 2026-02-11 (+20d) |  | 274d → 260d |
| 3 | **Penthouse Roof - North Side** |  | 2026-01-20 → 2026-02-19 (+30d) |  |  |
| 1 | **Rooftop MEP** |  | 2026-01-20 → 2026-02-19 (+30d) |  |  |
| P2.PR.N.1130 | HVAC Duct - R/I / Penthouse Roof - North Side | 2025-12-15 → 2026-01-16 (+32d) | 2026-01-13 → 2026-02-12 (+30d) |  | 72d → 50d |
| P2.PR.N.1150 | MEP - Piping & Equip Tie In / Penthouse Roof - North Side | 2026-01-14 → 2026-02-13 (+30d) | 2026-01-20 → 2026-02-19 (+30d) |  | 116d → 94d |
| 2 | **Roofing Finishes** |  | 2026-01-05 → 2026-01-22 (+17d) |  |  |
| P2.PR.N.2030 | Roof Pavers (RS-01) / Penthouse Roof - North Side |  | 2025-12-11 → 2025-12-24 A (+13d) | 55% → 100% | 280d → none |
| P2.PR.N.2040 | Metal Panels / Penthouse Roof - North Side | 2025-12-12 → 2026-01-02 (+21d) | 2025-12-18 → 2026-01-08 (+21d) |  | 280d → 267d |
| P2.PR.N.2050 | Roof Trim Out - All Trades / Penthouse Roof - North Side | 2025-12-19 → 2026-01-09 (+21d) | 2025-12-26 → 2026-01-15 (+20d) |  | 280d → 267d |
| P2.PR.N.2060 | Ladders & Stairs / Penthouse Roof - North Side | 2025-12-29 → 2026-01-16 (+18d) | 2026-01-05 → 2026-01-22 (+17d) |  | 280d → 267d |
| 6 | **Quality Control Inspections** | 2026-01-06 → 2026-01-23 (+17d) | 2026-01-14 → 2026-02-02 (+19d) |  |  |
| P2.PR.N.9000 | Trades Inspect & Verify Work Completed to Specs / Penthouse Roof - North Side | 2026-01-06 → 2026-01-23 (+17d) | 2026-01-07 → 2026-01-26 (+19d) |  | 280d → 267d |
| P2.PR.N.9010 | Inspect & Prepare Punchlist / Penthouse Roof - North Side | 2026-01-08 → 2026-01-27 (+19d) | 2026-01-08 → 2026-01-27 (+19d) |  | 280d → 267d |
| P2.PR.N.9020 | Correct Punchlist / Penthouse Roof - North Side | 2026-01-09 → 2026-01-28 (+19d) | 2026-01-12 → 2026-01-29 (+17d) |  | 280d → 267d |
| P2.PR.N.9030 | Final Inspection & Acceptance / Penthouse Roof - North Side | 2026-01-13 → 2026-01-30 (+17d) | 2026-01-14 → 2026-02-02 (+19d) |  | 280d → 267d |
| 5 | **L10 - ELEVATOR MACHINE ROOM ROOF (EMMR) - GROUP 2** |  | 2025-12-23 → 2026-01-21 (+29d) |  |  |
| 2 | **Roofing Finishes** |  | 2025-12-12 → 2026-01-12 (+31d) |  |  |
| P2.PR.EMRR.2.210 | Flood Test / Upper Penthouse Roof - Group 2 EMR | 2025-12-01 → 2025-12-08 A (+7d) | 2025-12-01 → 2025-12-08 A (+7d) | 0% → 100% | 57d → none |
| P2.PR.EMRR.2.220 | Electronic Leak Detection Testing & Corrections / Upper Penthouse Roof - Group 2 EMR | 2025-12-02 → 2025-12-08 A (+6d) | 2025-12-03 → 2025-12-08 A (+5d) | 0% → 100% | 57d → none |
| P2.PR.EMRR.2.230 | Metal Panels / Upper Penthouse Roof - Group 2 EMR | 2025-12-04 → 2026-01-02 (+29d) | 2025-12-10 → 2026-01-08 (+29d) |  | 57d → 38d |
| P2.PR.EMRR.2.240 | Roof Trim Out - All Trades / Upper Penthouse Roof - Group 2 EMR | 2025-12-11 → 2026-01-09 (+29d) | 2025-12-12 → 2026-01-12 (+31d) |  | 57d → 38d |
| 6 | **Quality Control Inspections** | 2025-12-15 → 2026-01-13 (+29d) | 2025-12-23 → 2026-01-21 (+29d) |  |  |
| P2.PR.EMMR.2.9000 | Trades Inspect & Verify Work Completed to Specs / Upper Penthouse Roof - Group 2 EMR | 2025-12-15 → 2026-01-13 (+29d) | 2025-12-16 → 2026-01-14 (+29d) |  | 57d → 38d |
| P2.PR.EMMR.2.9010 | Inspect & Prepare Punchlist / Upper Penthouse Roof - Group 2 EMR | 2025-12-17 → 2026-01-15 (+29d) | 2025-12-17 → 2026-01-15 (+29d) |  | 57d → 38d |
| P2.PR.EMMR.2.9020 | Correct Punchlist / Upper Penthouse Roof - Group 2 EMR | 2025-12-18 → 2026-01-16 (+29d) | 2025-12-19 → 2026-01-19 (+31d) |  | 57d → 38d |
| P2.PR.EMMR.2.9030 | Final Inspection & Acceptance / Upper Penthouse Roof - Group 2 EMR | 2025-12-22 → 2026-01-20 (+29d) | 2025-12-23 → 2026-01-21 (+29d) |  | 57d → 38d |
| 9 | **L11 - HIGH ROOF / Stair 5-9** |  | 2025-12-22 → 2026-01-21 (+30d) |  |  |
| 2 | **Roofing Finishes** |  | 2025-12-11 → 2026-01-12 (+32d) |  |  |
| P2.L11.5-9.220 | Electronic Leak Detection Testing & Corrections / High Roof - Stair 5-9 | 2025-12-01 → 2025-12-08 A (+7d) | 2025-12-02 → 2025-12-08 A (+6d) | 0% → 100% | 58d → none |
| P2.L11.5-9.230 | Metal Panels / High Roof - Stair 5-9 | 2025-12-03 → 2026-01-02 (+30d) | 2025-12-09 → 2026-01-08 (+30d) |  | 58d → 38d |
| P2.L11.5-9.240 | Roof Trim Out - All Trades / High Roof - Stair 5-9 | 2025-12-10 → 2026-01-09 (+30d) | 2025-12-11 → 2026-01-12 (+32d) |  | 58d → 38d |
| 6 | **Quality Control Inspections** | 2025-12-12 → 2026-01-13 (+32d) | 2025-12-22 → 2026-01-21 (+30d) |  |  |

| ID | Task | Start | Finish | Complete | Total float |
| --- | --- | --- | --- | --- | --- |
| P2.L11.5-9.9000 | Trades Inspect & Verify Work Completed to Specs / High Roof - Stair 5-9 | 2025-12-12 → 2026-01-13 (+32d) | 2025-12-15 → 2026-01-14 (+30d) |  | 58d → 38d |
| P2.L11.5-9.9010 | Inspect & Prepare Punchlist / High Roof - Stair 5-9 | 2025-12-16 → 2026-01-15 (+30d) | 2025-12-16 → 2026-01-15 (+30d) |  | 58d → 38d |
| P2.L11.5-9.9020 | Correct Punchlist / High Roof - Stair 5-9 | 2025-12-17 → 2026-01-16 (+30d) | 2025-12-18 → 2026-01-19 (+32d) |  | 58d → 38d |
| P2.L11.5-9.9030 | Final Inspection & Acceptance / High Roof - Stair 5-9 | 2025-12-19 → 2026-01-20 (+32d) | 2025-12-22 → 2026-01-21 (+30d) |  | 58d → 38d |
| 13 | **L12 - ELEVATOR MACHINE ROOM ROOF (EMMR) - GROUP 3** |  | 2025-12-22 → 2026-01-21 (+30d) |  |  |
| 2 | **Roofing Finishes** |  | 2025-12-11 → 2026-01-12 (+32d) |  |  |
| P2.L11.EMMR.3.220 | Electronic Leak Detection Testing & Corrections / High Roof - Group 3 EMR | 2025-12-01 → 2025-12-08 A (+7d) | 2025-12-02 → 2025-12-08 A (+6d) | 0% → 100% | 35d → none |
| P2.L11.EMMR.3.230 | Metal Panels / High Roof - Group 3 EMR | 2025-12-03 → 2026-01-02 (+30d) | 2025-12-09 → 2026-01-08 (+30d) |  | 35d → 15d |
| P2.L11.EMMR.3.240 | Roof Trim Out - All Trades / High Roof - Group 3 EMR | 2025-12-10 → 2026-01-09 (+30d) | 2025-12-11 → 2026-01-12 (+32d) |  | 35d → 15d |
| 6 | **Quality Control Inspections** | 2025-12-12 → 2026-01-13 (+32d) | 2025-12-22 → 2026-01-21 (+30d) |  |  |
| P2.L11.EMMR.3.9000 | Trades Inspect & Verify Work Completed to Specs / High Roof - Group 3 EMR | 2025-12-12 → 2026-01-13 (+32d) | 2025-12-15 → 2026-01-14 (+30d) |  | 58d → 38d |
| P2.L11.EMMR.3.9010 | Inspect & Prepare Punchlist / High Roof - Group 3 EMR | 2025-12-16 → 2026-01-15 (+30d) | 2025-12-16 → 2026-01-15 (+30d) |  | 58d → 38d |
| P2.L11.EMMR.3.9020 | Correct Punchlist / High Roof - Group 3 EMR | 2025-12-17 → 2026-01-16 (+30d) | 2025-12-18 → 2026-01-19 (+32d) |  | 58d → 38d |
| P2.L11.EMMR.3.9030 | Final Inspection & Acceptance / High Roof - Group 3 EMR | 2025-12-19 → 2026-01-20 (+32d) | 2025-12-22 → 2026-01-21 (+30d) |  | 58d → 38d |
| 1 | **PH 2 - Hoist & Zipper** |  | 2026-07-23 → 2026-08-24 (+32d) |  |  |
| 1 | **East** |  | 2026-01-06 → 2026-01-29 (+23d) |  |  |
| P2.HZ.E.91 | Tie In Roofing |  | 2025-12-17 A | 0% → 100% | 256d → none |
| P2.HZ.E.121 | FRP L1 Slab at Hoist | 2025-12-01 → 2025-12-15 A (+14d) | 2025-12-05 → 2025-12-22 A (+17d) | 0% → 100% | 153d → none |
| P2.HZ.E.111 | Install Metal Panels @ Parapet | 2025-12-18 → 2026-01-02 (+15d) | 2025-12-24 → 2026-01-08 (+15d) |  | 256d → 247d |
| P2.HZ.E.131 | Waterproof at Hoist | 2025-12-08 → 2026-01-02 (+25d) | 2025-12-12 → 2026-01-08 (+27d) |  | 153d → 136d |
| P2.HZ.E.81 | Interior Finishes L1 to 8 | 2025-12-08 → 2026-01-02 (+25d) | 2026-01-06 → 2026-01-29 (+23d) |  | 266d → 249d |
| P2.HZ.E.141 | Backfill at Hoist | 2025-12-15 → 2026-01-09 (+25d) | 2025-12-19 → 2026-01-15 (+27d) |  | 153d → 136d |
| 2 | **West** |  | 2026-07-23 → 2026-08-24 (+32d) |  |  |
| P2.HZ.W.41 | West Material Hoist Onsite |  | 2026-04-30 → 2026-06-02 (+33d) |  | 109d → 87d |
| P2.HZ.W.91 | Remove Hoist | 2026-05-01 → 2026-06-03 (+33d) | 2026-05-12 → 2026-06-12 (+31d) |  | 109d → 87d |
| P2.HZ.W.101 | Curtainwall @ Material Hoist | 2026-05-13 → 2026-06-15 (+33d) | 2026-06-10 → 2026-07-13 (+33d) |  | 109d → 87d |
| P2.HZ.W.111 | Curtainwall Caulking | 2026-05-20 → 2026-06-22 (+33d) | 2026-06-17 → 2026-07-20 (+33d) |  | 109d → 87d |
| P2.HZ.W.121 | Interior Finishes L1 to 8 | 2026-06-18 → 2026-07-21 (+33d) | 2026-07-16 → 2026-08-17 (+32d) |  | 109d → 87d |
| P2.HZ.W.131 | Tie In Standing Seam Roofing | 2026-07-17 → 2026-08-18 (+32d) | 2026-07-23 → 2026-08-24 (+32d) |  | 109d → 87d |
| 4 | **PH 2 VERTICAL SYSTEMS** |  | 2026-07-13 → 2026-07-15 (+2d) |  |  |
| 1.Elev | **ELEVATORS** |  | 2026-07-13 → 2026-07-15 (+2d) |  |  |
| 1 | **Group 1 - Elevators 90 & 91** |  | 2026-02-03 → 2026-02-19 (+16d) |  |  |
| P2.GP1.14.710 | Entrances - Doors - Fixtures - Facia / Group 1 | 2025-12-15 → 2025-12-03 A (-12d) | 2025-12-19 → 2025-12-31 A (+12d) | 0% → 100% | 271d → none |
| P2.GP1.14.160 | Frame and Hang Gyp - Elevator Shaft / Group 1 | 2025-12-22 → 2025-12-11 A (-11d) | 2025-12-29 → 2025-12-18 A (-11d) | 0% → 100% | 271d → none |
| P2.GP1.14.910 | Cabs - Wiring - Door Operators / Group 1 | 2025-12-01 → 2026-01-02 (+32d) | 2025-12-05 → 2026-01-08 (+34d) |  | 271d → 259d |
| P2.GP1.14.810 | Hoistway Equipment - Pipe - Wire / Group 1 | 2025-12-08 → 2026-01-09 (+32d) | 2025-12-12 → 2026-01-15 (+34d) |  | 271d → 259d |
| P2.GP1.14.1110 | Punchlist & Inspections / Group 1 | 2025-12-30 → 2026-01-16 (+17d) | 2026-01-06 → 2026-01-22 (+16d) |  | 271d → 259d |
| P2.GP1.14.1010 | Adjust & Test - Internal / Group 1 | 2026-01-07 → 2026-01-23 (+16d) | 2026-01-13 → 2026-01-29 (+16d) |  | 271d → 259d |
| P2.GP1.14.1510 | Third Party Testing / Group 1 | 2026-01-14 → 2026-01-30 (+16d) | 2026-01-20 → 2026-02-05 (+16d) |  | 271d → 259d |
| P2.GP1.14.1610 | Final Testing and Inspection / Group 1 | 2026-01-21 → 2026-02-06 (+16d) | 2026-01-27 → 2026-02-12 (+16d) |  | 271d → 259d |
| P2.GP1.14.1710 | Elevator Acceptance - NIH AHJ / Group 1 | 2026-01-28 → 2026-02-13 (+16d) | 2026-02-03 → 2026-02-19 (+16d) |  | 309d → 297d |
| 2 | **Group 2 - Elevators 92 & 93** |  | 2026-07-13 → 2026-07-15 (+2d) |  |  |
| P2.GP2.14.1310 | Temporary Construction Use / Group 2 |  | 2026-06-12 → 2026-06-16 (+4d) |  | 197d → 195d |
| P2.GP2.14.1410 | Return to "Like New" Condition / Group 2 | 2026-06-15 → 2026-06-17 (+2d) | 2026-06-22 → 2026-06-24 (+2d) |  | 197d → 195d |
| P2.GP2.14.1510 | Third Party Testing / Group 2 | 2026-06-22 → 2026-06-24 (+2d) | 2026-06-26 → 2026-06-30 (+4d) |  | 197d → 195d |
| P2.GP2.14.1610 | Final Testing and Inspection / Group 2 | 2026-06-29 → 2026-07-01 (+2d) | 2026-07-06 → 2026-07-08 (+2d) |  | 197d → 195d |
| P2.GP2.14.1710 | Elevator Acceptance - NIH AHJ / Group 2 | 2026-07-07 → 2026-07-09 (+2d) | 2026-07-13 → 2026-07-15 (+2d) |  | 197d → 195d |
| 3 | **Group 3 - Elevators 94 & 95** |  | 2026-03-03 → 2026-03-19 (+16d) |  |  |
| P2.G3.14.0060 | Hoistway / EMR Ready for Elevator Mobilization (Dry In / Shaft Complete / Power) / Group 3 | 2025-12-12 A | 2025-12-12 A | 0% → 100% | 251d → none |
| P2.GP3.14.610 | Hoists & Cables / Group 3 | 2025-12-30 → 2025-12-15 A (-15d) | 2026-01-06 → 2025-12-19 A (-18d) | 0% → 100% | 251d → none |
| P2.G3.14.0040 | Energize Electrical Disconnects for Elevator Usage / Group 3 | 2025-12-08 → 2025-12-22 A (+14d) | 2025-12-12 → 2025-12-31 A (+19d) | 0% → 100% | 251d → none |
| P2.G3.14.0050 | Frame and Hang Gyp - Elevator Shaft / Group 3 | 2025-12-01 → 2026-01-02 (+32d) | 2025-12-05 → 2026-01-08 (+34d) |  | 251d → 239d |
| P2.GP3.14.410 | Trim out/ Energize EMR Equipment / Group 3 | 2025-12-15 → 2026-01-09 (+25d) | 2025-12-19 → 2026-01-15 (+27d) |  | 251d → 239d |
| P2.GP3.14.510 | Platforms and Counterweight / Group 3 | 2025-12-22 → 2026-01-16 (+25d) | 2025-12-29 → 2026-01-22 (+24d) |  | 251d → 239d |
| P2.GP3.14.910 | Cabs - Wiring - Door Operators / Group 3 | 2026-01-07 → 2026-01-23 (+16d) | 2026-01-13 → 2026-01-29 (+16d) |  | 251d → 239d |
| P2.GP3.14.810 | Hoistway Equipment - Pipe - Wire / Group 3 | 2026-01-14 → 2026-01-30 (+16d) | 2026-01-20 → 2026-02-05 (+16d) |  | 251d → 239d |
| P2.GP3.14.710 | Entrances - Doors - Fixtures - Facia / Group 3 | 2026-01-21 → 2026-02-06 (+16d) | 2026-01-27 → 2026-02-12 (+16d) |  | 251d → 239d |
| P2.GP3.14.1110 | Punchlist & Inspections / Group 3 | 2026-01-28 → 2026-02-13 (+16d) | 2026-02-03 → 2026-02-19 (+16d) |  | 251d → 239d |
| P2.GP3.14.1010 | Adjust & Test - Internal / Group 3 | 2026-02-04 → 2026-02-20 (+16d) | 2026-02-10 → 2026-02-26 (+16d) |  | 251d → 239d |
| P2.GP3.14.1510 | Third Party Testing / Group 3 | 2026-02-11 → 2026-02-27 (+16d) | 2026-02-17 → 2026-03-05 (+16d) |  | 251d → 239d |
| P2.GP3.14.1610 | Final Testing and Inspection / Group 3 | 2026-02-18 → 2026-03-06 (+16d) | 2026-02-24 → 2026-03-12 (+16d) |  | 251d → 239d |
| P2.GP3.14.1710 | Elevator Acceptance - NIH AHJ / Group 3 | 2026-02-25 → 2026-03-13 (+16d) | 2026-03-03 → 2026-03-19 (+16d) |  | 289d → 277d |
| 4 | **Group 4 - Elevators 96 & 97** |  | 2026-03-17 → 2026-04-09 (+23d) |  |  |
| P2.GP4.14.110 | Rails & Brackets / Group 4 |  | 2025-12-19 → 2025-12-31 A (+12d) | 0% → 100% | 241d → none |
| P2.G4.14.00120 | Hoistway / EMR Ready for Elevator Mobilization (Dry In / Shaft Complete / Power) / Group 4 | 2025-12-12 A | 2025-12-12 A | 0% → 100% | 241d → none |
| P2.G4.14.0080 | Electrical Disconnects and Equipment / Group 4 | 2025-12-01 → 2026-01-02 (+32d) | 2025-12-05 → 2026-01-08 (+34d) |  | 241d → 224d |
| P2.G4.14.00100 | Energize Electrical Disconnects for Elevator Usage / Group 4 | 2025-12-08 → 2026-01-09 (+32d) | 2025-12-12 → 2026-01-15 (+34d) |  | 241d → 224d |
| P2.GP4.14.310 | EMR Equipment / Group 4 | 2025-12-22 → 2026-01-16 (+25d) | 2025-12-29 → 2026-01-22 (+24d) |  | 241d → 224d |
| P2.GP4.14.410 | Trim out/ Energize EMR Equipment / Group 4 | 2025-12-30 → 2026-01-23 (+24d) | 2026-01-06 → 2026-01-29 (+23d) |  | 241d → 224d |
| P2.GP4.14.510 | Platforms and Counterweight / Group 4 | 2026-01-07 → 2026-01-30 (+23d) | 2026-01-13 → 2026-02-05 (+23d) |  | 241d → 224d |

| ID | Task | Start | Finish | Total float |
| --- | --- | --- | --- | --- |
| P2.GP4.14.610 | Hoists & Cables / Group 4 | 2026-01-14 → 2026-02-06 (+23d) | 2026-01-20 → 2026-02-12 (+23d) | 241d → 224d |
| P2.GP4.14.910 | Cabs - Wiring - Door Operators / Group 4 | 2026-01-21 → 2026-02-13 (+23d) | 2026-01-27 → 2026-02-19 (+23d) | 241d → 224d |
| P2.GP4.14.810 | Hoistway Equipment - Pipe - Wire / Group 4 | 2026-01-28 → 2026-02-20 (+23d) | 2026-02-03 → 2026-02-26 (+23d) | 241d → 224d |
| P2.GP4.14.710 | Entrances - Doors - Fixtures - Facia / Group 4 | 2026-02-04 → 2026-02-27 (+23d) | 2026-02-10 → 2026-03-05 (+23d) | 241d → 224d |
| P2.GP4.14.1110 | Punchlist & Inspections / Group 4 | 2026-02-11 → 2026-03-06 (+23d) | 2026-02-17 → 2026-03-12 (+23d) | 241d → 224d |
| P2.GP4.14.1010 | Adjust & Test - Internal / Group 4 | 2026-02-18 → 2026-03-13 (+23d) | 2026-02-24 → 2026-03-19 (+23d) | 241d → 224d |
| P2.GP4.14.1510 | Third Party Testing / Group 4 | 2026-02-25 → 2026-03-20 (+23d) | 2026-03-03 → 2026-03-26 (+23d) | 241d → 224d |
| P2.GP4.14.1610 | Final Testing and Inspection / Group 4 | 2026-03-04 → 2026-03-27 (+23d) | 2026-03-10 → 2026-04-02 (+23d) | 241d → 224d |
| P2.GP4.14.1710 | Elevator Acceptance - NIH AHJ / Group 4 | 2026-03-11 → 2026-04-03 (+23d) | 2026-03-17 → 2026-04-09 (+23d) | 279d → 262d |
| 1.Stairs | **STAIRS** |  | 2026-04-15 → 2026-05-08 (+23d) |  |
| 2.9 | **Stair 2-9** | 2025-12-01 → 2026-01-02 (+32d) | 2026-02-05 → 2026-03-09 (+32d) |  |
| P2.2-9.1000 | Framing and Blocking - Interior Walls / Stair 2-9 | 2025-12-01 → 2026-01-02 (+32d) | 2025-12-05 → 2026-01-08 (+34d) | 269d → 247d |
| P2.2-9.1010 | MEP Rough In / Stair 2-9 | 2025-12-08 → 2026-01-09 (+32d) | 2025-12-12 → 2026-01-15 (+34d) | 269d → 247d |
| P2.2-9.1020 | Drywall / Stair 2-9 | 2025-12-15 → 2026-01-16 (+32d) | 2025-12-19 → 2026-01-22 (+34d) | 269d → 247d |
| P2.2-9.1030 | Metal Railings & Handrails / Stair 2-9 | 2025-12-22 → 2026-01-23 (+32d) | 2025-12-29 → 2026-01-29 (+31d) | 269d → 247d |
| P2.2-9.1040 | Prime & Paint Walls / Stair 2-9 | 2025-12-30 → 2026-01-30 (+31d) | 2026-01-06 → 2026-02-05 (+30d) | 269d → 247d |
| P2.2-9.1050 | Trim MEPF & Fixtures / Stair 2-9 | 2026-01-07 → 2026-02-06 (+30d) | 2026-01-13 → 2026-02-12 (+30d) | 269d → 247d |
| P2.2-9.1060 | Flooring / Stair 2-9 | 2026-01-14 → 2026-02-13 (+30d) | 2026-01-20 → 2026-02-19 (+30d) | 269d → 247d |
| P2.2-9.1070 | Doors & Hardware / Stair 2-9 | 2026-01-21 → 2026-02-20 (+30d) | 2026-01-27 → 2026-02-26 (+30d) | 269d → 247d |
| 6 | **Quality Control Inspections - Stair 2-9** | 2026-01-28 → 2026-02-27 (+30d) | 2026-02-05 → 2026-03-09 (+32d) |  |
| P2.2-9.9000 | Trades Inspect & Verify Work Completed to Specs / Stair 2-9 | 2026-01-28 → 2026-02-27 (+30d) | 2026-01-29 → 2026-03-02 (+32d) | 269d → 247d |
| P2.2-9.9010 | Inspect & Prepare Punchlist / Stair 2-9 | 2026-01-30 → 2026-03-03 (+32d) | 2026-01-30 → 2026-03-03 (+32d) | 307d → 285d |
| P2.2-9.9020 | Correct Punchlist / Stair 2-9 | 2026-02-02 → 2026-03-04 (+30d) | 2026-02-03 → 2026-03-05 (+30d) | 307d → 285d |
| P2.2-9.9030 | Final Inspection & Acceptance / Stair 2-9 | 2026-02-04 → 2026-03-06 (+30d) | 2026-02-05 → 2026-03-09 (+32d) | 307d → 285d |
| 5.9 | **Stair 5-9** |  | 2026-01-29 → 2026-03-02 (+32d) |  |
| P2.5-9.1000 | Framing and Blocking - Interior Walls / Stair 5-9 | 2025-12-01 → 2025-12-22 A (+21d) | 2025-12-05 → 2026-01-08 (+34d) | 274d → 252d |
| P2.5-9.1020 | Drywall / Stair 5-9 | 2025-12-08 → 2026-01-09 (+32d) | 2025-12-12 → 2026-01-15 (+34d) | 274d → 252d |
| P2.5-9.1030 | Metal Railings & Handrails / Stair 5-9 | 2025-12-15 → 2026-01-16 (+32d) | 2025-12-19 → 2026-01-22 (+34d) | 274d → 252d |
| P2.5-9.1040 | Prime & Paint Walls / Stair 5-9 | 2025-12-22 → 2026-01-23 (+32d) | 2025-12-29 → 2026-01-29 (+31d) | 274d → 252d |
| P2.5-9.1050 | Trim MEPF & Fixtures / Stair 5-9 | 2025-12-30 → 2026-01-30 (+31d) | 2026-01-06 → 2026-02-05 (+30d) | 274d → 252d |
| P2.5-9.1060 | Flooring / Stair 5-9 | 2026-01-07 → 2026-02-06 (+30d) | 2026-01-13 → 2026-02-12 (+30d) | 274d → 252d |
| P2.5-9.1070 | Doors & Hardware / Stair 5-9 | 2026-01-14 → 2026-02-13 (+30d) | 2026-01-20 → 2026-02-19 (+30d) | 274d → 252d |
| 6 | **Quality Control Inspections - Stair 5-9** | 2026-01-21 → 2026-02-20 (+30d) | 2026-01-29 → 2026-03-02 (+32d) |  |
| P2.5-9.9000 | Trades Inspect & Verify Work Completed to Specs / Stair 5-9 | 2026-01-21 → 2026-02-20 (+30d) | 2026-01-22 → 2026-02-23 (+32d) | 274d → 252d |
| P2.5-9.9010 | Inspect & Prepare Punchlist / Stair 5-9 | 2026-01-23 → 2026-02-24 (+32d) | 2026-01-23 → 2026-02-24 (+32d) | 312d → 290d |
| P2.5-9.9020 | Correct Punchlist / Stair 5-9 | 2026-01-26 → 2026-02-25 (+30d) | 2026-01-27 → 2026-02-26 (+30d) | 312d → 290d |
| P2.5-9.9030 | Final Inspection & Acceptance / Stair 5-9 | 2026-01-28 → 2026-02-27 (+30d) | 2026-01-29 → 2026-03-02 (+32d) | 312d → 290d |
| 2.8 | **Stair 2-8** |  | 2026-02-26 → 2026-03-30 (+32d) |  |
| P2.2-8.1000 | Framing and Blocking - Interior Walls / Stair 2-8 | 2025-12-30 → 2025-12-31 A (+1d) | 2026-01-06 → 2026-02-05 (+30d) | 254d → 232d |
| P2.2-8.1010 | MEP Rough In / Stair 2-8 | 2026-01-07 → 2026-02-06 (+30d) | 2026-01-13 → 2026-02-12 (+30d) | 254d → 232d |
| P2.2-8.1020 | Drywall / Stair 2-8 | 2026-01-14 → 2026-02-13 (+30d) | 2026-01-20 → 2026-02-19 (+30d) | 254d → 232d |
| P2.2-8.1040 | Prime & Paint Walls / Stair 2-8 | 2026-01-21 → 2026-02-20 (+30d) | 2026-01-27 → 2026-02-26 (+30d) | 254d → 232d |
| P2.2-8.1050 | Trim MEPF & Fixtures / Stair 2-8 | 2026-01-28 → 2026-02-27 (+30d) | 2026-02-03 → 2026-03-05 (+30d) | 254d → 232d |
| P2.2-8.1060 | Flooring / Stair 2-8 | 2026-02-04 → 2026-03-06 (+30d) | 2026-02-10 → 2026-03-12 (+30d) | 254d → 232d |
| P2.2-8.1070 | Doors & Hardware / Stair 2-8 | 2026-02-11 → 2026-03-13 (+30d) | 2026-02-17 → 2026-03-19 (+30d) | 254d → 232d |
| 6 | **Quality Control Inspections - Stair 2-8** | 2026-02-18 → 2026-03-20 (+30d) | 2026-02-26 → 2026-03-30 (+32d) |  |
| P2.2-8.9000 | Trades Inspect & Verify Work Completed to Specs / Stair 2-8 | 2026-02-18 → 2026-03-20 (+30d) | 2026-02-19 → 2026-03-23 (+32d) | 254d → 232d |
| P2.2-8.9010 | Inspect & Prepare Punchlist / Stair 2-8 | 2026-02-20 → 2026-03-24 (+32d) | 2026-02-20 → 2026-03-24 (+32d) | 292d → 270d |
| P2.2-8.9020 | Correct Punchlist / Stair 2-8 | 2026-02-23 → 2026-03-25 (+30d) | 2026-02-24 → 2026-03-26 (+30d) | 292d → 270d |
| P2.2-8.9030 | Final Inspection & Acceptance / Stair 2-8 | 2026-02-25 → 2026-03-27 (+30d) | 2026-02-26 → 2026-03-30 (+32d) | 292d → 270d |
| 2.10 | **Stair 2-10** |  | 2026-01-29 → 2026-03-02 (+32d) |  |
| P2.2-10.1000 | Framing and Blocking - Interior Walls / Stair 2-10 | 2025-12-01 → 2026-01-02 (+32d) | 2025-12-05 → 2026-01-08 (+34d) | 274d → 252d |
| P2.2-10.1010 | MEP Rough In / Stair 2-10 | 2025-12-08 → 2026-01-09 (+32d) | 2025-12-12 → 2026-01-15 (+34d) | 274d → 252d |
| P2.2-10.1020 | Drywall / Stair 2-10 | 2025-12-15 → 2026-01-16 (+32d) | 2025-12-19 → 2026-01-22 (+34d) | 274d → 252d |
| P2.2-10.1040 | Prime & Paint Walls / Stair 2-10 | 2025-12-22 → 2026-01-23 (+32d) | 2025-12-29 → 2026-01-29 (+31d) | 274d → 252d |
| P2.2-10.1050 | Trim MEPF & Fixtures / Stair 2-10 | 2025-12-30 → 2026-01-30 (+31d) | 2026-01-06 → 2026-02-05 (+30d) | 274d → 252d |
| P2.2-10.1060 | Flooring / Stair 2-10 | 2026-01-07 → 2026-02-06 (+30d) | 2026-01-13 → 2026-02-12 (+30d) | 274d → 252d |
| P2.2-10.1070 | Doors & Hardware / Stair 2-10 | 2026-01-14 → 2026-02-13 (+30d) | 2026-01-20 → 2026-02-19 (+30d) | 274d → 252d |
| 6 | **Quality Control Inspections - Stair 2-10** | 2026-01-21 → 2026-02-20 (+30d) | 2026-01-29 → 2026-03-02 (+32d) |  |
| P2.2-10.9000 | Trades Inspect & Verify Work Completed to Specs / Stair 2-10 | 2026-01-21 → 2026-02-20 (+30d) | 2026-01-22 → 2026-02-23 (+32d) | 274d → 252d |
| P2.2-10.9010 | Inspect & Prepare Punchlist / Stair 2-10 | 2026-01-23 → 2026-02-24 (+32d) | 2026-01-23 → 2026-02-24 (+32d) | 312d → 290d |
| P2.2-10.9020 | Correct Punchlist / Stair 2-10 | 2026-01-26 → 2026-02-25 (+30d) | 2026-01-27 → 2026-02-26 (+30d) | 312d → 290d |
| P2.2-10.9030 | Final Inspection & Acceptance / Stair 2-10 | 2026-01-28 → 2026-02-27 (+30d) | 2026-01-29 → 2026-03-02 (+32d) | 312d → 290d |
| 3.9 | **Stair 3-9** |  | 2026-02-19 → 2026-03-23 (+32d) |  |
| P2.3-9.1050 | Pour & Finish Stairs / Stair 3-9 | 2025-12-01 → 2026-01-02 (+32d) | 2025-12-05 → 2026-01-08 (+34d) | 259d → 237d |
| P2.3-9.1060 | CURE Stairs / Stair 3-9 | 2025-12-06 → 2026-01-09 (+34d) | 2025-12-12 → 2026-01-15 (+34d) | 374d → 340d |
| P2.3-9.1080 | Framing and Blocking - Interior Walls / Stair 3-9 | 2025-12-15 → 2026-01-16 (+32d) | 2025-12-19 → 2026-01-22 (+34d) | 259d → 237d |
| P2.3-9.1090 | MEP Rough In / Stair 3-9 | 2025-12-22 → 2026-01-23 (+32d) | 2025-12-29 → 2026-01-29 (+31d) | 259d → 237d |
| P2.3-9.1100 | Drywall / Stair 3-9 | 2025-12-30 → 2026-01-30 (+31d) | 2026-01-06 → 2026-02-05 (+30d) | 259d → 237d |
| P2.3-9.1110 | Metal Railings & Handrails / Stair 3-9 | 2026-01-07 → 2026-02-06 (+30d) | 2026-01-13 → 2026-02-12 (+30d) | 259d → 237d |

| ID | Task | Start | Finish | Complete | Total float |
| --- | --- | --- | --- | --- | --- |
| P2.3-9.1120 | Prime & Paint Walls / Stair 3-9 | 2026-01-14 → 2026-02-13 (+30d) | 2026-01-20 → 2026-02-19 (+30d) |  | 259d → 237d |
| P2.3-9.1130 | Trim MEPF & Fixtures / Stair 3-9 | 2026-01-21 → 2026-02-20 (+30d) | 2026-01-27 → 2026-02-26 (+30d) |  | 259d → 237d |
| P2.3-9.1140 | Flooring / Stair 3-9 | 2026-01-28 → 2026-02-27 (+30d) | 2026-02-03 → 2026-03-05 (+30d) |  | 259d → 237d |
| P2.3-9.1150 | Doors & Hardware / Stair 3-9 | 2026-02-04 → 2026-03-06 (+30d) | 2026-02-10 → 2026-03-12 (+30d) |  | 259d → 237d |
| 6 | **Quality Control Inspections - Stair 3-9** | 2026-02-11 → 2026-03-13 (+30d) | 2026-02-19 → 2026-03-23 (+32d) |  |  |
| P2.3-9.9000 | Trades Inspect & Verify Work Completed to Specs / Stair 3-9 | 2026-02-11 → 2026-03-13 (+30d) | 2026-02-12 → 2026-03-16 (+32d) |  | 259d → 237d |
| P2.3-9.9010 | Inspect & Prepare Punchlist / Stair 3-9 | 2026-02-13 → 2026-03-17 (+32d) | 2026-02-13 → 2026-03-17 (+32d) |  | 297d → 275d |
| P2.3-9.9020 | Correct Punchlist / Stair 3-9 | 2026-02-16 → 2026-03-18 (+30d) | 2026-02-17 → 2026-03-19 (+30d) |  | 297d → 275d |
| P2.3-9.9030 | Final Inspection & Acceptance / Stair 3-9 | 2026-02-18 → 2026-03-20 (+30d) | 2026-02-19 → 2026-03-23 (+32d) |  | 297d → 275d |
| 3.10 | **Stair 3-10** |  | 2026-01-29 → 2026-03-02 (+32d) |  |  |
| P2.3-10.1000 | Framing and Blocking - Interior Walls / Stair 3-10 | 2025-12-01 → 2026-01-02 (+32d) | 2025-12-05 → 2026-01-08 (+34d) |  | 274d → 252d |
| P2.3-10.1010 | MEP Rough In / Stair 3-10 | 2025-12-08 → 2026-01-09 (+32d) | 2025-12-12 → 2026-01-15 (+34d) |  | 274d → 252d |
| P2.3-10.1020 | Drywall / Stair 3-10 | 2025-12-15 → 2026-01-16 (+32d) | 2025-12-19 → 2026-01-22 (+34d) |  | 274d → 252d |
| P2.3-10.1040 | Prime & Paint Walls / Stair 3-10 | 2025-12-22 → 2026-01-23 (+32d) | 2025-12-29 → 2026-01-29 (+31d) |  | 274d → 252d |
| P2.3-10.1050 | Trim MEPF & Fixtures / Stair 3-10 | 2025-12-30 → 2026-01-30 (+31d) | 2026-01-06 → 2026-02-05 (+30d) |  | 274d → 252d |
| P2.3-10.1060 | Flooring / Stair 3-10 | 2026-01-07 → 2026-02-06 (+30d) | 2026-01-13 → 2026-02-12 (+30d) |  | 274d → 252d |
| P2.3-10.1070 | Doors & Hardware / Stair 3-10 | 2026-01-14 → 2026-02-13 (+30d) | 2026-01-20 → 2026-02-19 (+30d) |  | 274d → 252d |
| 6 | **Quality Control Inspections - Stair 3-10** | 2026-01-21 → 2026-02-20 (+30d) | 2026-01-29 → 2026-03-02 (+32d) |  |  |
| P2.3-10.9000 | Trades Inspect & Verify Work Completed to Specs / Stair 3-10 | 2026-01-21 → 2026-02-20 (+30d) | 2026-01-22 → 2026-02-23 (+32d) |  | 274d → 252d |
| P2.3-10.9010 | Inspect & Prepare Punchlist / Stair 3-10 | 2026-01-23 → 2026-02-24 (+32d) | 2026-01-23 → 2026-02-24 (+32d) |  | 312d → 290d |
| P2.3-10.9020 | Correct Punchlist / Stair 3-10 | 2026-01-26 → 2026-02-25 (+30d) | 2026-01-27 → 2026-02-26 (+30d) |  | 312d → 290d |
| P2.3-10.9030 | Final Inspection & Acceptance / Stair 3-10 | 2026-01-28 → 2026-02-27 (+30d) | 2026-01-29 → 2026-03-02 (+32d) |  | 312d → 290d |
| 5.8 | **Stair 5-8** | 2026-02-10 → 2026-03-05 (+23d) | 2026-04-15 → 2026-05-08 (+23d) |  |  |
| P2.5-8.1000 | Framing and Blocking - Interior Walls / Stair 5-8 | 2026-02-10 → 2026-03-05 (+23d) | 2026-02-16 → 2026-03-11 (+23d) |  | 220d → 203d |
| P2.5-8.1010 | MEP Rough In / Stair 5-8 | 2026-02-17 → 2026-03-12 (+23d) | 2026-02-23 → 2026-03-18 (+23d) |  | 220d → 203d |
| P2.5-8.1020 | Drywall / Stair 5-8 | 2026-02-24 → 2026-03-19 (+23d) | 2026-03-02 → 2026-03-25 (+23d) |  | 220d → 203d |
| P2.5-8.1030 | Metal Railings & Handrails / Stair 5-8 | 2026-03-03 → 2026-03-26 (+23d) | 2026-03-09 → 2026-04-01 (+23d) |  | 220d → 203d |
| P2.5-8.1040 | Prime & Paint Walls / Stair 5-8 | 2026-03-10 → 2026-04-02 (+23d) | 2026-03-16 → 2026-04-08 (+23d) |  | 220d → 203d |
| P2.5-8.1050 | Trim MEPF & Fixtures / Stair 5-8 | 2026-03-17 → 2026-04-09 (+23d) | 2026-03-23 → 2026-04-15 (+23d) |  | 220d → 203d |
| P2.5-8.1060 | Flooring / Stair 5-8 | 2026-03-24 → 2026-04-16 (+23d) | 2026-03-30 → 2026-04-22 (+23d) |  | 220d → 203d |
| P2.5-8.1070 | Doors & Hardware / Stair 5-8 | 2026-03-31 → 2026-04-23 (+23d) | 2026-04-06 → 2026-04-29 (+23d) |  | 220d → 203d |
| 6 | **Quality Control Inspections - Stair 5-8** | 2026-04-07 → 2026-04-30 (+23d) | 2026-04-15 → 2026-05-08 (+23d) |  |  |
| P2.5-8.9000 | Trades Inspect & Verify Work Completed to Specs / Stair 5-8 | 2026-04-07 → 2026-04-30 (+23d) | 2026-04-08 → 2026-05-01 (+23d) |  | 220d → 203d |
| P2.5-8.9010 | Inspect & Prepare Punchlist / Stair 5-8 | 2026-04-09 → 2026-05-04 (+25d) | 2026-04-09 → 2026-05-04 (+25d) |  | 258d → 241d |
| P2.5-8.9020 | Correct Punchlist / Stair 5-8 | 2026-04-10 → 2026-05-05 (+25d) | 2026-04-13 → 2026-05-06 (+23d) |  | 258d → 241d |
| P2.5-8.9030 | Final Inspection & Acceptance / Stair 5-8 | 2026-04-14 → 2026-05-07 (+23d) | 2026-04-15 → 2026-05-08 (+23d) |  | 258d → 241d |
| 5.10 | **Stair 5-10** |  | 2026-02-05 → 2026-03-02 (+25d) |  |  |
| P2.5-9.9040 | Framing and Blocking - Interior Walls / Stair 5-10 | 2025-12-01 A | 2025-12-05 A | 0% → 100% | 269d → none |
| P2.5-9.9050 | MEP Rough In / Stair 5-10 | 2025-12-08 → 2026-01-02 (+25d) | 2025-12-12 → 2026-01-08 (+27d) |  | 269d → 252d |
| P2.5-9.9060 | Drywall / Stair 5-10 | 2025-12-15 → 2026-01-09 (+25d) | 2025-12-19 → 2026-01-15 (+27d) |  | 269d → 252d |
| P2.5-9.9070 | Metal Railings & Handrails / Stair 5-10 | 2025-12-22 → 2026-01-16 (+25d) | 2025-12-29 → 2026-01-22 (+24d) |  | 269d → 252d |
| P2.5-9.9080 | Prime & Paint Walls / Stair 5-10 | 2025-12-30 → 2026-01-23 (+24d) | 2026-01-06 → 2026-01-29 (+23d) |  | 269d → 252d |
| P2.5-9.9090 | Trim MEPF & Fixtures / Stair 5-10 | 2026-01-07 → 2026-01-30 (+23d) | 2026-01-13 → 2026-02-05 (+23d) |  | 269d → 252d |
| P2.5-9.9100 | Flooring / Stair 5-10 | 2026-01-14 → 2026-02-06 (+23d) | 2026-01-20 → 2026-02-12 (+23d) |  | 269d → 252d |
| P2.5-9.9110 | Doors & Hardware / Stair 5-10 | 2026-01-21 → 2026-02-13 (+23d) | 2026-01-27 → 2026-02-19 (+23d) |  | 269d → 252d |
| 6 | **Quality Control Inspections - Stair 5-10** | 2026-01-28 → 2026-02-20 (+23d) | 2026-02-05 → 2026-03-02 (+25d) |  |  |
| P2.5-10.9000 | Trades Inspect & Verify Work Completed to Specs / Stair 5-10 | 2026-01-28 → 2026-02-20 (+23d) | 2026-01-29 → 2026-02-23 (+25d) |  | 269d → 252d |
| P2.5-10.9010 | Inspect & Prepare Punchlist / Stair 5-10 | 2026-01-30 → 2026-02-24 (+25d) | 2026-01-30 → 2026-02-24 (+25d) |  | 307d → 290d |
| P2.5-10.9020 | Correct Punchlist / Stair 5-10 | 2026-02-02 → 2026-02-25 (+23d) | 2026-02-03 → 2026-02-26 (+23d) |  | 307d → 290d |
| P2.5-10.9030 | Final Inspection & Acceptance / Stair 5-10 | 2026-02-04 → 2026-02-27 (+23d) | 2026-02-05 → 2026-03-02 (+25d) |  | 307d → 290d |
| 6.9 | **Stair 6-9** |  | 2026-02-09 → 2026-03-11 (+30d) |  |  |
| P2.6-9.1000 | Framing and Blocking - Interior Walls / Stair 6-9 |  | 2025-12-09 → 2026-01-12 (+34d) |  | 267d → 245d |
| P2.6-9.1010 | MEP Rough In / Stair 6-9 | 2025-12-10 → 2026-01-13 (+34d) | 2025-12-16 → 2026-01-19 (+34d) |  | 267d → 245d |
| P2.6-9.1020 | Drywall / Stair 6-9 | 2025-12-17 → 2026-01-20 (+34d) | 2025-12-23 → 2026-01-26 (+34d) |  | 267d → 245d |
| P2.6-9.1030 | Metal Railings & Handrails / Stair 6-9 | 2025-12-24 → 2026-01-27 (+34d) | 2025-12-31 → 2026-02-02 (+33d) |  | 267d → 245d |
| P2.6-9.1040 | Prime & Paint Walls / Stair 6-9 | 2026-01-02 → 2026-02-03 (+32d) | 2026-01-08 → 2026-02-09 (+32d) |  | 267d → 245d |
| P2.6-9.1050 | Trim MEPF & Fixtures / Stair 6-9 | 2026-01-09 → 2026-02-10 (+32d) | 2026-01-15 → 2026-02-16 (+32d) |  | 267d → 245d |
| P2.6-9.1060 | Flooring / Stair 6-9 | 2026-01-16 → 2026-02-17 (+32d) | 2026-01-22 → 2026-02-23 (+32d) |  | 267d → 245d |
| P2.6-9.1070 | Doors & Hardware / Stair 6-9 | 2026-01-23 → 2026-02-24 (+32d) | 2026-01-29 → 2026-03-02 (+32d) |  | 267d → 245d |
| 6 | **Quality Control Inspections - Stair 6-9** | 2026-01-30 → 2026-03-03 (+32d) | 2026-02-09 → 2026-03-11 (+30d) |  |  |
| P2.6-9.9000 | Trades Inspect & Verify Work Completed to Specs / Stair 6-9 | 2026-01-30 → 2026-03-03 (+32d) | 2026-02-02 → 2026-03-04 (+30d) |  | 267d → 245d |
| P2.6-9.9010 | Inspect & Prepare Punchlist / Stair 6-9 | 2026-02-03 → 2026-03-05 (+30d) | 2026-02-03 → 2026-03-05 (+30d) |  | 305d → 283d |
| P2.6-9.9020 | Correct Punchlist / Stair 6-9 | 2026-02-04 → 2026-03-06 (+30d) | 2026-02-05 → 2026-03-09 (+32d) |  | 305d → 283d |
| P2.6-9.9030 | Final Inspection & Acceptance / Stair 6-9 | 2026-02-06 → 2026-03-10 (+32d) | 2026-02-09 → 2026-03-11 (+30d) |  | 305d → 283d |
| 4 | **SHAFTS** |  | 2026-02-17 → 2026-03-19 (+30d) |  |  |
| 10 | **MEP Shafts - Z1** |  | 2026-02-17 → 2026-03-19 (+30d) |  |  |
| 2 | **Mechanical Shaft - 2950** |  | 2025-12-19 → 2025-12-30 (+11d) |  |  |
| DDD3140 | Inspections - Close In / Shaft - 2950 | 2025-12-01 → 2025-12-15 A (+14d) | 2025-12-05 → 2025-12-19 A (+14d) | 0% → 100% | 84d → none |
| DDD3150 | Gypsum Shaft Walls / Shaft - 2950 | 2025-12-08 → 2025-12-22 A (+14d) | 2025-12-19 → 2025-12-30 A (+11d) | 0% → 100% | 84d → none |
| 12 | **Mechanical Shaft - 3830** | 2025-12-01 → 2026-01-02 (+32d) | 2026-02-17 → 2026-03-19 (+30d) |  |  |

| ID | Task | Start | Finish | Complete | Total float |
| --- | --- | --- | --- | --- | --- |
| DDD3060 | MEP Systems Install - Risers B2-L4 / Shaft - 3830 | 2025-12-01 → 2026-01-02 (+32d) | 2025-12-05 → 2026-01-08 (+34d) |  | 44d → 22d |
| DDD3310 | MEP Systems Install - Risers L4-L7 / Shaft - 3830 | 2025-12-08 → 2026-01-09 (+32d) | 2025-12-12 → 2026-01-15 (+34d) |  | 44d → 22d |
| DDD3320 | MEP Systems Install - Risers L7-PH / Shaft - 3830 | 2025-12-15 → 2026-01-16 (+32d) | 2025-12-19 → 2026-01-22 (+34d) |  | 44d → 22d |
| DDD3080 | Test Systems - Risers / Shaft - 3830 | 2025-12-22 → 2026-01-23 (+32d) | 2025-12-29 → 2026-01-29 (+31d) |  | 44d → 22d |
| FRG.ROF.7.1000 | Insulate B2-L2 / ROF7 - FRAGNET | 2025-12-30 → 2026-01-30 (+31d) | 2026-01-06 → 2026-02-05 (+30d) |  | 44d → 22d |
| FRG.ROF.7.1010 | Insulate L3-L4 / ROF7 - FRAGNET | 2026-01-07 → 2026-02-06 (+30d) | 2026-01-13 → 2026-02-12 (+30d) |  | 44d → 22d |
| FRG.ROF.7.1020 | Insulate L5-L6 / ROF7 - FRAGNET | 2026-01-14 → 2026-02-13 (+30d) | 2026-01-20 → 2026-02-19 (+30d) |  | 44d → 22d |
| DDD3070 | Insulate - Risers / Shaft - 3830 | 2026-01-21 → 2026-02-20 (+30d) | 2026-01-27 → 2026-02-26 (+30d) |  | 44d → 22d |
| FRG.ROF.7.1030 | Insulate L7-PH / ROF7 - FRAGNET | 2026-01-21 → 2026-02-20 (+30d) | 2026-01-27 → 2026-02-26 (+30d) |  | 44d → 22d |
| DDD3090 | Inspections - Close In / Shaft - 3830 | 2026-01-28 → 2026-02-27 (+30d) | 2026-02-03 → 2026-03-05 (+30d) |  | 44d → 22d |
| DDD3100 | Gypsum Shaft Walls / Shaft - 3830 | 2026-02-04 → 2026-03-06 (+30d) | 2026-02-17 → 2026-03-19 (+30d) |  | 44d → 22d |
| 8 | **Mechanical Shaft - 3902** |  | 2025-12-19 → 2025-12-30 (+11d) |  |  |
| DDD3040 | Inspections - Close In / Shaft - 3902 | 2025-12-01 → 2025-12-15 A (+14d) | 2025-12-05 → 2025-12-19 A (+14d) | 0% → 100% | 84d → none |
| DDD3050 | Gypsum Shaft Walls / Shaft - 3902 | 2025-12-08 → 2025-12-22 A (+14d) | 2025-12-19 → 2025-12-30 A (+11d) | 0% → 100% | 84d → none |
| DDD2990 | Inspections - Close In / Shaft - 3940 | 2025-12-01 A | 2025-12-05 A | 0% → 100% | 84d → none |
| DDD3000 | Gypsum Shaft Walls / Shaft - 3940 | 2025-12-08 A | 2025-12-19 A | 0% → 100% | 84d → none |
| 9 | **Mechanical Shaft - 3959** |  | 2025-12-19 → 2026-01-22 (+34d) |  |  |
| DDD2940 | Inspections - Close In / Shaft - 3959 | 2025-12-01 A | 2025-12-05 → 2025-12-01 A (-4d) | 0% → 100% | 84d → none |
| DDD2950 | Gypsum Shaft Walls / Shaft - 3959 | 2025-12-08 → 2026-01-09 A (+32d) | 2025-12-19 → 2026-01-22 A (+34d) | 0% → 100% | 84d → none |
| 4 | **Mechanical Shaft - 5970** |  | 2026-01-06 → 2026-01-22 (+16d) |  |  |
| FRG.P2.RSJ.6.1130 | Install Clamps L7-PH / RSJ6 - FRAGNET |  | 2025-12-12 → 2025-12-26 A (+14d) | 0% → 100% | 79d → none |
| FRG.P2.RSJ.6.1040 | Insulate L5-L6 / RSJ6 - FRAGNET | 2025-12-01 A | 2025-12-05 A | 0% → 100% | 79d → none |
| FRG.P2.RSJ.6.1050 | Insulate L7-PH / RSJ6 - FRAGNET | 2025-12-08 A | 2025-12-12 A | 0% → 100% | 79d → none |
| DDD2890 | Inspections - Close In / Shaft - 5970 | 2025-12-15 → 2026-01-02 (+18d) | 2025-12-19 → 2026-01-08 (+20d) |  | 79d → 67d |
| DDD2900 | CMU Shaft Walls / Shaft - 5970 | 2025-12-22 → 2026-01-09 (+18d) | 2026-01-06 → 2026-01-22 (+16d) |  | 79d → 67d |
| 1 | **Mechanical Shaft - 5971** |  | 2025-12-19 → 2026-01-22 (+34d) |  |  |
| DDD2840 | Inspections - Close In / Shaft - 5971 | 2025-12-01 → 2026-01-02 (+32d) | 2025-12-05 → 2026-01-08 (+34d) |  | 89d → 67d |
| DDD2850 | Gypsum Shaft Walls / Shaft - 5971 | 2025-12-08 → 2026-01-09 (+32d) | 2025-12-19 → 2026-01-22 (+34d) |  | 89d → 67d |
| 3 | **Mechanical Shaft - 5972** |  | 2025-12-12 → 2026-01-15 (+34d) |  |  |
| DDD2800 | CMU Shaft Walls / Shaft - 5972 | 2025-12-01 → 2026-01-02 (+32d) | 2025-12-12 → 2026-01-15 (+34d) |  | 89d → 67d |
| 5 | **Mechanical Shaft - 5973** |  | 2025-12-19 → 2026-01-22 (+34d) |  |  |
| DDD2740 | Inspections - Close In / Shaft - 5973 |  | 2025-12-05 → 2026-01-08 (+34d) |  | 89d → 67d |
| DDD2750 | CMU Shaft Walls / Shaft - 5973 | 2025-12-08 → 2026-01-09 (+32d) | 2025-12-19 → 2026-01-22 (+34d) |  | 89d → 67d |
| 6 | **Mechanical Shaft - 5975** |  | 2026-01-06 → 2026-01-22 (+16d) |  |  |
| FRG.P2.RSJ.1.1040 | Insulate L5-L6 / RSJ1 - FRAGNET | 2025-12-01 A | 2025-12-05 A | 0% → 100% | 79d → none |
| FRG.P2.RSJ.1.1050 | Insulate L7-PH / RSJ1 - FRAGNET | 2025-12-08 A | 2025-12-12 A | 0% → 100% | 79d → none |
| DDD2690 | Inspections - Close In / Shaft - 5975 | 2025-12-15 → 2026-01-02 (+18d) | 2025-12-19 → 2026-01-08 (+20d) |  | 79d → 67d |
| DDD2700 | CMU Shaft Walls / Shaft - 5975 | 2025-12-22 → 2026-01-09 (+18d) | 2026-01-06 → 2026-01-22 (+16d) |  | 79d → 67d |
| 7 | **Mechanical Shaft - 5976** |  | 2025-12-19 → 2026-01-22 (+34d) |  |  |
| DDD2640 | Inspections - Close In / Shaft - 5976 | 2025-12-01 → 2026-01-02 (+32d) | 2025-12-05 → 2026-01-08 (+34d) |  | 74d → 57d |
| DDD2650 | Gypsum Shaft Walls / Shaft - 5976 | 2025-12-08 → 2026-01-09 (+32d) | 2025-12-19 → 2026-01-22 (+34d) |  | 74d → 57d |
| 10 | **Mechanical Shaft - 3901** | 2025-12-01 → 2026-01-02 (+32d) | 2026-02-10 → 2026-03-12 (+30d) |  |  |
| DDD2560 | MEP Systems Install - Risers B2-L4 / Shaft - 3901 | 2025-12-01 → 2026-01-02 (+32d) | 2025-12-05 → 2026-01-08 (+34d) |  | 49d → 27d |
| DDD3450 | MEP Systems Install - Risers L4-L7 / Shaft - 3901 | 2025-12-08 → 2026-01-09 (+32d) | 2025-12-12 → 2026-01-15 (+34d) |  | 49d → 27d |
| DDD3460 | MEP Systems Install - Risers L7-PH / Shaft - 3901 | 2025-12-15 → 2026-01-16 (+32d) | 2025-12-19 → 2026-01-22 (+34d) |  | 49d → 27d |
| DDD2580 | Test Systems - Risers / Shaft - 3901 | 2025-12-22 → 2026-01-23 (+32d) | 2025-12-29 → 2026-01-29 (+31d) |  | 59d → 37d |
| FRG.RSH.5.1000 | Insulate B2-L2 / RSH5 - FRAGNET | 2025-12-22 → 2026-01-23 (+32d) | 2025-12-29 → 2026-01-29 (+31d) |  | 49d → 27d |
| FRG.RSH.5.1010 | Insulate L3-L4 / RSH5 - FRAGNET | 2025-12-30 → 2026-01-30 (+31d) | 2026-01-06 → 2026-02-05 (+30d) |  | 49d → 27d |
| FRG.RSH.5.1020 | Insulate L5-L6 / RSH5 - FRAGNET | 2026-01-07 → 2026-02-06 (+30d) | 2026-01-13 → 2026-02-12 (+30d) |  | 49d → 27d |
| DDD2570 | Insulate - Risers / Shaft - 3901 | 2026-01-14 → 2026-02-13 (+30d) | 2026-01-20 → 2026-02-19 (+30d) |  | 49d → 27d |
| FRG.RSH.5.1030 | Insulate L7-PH / RSH5 - FRAGNET | 2026-01-14 → 2026-02-13 (+30d) | 2026-01-20 → 2026-02-19 (+30d) |  | 49d → 27d |
| DDD2590 | Inspections - Close In / Shaft - 3901 | 2026-01-21 → 2026-02-20 (+30d) | 2026-01-27 → 2026-02-26 (+30d) |  | 49d → 27d |
| DDD2600 | Gypsum Shaft Walls / Shaft - 3901 | 2026-01-28 → 2026-02-27 (+30d) | 2026-02-10 → 2026-03-12 (+30d) |  | 49d → 27d |
| 11 | **MEP Shafts - Z2** |  | 2025-12-05 → 2026-01-05 (+31d) |  |  |
| 1 | **Mechanical Shaft - 2948** |  | 2025-12-05 → 2026-01-05 (+31d) |  |  |
| DDD2150 | Gypsum Shaft Walls / Shaft - 2948 |  | 2025-12-05 → 2026-01-05 (+31d) | 50% → 80% | 94d → 75d |
| 12 | **MEP Shafts - Z3** |  | 2026-01-23 → 2026-02-19 (+27d) |  |  |
| 7 | **Mechanical Shaft - 2800** |  | 2025-12-29 → 2026-01-29 (+31d) |  |  |
| DDD2170 | Insulate - Risers / Shaft - 2800 | 2025-12-01 → 2026-01-02 (+32d) | 2025-12-05 → 2026-01-08 (+34d) |  | 79d → 57d |
| DDD2190 | Inspections - Close In / Shaft - 2800 | 2025-12-08 → 2026-01-09 (+32d) | 2025-12-12 → 2026-01-15 (+34d) |  | 79d → 57d |
| DDD2200 | Gypsum Shaft Walls / Shaft - 2800 | 2025-12-15 → 2026-01-16 (+32d) | 2025-12-29 → 2026-01-29 (+31d) |  | 79d → 57d |
| 1 | **Mechanical Shaft - 2801** |  | 2025-12-12 → 2026-01-15 (+34d) |  |  |
| DDD2250 | CMU Shaft Walls / Shaft - 2801 | 2025-12-01 → 2026-01-02 (+32d) | 2025-12-12 → 2026-01-15 (+34d) |  | 164d → 147d |
| 5 | **Mechanical Shaft - 2803** |  | 2026-01-23 → 2026-02-19 (+27d) |  |  |
| FRG.REC.0.1040 | Install L1-L4 / REC0 - FRAGNET |  | 2025-12-03 → 2025-12-17 A (+14d) | 70% → 100% | 60d → none |
| FRG.REC.0.1050 | Install L5-PH / REC0- FRAGNET |  | 2025-12-11 → 2026-01-05 (+25d) | 40% → 80% | 60d → 45d |
| FRG.REC.0.1000 | Insulate L1-L2 / REC0 - FRAGNET | 2025-12-04 → 2026-01-02 (+29d) | 2025-12-10 → 2026-01-08 (+29d) |  | 61d → 42d |
| DDD2330 | Test Systems - Risers / Shaft - 2803 | 2025-12-12 → 2026-01-06 (+25d) | 2025-12-18 → 2026-01-12 (+25d) |  | 60d → 45d |
| FRG.REC.0.1010 | Insulate L3-L4 / REC0- FRAGNET | 2025-12-11 → 2026-01-09 (+29d) | 2025-12-17 → 2026-01-15 (+29d) |  | 61d → 42d |
| FRG.REC.0.1020 | Insulate L5-L6 / REC0- FRAGNET | 2025-12-18 → 2026-01-16 (+29d) | 2025-12-24 → 2026-01-22 (+29d) |  | 61d → 42d |

| ID | Task | Start | Finish | Complete | Total float |
| --- | --- | --- | --- | --- | --- |
| DDD2320 | Insulate - Risers / Shaft - 2803 | 2025-12-26 → 2026-01-23 (+28d) | 2026-01-02 → 2026-01-29 (+27d) |  | 61d → 42d |
| FRG.REC.0.1030 | Insulate L7-PH / REC0- FRAGNET | 2025-12-26 → 2026-01-23 (+28d) | 2026-01-02 → 2026-01-29 (+27d) |  | 61d → 42d |
| DDD2340 | Inspections - Close In / Shaft - 2803 | 2026-01-05 → 2026-01-30 (+25d) | 2026-01-09 → 2026-02-05 (+27d) |  | 61d → 42d |
| DDD2350 | CMU Shaft Walls / Shaft - 2803 | 2026-01-12 → 2026-02-06 (+25d) | 2026-01-23 → 2026-02-19 (+27d) |  | 61d → 42d |
| 3 | **Mechanical Shaft - 2805** |  | 2025-12-19 → 2026-01-22 (+34d) |  |  |
| DDD2390 | Inspections - Close In / Shaft - 2805 | 2025-12-01 → 2026-01-02 (+32d) | 2025-12-05 → 2026-01-08 (+34d) |  | 89d → 67d |
| DDD2400 | CMU Shaft Walls / Shaft - 2805 | 2025-12-08 → 2026-01-09 (+32d) | 2025-12-19 → 2026-01-22 (+34d) |  | 89d → 67d |
| 4 | **Mechanical Shaft - 2806** |  | 2026-01-20 → 2026-01-22 (+2d) |  |  |
| FRG.REE.9.1010 | Insulate B2-L2 / REE9 - FRAGNET | 2025-12-01 → 2025-12-15 A (+14d) | 2025-12-05 → 2025-12-19 A (+14d) | 0% → 100% | 64d → none |
| FRG.REE.9.1020 | Insulate L3-L4 / REE9 - FRAGNET | 2025-12-08 → 2025-12-15 A (+7d) | 2025-12-12 → 2025-12-19 A (+7d) | 0% → 100% | 64d → none |
| FRG.REE.9.1030 | Insulate L5-L6 / REE9 - FRAGNET | 2025-12-15 → 2025-12-19 A (+4d) | 2025-12-19 → 2025-12-26 A (+7d) | 0% → 100% | 64d → none |
| FRG.REE.9.1040 | Insulate L7-PH / REE9 - FRAGNET | 2025-12-22 → 2025-12-19 A (-3d) | 2025-12-29 → 2025-12-26 A (-3d) | 0% → 100% | 64d → none |
| DDD2440 | Inspections - Close In / Shaft - 2806 | 2025-12-30 → 2026-01-02 (+3d) | 2026-01-06 → 2026-01-08 (+2d) |  | 64d → 62d |
| DDD2450 | CMU Shaft Walls / Shaft - 2806 | 2026-01-07 → 2026-01-09 (+2d) | 2026-01-20 → 2026-01-22 (+2d) |  | 64d → 62d |
| FRG.REF.9.1070 | Install Clamps L3-L4 / REF9 - FRAGNET |  | 2025-12-09 A | 60% → 100% | 137d → none |
| DDD2480 | Test Systems - Risers / Shaft - 2807 | 2025-12-01 A | 2025-12-05 A | 0% → 100% | 64d → none |
| FRG.REF.9.1010 | Prep/Test Riser / REF9 - FRAGNET | 2025-12-01 A | 2025-12-05 A | 0% → 100% | 64d → none |
| FRG.REF.9.1030 | Insulate L3-L4 / REF9 - FRAGNET | 2025-12-17 → 2025-12-01 A (-16d) | 2025-12-23 → 2025-12-10 A (-13d) | 0% → 100% | 137d → none |
| FRG.REF.9.1020 | Insulate B2-L2 / REF9 - FRAGNET | 2025-12-10 → 2025-12-15 A (+5d) | 2025-12-16 → 2025-12-19 A (+3d) | 0% → 100% | 137d → none |
| FRG.REF.9.1090 | Install Clamps L7-PH / REF9 - FRAGNET | 2025-12-10 → 2025-12-15 A (+5d) | 2025-12-16 → 2025-12-19 A (+3d) | 0% → 100% | 147d → none |
| FRG.REF.9.1040 | Insulate L5-L6 / REF9 - FRAGNET | 2025-12-24 → 2025-12-19 A (-5d) | 2025-12-31 → 2025-12-26 A (-5d) | 0% → 100% | 137d → none |
| FRG.REF.9.1050 | Insulate L7-PH / REF9 - FRAGNET | 2025-12-24 → 2025-12-19 A (-5d) | 2025-12-31 → 2025-12-26 A (-5d) | 0% → 100% | 137d → none |
| 9 | **Mechanical Shaft - 2809** |  | 2025-12-19 → 2026-01-22 (+34d) |  |  |
| DDD3240 | Inspections - Close In / Shaft - 2809 | 2025-12-01 → 2026-01-02 (+32d) | 2025-12-05 → 2026-01-08 (+34d) |  | 59d → 42d |
| DDD3250 | CMU Shaft Walls / Shaft - 2809 | 2025-12-08 → 2026-01-09 (+32d) | 2025-12-19 → 2026-01-22 (+34d) |  | 59d → 42d |
| 8 | **Mechanical Shaft - 2810** |  | 2026-01-20 → 2026-01-22 (+2d) |  |  |
| FRG.RNA.7.1020 | Insulate B2-L2 / RNA7 - FRAGNET | 2025-12-01 → 2025-12-18 A (+17d) | 2025-12-05 → 2025-12-19 A (+14d) | 0% → 100% | 64d → none |
| FRG.RNA.7.1030 | Insulate L3-L4 / RNA7 - FRAGNET | 2025-12-08 → 2025-12-18 A (+10d) | 2025-12-12 → 2025-12-19 A (+7d) | 0% → 100% | 64d → none |
| FRG.RNA.7.1040 | Insulate L5-L6 / RNA7 - FRAGNET | 2025-12-15 → 2025-12-19 A (+4d) | 2025-12-19 → 2025-12-31 A (+12d) | 0% → 100% | 64d → none |
| FRG.RNA.7.1050 | Insulate L7-PH / RNA7 - FRAGNET | 2025-12-22 → 2025-12-19 A (-3d) | 2025-12-29 → 2025-12-31 A (+2d) | 0% → 100% | 64d → none |
| DDD2540 | Inspections - Close In / Shaft - 2810 | 2025-12-30 → 2026-01-02 (+3d) | 2026-01-06 → 2026-01-08 (+2d) |  | 64d → 62d |
| DDD2550 | Gypsum Shaft Walls / Shaft - 2810 | 2026-01-07 → 2026-01-09 (+2d) | 2026-01-20 → 2026-01-22 (+2d) |  | 64d → 62d |
| 1 | **PH 2 MATERIAL MOVEMENT SYSTEMS** |  | 2028-09-05 → 2028-09-25 (+20d) |  |  |
| 1 | **PNUEMATIC TUBE - P2** |  | 2026-08-05 → 2026-09-01 (+27d) |  |  |
| P2.PT.1120 | Install Shaft 3902 P-Tube System / B2-L6 |  | 2026-02-16 → 2025-12-24 A (-54d) | 10% → 100% | 260d → none |
| P2.PT.1080 | Install B1 P-Tube System up to Level 1 from existing building / Z1 | 2025-12-30 → 2025-12-15 A (-15d) | 2026-01-06 → 2025-12-19 A (-18d) | 0% → 100% | 260d → none |
| P2.PT.1180 | Install L5 P-Tube Stations / Z1 | 2025-12-01 → 2026-01-02 (+32d) | 2025-12-05 → 2026-01-08 (+34d) |  | 309d → 287d |
| P2.PT.1150 | Install L4 P-Tube System for L3 Station / L4 Interstitial | 2026-01-07 → 2026-01-30 (+23d) | 2026-01-13 → 2026-02-05 (+23d) |  | 260d → 252d |
| P2.PT.1160 | Install L4 P-Tube System - Transfer 311 to existing building / L4 Interstitial | 2026-01-14 → 2026-02-06 (+23d) | 2026-01-20 → 2026-02-12 (+23d) |  | 260d → 252d |
| P2.PT.1190 | Install L6 P-Tube Blowers & Transfer Units / L6 Interstitial | 2026-01-21 → 2026-02-13 (+23d) | 2026-02-03 → 2026-02-26 (+23d) |  | 260d → 252d |
| P2.PT.2000 | Tie-In Permanent Power to P-Tube System | 2026-02-04 → 2026-02-27 (+23d) | 2026-02-10 → 2026-03-05 (+23d) |  | 269d → 252d |
| P2.PT.1100 | Install L1 P-Tube Station Trim-Out / Z2 | 2026-03-13 → 2026-04-13 (+31d) | 2026-03-16 → 2026-04-14 (+29d) |  | 245d → 224d |
| P2.PT.2050 | Install L1 P-Tube Station Trim-Out / Z3 | 2026-03-13 → 2026-04-13 (+31d) | 2026-03-16 → 2026-04-14 (+29d) |  | 245d → 224d |
| P2.PT.2060 | Install L3 P-Tube Station Trim-Out / Z1 & Z2 | 2026-07-28 → 2026-07-08 (-20d) | 2026-07-29 → 2026-07-09 (-20d) |  | 150d → 164d |
| P2.PT.2090 | Install L5 P-Tube Stations Trim-Out / Z1 | 2026-07-15 → 2026-07-24 (+9d) | 2026-07-21 → 2026-07-30 (+9d) |  | 156d → 149d |
| P2.PT.2020 | Install B2 P-Tube Station TrimOut / B2-2830A | 2026-07-20 → 2026-08-19 (+30d) | 2026-07-24 → 2026-08-25 (+32d) |  | 153d → 131d |
| P2.PT.2010 | Test Systems -Full System / All Levels | 2026-07-30 → 2026-08-26 (+27d) | 2026-08-05 → 2026-09-01 (+27d) |  | 150d → 131d |
| 1 | **PNUEMATIC TUBE - P5 (Needed for P2)** | 2025-12-01 → 2026-01-02 (+32d) | 2025-12-29 → 2026-01-29 (+31d) |  |  |
| P2.PT.1020 | Install B1 P-Tube System in existing building / F-Wing B1 | 2025-12-01 → 2026-01-02 (+32d) | 2025-12-29 → 2026-01-29 (+31d) |  | 260d → 252d |
| 3 | **PNUEMATIC TUBE - P5** | 2028-07-03 → 2028-07-24 (+21d) | 2028-09-05 → 2028-09-25 (+20d) |  |  |
| P5.PT.1010 | Install L2 P-Tube System in existing building - Transfer 212 to Level 1 / F-Wing L2 intersitial | 2028-07-03 → 2028-07-24 (+21d) | 2028-07-17 → 2028-08-04 (+18d) |  | 80d → 66d |
| P5.PT.1000 | Install L1 P-Tube System & Station in existing building / F-Wing L1 - 1-3835 to 1-3823B | 2028-07-18 → 2028-08-07 (+20d) | 2028-07-24 → 2028-08-11 (+18d) |  | 80d → 66d |
| P5.PT.1030 | Install L4 P-Tube System in existing building / F-Wing L4 intersitial | 2028-07-25 → 2028-08-14 (+20d) | 2028-08-07 → 2028-08-25 (+18d) |  | 80d → 66d |
| P5.PT.1020 | Install L3 P-Tube System & Stations (3) in existing building / F-Wing L3 future clinical space | 2028-08-08 → 2028-08-28 (+20d) | 2028-08-21 → 2028-09-11 (+21d) |  | 80d → 66d |
| P5.PT.1040 | Test System - Phase 5 (All Levels) / F-Wing | 2028-08-22 → 2028-09-12 (+21d) | 2028-09-05 → 2028-09-25 (+20d) |  | 80d → 66d |
| 2 | **ELECTRIC TRACK VEHICLE (ETV) - P2** |  | 2026-03-17 → 2026-04-16 (+30d) |  |  |
| P2.ETV.1040 | Install Track at L5 | 2025-12-01 → 2025-12-08 A (+7d) | 2025-12-05 → 2025-12-24 A (+19d) | 0% → 100% | 304d → none |
| P2.ETV.1060 | Test Systems - Risers (L1-6) / Shaft - 2808 | 2025-12-01 → 2026-01-02 (+32d) | 2025-12-05 → 2026-01-08 (+34d) |  | 9d → -13d |
| P2.ETV.1090 | Install Hangars at L6 | 2025-12-01 → 2026-01-02 (+32d) | 2025-12-05 → 2026-01-08 (+34d) |  | 294d → 272d |
| P2.ETV.1070 | Inspections - Close In / Shaft - 2808 | 2025-12-08 → 2026-01-09 (+32d) | 2025-12-12 → 2026-01-15 (+34d) |  | 9d → -13d |
| P2.ETV.1100 | Install Track at L6 | 2025-12-08 → 2026-01-09 (+32d) | 2025-12-19 → 2026-01-22 (+34d) |  | 294d → 272d |
| P2.ETV.1080 | Gypsum Shaft Walls & Acess Doors / Shaft - 2808 | 2025-12-15 → 2026-01-16 (+32d) | 2025-12-29 → 2026-01-29 (+31d) |  | 9d → -13d |
| P2.ETV.1120 | Install Trolley System | 2026-02-25 → 2026-03-27 (+30d) | 2026-03-03 → 2026-04-02 (+30d) |  | 249d → 227d |
| P2.ETV.1130 | Tie-In Permanent Power to ETV | 2026-03-04 → 2026-04-03 (+30d) | 2026-03-10 → 2026-04-09 (+30d) |  | 249d → 227d |
| P2.ETV.1140 | Test Systems -Full System / All Levels | 2026-03-11 → 2026-04-10 (+30d) | 2026-03-17 → 2026-04-16 (+30d) |  | 249d → 227d |
| 1 | **ELECTRIC TRACK VEHICLE (ETV) - P5 (Needed for P2)** | 2026-02-18 → 2026-03-20 (+30d) | 2026-02-24 → 2026-03-26 (+30d) |  |  |
| P5.ETV.1110 | Install Track at B2 & make existing buliding connection | 2026-02-18 → 2026-03-20 (+30d) | 2026-02-24 → 2026-03-26 (+30d) |  | 249d → 227d |
| 5 | **PH 2 - CORE & SUPPORT / LAB & CLINICAL / INTERSTITIAL SPACES** |  | 2026-12-29 → 2027-01-21 (+23d) |  |  |
| B3 | **B3 BUILDOUT (7K SF)** |  | 2026-04-21 → 2026-05-22 (+31d) |  |  |
| B3 | **ROUGH IN / Mechanical B3-5970** |  | 2026-03-03 → 2026-03-26 (+23d) |  |  |

| ID | Task | Start | Finish | Complete | Total float | Predecessors |
| --- | --- | --- | --- | --- | --- | --- |
| P2.B3.1200 | Control Wiring to Equipment / Mech B3-5970 | 2025-12-01 A | 2025-12-05 A | 0% → 100% | 74d → none |  |
| P2.B3.1210 | OH - HVAC Piping - Test / Mech B3-5970 | 2025-12-01 A | 2025-12-05 A | 0% → 100% | 54d → none |  |
| P2.B3.1220 | OH - Insulate Plumbing / Mech B3-5970 | 2025-12-01 → 2026-01-02 (+32d) | 2025-12-05 → 2026-01-08 (+34d) |  | 69d → 47d |  |
| P2.B3.1320 | Pull Wire - Low Volt - Fire Alarm / Mech B3-5970 | 2025-12-01 → 2026-01-02 (+32d) | 2025-12-05 → 2026-01-08 (+34d) |  | 74d → 52d |  |
| P2.B3.1330 | Pull Wire - Low Volt - Telecom / Mech B3-5970 | 2025-12-01 → 2026-01-02 (+32d) | 2025-12-05 → 2026-01-08 (+34d) |  | 74d → 52d |  |
| P2.B3.1340 | Pull Wire - Low Volt - Security / Mech B3-5970 | 2025-12-01 → 2026-01-02 (+32d) | 2025-12-05 → 2026-01-08 (+34d) |  | 74d → 52d |  |
| P2.B3.2110 | Paint - CMU Block Fill / Mech B3-5970 | 2025-12-01 → 2026-01-02 (+32d) | 2025-12-02 → 2026-01-05 (+34d) |  | 77d → 55d |  |
| P2.B3.1080 | Paint Prime & 1st Coat / Mech B3-5970 | 2025-12-03 → 2026-01-06 (+34d) | 2025-12-04 → 2026-01-07 (+34d) |  | 77d → 55d |  |
| P2.B3.1240 | Firestop - Thru Wall / Mech B3-5970 | 2025-12-08 → 2026-01-09 (+32d) | 2025-12-12 → 2026-01-15 (+34d) |  | 69d → 47d |  |
| P2.B3.1250 | OH - HVAC Piping - Equip Tie In / Mech B3-5970 | 2026-01-28 → 2026-02-20 (+23d) | 2026-02-10 → 2026-03-05 (+23d) |  | 19d → 2d |  |
| P2.B3.1260 | OH - Insulate HVAC Pipe / Mech B3-5970 | 2026-02-11 → 2026-03-06 (+23d) | 2026-02-24 → 2026-03-19 (+23d) |  | 19d → 2d |  |
| P2.B3.1350 | Trades Inspect & Verify R/I Work Completed to Specs / Mech B3-5970 | 2026-02-25 → 2026-03-20 (+23d) | 2026-03-03 → 2026-03-26 (+23d) |  | 19d → 2d |  |
| 5 | **FINISHES / Mechanical B3-5970** | 2026-03-04 → 2026-03-27 (+23d) | 2026-04-21 → 2026-05-22 (+31d) |  |  |  |
| P2.B3.2000 | Paint - Finish Coat / Mech B3-5970 | 2026-03-04 → 2026-03-27 (+23d) | 2026-03-05 → 2026-03-30 (+25d) |  | 221d → 204d |  |
| P2.B3.2010 | Trim All MEPF Finishes / Mech B3-5970 | 2026-03-06 → 2026-03-31 (+25d) | 2026-03-09 → 2026-04-01 (+23d) |  | 224d → 207d |  |
| P2.B3.2090 | Flooring Prep - Epoxy Floors / Mech B3-5970 & B3-6901 | 2026-03-06 → 2026-03-31 (+25d) | 2026-03-12 → 2026-04-06 (+25d) |  | 221d → 204d |  |
| P2.B3.2020 | Flooring - Epoxy Floors / Mech B3-5970 & B3-6901 | 2026-03-13 → 2026-04-07 (+25d) | 2026-03-16 → 2026-04-08 (+23d) |  | 221d → 204d |  |
| P2.B3.2030 | Doors & Hardware / Mech B3-5970 | 2026-03-31 → 2026-05-01 (+31d) | 2026-04-01 → 2026-05-04 (+33d) |  | 211d → 188d |  |
| P2.B3.2040 | Work Completion List / Mech B3-5970 | 2026-04-02 → 2026-05-05 (+33d) | 2026-04-08 → 2026-05-11 (+33d) |  | 211d → 188d |  |
| P2.B3.2050 | Rough Clean / Mech B3-5970 | 2026-04-09 → 2026-05-12 (+33d) | 2026-04-10 → 2026-05-13 (+33d) |  | 211d → 188d |  |
| P2.B3.2060 | Punchlist / Mech B3-5970 | 2026-04-13 → 2026-05-14 (+31d) | 2026-04-17 → 2026-05-20 (+33d) |  | 211d → 188d |  |
| P2.B3.2070 | Final Clean / Mech B3-5970 | 2026-04-20 → 2026-05-21 (+31d) | 2026-04-21 → 2026-05-22 (+31d) |  | 211d → 188d |  |
| B2 | **B2/B1 BUILDOUT** |  | 2026-12-02 → 2027-01-05 (+34d) |  |  |  |
| B2 | **CORE & SUPPORT SPACES / LEVEL B2/B1** |  | 2026-11-30 → 2026-12-31 (+31d) |  |  |  |
| 2 | **ROUGH IN - Core & Support Spaces / Level B2/B1** |  | 2026-07-27 → 2026-08-17 (+21d) |  |  |  |
| 2 | **South Corridor (5900-5930)** |  | 2025-12-17 → 2026-01-20 (+34d) |  |  |  |
| P2.B2.SC.1250 | OH Electrical (Bus/Branch/Tray) / B2 / South Corridor |  | 2025-12-10 → 2026-01-13 (+34d) |  | 91d → 69d |  |
| P2.B2.SC.1290 | Trades Inspect & Verify R/I Work Completed to Specs / B2 / South Corridor | 2025-12-11 → 2026-01-14 (+34d) | 2025-12-17 → 2026-01-20 (+34d) |  | 91d → 69d |  |
| 6 | **West Corridor (3900, 2910, 2810, 2800)** |  | 2025-12-12 → 2026-01-15 (+34d) |  |  |  |
| P2.B2.WC.1250 | OH Low Electrical (Bus/Tray) / B2 / West Corridor |  | 2025-12-05 → 2026-01-08 (+34d) |  | 72d → 50d |  |
| P2.B2.WC.1280 | Trades Inspect & Verify R/I Work Completed to Specs / B2 / West Corridor | 2025-12-08 → 2026-01-09 (+32d) | 2025-12-12 → 2026-01-15 (+34d) |  | 94d → 72d |  |
| 7 | **East Corridor (3910, 2900, 2810, 2830)** |  | 2026-04-01 → 2026-05-01 (+30d) |  |  |  |
| P2.B2.WC.1590 | OH Electrical (Bus/Tray/Branch) / B2 / East Corridor |  | 2025-12-09 → 2026-01-12 (+34d) |  | 72d → 50d |  |
| P2.B2.WC.1620 | Hang-Tape-Finish / B2 / East Corridor | 2026-02-26 → 2026-03-30 (+32d) | 2026-03-18 → 2026-04-17 (+30d) |  | 18d → -4d |  |
| P2.B2.WC.1630 | Fire Caulk MEPF Penetrations / B2 / East Corridor | 2026-03-19 → 2026-04-20 (+32d) | 2026-03-25 → 2026-04-24 (+30d) |  | 18d → -4d |  |
| P2.B2.WC.1640 | Trades Inspect & Verify R/I Work Completed to Specs / B2 / East Corridor | 2026-03-26 → 2026-04-27 (+32d) | 2026-04-01 → 2026-05-01 (+30d) |  | 18d → -4d |  |
| Z1 | **South (20K SF) / Level B2/B1** |  | 2026-04-15 → 2026-05-08 (+23d) |  |  |  |
| P2.B2.S.1460 | AHJ Inspections - Wall Close In / B2 / South |  | 2025-12-12 A | 0% → 100% | 59d → none |  |
| P2.B2.S.1370 | OH - Conduit - Low Volt - BAS/Controls / B2 / South |  | 2025-12-05 → 2026-01-08 (+34d) |  | 59d → 3d |  |
| P2.B2.S.1360 | Pull Wire - Electrical - 208/120v Branch & Equip / B2 / South | 2025-12-08 → 2025-11-17 A (-21d) | 2025-12-19 → 2026-01-22 (+34d) |  | 84d → 3d |  |
| P2.B2.S.1500 | Pull Wire - Low Volt - BAS/Controls / B2 / South | 2026-03-19 → 2026-01-02 (-76d) | 2026-04-01 → 2026-01-15 (-76d) |  | 13d → 67d | P2.B2.S.1470 → none |
| P2.B2.S.1510 | Pull Wire - Low Volt - Fire Alarm / B2 / South | 2026-03-19 → 2026-01-02 (-76d) | 2026-04-01 → 2026-01-15 (-76d) |  | 13d → 67d | P2.B2.S.1470 → none |
| P2.B2.S.1520 | Pull Wire - Low Volt - Telecom / B2 / South | 2026-03-19 → 2026-01-02 (-76d) | 2026-04-01 → 2026-01-15 (-76d) |  | 13d → 67d | P2.B2.S.1470 → none |
| P2.B2.S.1530 | Pull Wire - Low Volt - Security / B2 / South | 2026-03-19 → 2026-01-02 (-76d) | 2026-04-01 → 2026-01-15 (-76d) |  | 13d → 67d | P2.B2.S.1470 → none |
| P2.B2.S.1540 | Pull Wire - Low Volt - Medical Services/Nurse Call (?) / B2 / South | 2026-03-19 → 2026-01-02 (-76d) | 2026-04-01 → 2026-01-15 (-76d) |  | 13d → 67d | P2.B2.S.1470 → none |
| P2.B2.S.1330 | OH - HVAC Piping - Equip Tie In / B2 / South | 2026-01-28 → 2026-02-20 (+23d) | 2026-02-10 → 2026-03-05 (+23d) |  | 49d → 32d |  |
| P2.B2.S.1470 | Hang-Tape-Finish - Walls and Hard Lid Ceilings / B2 / South | 2026-02-26 → 2026-03-30 (+32d) | 2026-03-18 → 2026-04-17 (+30d) |  | 8d → -9d |  |
| P2.B2.S.1480 | Spray/Seal/Firestop - Head of Wall / B2 / South | 2026-03-19 → 2026-04-20 (+32d) | 2026-04-01 → 2026-05-01 (+30d) |  | 13d → -9d |  |
| P2.B2.S.1490 | Firestop - Thru Wall / B2 / South | 2026-03-19 → 2026-04-20 (+32d) | 2026-04-01 → 2026-05-01 (+30d) |  | 13d → -9d |  |
| P2.B2.S.1550 | Trades Inspect & Verify R/I Work Completed to Specs / B2 / South | 2026-04-09 → 2026-05-04 (+25d) | 2026-04-15 → 2026-05-08 (+23d) |  | 8d → -9d | P2.B2.S.1490, P2.B2.S.1480, P2.B2.S.1530, P2.B2.S.1540, P2.B2.S.1360, P2.B2.S.1500, P2.B2.S.1510, P2.B2.S.1520, P2.B2.M.5970.1420, P2.B2.M.5970, P2.B2.S.1330 → P2.B2.S.1490, P2.B2.S.1480, P2.B2.S.1530, P2.B2.S.1540, P2.B2.S.1360, P2.B2.S.1500, P2.B2.S.1510, P2.B2.S.1520, P2.B2.S.1330 |
| Z2-3 | **North (17K SF) / Level B2/B1** |  | 2026-04-08 → 2026-05-08 (+30d) |  |  |  |
| P2.B2.N.1320 | OH - Electrical - Equip Tie In / B2 / North |  | 2025-12-05 → 2026-01-08 (+34d) |  | 84d → 62d |  |
| P2.B2.N.1390 | OH - Conduit - Low Volt - Telecom / B2 / North | 2025-12-01 → 2026-01-02 (+32d) | 2025-12-12 → 2026-01-15 (+34d) |  | 79d → 57d |  |
| P2.B2.N.1410 | OH - Conduit - Low Volt - Medical Services/Nurse Call (?) / B2 / North | 2025-12-01 → 2026-01-02 (+32d) | 2025-12-12 → 2026-01-15 (+34d) |  | 79d → 57d |  |
| P2.B2.N.1360 | Pull Wire - Electrical - 208/120v Branch & Equip / B2 / North | 2025-12-30 → 2026-01-29 (+30d) | 2026-01-13 → 2026-02-11 (+29d) |  | 69d → 48d |  |
| P2.B2.N.1450 | In Wall - Backing/Blocking/Supports / B2 / North | 2025-12-30 → 2026-01-29 (+30d) | 2026-01-06 → 2026-02-04 (+29d) |  | 44d → 23d |  |
| P2.B2.N.1460 | AHJ Inspections - Wall Close In / B2 / North | 2026-01-07 → 2026-02-05 (+29d) | 2026-01-13 → 2026-02-11 (+29d) |  | 44d → 23d |  |
| P2.B2.N.1330 | OH - HVAC Piping - Equip Tie In / B2 / North | 2026-01-28 → 2026-02-20 (+23d) | 2026-02-10 → 2026-03-05 (+23d) |  | 49d → 32d |  |
| P2.B2.N.1470 | Hang-Tape-Finish - Walls and Hard Lid Ceilings / B2 / North | 2026-02-26 → 2026-03-30 (+32d) | 2026-03-18 → 2026-04-17 (+30d) |  | 13d → -9d |  |
| P2.B2.N.1480 | Spray/Seal/Firestop - Head of Wall / B2 / North | 2026-03-19 → 2026-04-20 (+32d) | 2026-04-01 → 2026-05-01 (+30d) |  | 13d → -9d |  |
| P2.B2.N.1490 | Firestop - Thru Wall / B2 / North | 2026-03-19 → 2026-04-20 (+32d) | 2026-04-01 → 2026-05-01 (+30d) |  | 13d → -9d |  |
| P2.B2.N.1500 | Pull Wire - Low Volt - BAS/Controls / B2 / North | 2026-03-19 → 2026-04-20 (+32d) | 2026-04-01 → 2026-05-01 (+30d) |  | 13d → -9d |  |
| P2.B2.N.1510 | Pull Wire - Low Volt - Fire Alarm / B2 / North | 2026-03-19 → 2026-04-20 (+32d) | 2026-04-01 → 2026-05-01 (+30d) |  | 13d → -9d |  |
| P2.B2.N.1520 | Pull Wire - Low Volt - Telecom / B2 / North | 2026-03-19 → 2026-04-20 (+32d) | 2026-04-01 → 2026-05-01 (+30d) |  | 13d → -9d |  |
| P2.B2.N.1530 | Pull Wire - Low Volt - Security / B2 / North | 2026-03-19 → 2026-04-20 (+32d) | 2026-04-01 → 2026-05-01 (+30d) |  | 13d → -9d |  |
| P2.B2.N.1540 | Pull Wire - Low Volt - Medical Services/Nurse Call (?) / B2 / North | 2026-03-19 → 2026-04-20 (+32d) | 2026-04-01 → 2026-05-01 (+30d) |  | 13d → -9d |  |
| P2.B2.N.1550 | Trades Inspect & Verify R/I Work Completed to Specs / B2 / North | 2026-04-02 → 2026-05-04 (+32d) | 2026-04-08 → 2026-05-08 (+30d) |  | 13d → -9d |  |
| 8 | **Existing F-Wing Bathroom Relocation** |  | 2026-07-27 → 2026-08-17 (+21d) |  |  |  |
| P2.B2.EXBR.1090 | Plumbing - Set Pipe Carriers / B2 / North / BR 1800 & 1802 | 2026-02-20 → 2025-10-27 A (-116d) | 2026-02-26 → 2025-11-01 A (-117d) | 0% → 100% | 144d → none |  |
| P2.B2.EXBR.1100 | Framing & Blocking - Walls and Hard Lid Ceilings / B2 / North / BR 1800 & 1802 | 2026-02-27 → 2025-10-30 A (-120d) | 2026-03-02 → 2025-11-01 A (-121d) | 0% → 100% | 144d → none |  |

| ID | Task | Start | Finish | Complete | Total float | Predecessors |
| --- | --- | --- | --- | --- | --- | --- |
| P2.B2.EXBR.1160 | In Wall - Insulate Plumbing / B2 / North / BR 1800 & 1802 | 2026-03-03 → 2025-10-30 A (-124d) | 2026-03-04 → 2025-11-01 A (-123d) | 0% → 100% | 144d → none |  |
| P2.B2.EXBR.1020 | NIH Notification - Review and Approval of Relocating Existing F-Wing Bathrooms |  | 2025-12-29 → 2026-01-29 (+31d) |  | 144d → 129d |  |
| P2.B2.EXBR.1030 | NIH Vacate B2-B109 Janitor Closet | 2025-12-30 → 2026-01-30 (+31d) | 2026-01-06 → 2026-02-05 (+30d) |  | 144d → 129d |  |
| P2.B2.EXBR.1040 | Temp Partitions around Janitor Closet, Doors, & Inspections / B2 / BR 1800 & 1802 | 2026-01-07 → 2026-02-06 (+30d) | 2026-01-20 → 2026-02-19 (+30d) |  | 144d → 129d |  |
| P2.B2.EXBR.1050 | Shut Down Existing Janitor Closet Utilities / B2 / BR 1800 & 1802 | 2026-01-21 → 2026-02-20 (+30d) | 2026-01-27 → 2026-02-26 (+30d) |  | 144d → 129d |  |
| P2.B2.EXBR.1060 | Demo Janitor Closet / B2 / BR 1800 & 1802 | 2026-01-28 → 2026-02-27 (+30d) | 2026-02-10 → 2026-03-12 (+30d) |  | 144d → 129d |  |
| P2.B2.EXBR.1070 | Demo Existing Building Wall North for ETV Shaft / B2 / BR 1800 & 1802 | 2026-02-11 → 2026-03-13 (+30d) | 2026-02-17 → 2026-03-19 (+30d) |  | 144d → 129d |  |
| P2.B2.EXBR.1080 | Layout - All Trades / B2 / BR 1800 & 1802 | 2026-02-18 → 2026-03-20 (+30d) | 2026-02-19 → 2026-03-23 (+32d) |  | 144d → 129d |  |
| P2.B2.EXBR.1110 | Plumbing - Test Pipe / B2 / North / BR 1800 & 1802 | 2026-02-27 → 2026-03-24 (+25d) | 2026-03-02 → 2026-03-25 (+23d) |  | 144d → 129d |  |
| P2.B2.EXBR.1120 | R/I - Electrical _ Hard Lids / B2 / North / BR 1800 & 1802 | 2026-03-03 → 2026-03-24 (+21d) | 2026-03-04 → 2026-03-25 (+21d) |  | 144d → 129d |  |
| P2.B2.EXBR.1130 | Trim Sprinkler Drops _ Hard Lids / B2 / North / BR 1800 & 1802 | 2026-03-03 → 2026-03-24 (+21d) | 2026-03-04 → 2026-03-25 (+21d) |  | 144d → 129d |  |
| P2.B2.EXBR.1140 | Duct Drops _ Hard Lids / B2 / North / BR 1800 & 1802 | 2026-03-03 → 2026-03-24 (+21d) | 2026-03-04 → 2026-03-25 (+21d) |  | 144d → 129d |  |
| P2.B2.EXBR.1150 | R/I - Fire Alarm _ Hard Lids / B2 / North / BR 1800 & 1802 | 2026-03-03 → 2026-03-24 (+21d) | 2026-03-04 → 2026-03-25 (+21d) |  | 144d → 129d |  |
| P2.B2.EXBR.1170 | Inspection - Close In - Walls and Hard Lid Ceilings / B2 / North / BR 1800 & 1802 | 2026-03-05 → 2026-03-26 (+21d) | 2026-03-09 → 2026-03-30 (+21d) |  | 144d → 129d |  |
| P2.B2.EXBR.1180 | Hang-Tape-Finish _ Walls and Hard Lids Ceilings / B2 / North / BR 1800 & 1802 | 2026-03-10 → 2026-03-31 (+21d) | 2026-03-16 → 2026-04-06 (+21d) |  | 144d → 129d |  |
| P2.B2.EXBR.1190 | Paint Prime & Final Coat _ Walls & Hard Lid Ceilings / B2 / North / BR 1800 & 1802 | 2026-03-17 → 2026-04-07 (+21d) | 2026-03-18 → 2026-04-08 (+21d) |  | 144d → 129d |  |
| P2.B2.EXBR.1200 | Pull Wire & Trim Devices - Fire Alarm / B2 / North / BR 1800 & 1802 | 2026-03-19 → 2026-04-09 (+21d) | 2026-03-20 → 2026-04-10 (+21d) |  | 153d → 138d |  |
| P2.B2.EXBR.1210 | Pull Wire & Trim Devices - Electrical / B2 / North / BR 1800 & 1802 | 2026-03-19 → 2026-04-09 (+21d) | 2026-03-20 → 2026-04-10 (+21d) |  | 144d → 129d |  |
| P2.B2.EXBR.1220 | Lights - Set & Terminate / B2 / North / BR 1800 & 1802 | 2026-03-19 → 2026-04-09 (+21d) | 2026-03-20 → 2026-04-10 (+21d) |  | 144d → 129d |  |
| P2.B2.EXBR.1230 | Trim - HVAC G/R/D's / B2 / North / BR 1800 & 1802 | 2026-03-19 → 2026-04-09 (+21d) | 2026-03-20 → 2026-04-10 (+21d) |  | 144d → 129d |  |
| P2.B2.EXBR.1240 | Flooring & Wall Tile / B2 / North / BR 1800 & 1802 | 2026-03-23 → 2026-04-13 (+21d) | 2026-03-27 → 2026-04-17 (+21d) |  | 144d → 129d |  |
| P2.B2.EXBR.1250 | Doors & Hardware / B2 / North / BR 1800 & 1802 | 2026-03-30 → 2026-04-20 (+21d) | 2026-03-31 → 2026-04-21 (+21d) |  | 146d → 131d |  |
| P2.B2.EXBR.1260 | Plumbing Fixtures / Sinks / Showers / B2 / North / BR 1800 & 1802 | 2026-03-30 → 2026-04-20 (+21d) | 2026-03-31 → 2026-04-21 (+21d) |  | 144d → 129d |  |
| P2.B2.EXBR.1270 | Bathroom Accessories / B2 / North / BR 1800 & 1802 | 2026-04-01 → 2026-04-22 (+21d) | 2026-04-02 → 2026-04-23 (+21d) |  | 144d → 129d |  |
| P2.B2.EXBR.1280 | Work Completion List - Finishes / B2 / North / BR 1800 & 1802 | 2026-04-03 → 2026-04-24 (+21d) | 2026-04-09 → 2026-04-30 (+21d) |  | 144d → 129d |  |
| P2.B2.EXBR.1340 | NIH Notification to Vacate existing bathrooms | 2026-04-10 → 2026-05-01 (+21d) | 2026-05-07 → 2026-05-29 (+22d) |  | 144d → 129d |  |
| P2.B2.EXBR.1290 | NIH Vacate Bathrooms B2-105 & B2-109 | 2026-05-08 → 2026-06-01 (+24d) | 2026-05-14 → 2026-06-05 (+22d) |  | 144d → 129d |  |
| P2.B2.EXBR.1300 | Temp Partitions, Doors, & Inspections around existing bathroom / B2 / BR 1800 & 1802 | 2026-05-15 → 2026-06-08 (+24d) | 2026-05-29 → 2026-06-19 (+21d) |  | 144d → 129d |  |
| P2.B2.EXBR.1310 | Shut Down Existing Bathroom Utilities / B2 / BR 1800 & 1802 | 2026-06-01 → 2026-06-22 (+21d) | 2026-06-05 → 2026-06-26 (+21d) |  | 144d → 129d |  |
| P2.B2.EXBR.1320 | Demo Existing Bathroom / B2 / BR 1800 & 1802 | 2026-06-08 → 2026-06-29 (+21d) | 2026-06-19 → 2026-07-13 (+24d) |  | 144d → 129d |  |
| P2.B2.EXBR.1330 | Demo Existing Building Wall South to Connect SRLM to CRC at B2 / B2 / BR 1800 & 1802 | 2026-06-22 → 2026-07-14 (+22d) | 2026-06-26 → 2026-07-20 (+24d) |  | 144d → 129d |  |
| P2.B2.EXBR.1350 | Final Finishes in B2 Corridor at CRC Connection / B2 / BR 1800 & 1802 | 2026-06-29 → 2026-07-21 (+22d) | 2026-07-27 → 2026-08-17 (+21d) |  | 144d → 129d |  |
| 3 | **B2 / MAIN ELECTRICAL ROOMS** |  | 2025-12-29 → 2026-01-29 (+31d) |  |  |  |
| 1 | **Electrical Switchgear Room A - B2-3970A** |  | 2025-12-12 → 2026-01-15 (+34d) |  |  |  |
| P2.B2.ES.A.1160 | Flooring / B2 / South / 3970A | 2025-12-01 → 2026-01-02 (+32d) | 2025-12-05 → 2026-01-08 (+34d) |  | 29d → 7d |  |
| P2.B2.ES.A.1250 | Energize SWGR B2-3970A / B2 / South / 3970A | 2025-12-08 → 2026-01-09 (+32d) | 2025-12-12 → 2026-01-15 (+34d) |  | 29d → 7d |  |
| 2 | **Emergency Switchgear Room A - B2-3970B** |  | 2025-12-19 → 2026-01-22 (+34d) |  |  |  |
| P2.B2.EMS.A.1160 | Flooring / B2 / South / 3970B | 2025-12-01 → 2026-01-02 (+32d) | 2025-12-05 → 2026-01-08 (+34d) |  | 34d → 12d |  |
| P2.B2.EMS.A.1250 | Energize SWGR B2-3970B / B2 / South / 3970B | 2025-12-15 → 2026-01-16 (+32d) | 2025-12-19 → 2026-01-22 (+34d) |  | 29d → 7d |  |
| 3 | **Electrical Emergency Room A - B2-3980** |  | 2025-12-29 → 2026-01-29 (+31d) |  |  |  |
| P2.B2.EE.A.1160 | Flooring / B2 / South / 3980 | 2025-12-01 → 2026-01-02 (+32d) | 2025-12-05 → 2026-01-08 (+34d) |  | 39d → 17d |  |
| P2.B2.EE.A.1250 | Energize SWGR B2-3980 / B2 / South / 3980 | 2025-12-22 → 2026-01-23 (+32d) | 2025-12-29 → 2026-01-29 (+31d) |  | 29d → 7d |  |
| 4 | **Electrical Med Volt Switchgear Room A - B2-3940A** |  | 2025-12-12 → 2026-01-15 (+34d) |  |  |  |
| P2.B2.EMVS.A.1160 | Flooring / B2 / South / 3940A | 2025-12-01 → 2026-01-02 (+32d) | 2025-12-05 → 2026-01-08 (+34d) |  | 34d → 12d |  |
| P2.B2.EMVS.A.1250 | Energize SWGR B2-3940A / B2 / South / 3940A | 2025-12-08 → 2026-01-09 (+32d) | 2025-12-12 → 2026-01-15 (+34d) |  | 34d → 12d |  |
| 5 | **Electrical Med Volt Switchgear Room B - B2-3940B** |  | 2025-12-19 → 2026-01-22 (+34d) |  |  |  |
| P2.B2.EMVS.B.1160 | Flooring / B2 / South / 3940B | 2025-12-01 → 2026-01-02 (+32d) | 2025-12-05 → 2026-01-08 (+34d) |  | 39d → 17d |  |
| P2.B2.EMVS.B.1250 | Energize SWGR B2-3940B / B2 / South / 3940B | 2025-12-15 → 2026-01-16 (+32d) | 2025-12-19 → 2026-01-22 (+34d) |  | 34d → 12d |  |
| 9 | **Emergency Swtichgear Room A - B2-3920A** |  | 2025-12-19 → 2026-01-22 (+34d) |  |  |  |
| P2.B2.EMS.B.1160 | Flooring / B2 / North / 3920A | 2025-12-01 → 2026-01-02 (+32d) | 2025-12-05 → 2026-01-08 (+34d) |  | 34d → 12d |  |
| P2.B2.EMS.B.1250 | Energize SWGR B2-3920A / B2 / North / 3920A | 2025-12-15 → 2026-01-16 (+32d) | 2025-12-19 → 2026-01-22 (+34d) |  | 29d → 7d |  |
| 11 | **Electrical Switchgear Room B - B2-3920B** |  | 2025-12-29 → 2026-01-29 (+31d) |  |  |  |
| P2.B2.ES.B.1160 | Flooring / B2 / North / 3920B | 2025-12-01 → 2026-01-02 (+32d) | 2025-12-05 → 2026-01-08 (+34d) |  | 39d → 17d |  |
| P2.B2.ES.B.1250 | Energize SWGR B2-3920B / B2 / North / 3920B | 2025-12-22 → 2026-01-23 (+32d) | 2025-12-29 → 2026-01-29 (+31d) |  | 29d → 7d |  |
| 10 | **Electrical Emergency Room - B2-3910** |  | 2025-12-12 → 2026-01-15 (+34d) |  |  |  |
| P2.B2.EE.B.1160 | Flooring / B2 / North / 3910 | 2025-12-01 → 2026-01-02 (+32d) | 2025-12-05 → 2026-01-08 (+34d) |  | 29d → 7d |  |
| P2.B2.EE.B.1250 | Energize SWGR B2-3910 / B2 / North / 3910 | 2025-12-08 → 2026-01-09 (+32d) | 2025-12-12 → 2026-01-15 (+34d) |  | 29d → 7d |  |
| 4 | **House Electrical Rooms / Level B2/B1** |  | 2026-01-02 → 2026-02-06 (+35d) |  |  |  |
| 6 | **House Electrical Room B2-5995** |  | 2025-12-11 → 2026-01-28 (+48d) |  |  |  |
| P2.B2.HE.5995.1040 | Panelboards, Interconnect Wiring, and Room Buildout of All Systems / B2 / South / 5995 |  |  |  |  | P2.B2.HE.5995.1020, BP1.262.3.100, BP1.262.3.220, BP1.265.3.900 → P2.B2.HE.5995.1020, BP1.262.3.100, BP1.262.3.220, BP1.265.3.900, P2.B2.S.1360 |
| P2.B2.HE.5995.1080 | Flooring / B2 / South / 5995 | 2025-12-01 → 2026-01-23 (+53d) | 2025-12-02 → 2026-01-26 (+55d) |  | 40d → 3d |  |
| P2.B2.HE.5995.1090 | Doors & Hardware / B2 / South / 5995 | 2025-12-03 → 2026-01-27 (+55d) | 2025-12-04 → 2026-01-28 (+55d) |  | 40d → 3d |  |
| P2.B2.HE.5995.1100 | Panels Ready to Energize - Lock Doors and Limit Access / B2 / South / 5995 | 2025-12-11 → 2026-01-28 (+48d) | 2025-12-11 → 2026-01-28 (+48d) |  | 35d → 3d |  |
| 7 | **House Electrical Room B2-5920** |  | 2026-01-02 → 2026-02-06 (+35d) |  |  |  |
| P2.B2.HE.5920.1040 | Panelboards, Interconnect Wiring, and Remaining Room Buildout of All Systems / B2 / South / 5920 | 2025-12-01 A | 2025-12-12 → 2025-12-10 A (-2d) | 0% → 100% | 153d → none | P2.B2.HE.5920.1020, BP1.262.3.100, BP1.262.3.220 → P2.B2.HE.5920.1020, BP1.262.3.100, BP1.262.3.220, P2.B2.S.1360 |
| P2.B2.HE.5920.1060 | Paint - Finish Coat / B2 / South / 5920 | 2025-12-22 → 2025-12-10 A (-12d) | 2025-12-23 → 2025-12-11 A (-12d) | 0% → 100% | 153d → none |  |
| P2.B2.HE.5920.1050 | Test & Terminate / B2 / South / 5920 | 2025-12-15 → 2026-01-23 (+39d) | 2025-12-19 → 2026-01-29 (+41d) |  | 153d → 128d |  |
| P2.B2.HE.5920.1070 | Trim All MEPF Finishes / B2 / South / 5920 | 2025-12-24 → 2026-01-30 (+37d) | 2025-12-26 → 2026-02-02 (+38d) |  | 153d → 128d |  |
| P2.B2.HE.5920.1080 | Flooring / B2 / South / 5920 | 2025-12-29 → 2026-02-03 (+36d) | 2025-12-30 → 2026-02-04 (+36d) |  | 153d → 128d |  |
| P2.B2.HE.5920.1090 | Doors & Hardware / B2 / South / 5920 | 2025-12-31 → 2026-02-05 (+36d) | 2026-01-02 → 2026-02-06 (+35d) |  | 153d → 128d |  |

| ID | Task | Start | Finish | Complete | Total float |
| --- | --- | --- | --- | --- | --- |
| P2.B2.HE.5920.1100 | Panels Ready to Energize - Lock Doors and Limit Access / B2 / South / 5920 | 2026-01-02 → 2026-02-06 (+35d) | 2026-01-02 → 2026-02-06 (+35d) |  | 153d → 128d |
| 1 | **Mechanical Rooms / Level B2/B1** |  | 2026-05-14 → 2026-05-26 (+12d) |  |  |
| 1 | **Mechanical B2-5970 (Z1)** |  | 2026-04-20 → 2026-05-20 (+30d) |  |  |
| FRG.P2.B2.M.5970.1050 | Install Remaining Reheat Spool / B2 / South / 5970 - FRAGNET |  | 2025-12-19 A | 0% → 100% | 4d → none |
| P2.B2.M.5970.1000 | BAS Equipment Install / B2 / South / 5970 | 2025-12-01 A | 2025-12-05 A | 0% → 100% | 124d → none |
| P2.B2.M.5970.1010 | Control Wiring to Equipment / B2 / South / 5970 | 2025-12-08 → 2025-12-01 A (-7d) | 2025-12-12 A | 0% → 100% | 124d → none |
| P2.B2.M.5970.1310 | Electrical Tie in to Equipment / B2 / South / 5970 | 2025-12-01 A | 2025-12-05 A | 0% → 100% | 129d → none |
| P2.B2.M.5970.1020 | Install Chilled Water Pump Skid / B2 / South / 5970 | 2025-12-22 → 2025-12-08 A (-14d) | 2025-12-29 → 2025-12-12 A (-17d) | 0% → 100% | 4d → none |
| P2.B2.M.5970.1110 | Pressure Test Systems / B2 / South / 5970 | 2025-12-30 → 2025-12-18 A (-12d) | 2026-01-06 → 2026-01-08 (+2d) |  | 4d → 2d |
| FRG.P2.B2.M.5970.1030 | Glycol Spool Delivery / B2 / South / 5970 - FRAGNET | 2025-12-01 → 2026-01-02 (+32d) | 2025-12-01 → 2026-01-02 (+32d) |  | 22d → 0d |
| FRG.P2.B2.M.5970.1060 | Install Glycol Spool / B2 / South / 5970 - FRAGNET | 2025-12-01 → 2026-01-02 (+32d) | 2025-12-29 → 2026-01-29 (+31d) |  | 22d → 0d |
| FRG.P2.B2.M.5970.1150 | Install CHW & PCHW System Spools / B2 / South / 5970 - FRAGNET | 2025-12-01 → 2026-01-02 (+32d) | 2025-12-29 → 2026-01-29 (+31d) |  | 9d → -13d |
| P2.B2.M.5970.1270 | Lighting Install / B2 / South / 5970 | 2025-12-01 → 2026-01-02 (+32d) | 2025-12-05 → 2026-01-08 (+34d) |  | 62d → 247d |
| P2.B2.M.5970.1280 | Fire Alarm/Ceiling Device Install / B2 / South / 5970 | 2025-12-08 → 2026-01-09 (+32d) | 2025-12-12 → 2026-01-15 (+34d) |  | 62d → 247d |
| FRG.P2.B2.M.5970.1100 | Install Glycol Spool / B2 / South / 5970 - FRAGNET | 2025-12-30 → 2026-01-30 (+31d) | 2026-01-27 → 2026-02-26 (+30d) |  | 22d → 0d |
| FRG.P2.B2.M.5970.1160 | Install CHW & PCHW System Spools / B2 / South / 5970 - FRAGNET | 2025-12-30 → 2026-01-30 (+31d) | 2026-01-27 → 2026-02-26 (+30d) |  | 19d → -3d |
| P2.B2.M.5970.2160 | Install Domestic Water Softener / B2 / South / 5970 | 2025-12-31 → 2026-02-02 (+33d) | 2026-01-08 → 2026-02-06 (+29d) |  | 165d → 144d |
| P2.B2.M.5970.2170 | Install Piping for Domestic Water Softener / B2 / South / 5970 | 2026-01-08 → 2026-02-09 (+32d) | 2026-01-15 → 2026-02-13 (+29d) |  | 165d → 144d |
| P2.B2.M.5970.2180 | Install Wiring for Domestic Water Softener / B2 / South / 5970 | 2026-01-15 → 2026-02-16 (+32d) | 2026-01-22 → 2026-02-20 (+29d) |  | 165d → 144d |
| FRG.P2.B2.M.5970.1110 | Install Glycol Spool / B2 / South / 5970 - FRAGNET | 2026-01-28 → 2026-02-27 (+30d) | 2026-02-12 → 2026-03-16 (+32d) |  | 22d → 0d |
| FRG.P2.B2.M.5970.1170 | Install CHW & PCHW System Spools/ B2 / South / 5970 - FRAGNET | 2026-01-28 → 2026-02-27 (+30d) | 2026-02-10 → 2026-03-12 (+30d) |  | 19d → -3d |
| FRG.P2.B2.M.5970.2090 | AHU Piping Install / B2 - FRAGNET | 2026-01-28 → 2026-02-27 (+30d) | 2026-02-24 → 2026-03-26 (+30d) |  | 129d → 107d |
| P2.B2.N.1560 | Trades Inspect & Verify R/I Work Completed to Specs / B2 / South / 5970 | 2026-02-11 → 2026-03-13 (+30d) | 2026-02-17 → 2026-03-19 (+30d) |  | 22d → 207d |
| FRG.P2.B2.M.5970.1070 | PH Glycol & CHW/PCHW - Prep for Flushing / B2 / South / 5970 - FRAGNET | 2026-02-13 → 2026-03-17 (+32d) | 2026-03-02 → 2026-04-01 (+30d) |  | 40d → 18d |
| P2.B2.M.5970.1490 | OH Mechanical Piping Install (Humidification) / B2 / South / 5970 | 2026-02-13 → 2026-03-17 (+32d) | 2026-03-12 → 2026-04-13 (+32d) |  | 105d → 83d |
| P2.B2.M.5970.1290 | Prep Floor for Flooring - Epoxy Floors / B2 / South / 5970 | 2026-02-18 → 2026-03-20 (+30d) | 2026-02-24 → 2026-03-26 (+30d) |  | 22d → 207d |
| P2.B2.M.5970.1300 | Flooring - Epoxy Floors / B2 / South / 5970 | 2026-02-25 → 2026-03-27 (+30d) | 2026-02-26 → 2026-03-30 (+32d) |  | 22d → 207d |
| FRG.P2.B2.M.5970.1080 | PH Glycol & CHW/PCHW - System Install / B2 / South / 5970 - FRAGNET | 2026-03-03 → 2026-04-02 (+30d) | 2026-03-23 → 2026-04-22 (+30d) |  | 40d → 18d |
| P2.B2.M.5970.2190 | Preasure Test Clean Steam (Humidification) / B2 / South / 5970 | 2026-03-13 → 2026-04-14 (+32d) | 2026-03-19 → 2026-04-20 (+32d) |  | 105d → 83d |
| P2.B2.M.5970.1420 | Hydraulic Lift Installation / B2 / South / 5970 | 2026-03-19 → 2026-04-20 (+32d) | 2026-04-01 → 2026-05-01 (+30d) |  | 8d → 193d |
| P2.B2.M.5970.2200 | Flush Clean Steam (Humidification) / B2 / South / 5970 | 2026-03-20 → 2026-04-21 (+32d) | 2026-04-16 → 2026-05-18 (+32d) |  | 105d → 83d |
| FRG.P2.B2.M.5970.1090 | PH Glycol & CHW/PCHW - Fill & flush/ B2 / South / 5970 - FRAGNET | 2026-03-24 → 2026-04-23 (+30d) | 2026-04-13 → 2026-05-13 (+30d) |  | 40d → 18d |
| P2.B2.M.5970 | Overhead Coiling Door Install / B2 / South / 5970 | 2026-04-02 → 2026-05-04 (+32d) | 2026-04-08 → 2026-05-08 (+30d) |  | 8d → 193d |
| P2.B2.M.5970.1120 | Insulate / B2 / South / 5970 | 2026-04-14 → 2026-05-14 (+30d) | 2026-04-20 → 2026-05-20 (+30d) |  | 83d → 61d |
| P2.B2.M.5970.1320 | Ready for Start Up - Mech Equip / B2 / South / 5970 | 2026-04-14 → 2026-05-14 (+30d) | 2026-04-20 → 2026-05-20 (+30d) |  | 40d → 18d |
| 2 | **Mechanical B2-5985 (Z1)** |  | 2026-02-05 → 2026-02-23 (+18d) |  |  |
| P2.B2.M.5985.1320 | Insulate High MEP / B2 / South / 5985 |  | 2025-12-05 → 2025-12-24 A (+19d) | 0% → 100% | 24d → none |
| P2.B2.M.5985.1000 | BAS Equipment Install / B2 / South / 5985 | 2025-12-08 A | 2025-12-12 A | 0% → 100% | 49d → none |
| P2.B2.M.5985.1010 | Control Wiring to Equipment / B2 / South / 5985 | 2025-12-15 A | 2025-12-19 → 2026-01-08 (+20d) |  | 49d → 37d |
| P2.B2.M.5985.1280 | Electrical Tie in to Equipment / B2 / South / 5985 | 2025-12-08 → 2026-01-02 (+25d) | 2025-12-12 → 2026-01-08 (+27d) |  | 214d → 197d |
| P2.B2.M.5970.1330 | Ready for Start Up - Mech Equip / B2 / South / 5985 | 2025-12-22 → 2026-01-09 (+18d) | 2025-12-29 → 2026-01-15 (+17d) |  | 49d → 37d |
| P2.B2.M.5985.1090 | Insulate/Label / B2 / South / 5985 | 2025-12-22 → 2026-01-09 (+18d) | 2025-12-29 → 2026-01-15 (+17d) |  | 182d → 170d |
| P2.B2.M.5985.1230 | HVAC - GRD's / B2 / South / 5985 | 2025-12-30 → 2026-01-16 (+17d) | 2026-01-06 → 2026-01-22 (+16d) |  | 182d → 170d |
| P2.B2.M.5985.1240 | Lighting Install / B2 / South / 5985 | 2026-01-07 → 2026-01-23 (+16d) | 2026-01-13 → 2026-01-29 (+16d) |  | 182d → 170d |
| P2.B2.M.5985.1250 | Fire Alarm/Ceiling Device Install / B2 / South / 5985 | 2026-01-14 → 2026-01-30 (+16d) | 2026-01-20 → 2026-02-05 (+16d) |  | 182d → 170d |
| P2.B2.M.5985.1260 | Prep Floor for Flooring - Epoxy Floors / B2 / South / 5985 | 2026-01-21 → 2026-02-06 (+16d) | 2026-01-27 → 2026-02-12 (+16d) |  | 182d → 170d |
| P2.B2.M.5985.1270 | Flooring - Epoxy Floors / B2 / South / 5985 | 2026-01-28 → 2026-02-13 (+16d) | 2026-01-29 → 2026-02-16 (+18d) |  | 182d → 170d |
| P2.B2.N.1570 | Trades Inspect & Verify R/I Work Completed to Specs / B2 / South / 5985 | 2026-01-30 → 2026-02-17 (+18d) | 2026-02-05 → 2026-02-23 (+18d) |  | 182d → 170d |
| 3 | **Mechanical B2-2910 (Z2)** |  | 2026-01-15 → 2026-02-16 (+32d) |  |  |
| BP1.226.2.190 | Install - Waste Water Tanks | 2025-12-01 A | 2025-12-12 → 2026-01-08 (+27d) | 0% → 50% | 194d → 177d |
| P2.B2.M.2910.1210 | Electrical Tie in to Equipment / B2 / North / 2910 | 2025-12-01 A | 2025-12-05 → 2026-01-02 (+28d) | 0% → 80% | 119d → 101d |
| P2.B2.M.2910.1010 | Control Wiring to Equipment / B2 / North / 2910 | 2025-12-01 → 2026-01-02 (+32d) | 2025-12-05 → 2026-01-08 (+34d) |  | 119d → 97d |
| P2.B2.M.2910.1110 | Fire Caulk MEPF Penetrations / B2 / North / 2910 | 2025-12-01 → 2026-01-02 (+32d) | 2025-12-05 → 2026-01-08 (+34d) |  | 117d → 95d |
| P2.B2.M.2910.1160 | HVAC - GRD's / B2 / North / 2910 | 2025-12-01 → 2026-01-02 (+32d) | 2025-12-05 → 2026-01-08 (+34d) |  | 102d → 80d |
| P2.B2.M.2910.1170 | Lighting Install / B2 / North / 2910 | 2025-12-08 → 2026-01-09 (+32d) | 2025-12-12 → 2026-01-15 (+34d) |  | 102d → 80d |
| P2.B2.M.2910.1180 | Fire Alarm/Ceiling Device Install / B2 / North / 2910 | 2025-12-15 → 2026-01-16 (+32d) | 2025-12-19 → 2026-01-22 (+34d) |  | 102d → 80d |
| P2.B2.M.2910.1190 | Prep Floor for Flooring - Epoxy Floors / B2 / North / 2910 | 2025-12-22 → 2026-01-23 (+32d) | 2025-12-29 → 2026-01-29 (+31d) |  | 102d → 80d |
| P2.B2.M.2910.1200 | Flooring - Epoxy Floors / B2 / North / 2910 | 2025-12-30 → 2026-01-30 (+31d) | 2025-12-31 → 2026-02-02 (+33d) |  | 102d → 80d |
| P2.B2.N.1580 | Trades Inspect & Verify R/I Work Completed to Specs / B2 / North / 2910 | 2026-01-02 → 2026-02-03 (+32d) | 2026-01-08 → 2026-02-09 (+32d) |  | 102d → 80d |
| P2.B2.M.5970.1340 | Ready for Start Up - Mech Equip / B2 / North / 2910 | 2026-01-09 → 2026-02-10 (+32d) | 2026-01-15 → 2026-02-16 (+32d) |  | 102d → 80d |
| 4 | **Mechanical B2-2930 (Z2)** |  | 2026-03-24 → 2026-04-09 (+16d) |  |  |
| P2.B2.M.2930.1330 | Insulate High MEP / B2 / North / 2930 | 2025-12-01 A | 2025-12-05 → 2025-12-01 A (-4d) | 0% → 100% | 54d → none |
| P2.B2.M.2930.1020 | Install Med Vacuum Skid / B2 / North / 2930 | 2025-12-08 → 2025-12-09 A (+1d) | 2025-12-12 → 2025-12-09 A (-3d) | 0% → 100% | 74d → none |
| P2.B2.M.2930.1050 | Install MVP Skid / B2 / North / 2930 | 2025-12-08 → 2025-12-09 A (+1d) | 2025-12-12 → 2025-12-09 A (-3d) | 0% → 100% | 54d → none |
| P2.B2.M.2930.1070 | Piping Spool Pieces & Field Connections / B2 / North / 2930 | 2025-12-15 → 2026-01-02 (+18d) | 2026-01-06 → 2026-01-22 (+16d) |  | 54d → 42d |
| P2.B2.M.2930.1210 | Fire Caulk MEPF Penetrations / B2 / North / 2930 | 2025-12-01 → 2026-01-02 (+32d) | 2025-12-05 → 2026-01-08 (+34d) |  | 114d → 92d |
| P2.B2.M.2930.1090 | Pressure Test Systems / B2 / North / 2930 | 2026-01-07 → 2026-01-23 (+16d) | 2026-01-13 → 2026-01-29 (+16d) |  | 54d → 42d |
| P2.B2.M.2930.1000 | BAS Equipment Install / B2 / North / 2930 | 2026-01-14 → 2026-01-30 (+16d) | 2026-01-20 → 2026-02-05 (+16d) |  | 54d → 42d |
| P2.B2.M.2930.1120 | Electrical Tie in to Equipment / B2 / North / 2930 | 2026-01-14 → 2026-01-30 (+16d) | 2026-01-20 → 2026-02-05 (+16d) |  | 89d → 77d |
| P2.B2.M.2930.1010 | Control Wiring to Equipment / B2 / North / 2930 | 2026-01-21 → 2026-02-06 (+16d) | 2026-01-27 → 2026-02-12 (+16d) |  | 84d → 72d |

| ID | Task | Start | Finish | Complete | Total float |
| --- | --- | --- | --- | --- | --- |
| P2.B2.M.2930.1110 | Risers and Distribution Connections / B2 / North / 2930 | 2026-01-21 → 2026-02-06 (+16d) | 2026-01-27 → 2026-02-12 (+16d) |  | 54d → 42d |
| P2.B2.M.2930.1100 | Insulate / B2 / North / 2930 | 2026-01-28 → 2026-02-13 (+16d) | 2026-02-03 → 2026-02-19 (+16d) |  | 54d → 42d |
| P2.B2.M.2930.1250 | Paint Walls / B2 / North / 2930 | 2026-02-04 → 2026-02-20 (+16d) | 2026-02-10 → 2026-02-26 (+16d) |  | 54d → 42d |
| P2.B2.M.2930.1260 | HVAC - GRD's / B2 / North / 2930 | 2026-02-11 → 2026-02-27 (+16d) | 2026-02-17 → 2026-03-05 (+16d) |  | 54d → 42d |
| P2.B2.M.2930.1270 | Lighting Install / B2 / North / 2930 | 2026-02-18 → 2026-03-06 (+16d) | 2026-02-24 → 2026-03-12 (+16d) |  | 54d → 42d |
| P2.B2.M.2930.1280 | Fire Alarm/Ceiling Device Install / B2 / North / 2930 | 2026-02-25 → 2026-03-13 (+16d) | 2026-03-03 → 2026-03-19 (+16d) |  | 54d → 42d |
| P2.B2.M.2930.1290 | Prep Floor for Flooring - Epoxy Floors / B2 / North / 2930 | 2026-03-04 → 2026-03-20 (+16d) | 2026-03-06 → 2026-03-24 (+18d) |  | 54d → 42d |
| P2.B2.M.2930.1300 | Flooring - Epoxy Floors / B2 / North / 2930 | 2026-03-09 → 2026-03-25 (+16d) | 2026-03-10 → 2026-03-26 (+16d) |  | 54d → 42d |
| P2.B2.N.1590 | Trades Inspect & Verify R/I Work Completed to Specs / B2 / North / 2930 | 2026-03-11 → 2026-03-27 (+16d) | 2026-03-17 → 2026-04-02 (+16d) |  | 54d → 42d |
| P2.B2.M.5970.1350 | Ready for Start Up - Mech Equip / B2 / North / 2930 | 2026-03-18 → 2026-04-03 (+16d) | 2026-03-24 → 2026-04-09 (+16d) |  | 54d → 42d |
| 6 | **Mechanical B2-2801 (Z3)** |  | 2026-03-31 → 2026-04-23 (+23d) |  |  |
| FRG.P2.B2.M.2801.1040 | Install Piping - CHW/PCHW System / B2 / North / 2801 - FRAGNET |  | 2025-12-05 A | 75% → 100% | 22d → none |
| P2.B2.M.2801.1310 | OH Humidification Install / B2 / North / 2801 |  | 2026-01-06 → 2025-12-30 A (-7d) | 0% → 100% | 69d → none |
| P2.B2.M.2801.1270 | Test OH Fire Suppression / B2 / North / 2801 | 2025-12-01 A | 2025-12-05 A | 0% → 100% | 69d → none |
| P2.B2.M.2801.1160 | Paint Walls / B2 / North / 2801 | 2025-12-30 → 2025-12-05 A (-25d) | 2026-01-06 → 2025-12-08 A (-29d) | 0% → 100% | 82d → none |
| P2.B2.M.2801.1240 | OH Steam Install / B2 / North / 2801 | 2026-01-07 → 2025-12-08 A (-30d) | 2026-02-03 → 2026-01-15 (-19d) | 0% → 50% | 69d → 82d |
| P2.B2.M.2801.1000 | BAS Equipment Install / B2 / North / 2801 | 2025-12-01 → 2025-12-10 A (+9d) | 2025-12-05 → 2026-01-08 A (+34d) | 0% → 100% | 82d → none |
| FRG.P2.B2.M.2801.1050 | Delivery- Steam/Condensate System Spools / B2 / North / 2801 - FRAGNET | 2025-12-01 → 2026-01-02 (+32d) | 2025-12-01 → 2026-01-02 (+32d) |  | 89d → 67d |
| FRG.P2.B2.M.2801.1060 | Staging - Steam/Condensate System / B2 / North / 2801 - FRAGNET | 2025-12-01 → 2026-01-02 (+32d) | 2025-12-05 → 2026-01-08 (+34d) |  | 89d → 67d |
| FRG.P2.B2.M.2801.1110 | Weld Piping - CHW/PCHW System / B2 / North / 2801 - FRAGNET | 2025-12-08 → 2026-01-02 (+25d) | 2026-01-06 → 2026-01-29 (+23d) |  | 22d → 15d |
| FRG.P2.B2.M.2801.1120 | Install - MRI Cooling System / B2 / North / 2801 - FRAGNET | 2025-12-01 → 2026-01-02 (+32d) | 2025-12-29 → 2026-01-29 (+31d) |  | 77d → 55d |
| P2.B2.M.2801.1010 | Control Wiring to Equipment / B2 / North / 2801 | 2025-12-08 → 2026-01-02 (+25d) | 2025-12-12 → 2026-01-08 (+27d) |  | 82d → 70d |
| FRG.P2.B2.M.2801.1100 | Install Piping - Steam/Condensate System / B2 / North / 2801 - FRAGNET | 2025-12-08 → 2026-01-09 (+32d) | 2026-01-06 → 2026-02-05 (+30d) |  | 89d → 67d |
| P2.B2.M.2801.1260 | Insulate/Label / B2 / North / 2801 | 2025-12-15 → 2026-01-09 (+25d) | 2025-12-29 → 2026-01-22 (+24d) |  | 82d → 70d |
| P2.B2.M.2801.1120 | Fire Caulk MEPF Penetrations / B2 / North / 2801 | 2026-02-04 → 2026-01-16 (-19d) | 2026-02-10 → 2026-01-22 (-19d) |  | 72d → 85d |
| P2.B2.M.2801.1250 | Insulate High MEP / B2 / North / 2801 | 2026-02-04 → 2026-01-16 (-19d) | 2026-02-17 → 2026-01-29 (-19d) |  | 69d → 82d |
| P2.B2.M.2801.1170 | HVAC - GRD's / B2 / North / 2801 | 2026-01-07 → 2026-01-23 (+16d) | 2026-01-13 → 2026-01-29 (+16d) |  | 82d → 70d |
| FRG.P2.B2.M.2801.1140 | Remaining Weld - CHW/PCHW System / B2 / North / 2801 - FRAGNET | 2026-01-07 → 2026-01-30 (+23d) | 2026-02-03 → 2026-02-26 (+23d) |  | 22d → 15d |
| FRG.P2.B2.M.2801.1150 | Final Connections - MRI Cooling System / B2 / North / 2801 - FRAGNET | 2025-12-30 → 2026-01-30 (+31d) | 2026-01-09 → 2026-02-10 (+32d) |  | 77d → 55d |
| P2.B2.M.2801.1030 | Electrical Tie in to Equipment / B2 / North / 2801 | 2026-02-18 → 2026-01-30 (-19d) | 2026-02-24 → 2026-02-05 (-19d) |  | 69d → 82d |
| P2.B2.M.2801.1180 | Lighting Install / B2 / North / 2801 | 2026-01-14 → 2026-01-30 (+16d) | 2026-01-20 → 2026-02-05 (+16d) |  | 82d → 70d |
| FRG.P2.B2.M.2801.1130 | Weld Piping - Steam/Condensate System / B2 / North / 2801 - FRAGNET | 2026-01-07 → 2026-02-06 (+30d) | 2026-01-27 → 2026-02-26 (+30d) |  | 89d → 67d |
| P2.B2.M.2801.1190 | Fire Alarm/Ceiling Device Install / B2 / North / 2801 | 2026-01-21 → 2026-02-06 (+16d) | 2026-01-27 → 2026-02-12 (+16d) |  | 82d → 70d |
| FRG.P2.B2.M.2801.1160 | Install Remaining - Glycol Preheat / B2 / North / 2801 - FRAGNET | 2026-01-12 → 2026-02-11 (+30d) | 2026-02-06 → 2026-03-10 (+32d) |  | 77d → 55d |
| P2.B2.M.2801.1200 | Prep Floor for Flooring - Epoxy Floors / B2 / North / 2801 | 2026-02-11 → 2026-02-13 (+2d) | 2026-02-17 → 2026-02-19 (+2d) |  | 72d → 70d |
| P2.B2.M.2801.1210 | Flooring - Epoxy Floors / B2 / North / 2801 | 2026-02-18 → 2026-02-20 (+2d) | 2026-02-19 → 2026-02-23 (+4d) |  | 72d → 70d |
| FRG.P2.B2.M.2801.1170 | Final Connections - CHW/PCHW System/ B2 / North / 2801 - FRAGNET | 2026-02-04 → 2026-02-27 (+23d) | 2026-03-03 → 2026-03-26 (+23d) |  | 22d → 15d |
| FRG.P2.B2.M.2801.1180 | Inspection - Glycol Preheat / B2 / North / 2801 - FRAGNET | 2026-02-09 → 2026-03-11 (+30d) | 2026-02-12 → 2026-03-16 (+32d) |  | 77d → 55d |
| FRG.P2.B2.M.2801.1190 | Inspection - CHW/PCHW System / B2 / North / 2801 - FRAGNET | 2026-03-04 → 2026-03-27 (+23d) | 2026-03-17 → 2026-04-09 (+23d) |  | 54d → 37d |
| P2.B2.N.1600 | Trades Inspect & Verify R/I Work Completed to Specs / B2 / North / 2801 | 2026-03-18 → 2026-04-10 (+23d) | 2026-03-24 → 2026-04-16 (+23d) |  | 54d → 37d |
| P2.B2.M.5970.1360 | Ready for Start Up - Mech Equip / B2 / North / 2801 | 2026-03-25 → 2026-04-17 (+23d) | 2026-03-31 → 2026-04-23 (+23d) |  | 54d → 37d |
| 5 | **Mechanical B2.2803 (Z3)** |  | 2026-05-14 → 2026-05-26 (+12d) |  |  |
| P2.B2.M.2803.1110 | Risers and Distribution Connections / B2 / North / 2803 | 2026-03-11 → 2025-11-01 A (-130d) | 2026-04-07 → 2025-12-30 A (-98d) | 0% → 100% | 34d → none |
| P2.B2.M.2803.1000 | BAS Equipment Install / B2 / North / 2803 | 2026-03-11 → 2025-12-01 A (-100d) | 2026-03-17 → 2025-12-03 A (-104d) | 0% → 100% | 22d → none |
| P2.B2.M.2803.1350 | Test OH Fire Suppression / B2 / North / 2803 | 2025-12-01 A | 2025-12-05 A | 0% → 100% | 94d → none |
| P2.B2.M.2803.1390 | OH GMP Reheat Install / B2 / North / 2803 | 2025-12-01 A | 2025-12-29 → 2026-01-15 (+17d) | 0% → 50% | 62d → 60d |
| P2.B2.M.2803.1250 | Paint Walls / B2 / North / 2803 | 2026-03-25 → 2025-12-05 A (-110d) | 2026-03-31 → 2025-12-08 A (-113d) | 0% → 100% | 22d → none |
| P2.B2.M.2803.1210 | Fire Caulk MEPF Penetrations / B2 / North / 2803 | 2025-12-30 → 2026-01-16 (+17d) | 2026-01-06 → 2026-01-22 (+16d) |  | 102d → 90d |
| P2.B2.M.2803.1340 | Insulate High MEP / B2 / North / 2803 | 2025-12-30 → 2026-01-16 (+17d) | 2026-01-06 → 2026-01-22 (+16d) |  | 62d → 60d |
| P2.B2.M.2803.1030 | Install GMP Reheat Skid | 2026-01-07 → 2026-01-23 (+16d) | 2026-01-13 → 2026-01-29 (+16d) |  | 62d → 60d |
| P2.B2.M.2803.1040 | Install MRI Cooling Skid / B2 / North / 2803 | 2026-01-07 → 2026-01-23 (+16d) | 2026-01-13 → 2026-01-29 (+16d) |  | 94d → 82d |
| P2.B2.M.2803.1050 | Install Process Cooling Skid / B2 / North / 2803 | 2026-01-07 → 2026-01-23 (+16d) | 2026-01-13 → 2026-01-29 (+16d) |  | 69d → 77d |
| P2.B2.M.2803.1090 | Pressure Test Systems / B2 / North / 2803 | 2026-01-14 → 2026-01-30 (+16d) | 2026-01-20 → 2026-02-05 (+16d) |  | 69d → 77d |
| P2.B2.M.2803.1020 | Install GMP Preheat Skid | 2026-03-04 → 2026-03-27 (+23d) | 2026-03-10 → 2026-04-02 (+23d) |  | 22d → 15d |
| P2.B2.M.2803.1010 | Control Wiring to Equipment / B2 / North / 2803 | 2026-03-18 → 2026-04-03 (+16d) | 2026-03-24 → 2026-04-09 (+16d) |  | 22d → 15d |
| P2.B2.M.2803.1100 | Insulate / B2 / North / 2803 | 2026-04-08 → 2026-04-03 (-5d) | 2026-04-14 → 2026-04-09 (-5d) |  | 34d → 37d |
| P2.B2.M.2803.1120 | Electrical Tie in to Equipment / B2 / North / 2803 | 2026-03-11 → 2026-04-03 (+23d) | 2026-03-17 → 2026-04-09 (+23d) |  | 54d → 37d |
| P2.B2.M.2803.1260 | HVAC - GRD's / B2 / North / 2803 | 2026-04-01 → 2026-04-10 (+9d) | 2026-04-07 → 2026-04-16 (+9d) |  | 22d → 15d |
| P2.B2.M.2803.1270 | Lighting Install / B2 / North / 2803 | 2026-04-08 → 2026-04-17 (+9d) | 2026-04-14 → 2026-04-23 (+9d) |  | 22d → 15d |
| P2.B2.M.2803.1280 | Fire Alarm/Ceiling Device Install / B2 / North / 2803 | 2026-04-15 → 2026-04-24 (+9d) | 2026-04-21 → 2026-04-30 (+9d) |  | 22d → 15d |
| P2.B2.M.2803.1290 | Prep Floor for Flooring - Epoxy Floors / B2 / North / 2803 | 2026-04-22 → 2026-05-01 (+9d) | 2026-04-28 → 2026-05-07 (+9d) |  | 22d → 15d |
| P2.B2.M.2803.1300 | Flooring - Epoxy Floors / B2 / North / 2803 | 2026-04-29 → 2026-05-08 (+9d) | 2026-04-30 → 2026-05-11 (+11d) |  | 22d → 15d |
| P2.B2.N.1610 | Trades Inspect & Verify R/I Work Completed to Specs / B2 / North / 2930 | 2026-05-01 → 2026-05-12 (+11d) | 2026-05-07 → 2026-05-18 (+11d) |  | 22d → 15d |
| P2.B2.M.5970.1370 | Ready for Start Up - Mech Equip / B2 / North / 2803 | 2026-05-08 → 2026-05-19 (+11d) | 2026-05-14 → 2026-05-26 (+12d) |  | 22d → 15d |
| 5 | **IT Closets / Level B2/B1** |  | 2026-05-14 → 2026-05-18 (+4d) |  |  |
| 1 | **IT Closet / B2-2806** |  | 2026-05-14 → 2026-05-18 (+4d) |  |  |
| P2.B2.IT.2806.120 | Electrical Panels / Conduit Connections / Wire Terminations / B2 / North / 2806 | 2025-12-01 → 2025-11-17 A (-14d) | 2025-12-05 → 2025-11-21 A (-14d) | 0% → 100% | 133d → none |
| P2.B2.IT.2806.150 | Flooring / B2 / North / 2806 | 2025-12-10 → 2025-11-17 A (-23d) | 2025-12-16 → 2025-11-20 A (-26d) | 0% → 100% | 133d → none |
| P2.B2.IT.2806.130 | HVAC Equipment / B2 / North / 2806 | 2025-12-01 A | 2025-12-05 A | 0% → 100% | 133d → none |
| P2.B2.IT.2806.140 | Trim all MEPF / B2 / North / 2806 | 2025-12-08 → 2026-01-02 (+25d) | 2025-12-09 → 2026-01-05 (+27d) |  | 133d → 121d |

| ID | Task | Start | Finish | Complete | Total float |
| --- | --- | --- | --- | --- | --- |
| P2.B2.IT.2806.180 | Grounding and Bonding / B2 / North / 2806 | 2025-12-17 → 2026-01-06 (+20d) | 2025-12-18 → 2026-01-07 (+20d) |  | 133d → 121d |
| P2.B2.IT.2806.170 | OH Cable Tray / B2 / North / 2806 | 2026-03-25 → 2026-03-27 (+2d) | 2026-03-31 → 2026-04-02 (+2d) |  | 62d → 60d |
| P2.B2.IT.2806.260 | Room Ready - CIT / B2 / North / 2806 | 2026-04-01 → 2026-04-03 (+2d) | 2026-04-07 → 2026-04-09 (+2d) |  | 62d → 60d |
| P2.B2.IT.2806.160 | Equipment Racks and Ladders / B2 / North / 2806 | 2026-04-08 → 2026-04-10 (+2d) | 2026-04-14 → 2026-04-16 (+2d) |  | 62d → 60d |
| P2.B2.IT.2806.190 | Pull Wire - Backbone Cabling Into Racks / B2 / North / 2806 | 2026-04-15 → 2026-04-17 (+2d) | 2026-04-21 → 2026-04-23 (+2d) |  | 62d → 60d |
| P2.B2.IT.2806.200 | Pull Wire - Horizontal Cabling Out to Termination Points / B2 / North / 2806 | 2026-04-15 → 2026-04-17 (+2d) | 2026-04-21 → 2026-04-23 (+2d) |  | 62d → 60d |
| P2.B2.IT.2806.210 | Paint - Finish Coat / B2 / North / 2806 | 2026-04-22 → 2026-04-24 (+2d) | 2026-04-23 → 2026-04-27 (+4d) |  | 62d → 60d |
| P2.B2.IT.2806.220 | Terminations and Punch Downs - All Cabling / B2 / North / 2806 | 2026-04-24 → 2026-04-28 (+4d) | 2026-05-14 → 2026-05-18 (+4d) |  | 62d → 60d |
| P2.B2.IT.2806.230 | Doors & Hardware / B2 / North / 2806 | 2026-04-24 → 2026-04-28 (+4d) | 2026-04-27 → 2026-04-29 (+2d) |  | 72d → 70d |
| P2.B2.IT.2806.240 | Energize Elec Panels Serving Comms Racks / B2 / North / 2806 | 2026-04-28 → 2026-04-30 (+2d) | 2026-04-30 → 2026-05-04 (+4d) |  | 72d → 70d |
| P2.B2.IT.2806.250 | Comms Racks In Service / B2 / North / 2806 | 2026-05-14 → 2026-05-18 (+4d) | 2026-05-14 → 2026-05-18 (+4d) |  | 62d → 60d |
| 3 | **IT Closet / B2-2903** |  | 2026-05-07 → 2026-05-11 (+4d) |  |  |
| P2.B2.IT.2903.150 | Flooring / B2 / North / 2903 | 2025-12-10 → 2025-11-17 A (-23d) | 2025-12-16 → 2025-11-20 A (-26d) | 0% → 100% | 138d → none |
| P2.B2.IT.2903.130 | HVAC Equipment / B2 / North / 2903 | 2025-12-01 A | 2025-12-05 A | 0% → 100% | 138d → none |
| P2.B2.IT.2903.120 | Electrical Panels / Conduit Connections / Wire Terminations / B2 / North / 2903 | 2025-12-01 → 2025-12-08 A (+7d) | 2025-12-05 → 2025-12-12 A (+7d) | 0% → 100% | 138d → none |
| P2.B2.IT.2903.140 | Trim all MEPF / B2 / North / 2903 | 2025-12-08 → 2026-01-02 (+25d) | 2025-12-09 → 2026-01-05 (+27d) |  | 138d → 126d |
| P2.B2.IT.2903.160 | Grounding and Bonding / B2 / North / 2903 | 2025-12-17 → 2026-01-06 (+20d) | 2025-12-18 → 2026-01-07 (+20d) |  | 138d → 126d |
| P2.B2.IT.2903.170 | OH Cable Tray / B2 / North / 2903 | 2026-03-25 → 2026-03-27 (+2d) | 2026-03-31 → 2026-04-02 (+2d) |  | 67d → 65d |
| P2.B2.IT.2903.180 | Room Ready - CIT / B2 / North / 2903 | 2026-04-01 → 2026-04-03 (+2d) | 2026-04-07 → 2026-04-09 (+2d) |  | 67d → 65d |
| P2.B2.IT.2903.190 | Equipment Racks and Ladders / B2 / North / 2903 | 2026-04-08 → 2026-04-10 (+2d) | 2026-04-14 → 2026-04-16 (+2d) |  | 67d → 65d |
| P2.B2.IT.2903.200 | Pull Wire - Backbone Cabling Into Racks / B2 / North / 2903 | 2026-04-15 → 2026-04-17 (+2d) | 2026-04-21 → 2026-04-23 (+2d) |  | 67d → 65d |
| P2.B2.IT.2903.210 | Pull Wire - Horizontal Cabling Out to Termination Points / B2 / North / 2903 | 2026-04-15 → 2026-04-17 (+2d) | 2026-04-21 → 2026-04-23 (+2d) |  | 67d → 65d |
| P2.B2.IT.2903.220 | Paint - Finish Coat / B2 / North / 2903 | 2026-04-22 → 2026-04-24 (+2d) | 2026-04-23 → 2026-04-27 (+4d) |  | 67d → 65d |
| P2.B2.IT.2903.230 | Terminations and Punch Downs - All Cabling / B2 / North / 2903 | 2026-04-24 → 2026-04-28 (+4d) | 2026-05-07 → 2026-05-11 (+4d) |  | 67d → 65d |
| P2.B2.IT.2903.240 | Doors & Hardware / B2 / North / 2903 | 2026-04-24 → 2026-04-28 (+4d) | 2026-04-27 → 2026-04-29 (+2d) |  | 72d → 70d |
| P2.B2.IT.2903.250 | Energize Elec Panels Serving Comms Racks / B2 / North / 2903 | 2026-04-28 → 2026-04-30 (+2d) | 2026-04-30 → 2026-05-04 (+4d) |  | 72d → 70d |
| P2.B2.IT.2903.260 | Comms Racks In Service / B2 / North / 2903 | 2026-05-07 → 2026-05-11 (+4d) | 2026-05-07 → 2026-05-11 (+4d) |  | 67d → 65d |
| 1 | **FINISHES - CORE & SUPPORT SPACES / Level B2/B1** |  | 2026-11-30 → 2026-12-31 (+31d) |  |  |
| 6 | **Bathrooms - Break Rooms - Locker Rooms / Level B2/B1** |  | 2026-06-24 → 2026-07-20 (+26d) |  |  |
| 1 | **Toilets B2-2811A / B2-2811B / B2-2811C** |  | 2026-02-05 → 2026-03-05 (+28d) |  |  |
| P2.B2.BR.2020 | Plumbing - Test Pipe / B2 / North / 2811 Toilets | 2025-12-01 A | 2025-12-02 A | 0% → 100% | 185d → none |
| P2.B2.BR.2070 | In Wall - Insulate Plumbing / B2 / North / 2811 Toilets | 2025-12-15 A | 2025-12-16 → 2025-12-15 A (-1d) | 0% → 100% | 177d → none |
| P2.B2.BR.2010 | Framing & Blocking - Walls and Hard Lid Ceilings / B2 / North / 2811 Toilets | 2025-12-01 → 2026-01-02 (+32d) | 2025-12-02 → 2026-01-05 (+34d) |  | 177d → 157d |
| P2.B2.BR.2040 | Trim Sprinkler Drops _ Hard Lids / B2 / North / 2811 Toilets | 2025-12-03 → 2026-01-06 (+34d) | 2025-12-04 → 2026-01-07 (+34d) |  | 177d → 157d |
| P2.B2.BR.2050 | Duct Drops _ Hard Lids / B2 / North / 2811 Toilets | 2025-12-05 → 2026-01-08 (+34d) | 2025-12-08 → 2026-01-09 (+32d) |  | 177d → 157d |
| P2.B2.BR.2030 | R/I - Electrical _ Hard Lids / B2 / North / 2811 Toilets | 2025-12-09 → 2026-01-12 (+34d) | 2025-12-10 → 2026-01-13 (+34d) |  | 177d → 157d |
| P2.B2.BR.2060 | R/I - Fire Alarm _ Hard Lids / B2 / North / 2811 Toilets | 2025-12-11 → 2026-01-14 (+34d) | 2025-12-12 → 2026-01-15 (+34d) |  | 177d → 157d |
| P2.B2.BR.2080 | Inspection - Close In - Walls and Hard Lid Ceilings / B2 / North / 2811 Toilets | 2025-12-17 → 2026-01-16 (+30d) | 2025-12-19 → 2026-01-20 (+32d) |  | 177d → 157d |
| P2.B2.BR.2090 | Hang-Tape-Finish _ Walls and Hard Lids Ceilings / B2 / North / 2811 Toilets | 2025-12-22 → 2026-01-21 (+30d) | 2025-12-29 → 2026-01-27 (+29d) |  | 177d → 157d |
| P2.B2.BR.2100 | Paint Prime & Final Coat _ Walls & Hard Lid Ceilings / B2 / North / 2811 Toilets | 2025-12-30 → 2026-01-28 (+29d) | 2025-12-31 → 2026-01-29 (+29d) |  | 177d → 157d |
| P2.B2.BR.2140 | Trim - HVAC G/R/D's / B2 / North / 2811 Toilets | 2026-01-02 → 2026-01-30 (+28d) | 2026-01-05 → 2026-02-02 (+28d) |  | 177d → 157d |
| P2.B2.BR.2120 | Pull Wire & Trim Devices - Electrical / B2 / North / 2811 Toilets | 2026-01-06 → 2026-02-03 (+28d) | 2026-01-07 → 2026-02-04 (+28d) |  | 177d → 157d |
| P2.B2.BR.2130 | Lights - Set & Terminate / B2 / North / 2811 Toilets | 2026-01-06 → 2026-02-03 (+28d) | 2026-01-07 → 2026-02-04 (+28d) |  | 179d → 159d |
| P2.B2.BR.2110 | Pull Wire & Trim Devices - Fire Alarm / B2 / North / 2811 Toilets | 2026-01-08 → 2026-02-05 (+28d) | 2026-01-09 → 2026-02-06 (+28d) |  | 177d → 157d |
| P2.B2.BR.2150 | Wall Tile / B2 / North / 2811 Toilets | 2026-01-12 → 2026-02-09 (+28d) | 2026-01-16 → 2026-02-13 (+28d) |  | 177d → 157d |
| P2.B2.BR.2170 | Plumbing Fixtures / Sinks / Showers / B2 / North / 2811 Toilets | 2026-01-19 → 2026-02-16 (+28d) | 2026-01-20 → 2026-02-17 (+28d) |  | 177d → 157d |
| P2.B2.BR.2210 | Flooring Prep - Epoxy Floors / B2 / North / 2811 Toilets | 2026-01-21 → 2026-02-18 (+28d) | 2026-01-23 → 2026-02-20 (+28d) |  | 177d → 157d |
| P2.B2.BR.2180 | Bathroom Accessories / B2 / North / 2811 Toilets | 2026-01-21 → 2026-02-20 (+30d) | 2026-01-22 → 2026-02-23 (+32d) |  | 269d → 247d |
| P2.B2.BR.2200 | Flooring - Epoxy Floors / B2 / North / 2811 Toilets | 2026-01-26 → 2026-02-23 (+28d) | 2026-01-27 → 2026-02-24 (+28d) |  | 177d → 157d |
| P2.B2.BR.2160 | Doors & Hardware / B2 / North / 2811 Toilets | 2026-01-28 → 2026-02-25 (+28d) | 2026-01-29 → 2026-02-26 (+28d) |  | 177d → 157d |
| P2.B2.BR.2190 | Work Completion List - Finishes / B2 / North / 2811 Toilets | 2026-01-30 → 2026-02-27 (+28d) | 2026-02-05 → 2026-03-05 (+28d) |  | 264d → 244d |
| 4 | **Lockers, Toilets, and Showers B2-2981 / B2-2989** |  | 2026-06-24 → 2026-07-20 (+26d) |  |  |
| P2.B2.BR.1030 | Plumbing - Test Pipe @ Chase Walls / B2 / South / 289X Toilets | 2025-12-01 A | 2025-12-05 A | 0% → 100% | 124d → none |
| P2.B2.BR.1020 | Frame - Chase Walls and Hard Lid Ceilings / B2 / South / 289X Toilets | 2025-12-15 → 2025-12-03 A (-12d) | 2025-12-19 → 2025-12-24 A (+5d) | 0% → 100% | 99d → none |
| P2.B2.BR.1080 | In Wall - Insulate Plumbing / B2 / South / 289X Toilets | 2025-12-08 A | 2025-12-12 A | 0% → 100% | 124d → none |
| P2.B2.BR.1010 | Countertop Support Framing / B2 / South / 289X Toilets | 2025-12-08 → 2026-01-09 (+32d) | 2025-12-12 → 2026-01-15 (+34d) |  | 99d → 82d |
| P2.B2.BR.1050 | Trim Sprinkler Drops _ Hard Lids / B2 / South / 289X Toilets | 2025-12-22 → 2026-01-16 (+25d) | 2025-12-29 → 2026-01-22 (+24d) |  | 99d → 82d |
| P2.B2.BR.1060 | Duct Drops _ Hard Lids / B2 / South / 289X Toilets | 2025-12-30 → 2026-01-23 (+24d) | 2026-01-06 → 2026-01-29 (+23d) |  | 99d → 82d |
| P2.B2.BR.1040 | R/I - Electrical _ Hard Lids / B2 / South / 289X Toilets | 2026-01-07 → 2026-01-30 (+23d) | 2026-01-13 → 2026-02-05 (+23d) |  | 99d → 82d |
| P2.B2.BR.1070 | R/I - Fire Alarm _ Hard Lids / B2 / South / 289X Toilets | 2026-01-14 → 2026-02-06 (+23d) | 2026-01-20 → 2026-02-12 (+23d) |  | 99d → 82d |
| P2.B2.BR.1090 | Inspection - Close In - Chase Walls and Hard Lid Ceilings / B2 / South / 289X Toilets | 2026-01-21 → 2026-02-13 (+23d) | 2026-01-27 → 2026-02-19 (+23d) |  | 99d → 82d |
| P2.B2.BR.1100 | Hang-Tape-Finish _ Chase Walls and Hard Lids Ceilings / B2 / South / 289X Toilets | 2026-01-28 → 2026-02-20 (+23d) | 2026-02-03 → 2026-02-26 (+23d) |  | 99d → 82d |
| P2.B2.BR.1110 | Paint Prime & 1st Coat _ Walls & Hard Lid Ceilings / B2 / South / 289X Toilets | 2026-02-04 → 2026-02-27 (+23d) | 2026-02-10 → 2026-03-05 (+23d) |  | 99d → 82d |
| P2.B2.BR.1140 | Ceiling Grid / B2 / South / 289X Toilets | 2026-02-11 → 2026-03-06 (+23d) | 2026-02-17 → 2026-03-12 (+23d) |  | 99d → 82d |
| P2.B2.BR.1170 | Trim Sprinkler Drops _ Ceiling Tiles / B2 / South / 289X Toilets | 2026-02-18 → 2026-03-13 (+23d) | 2026-02-24 → 2026-03-19 (+23d) |  | 99d → 82d |
| P2.B2.BR.1160 | Trim - HVAC G/R/D's / B2 / South / 289X Toilets | 2026-02-25 → 2026-03-20 (+23d) | 2026-03-03 → 2026-03-26 (+23d) |  | 99d → 82d |
| P2.B2.BR.1130 | Pull Wire - Electrical / B2 / South / 289X Toilets | 2026-03-04 → 2026-03-27 (+23d) | 2026-03-10 → 2026-04-02 (+23d) |  | 99d → 82d |
| P2.B2.BR.1120 | Pull Wire - Fire Alarm / B2 / South / 289X Toilets | 2026-03-11 → 2026-04-03 (+23d) | 2026-03-17 → 2026-04-09 (+23d) |  | 226d → 209d |
| P2.B2.BR.1150 | Lights - Set & Terminate / B2 / South / 289X Toilets | 2026-03-11 → 2026-04-03 (+23d) | 2026-03-17 → 2026-04-09 (+23d) |  | 99d → 82d |
| P2.B2.BR.1180 | Inspection - Ceiling Close In - ACT Ceilings / B2 / South / 289X Toilets | 2026-03-18 → 2026-04-10 (+23d) | 2026-03-24 → 2026-04-16 (+23d) |  | 99d → 82d |

| ID | Task | Start | Finish | Complete | Total float | Predecessors |
| --- | --- | --- | --- | --- | --- | --- |
| P2.B2.BR.1190 | Ceiling Tiles / B2 / South / 289X Toilets | 2026-03-25 → 2026-04-17 (+23d) | 2026-03-31 → 2026-04-23 (+23d) |  | 99d → 82d |  |
| P2.B2.BR.1200 | Wall Tile / B2 / South / 289X Toilets | 2026-04-01 → 2026-04-24 (+23d) | 2026-04-07 → 2026-04-30 (+23d) |  | 99d → 82d |  |
| P2.B2.BR.2220 | Flooring Prep - Epoxy Floors / B2 / South / 289X Toilets | 2026-04-08 → 2026-05-01 (+23d) | 2026-04-10 → 2026-05-05 (+25d) |  | 99d → 82d |  |
| P2.B2.BR.2230 | Flooring - Epoxy Floors / B2 / South / 289X Toilets | 2026-04-13 → 2026-05-06 (+23d) | 2026-04-14 → 2026-05-07 (+23d) |  | 99d → 82d |  |
| P2.B2.BR.1210 | Paint - Finish Coat / B2 / South / 289X Toilets | 2026-04-15 → 2026-05-08 (+23d) | 2026-04-21 → 2026-05-14 (+23d) |  | 99d → 82d |  |
| P2.B2.BR.1220 | Countertops / B2 / South / 289X Toilets | 2026-04-22 → 2026-05-15 (+23d) | 2026-04-28 → 2026-05-21 (+23d) |  | 99d → 82d |  |
| P2.B2.BR.1260 | Lockers & Benches / B2 / South / 289X Toilets | 2026-04-29 → 2026-05-22 (+23d) | 2026-05-05 → 2026-05-29 (+24d) |  | 99d → 82d |  |
| P2.B2.BR.1270 | Plumbing Fixtures / Sinks / Showers / B2 / South / 289X Toilets | 2026-05-06 → 2026-06-01 (+26d) | 2026-05-12 → 2026-06-05 (+24d) |  | 99d → 82d |  |
| P2.B2.BR.1250 | Doors & Hardware / B2 / South / 289X Toilets | 2026-05-13 → 2026-06-08 (+26d) | 2026-05-19 → 2026-06-12 (+24d) |  | 99d → 82d |  |
| P2.B2.BR.1280 | Toilet Partitions / B2 / South / 289X Toilets | 2026-05-20 → 2026-06-15 (+26d) | 2026-05-27 → 2026-06-19 (+23d) |  | 166d → 149d |  |
| P2.B2.BR.1290 | Bathroom Accessories / B2 / South / 289X Toilets | 2026-05-28 → 2026-06-22 (+25d) | 2026-06-03 → 2026-06-26 (+23d) |  | 166d → 149d |  |
| P2.B2.BR.1240 | Trim - Electrical Devices / B2 / South / 289X Toilets | 2026-06-04 → 2026-06-29 (+25d) | 2026-06-10 → 2026-07-06 (+26d) |  | 166d → 149d |  |
| P2.B2.BR.1230 | Trim - Fire Alarm Devices / B2 / South / 289X Toilets | 2026-06-11 → 2026-07-07 (+26d) | 2026-06-17 → 2026-07-13 (+26d) |  | 166d → 149d |  |
| P2.B2.BR.1300 | Work Completion List - Finishes / B2 / South / 289X Toilets | 2026-06-18 → 2026-07-14 (+26d) | 2026-06-24 → 2026-07-20 (+26d) |  | 166d → 149d |  |
| 4 | **Corridors & Lobbies / Level B2/B1** | 2026-04-09 → 2026-05-11 (+32d) | 2026-11-30 → 2026-12-31 (+31d) |  |  |  |
| P2.B2.CL.1000 | Paint Prime & 1st Coat Walls / B2 / Corr & Lobbies | 2026-04-09 → 2026-05-11 (+32d) | 2026-04-15 → 2026-05-15 (+30d) |  | 57d → 35d |  |
| P2.B2.CL.1010 | Framing - Hard Lid Ceilings / B2 / Corr & Lobbies | 2026-04-16 → 2026-05-18 (+32d) | 2026-04-29 → 2026-06-01 (+33d) |  | 62d → 40d |  |
| P2.B2.CL.1020 | T-Grid / B2 / Corr & Lobbies | 2026-04-16 → 2026-05-18 (+32d) | 2026-04-29 → 2026-06-01 (+33d) |  | 57d → 35d |  |
| P2.B2.CL.1070 | Trim - Sprinkler Heads @ T-Grid / B2 / Corr & Lobbies | 2026-04-27 → 2026-05-28 (+31d) | 2026-05-01 → 2026-06-03 (+33d) |  | 57d → 35d |  |
| P2.B2.CL.1040 | R/I - Trim Sprinkler Heads- All Ceilings / B2 / Corr & Lobbies | 2026-05-04 → 2026-06-04 (+31d) | 2026-05-08 → 2026-06-10 (+33d) |  | 57d → 35d |  |
| P2.B2.CL.1050 | R/I - HVAC- All Ceilings / B2 / Corr & Lobbies | 2026-05-11 → 2026-06-11 (+31d) | 2026-05-15 → 2026-06-17 (+33d) |  | 57d → 35d |  |
| P2.B2.CL.1030 | R/I - Electrical - All Ceilings / B2 / Corr & Lobbies | 2026-05-18 → 2026-06-18 (+31d) | 2026-05-22 → 2026-06-24 (+33d) |  | 57d → 35d |  |
| P2.B2.CL.1080 | R/I - Fire Alarm/Life Safety - All Ceilings / B2 / Corr & Lobbies | 2026-05-26 → 2026-06-25 (+30d) | 2026-06-01 → 2026-07-01 (+30d) |  | 57d → 35d |  |
| P2.B2.CL.1100 | Pull Wire - Electrical / B2 / Corr & Lobbies | 2026-05-26 → 2026-06-25 (+30d) | 2026-06-08 → 2026-07-09 (+31d) |  | 87d → 65d |  |
| P2.B2.CL.1060 | R/I - All Remaining Low Voltage - All Ceilings / B2 / Corr & Lobbies | 2026-06-02 → 2026-07-02 (+30d) | 2026-06-08 → 2026-07-09 (+31d) |  | 57d → 35d |  |
| P2.B2.CL.1110 | Pull Wire - Fire Alarm / B2 / Corr & Lobbies | 2026-06-02 → 2026-07-02 (+30d) | 2026-06-08 → 2026-07-09 (+31d) |  | 97d → 75d |  |
| P2.B2.CL.1090 | Inspections - Close In- All Ceilings / B2 / Corr & Lobbies | 2026-06-09 → 2026-07-10 (+31d) | 2026-06-15 → 2026-07-16 (+31d) |  | 57d → 35d |  |
| P2.B2.CL.1120 | Pull Wire - All Remianing Low Voltage Systems / B2 / Corr & Lobbies | 2026-06-09 → 2026-07-10 (+31d) | 2026-06-15 → 2026-07-16 (+31d) |  | 102d → 80d |  |
| P2.B2.CL.1130 | Hang/Tape/Finish- Hard Lid Ceilings / B2 / Corr & Lobbies | 2026-06-16 → 2026-07-17 (+31d) | 2026-06-29 → 2026-07-30 (+31d) |  | 57d → 35d |  |
| P2.B2.CL.1140 | Drop Ceiling Tiles @ T-Grid / B2 / Corr & Lobbies | 2026-06-16 → 2026-07-17 (+31d) | 2026-06-22 → 2026-07-23 (+31d) |  | 115d → 93d |  |
| P2.B2.CL.1190 | Paint - Hard Lid Ceilings / B2 / Corr & Lobbies | 2026-06-30 → 2026-07-31 (+31d) | 2026-07-07 → 2026-08-06 (+30d) |  | 57d → 35d |  |
| P2.B2.CL.1180 | Ceiling Mounted - HVAC GRD's / B2 / Corr & Lobbies | 2026-07-08 → 2026-08-07 (+30d) | 2026-07-28 → 2026-08-27 (+30d) |  | 57d → 35d |  |
| P2.B2.CL.1150 | Ceiling Mounted - Electrical Devices and Lights / B2 / Corr & Lobbies | 2026-07-22 → 2026-08-21 (+30d) | 2026-08-18 → 2026-09-18 (+31d) |  | 57d → 35d |  |
| P2.B2.CL.1160 | Ceiling Mounted - Fire Alarm/Life Saftey Devices / B2 / Corr & Lobbies | 2026-08-05 → 2026-09-04 (+30d) | 2026-08-25 → 2026-09-25 (+31d) |  | 57d → 35d |  |
| P2.B2.CL.1170 | Ceiling Mounted - All Low Voltage Devices / B2 / Corr & Lobbies | 2026-08-19 → 2026-09-21 (+33d) | 2026-09-09 → 2026-10-09 (+30d) |  | 57d → 35d |  |
| P2.B2.CL.1200 | Flooring / B2 / Corr & Lobbies | 2026-09-10 → 2026-10-12 (+32d) | 2026-09-23 → 2026-10-23 (+30d) |  | 57d → 35d |  |
| P2.B2.CL.1210 | Final Paint / B2 / Corr & Lobbies | 2026-09-21 → 2026-10-21 (+30d) | 2026-09-25 → 2026-10-27 (+32d) |  | 57d → 35d |  |
| P2.B2.CL.1220 | Floor Base / B2 / Corr & Lobbies | 2026-09-28 → 2026-10-28 (+30d) | 2026-10-02 → 2026-11-03 (+32d) |  | 57d → 35d |  |
| P2.B2.CL.1250 | Trim - HVAC - Wall Mounted Devices / B2 / Corr & Lobbies | 2026-10-05 → 2026-11-04 (+30d) | 2026-10-09 → 2026-11-10 (+32d) |  | 57d → 35d |  |
| P2.B2.CL.1230 | Trim - All Electrical - Wall Mounted Devices / B2 / Corr & Lobbies | 2026-10-12 → 2026-11-11 (+30d) | 2026-10-16 → 2026-11-17 (+32d) |  | 57d → 35d |  |
| P2.B2.CL.1240 | Trim - Fire Alarm - Wall Mounted Devices / B2 / Corr & Lobbies | 2026-10-19 → 2026-11-18 (+30d) | 2026-10-23 → 2026-11-24 (+32d) |  | 57d → 35d |  |
| P2.B2.CL.1260 | Trim - All Remining Low Voltage Systems - Wall Mounted Devices / B2 / Corr & Lobbies | 2026-10-26 → 2026-11-25 (+30d) | 2026-10-30 → 2026-12-03 (+34d) |  | 57d → 35d |  |
| P2.B2.CL.1270 | Building Signage / B2 / Corr & Lobbies | 2026-11-02 → 2026-12-04 (+32d) | 2026-11-06 → 2026-12-10 (+34d) |  | 57d → 35d |  |
| P2.B2.CL.1280 | Work Completion List / B2 / Corr & Lobbies | 2026-11-09 → 2026-12-11 (+32d) | 2026-11-13 → 2026-12-17 (+34d) |  | 57d → 35d |  |
| P2.B2.CL.1290 | Rough Clean / B2 / Corr & Lobbies | 2026-11-16 → 2026-12-18 (+32d) | 2026-11-17 → 2026-12-21 (+34d) |  | 57d → 35d |  |
| P2.B2.CL.1300 | Punchlist / B2 / Corr & Lobbies | 2026-11-18 → 2026-12-22 (+34d) | 2026-11-24 → 2026-12-29 (+35d) |  | 57d → 35d |  |
| P2.B2.CL.1310 | Final Clean / B2 / Corr & Lobbies | 2026-11-25 → 2026-12-30 (+35d) | 2026-11-30 → 2026-12-31 (+31d) |  | 57d → 35d | P2.B2.CL.1300 → P2.B2.CL.1300, P2.B2.M.5970 |
| 4 | **LAB & CLINICAL SPACES (Below Interstitials) / LEVEL B2/B1** |  | 2026-12-02 → 2027-01-05 (+34d) |  |  |  |
| 3 | **ROUGH IN - Lab & Clinical Spaces (25K SF) / Level B2/B1** |  | 2026-04-21 → 2026-06-05 (+45d) |  |  |  |
| P2.B2.LC.1560 | Test - OH Fire Suppression / B2 / Lab & Clinical |  | 2025-12-03 → 2026-01-06 (+34d) |  | 76d → 39d |  |
| P2.B2.LC.1250 | OH - Insulate HVAC Pipe / B2 / Lab & Clinical |  | 2026-02-17 → 2026-03-19 (+30d) |  | 54d → 32d |  |
| P2.B2.LC.1270 | OH - Insulate Plumbing / B2 / Lab & Clinical |  | 2026-02-03 → 2026-03-05 (+30d) |  | 74d → 52d |  |
| P2.B2.LC.1390 | OH - Set & Connect Mech Equipment / B2 / Lab & Clinical |  | 2025-12-17 → 2025-12-15 A (-2d) | 0% → 100% | 96d → none |  |
| P2.B2.LC.1110 | In Wall - Plumbing - Framing / B2 / Lab & Clinical | 2026-02-11 → 2025-12-01 A (-72d) | 2026-03-10 → 2025-12-15 A (-85d) | 0% → 100% | 34d → none |  |
| P2.B2.LC.1120 | OH - Hang Duct - LP Branch / B2 / Lab & Clinical | 2026-01-28 → 2025-12-01 A (-58d) | 2026-02-24 → 2025-12-15 A (-71d) | 0% → 100% | 39d → none |  |
| P2.B2.LC.2470 | OH - Integrated Ceilings MEP Infrastructure (Trunkline, monotrack, Etc.) / B2 / Lab & Clinical | 2025-12-08 → 2026-01-02 (+25d) | 2025-12-12 → 2026-01-08 (+27d) |  | 216d → 199d |  |
| P2.B2.LC.1210 | OH - Electrical - Equip Tie In / B2 / Lab & Clinical | 2025-12-30 → 2026-01-30 (+31d) | 2026-01-13 → 2026-02-12 (+30d) |  | 89d → 67d |  |
| P2.B2.LC.1230 | OH - HVAC Piping - Equip Tie In / B2 / Lab & Clinical | 2026-01-28 → 2026-02-20 (+23d) | 2026-02-24 → 2026-03-19 (+23d) |  | 69d → 52d |  |
| P2.B2.LC.1040 | OH - Insulate HP Duct / B2 / Lab & Clinical | 2026-01-28 → 2026-02-27 (+30d) | 2026-02-10 → 2026-03-12 (+30d) |  | 54d → 32d |  |
| P2.B2.LC.1260 | OH - Insulate LP Duct / B2 / Lab & Clinical | 2026-02-25 → 2026-02-27 (+2d) | 2026-03-10 → 2026-03-12 (+2d) |  | 39d → 2d |  |
| P2.B2.LC.1410 | Framing - Balance of Framing & Door Frames / B2 / Lab & Clinical | 2026-01-28 → 2026-02-27 (+30d) | 2026-02-10 → 2026-03-12 (+30d) |  | 34d → 12d |  |
| P2.B2.LC.2460 | Chair Carrier - In Wall Rough-in / B2 / Lab & Clinical | 2026-02-10 → 2026-03-12 (+30d) | 2026-02-10 → 2026-03-12 (+30d) |  | 34d → 12d |  |
| P2.B2.LC.1150 | In Wall - Backing/Blocking/Supports / B2 / Lab & Clinical | 2026-02-11 → 2026-03-13 (+30d) | 2026-02-17 → 2026-03-19 (+30d) |  | 49d → 27d |  |
| P2.B2.LC.1200 | OH - Electrical - 208/120v Branch / B2 / Lab & Clinical | 2026-01-28 → 2026-03-13 (+44d) | 2026-02-10 → 2026-03-26 (+44d) |  | 34d → 2d | P2.B2.LC.1080, RFP.015.1290, RFP.015.1350 → P2.B2.LC.1080, RFP.015.1290, P2.B2.LC.1260, RFP.015.1350 |
| P2.B2.LC.1500 | OH - Conduit - Low Volt - Fire Alarm / B2 / Lab & Clinical | 2026-03-11 → 2026-03-13 (+2d) | 2026-03-24 → 2026-03-26 (+2d) |  | 39d → 37d |  |
| P2.B2.LC.1510 | OH - Conduit - Low Volt - Telecom / B2 / Lab & Clinical | 2026-03-11 → 2026-03-13 (+2d) | 2026-03-24 → 2026-03-26 (+2d) |  | 39d → 37d |  |
| P2.B2.LC.1530 | OH - Conduit - Low Volt - Medical Services/Nurse Call (?) / B2 / Lab & Clinical | 2026-03-11 → 2026-03-13 (+2d) | 2026-03-24 → 2026-03-26 (+2d) |  | 39d → 37d |  |
| P2.B2.LC.1490 | OH - Conduit - Low Volt - BAS/Controls / B2 / Lab & Clinical | 2026-02-18 → 2026-03-20 (+30d) | 2026-03-03 → 2026-04-02 (+30d) |  | 54d → 32d |  |
| P2.B2.LC.1520 | OH - Conduit - Low Volt - Security / B2 / Lab & Clinical | 2026-02-18 → 2026-03-20 (+30d) | 2026-03-03 → 2026-04-02 (+30d) |  | 54d → 32d |  |
| P2.B2.LC.1140 | In Wall - Electrical - Framing / B2 / Lab & Clinical | 2026-02-11 → 2026-03-27 (+44d) | 2026-03-10 → 2026-04-23 (+44d) |  | 34d → 2d |  |

| ID | Task | Start | Finish | Total float | Predecessors |
| --- | --- | --- | --- | --- | --- |
| P2.B2.LC.1170 | AHJ Inspections - Wall Close In / B2 / Lab & Clinical | 2026-03-11 → 2026-04-24 (+44d) | 2026-03-17 → 2026-04-30 (+44d) | 34d → 2d |  |
| P2.B2.LC.1420 | Pull Wire - Electrical - 208/120v Branch & Equip / B2 / Lab & Clinical | 2026-03-11 → 2026-04-24 (+44d) | 2026-03-24 → 2026-05-07 (+44d) | 49d → 17d |  |
| P2.B2.LC.1180 | Hang-Tape-Finish - Walls and Hard Lid Ceilings / B2 / Lab & Clinical | 2026-03-18 → 2026-05-01 (+44d) | 2026-03-31 → 2026-05-14 (+44d) | 34d → 2d |  |
| P2.B2.LC.1130 | Spray/Seal/Firestop - Head of Wall / B2 / Lab & Clinical | 2026-04-01 → 2026-05-15 (+44d) | 2026-04-14 → 2026-05-29 (+45d) | 34d → 2d |  |
| P2.B2.LC.1160 | Firestop - Thru Wall / B2 / Lab & Clinical | 2026-04-01 → 2026-05-15 (+44d) | 2026-04-14 → 2026-05-29 (+45d) | 34d → 2d |  |
| P2.B2.LC.1430 | Pull Wire - Low Volt - BAS/Controls / B2 / Lab & Clinical | 2026-04-01 → 2026-05-15 (+44d) | 2026-04-14 → 2026-05-29 (+45d) | 34d → 2d |  |
| P2.B2.LC.1440 | Pull Wire - Low Volt - Fire Alarm / B2 / Lab & Clinical | 2026-04-01 → 2026-05-15 (+44d) | 2026-04-14 → 2026-05-29 (+45d) | 34d → 2d |  |
| P2.B2.LC.1450 | Pull Wire - Low Volt - Telecom / B2 / Lab & Clinical | 2026-04-01 → 2026-05-15 (+44d) | 2026-04-14 → 2026-05-29 (+45d) | 34d → 2d |  |
| P2.B2.LC.1460 | Pull Wire - Low Volt - Security / B2 / Lab & Clinical | 2026-04-01 → 2026-05-15 (+44d) | 2026-04-14 → 2026-05-29 (+45d) | 34d → 2d |  |
| P2.B2.LC.1480 | Pull Wire - Low Volt - Medical Services/Nurse Call (?) / B2 / Lab & Clinical | 2026-04-01 → 2026-05-15 (+44d) | 2026-04-14 → 2026-05-29 (+45d) | 34d → 2d |  |
| P2.B2.LC.1550 | Trades Inspect & Verify R/I Work Completed to Specs / B2 / Lab & Clinical | 2026-04-15 → 2026-06-01 (+47d) | 2026-04-21 → 2026-06-05 (+45d) | 34d → 2d |  |
| 2 | **FINISHES - Lab & Clinical Spaces / Level B2/B1** | 2026-04-01 → 2026-05-11 (+40d) | 2026-12-02 → 2027-01-05 (+34d) |  |  |
| 2 | **Decon & Sterile Storage Suites - Room Blocks B2-29.. (8K SF) / Level B2/B1** | 2026-04-16 → 2026-05-11 (+25d) | 2026-12-02 → 2027-01-05 (+34d) |  |  |
| P2.B2.F.LC.1000 | Paint - Walls / B2 / Decon, Sterile | 2026-04-16 → 2026-05-11 (+25d) | 2026-04-22 → 2026-05-15 (+23d) | 70d → 53d |  |
| BP1.226.2.160 | Install - High Purity Water Equipment - CSP | 2026-04-23 → 2026-05-18 (+25d) | 2026-05-06 → 2026-06-01 (+26d) | 93d → 76d |  |
| P2.B2.F.LC.1010 | R/I - Ceiling Assemblies & Supports - Med Equip / B2 / Decon, Sterile | 2026-04-23 → 2026-05-18 (+25d) | 2026-04-29 → 2026-05-22 (+23d) | 70d → 53d |  |
| P2.B2.F.LC.1020 | Framing - Hard Lid Ceilings / B2 / Decon, Sterile | 2026-04-30 → 2026-05-26 (+26d) | 2026-05-06 → 2026-06-01 (+26d) | 70d → 53d |  |
| P2.B2.F.LC.1030 | R/I - Lights & Devices - Hard Lids Ceilings / B2 / Decon, Sterile | 2026-05-07 → 2026-06-02 (+26d) | 2026-05-13 → 2026-06-08 (+26d) | 70d → 53d |  |
| P2.B2.F.LC.1040 | R/I - Diffusers - Hard Lid Ceilings / B2 / Decon, Sterile | 2026-05-07 → 2026-06-02 (+26d) | 2026-05-13 → 2026-06-08 (+26d) | 70d → 53d |  |
| P2.B2.F.LC.1050 | R/I - Sprinkler Heads - Hard Lid Ceilings / B2 / Decon, Sterile | 2026-05-07 → 2026-06-02 (+26d) | 2026-05-13 → 2026-06-08 (+26d) | 70d → 53d |  |
| P2.B2.F.LC.1060 | R/I - Fire Alarm - Hard Lid Ceilings / B2 / Decon, Sterile | 2026-05-07 → 2026-06-02 (+26d) | 2026-05-13 → 2026-06-08 (+26d) | 70d → 53d |  |
| P2.B2.F.LC.1070 | OH Ceiling Inspection & Signoff - Hard Lid Ceilings / B2 / Decon, Sterile | 2026-05-14 → 2026-06-09 (+26d) | 2026-05-20 → 2026-06-15 (+26d) | 70d → 53d |  |
| P2.B2.F.LC.1080 | Hang-Tape-Finish _Hard Lid Ceilings / B2 / Decon, Sterile | 2026-05-21 → 2026-06-16 (+26d) | 2026-05-28 → 2026-06-22 (+25d) | 70d → 53d |  |
| P2.B2.F.LC.1090 | Paint Ceilings / B2 / Decon, Sterile | 2026-05-29 → 2026-06-23 (+25d) | 2026-06-04 → 2026-06-29 (+25d) | 70d → 53d |  |
| P2.B2.F.LC.1100 | Waterproof Ceramic Tile / B2 / Decon, Sterile | 2026-06-05 → 2026-06-30 (+25d) | 2026-06-11 → 2026-07-07 (+26d) | 70d → 53d |  |
| P2.B2.F.LC.1110 | Ceramic Tile / B2 / Decon, Sterile | 2026-06-12 → 2026-07-08 (+26d) | 2026-06-18 → 2026-07-14 (+26d) | 70d → 53d |  |
| P2.B2.F.LC.1120 | T-Grid / B2 / Decon, Sterile | 2026-06-19 → 2026-07-15 (+26d) | 2026-06-25 → 2026-07-21 (+26d) | 70d → 53d |  |
| P2.B2.F.LC.1130 | Diffusers in T-Grid / B2 / Decon, Sterile | 2026-06-26 → 2026-07-22 (+26d) | 2026-07-02 → 2026-07-28 (+26d) | 70d → 53d |  |
| P2.B2.F.LC.1140 | Lights & Devices / B2 / Decon, Sterile | 2026-06-26 → 2026-07-22 (+26d) | 2026-07-02 → 2026-07-28 (+26d) | 70d → 53d |  |
| P2.B2.F.LC.1150 | Sprinkler Heads / B2 / Decon, Sterile | 2026-06-26 → 2026-07-22 (+26d) | 2026-07-02 → 2026-07-28 (+26d) | 70d → 53d |  |
| P2.B2.F.LC.1160 | Trim Low Voltage / B2 / Decon, Sterile | 2026-06-26 → 2026-07-22 (+26d) | 2026-07-02 → 2026-07-28 (+26d) | 70d → 53d |  |
| P2.B2.F.LC.1170 | Trim Fire Alarm / B2 / Decon, Sterile | 2026-06-26 → 2026-07-22 (+26d) | 2026-07-02 → 2026-07-28 (+26d) | 70d → 53d |  |
| P2.B2.F.LC.2460 | Ceiling Service Panel (After Cieling Grid Flooring) / B2 / Decon, Sterile | 2026-06-26 → 2026-07-22 (+26d) | 2026-06-26 → 2026-07-22 (+26d) | 74d → 57d |  |
| P2.B2.F.LC.1190 | Casework (Before Flooring) / B2 / Decon, Sterile | 2026-07-22 → 2026-08-21 (+30d) | 2026-07-23 → 2026-08-24 (+32d) | 49d → 27d |  |
| P2.B2.F.LC.2450 | Equipment (Before Flooring) / B2 / Decon, Sterile | 2026-07-22 → 2026-08-21 (+30d) | 2026-07-24 → 2026-08-25 (+32d) | 48d → 26d |  |
| P2.B2.F.LC.1220 | Plumbing Fixtures & Drinking Fountains / B2 / Decon, Sterile | 2026-07-24 → 2026-08-25 (+32d) | 2026-07-30 → 2026-08-31 (+32d) | 76d → 54d |  |
| P2.B2.F.LC.1180 | OH Ceiling Signoff / B2 / Decon, Sterile | 2026-07-27 → 2026-08-26 (+30d) | 2026-08-07 → 2026-09-09 (+33d) | 55d → 33d |  |
| P2.B2.F.LC.1210 | Wall Protection / B2 / Decon, Sterile | 2026-07-27 → 2026-08-26 (+30d) | 2026-07-31 → 2026-09-01 (+32d) | 70d → 48d |  |
| P2.B2.F.LC.1260 | Doors & Hardware / B2 / Decon, Sterile | 2026-07-27 → 2026-08-26 (+30d) | 2026-07-31 → 2026-09-01 (+32d) | 48d → 26d |  |
| P2.B2.F.LC.1200 | Drop Ceiling Tile / B2 / Decon, Sterile | 2026-08-10 → 2026-09-10 (+31d) | 2026-08-14 → 2026-09-16 (+33d) | 55d → 33d |  |
| P2.B2.F.LC.1400 | Integrated Ceilings Panel Install (Finishes) / B2 / Lab & Clinical | 2026-08-17 → 2026-09-17 (+31d) | 2026-08-21 → 2026-09-23 (+33d) | 55d → 33d |  |
| P2.B2.F.LC.1230 | Trim T-Stats / B2 / Decon, Sterile | 2026-08-24 → 2026-09-24 (+31d) | 2026-08-28 → 2026-09-30 (+33d) | 55d → 33d |  |
| P2.B2.F.LC.1240 | Trim Electrical / B2 / Decon, Sterile | 2026-08-24 → 2026-09-24 (+31d) | 2026-08-28 → 2026-09-30 (+33d) | 55d → 33d |  |
| P2.B2.F.LC.1250 | Trim Telephone/ Data / B2 / Decon, Sterile | 2026-08-24 → 2026-09-24 (+31d) | 2026-08-28 → 2026-09-30 (+33d) | 55d → 33d |  |
| P2.B2.F.LC.1270 | Trim Med Gas / B2 / Decon, Sterile | 2026-08-24 → 2026-09-24 (+31d) | 2026-08-28 → 2026-09-30 (+33d) | 55d → 33d |  |
| P2.B2.F.LC.1280 | Floor Prep / B2 / Decon, Sterile | 2026-08-31 → 2026-10-01 (+31d) | 2026-09-04 → 2026-10-07 (+33d) | 55d → 33d |  |
| P2.B2.F.LC.1290 | Flooring / B2 / Decon, Sterile | 2026-09-08 → 2026-10-08 (+30d) | 2026-09-14 → 2026-10-14 (+30d) | 55d → 33d |  |
| P2.B2.F.LC.1300 | Building Specialities / B2 / Decon, Sterile | 2026-09-15 → 2026-10-15 (+30d) | 2026-09-21 → 2026-10-21 (+30d) | 55d → 33d |  |
| P2.B2.F.LC.1310 | Interior Building Signage / B2 / Decon, Sterile | 2026-09-15 → 2026-10-15 (+30d) | 2026-09-21 → 2026-10-21 (+30d) | 55d → 33d |  |
| P2.B2.F.LC.1320 | Work Completion List - Finishes / B2 / Decon, Sterile | 2026-09-22 → 2026-10-22 (+30d) | 2026-09-28 → 2026-10-28 (+30d) | 55d → 33d |  |
| P2.B2.F.LC.1330 | Remaining Equipment Post Flooring / B2 / Decon, Sterile | 2026-09-29 → 2026-10-29 (+30d) | 2026-10-19 → 2026-11-18 (+30d) | 55d → 33d |  |
| P2.B2.F.LC.1340 | Remaining MEP Hook-Ups / B2 / Decon, Sterile | 2026-10-20 → 2026-11-19 (+30d) | 2026-10-26 → 2026-11-25 (+30d) | 55d → 33d |  |
| P2.B2.F.LC.1350 | OFOI Furniture & Equipment / B2 / Decon, Sterile | 2026-10-20 → 2026-11-19 (+30d) | 2026-10-26 → 2026-11-25 (+30d) | 65d → 43d |  |
| P2.B2.F.LC.1360 | Rough Clean / B2 / Decon, Sterile | 2026-10-27 → 2026-11-30 (+34d) | 2026-11-02 → 2026-12-04 (+32d) | 55d → 33d |  |
| P2.B2.F.LC.1370 | Prepare Punchlist / B2 / Decon, Sterile | 2026-11-03 → 2026-12-07 (+34d) | 2026-11-09 → 2026-12-11 (+32d) | 55d → 33d |  |
| P2.B2.F.LC.1380 | Correct Punchlist / B2 / Decon, Sterile | 2026-11-10 → 2026-12-14 (+34d) | 2026-11-23 → 2026-12-28 (+35d) | 55d → 33d |  |
| P2.B2.F.LC.1390 | Final Clean / B2 / Decon, Sterile | 2026-11-24 → 2026-12-29 (+35d) | 2026-12-02 → 2027-01-05 (+34d) | 55d → 33d | P2.SUM.205 FF, P2.B2.F.LC.1380 → P2.SUM.205 FF, P2.B2.F.LC.1380, P2.B2.M.5970 |
| 3 | **MRI & Cath Lab Suites - Room Blocks B2-28.. (10K SF) / Level B2/B1** | 2026-04-01 → 2026-05-11 (+40d) | 2026-09-17 → 2026-10-19 (+32d) |  |  |
| P2.B2.F.LC.2000 | Paint - Walls / B2 / MRI & Cath | 2026-04-09 → 2026-05-11 (+32d) | 2026-04-15 → 2026-05-15 (+30d) | 107d → 85d |  |
| P2.B2.F.LC.2190 | Casework (Before Flooring) / B2 / MRI & Cath | 2026-04-01 → 2026-05-15 (+44d) | 2026-04-03 → 2026-05-19 (+46d) | 126d → 94d |  |
| P2.B2.F.LC.2470 | Equipment (Before Flooring) / B2 / MRI & Cath | 2026-04-01 → 2026-05-15 (+44d) | 2026-04-01 → 2026-05-15 (+44d) | 182d → 150d |  |
| P2.B2.F.LC.2010 | R/I - Ceiling Assemblies & Supports - Med Equip / B2 / MRI & Cath | 2026-04-16 → 2026-05-18 (+32d) | 2026-04-22 → 2026-05-22 (+30d) | 107d → 85d |  |
| P2.B2.F.LC.2430 | Fumehood Equipment Install / B2 / MRI & Cath | 2026-04-03 → 2026-05-19 (+46d) | 2026-04-03 → 2026-05-19 (+46d) | 192d → 160d |  |
| P2.B2.F.LC.2210 | Wall Protection / B2 / MRI & Cath | 2026-04-06 → 2026-05-20 (+44d) | 2026-04-10 → 2026-05-27 (+47d) | 148d → 116d |  |
| P2.B2.F.LC.2220 | Plumbing Fixtures & Drinking Fountains / B2 / MRI & Cath | 2026-04-06 → 2026-05-20 (+44d) | 2026-04-10 → 2026-05-27 (+47d) | 148d → 116d |  |
| P2.B2.F.LC.2260 | Doors & Hardware / B2 / MRI & Cath | 2026-04-06 → 2026-05-20 (+44d) | 2026-04-10 → 2026-05-27 (+47d) | 126d → 94d |  |
| P2.B2.F.LC.2440 | Fumehood Equipment MEP Connection / B2 / MRI & Cath | 2026-04-06 → 2026-05-20 (+44d) | 2026-04-06 → 2026-05-20 (+44d) | 192d → 160d |  |
| P2.B2.F.LC.2020 | Framing - Hard Lid Ceilings / B2 / MRI & Cath | 2026-04-23 → 2026-05-26 (+33d) | 2026-04-29 → 2026-06-01 (+33d) | 107d → 85d |  |
| P2.B2.F.LC.2230 | Trim T-Stats / B2 / MRI & Cath | 2026-04-13 → 2026-05-28 (+45d) | 2026-04-17 → 2026-06-03 (+47d) | 148d → 116d |  |
| P2.B2.F.LC.2240 | Trim Electrical / B2 / MRI & Cath | 2026-04-13 → 2026-05-28 (+45d) | 2026-04-17 → 2026-06-03 (+47d) | 148d → 116d |  |

| ID | Task | Start | Finish | Complete | Total float | Predecessors |
| --- | --- | --- | --- | --- | --- | --- |
| P2.B2.F.LC.2250 | Trim Telephone/ Data / B2 / MRI & Cath | 2026-04-13 → 2026-05-28 (+45d) | 2026-04-17 → 2026-06-03 (+47d) |  | 148d → 116d |  |
| P2.B2.F.LC.2030 | R/I - Lights & Devices - Hard Lids Ceilings / B2 / MRI & Cath | 2026-04-30 → 2026-06-02 (+33d) | 2026-05-06 → 2026-06-08 (+33d) |  | 107d → 85d |  |
| P2.B2.F.LC.2040 | R/I - Diffusers - Hard Lid Ceilings / B2 / MRI & Cath | 2026-04-30 → 2026-06-02 (+33d) | 2026-05-06 → 2026-06-08 (+33d) |  | 107d → 85d |  |
| P2.B2.F.LC.2050 | R/I - Sprinkler Heads - Hard Lid Ceilings / B2 / MRI & Cath | 2026-04-30 → 2026-06-02 (+33d) | 2026-05-06 → 2026-06-08 (+33d) |  | 107d → 85d |  |
| P2.B2.F.LC.2060 | R/I - Fire Alarm - Hard Lid Ceilings / B2 / MRI & Cath | 2026-04-30 → 2026-06-02 (+33d) | 2026-05-06 → 2026-06-08 (+33d) |  | 107d → 85d |  |
| P2.B2.F.LC.2270 | Trim Med Gas / B2 / MRI & Cath | 2026-04-20 → 2026-06-04 (+45d) | 2026-04-24 → 2026-06-10 (+47d) |  | 148d → 116d |  |
| P2.B2.F.LC.2070 | OH Ceiling Inspection & Signoff - Hard Lid Ceilings / B2 / MRI & Cath | 2026-05-07 → 2026-06-09 (+33d) | 2026-05-13 → 2026-06-15 (+33d) |  | 107d → 85d |  |
| P2.B2.F.LC.2410 | Floor Prep / B2 / MRI | 2026-04-27 → 2026-06-11 (+45d) | 2026-05-01 → 2026-06-17 (+47d) |  | 148d → 116d |  |
| P2.B2.F.LC.2490 | Headwall - Set For MEP Tie-in / B2 / MRI & Cath | 2026-05-11 → 2026-06-12 (+32d) | 2026-05-11 → 2026-06-12 (+32d) |  | 155d → 132d |  |
| P2.B2.F.LC.2510 | Headwall - MEP Trades Connection / B2 / MRI & Cath | 2026-05-12 → 2026-06-15 (+34d) | 2026-05-12 → 2026-06-15 (+34d) |  | 155d → 132d |  |
| P2.B2.F.LC.2080 | Hang-Tape-Finish _Hard Lid Ceilings / B2 / MRI & Cath | 2026-05-14 → 2026-06-16 (+33d) | 2026-05-20 → 2026-06-22 (+33d) |  | 107d → 85d |  |
| P2.B2.F.LC.2500 | Headwall - Coverplate Install / B2 / MRI & Cath | 2026-05-13 → 2026-06-16 (+34d) | 2026-05-13 → 2026-06-16 (+34d) |  | 155d → 132d |  |
| P2.B2.F.LC.2420 | Flooring / B2 / MRI | 2026-05-04 → 2026-06-18 (+45d) | 2026-05-08 → 2026-06-24 (+47d) |  | 148d → 116d |  |
| P2.B2.F.LC.2090 | Paint Ceilings / B2 / MRI & Cath | 2026-05-21 → 2026-06-23 (+33d) | 2026-05-28 → 2026-06-29 (+32d) |  | 107d → 85d |  |
| P2.B2.F.LC.2300 | Building Specialities / B2 / MRI & Cath | 2026-05-11 → 2026-06-25 (+45d) | 2026-05-15 → 2026-07-01 (+47d) |  | 148d → 116d |  |
| P2.B2.F.LC.2100 | Waterproof Ceramic Tile / B2 / MRI & Cath | 2026-05-29 → 2026-06-30 (+32d) | 2026-06-04 → 2026-07-07 (+33d) |  | 107d → 85d |  |
| P2.B2.F.LC.2310 | Interior Building Signage / B2 / MRI & Cath | 2026-05-18 → 2026-07-02 (+45d) | 2026-05-22 → 2026-07-09 (+48d) |  | 148d → 116d |  |
| P2.B2.F.LC.2110 | Ceramic Tile / B2 / MRI & Cath | 2026-06-05 → 2026-07-08 (+33d) | 2026-06-11 → 2026-07-14 (+33d) |  | 107d → 85d |  |
| P2.B2.F.LC.2320 | Work Completion List - Finishes / B2 / MRI & Cath | 2026-05-26 → 2026-07-10 (+45d) | 2026-06-01 → 2026-07-16 (+45d) |  | 148d → 116d |  |
| P2.B2.F.LC.2120 | T-Grid / B2 / MRI & Cath | 2026-06-12 → 2026-07-15 (+33d) | 2026-06-18 → 2026-07-21 (+33d) |  | 107d → 85d |  |
| P2.B2.F.LC.2130 | Diffusers in T-Grid / B2 / MRI & Cath | 2026-06-19 → 2026-07-22 (+33d) | 2026-06-25 → 2026-07-28 (+33d) |  | 107d → 85d |  |
| P2.B2.F.LC.2140 | Lights & Devices / B2 / MRI & Cath | 2026-06-19 → 2026-07-22 (+33d) | 2026-06-25 → 2026-07-28 (+33d) |  | 107d → 85d |  |
| P2.B2.F.LC.2150 | Sprinkler Heads / B2 / MRI & Cath | 2026-06-19 → 2026-07-22 (+33d) | 2026-06-25 → 2026-07-28 (+33d) |  | 107d → 85d |  |
| P2.B2.F.LC.2160 | Trim Low Voltage / B2 / MRI & Cath | 2026-06-19 → 2026-07-22 (+33d) | 2026-06-25 → 2026-07-28 (+33d) |  | 107d → 85d |  |
| P2.B2.F.LC.2170 | Trim Fire Alarm / B2 / MRI & Cath | 2026-06-19 → 2026-07-22 (+33d) | 2026-06-25 → 2026-07-28 (+33d) |  | 107d → 85d |  |
| P2.B2.F.LC.2180 | OH Ceiling Signoff / B2 / MRI & Cath | 2026-06-26 → 2026-07-29 (+33d) | 2026-07-10 → 2026-08-11 (+32d) |  | 107d → 85d |  |
| P2.B2.F.LC.2200 | Drop Ceiling Tile / B2 / MRI & Cath | 2026-07-13 → 2026-08-12 (+30d) | 2026-07-17 → 2026-08-18 (+32d) |  | 107d → 85d |  |
| P2.B2.F.LC.2280 | Floor Prep - Epoxy Floors / B2 / Cath & Animal Critical | 2026-07-20 → 2026-08-19 (+30d) | 2026-07-24 → 2026-08-25 (+32d) |  | 107d → 85d |  |
| P2.B2.F.LC.2290 | Flooring - Epoxy Floors / B2 / Cath & Animal Critical | 2026-07-27 → 2026-08-26 (+30d) | 2026-07-28 → 2026-08-27 (+30d) |  | 107d → 85d |  |
| P2.B2.F.LC.2480 | Casework (After Flooring) / B2 / MRI & Cath | 2026-07-29 → 2026-08-28 (+30d) | 2026-07-29 → 2026-08-28 (+30d) |  | 107d → 85d |  |
| P2.B2.F.LC.2330 | Remaining Equipment Post Flooring / B2 / MRI & Cath | 2026-07-30 → 2026-08-31 (+32d) | 2026-08-05 → 2026-09-04 (+30d) |  | 107d → 85d |  |
| P2.B2.F.LC.2340 | Remaining MEP Hook-Ups / B2 / MRI & Cath | 2026-08-06 → 2026-09-08 (+33d) | 2026-08-12 → 2026-09-14 (+33d) |  | 107d → 85d |  |
| P2.B2.F.LC.2350 | OFOI Furniture & Equipment / B2 / MRI & Cath | 2026-08-06 → 2026-09-08 (+33d) | 2026-08-12 → 2026-09-14 (+33d) |  | 117d → 95d |  |
| P2.B2.F.LC.2360 | Rough Clean / B2 / MRI & Cath | 2026-08-13 → 2026-09-15 (+33d) | 2026-08-19 → 2026-09-21 (+33d) |  | 107d → 85d |  |
| P2.B2.F.LC.2370 | Prepare Punchlist / B2 / MRI & Cath | 2026-08-20 → 2026-09-22 (+33d) | 2026-08-26 → 2026-09-28 (+33d) |  | 107d → 85d |  |
| P2.B2.F.LC.2380 | Correct Punchlist / B2 / MRI & Cath | 2026-08-27 → 2026-09-29 (+33d) | 2026-09-10 → 2026-10-12 (+32d) |  | 107d → 85d |  |
| P2.B2.F.LC.2390 | Final Clean / B2 / MRI & Cath | 2026-09-11 → 2026-10-13 (+32d) | 2026-09-17 → 2026-10-19 (+32d) |  | 107d → 85d | P2.SUM.205 FF, P2.B2.F.LC.2380 → P2.SUM.205 FF, P2.B2.F.LC.2380, P2.B2.M.5970 |
| L1 | **L1 / BUILDOUT** |  | 2026-10-21 → 2026-11-18 (+28d) |  |  |  |
| 2 | **CORE & SUPPORT SPACES / LEVEL 1** |  | 2026-10-21 → 2026-11-13 (+23d) |  |  |  |
| 2 | **ROUGH IN - Core & Support Spaces / Level 1** |  | 2026-02-24 → 2026-03-26 (+30d) |  |  |  |
| Z11 | **South (14K SF) / Level 1** |  | 2026-02-24 → 2026-03-26 (+30d) |  |  |  |
| P2.L1.S.1330 | OH - HVAC Piping - Equip Tie In / L1 / South | 2026-01-28 → 2025-12-01 A (-58d) | 2026-02-17 → 2025-12-15 A (-64d) | 0% → 100% | 44d → none |  |
| P2.L1.S.1460 | AHJ Inspections - Wall Close In / L1 / South | 2025-12-01 A | 2025-12-05 A | 0% → 100% | 24d → none |  |
| P2.L1.S.1470 | Hang-Tape-Finish - Walls and Hard Lid Ceilings / L1 / South | 2025-12-08 A | 2025-12-29 A | 0% → 100% | 24d → none |  |
| P2.L1.S.1490 | Firestop - Thru Wall / L1 / South | 2025-12-30 → 2026-01-02 (+3d) | 2026-01-13 → 2026-01-15 (+2d) |  | 69d → 67d |  |
| P2.L1.S.1500 | Pull Wire - Low Volt - BAS/Controls / L1 / South | 2025-12-30 → 2026-01-02 (+3d) | 2026-01-13 → 2026-01-15 (+2d) |  | 69d → 67d |  |
| P2.L1.S.1510 | Pull Wire - Low Volt - Fire Alarm / L1 / South | 2025-12-30 → 2026-01-02 (+3d) | 2026-01-13 → 2026-01-15 (+2d) |  | 69d → 67d |  |
| P2.L1.S.1520 | Pull Wire - Low Volt - Telecom / L1 / South | 2025-12-30 → 2026-01-02 (+3d) | 2026-01-13 → 2026-01-15 (+2d) |  | 69d → 67d |  |
| P2.L1.S.1530 | Pull Wire - Low Volt - Security / L1 / South | 2025-12-30 → 2026-01-02 (+3d) | 2026-01-13 → 2026-01-15 (+2d) |  | 69d → 67d |  |
| P2.L1.S.1540 | Pull Wire - Low Volt - Medical Services/Nurse Call (?) / L1 / South | 2025-12-30 → 2026-01-02 (+3d) | 2026-01-13 → 2026-01-15 (+2d) |  | 69d → 67d |  |
| P2.L1.S.1550 | Trades Inspect & Verify R/I Work Completed to Specs / L1 / South | 2026-02-18 → 2026-03-20 (+30d) | 2026-02-24 → 2026-03-26 (+30d) |  | 44d → 22d |  |
| Z111 | **North (15K SF) / Level 1** |  | 2026-02-24 → 2026-03-19 (+23d) |  |  |  |
| P2.L1.N.1250 | Pull Wire - Electrical - 480/277v Distribution / L1 / North |  | 2025-12-05 → 2026-01-08 (+34d) |  | 94d → 72d |  |
| P2.L1.N.1320 | OH - Electrical - Equip Tie In / L1 / North |  | 2025-12-12 → 2026-01-15 (+34d) |  | 59d → 37d |  |
| P2.L1.N.1460 | AHJ Inspections - Wall Close In / L1 / North | 2025-12-01 → 2026-01-02 (+32d) | 2025-12-05 → 2026-01-08 (+34d) |  | 24d → 2d |  |
| P2.L1.N.1510 | Pull Wire - Low Volt - Fire Alarm / L1 / North | 2025-12-01 → 2026-01-02 (+32d) | 2025-12-12 → 2026-01-15 (+34d) |  | 49d → 27d |  |
| P2.L1.N.1500 | Pull Wire - Low Volt - BAS/Controls / L1 / North | 2025-12-15 → 2026-01-16 (+32d) | 2025-12-29 → 2026-01-29 (+31d) |  | 49d → 27d |  |
| P2.L1.N.1470 | Hang-Tape-Finish - Walls and Hard Lid Ceilings / L1 / North | 2025-12-30 → 2026-01-30 (+31d) | 2026-01-20 → 2026-02-19 (+30d) |  | 9d → -13d |  |
| P2.L1.N.1520 | Pull Wire - Low Volt - Telecom / L1 / North | 2025-12-30 → 2026-01-30 (+31d) | 2026-01-13 → 2026-02-12 (+30d) |  | 49d → 27d |  |
| P2.L1.N.1530 | Pull Wire - Low Volt - Security / L1 / North | 2026-01-14 → 2026-02-13 (+30d) | 2026-01-27 → 2026-02-26 (+30d) |  | 49d → 27d |  |
| P2.L1.N.1330 | OH - HVAC Piping - Equip Tie In / L1 / North | 2026-01-28 → 2026-02-20 (+23d) | 2026-02-17 → 2026-03-12 (+23d) |  | 44d → 27d |  |
| P2.L1.N.1490 | Firestop - Thru Wall / L1 / North | 2026-01-21 → 2026-02-20 (+30d) | 2026-02-03 → 2026-03-05 (+30d) |  | 54d → 32d |  |
| P2.L1.N.1540 | Pull Wire - Low Volt - Medical Services/Nurse Call (?) / L1 / North | 2026-01-28 → 2026-02-27 (+30d) | 2026-02-10 → 2026-03-12 (+30d) |  | 49d → 27d |  |
| P2.L1.N.1550 | Trades Inspect & Verify R/I Work Completed to Specs / L1 / North | 2026-02-18 → 2026-03-13 (+23d) | 2026-02-24 → 2026-03-19 (+23d) |  | 44d → 27d |  |
| 3 | **House Electrical Rooms / Level 1** |  | 2025-12-17 → 2026-02-04 (+49d) |  |  |  |
| 10 | **House Electrical Room 1-6940** |  | 2025-12-08 → 2026-01-05 (+28d) |  |  |  |
| P2.1.HE.6940.1070 | Pull Wire - In From Distribution Panels / Out to Branch Circuits / L1 / South / 6940 |  |  |  |  | P2.1.HE.6940.1060 → P2.1.HE.6940.1060, P2.1.HE.6940.1080, P2.L1.S.1360 |
| P2.1.HE.6940.1110 | Trim All MEPF Finishes / L1 / South / 6940 | 2025-12-01 A | 2025-12-02 → 2025-12-05 A (+3d) | 0% → 100% | 43d → none |  |
| P2.1.HE.6940.1130 | Doors & Hardware / L1 / South / 6940 | 2025-12-05 → 2025-12-18 A (+13d) | 2025-12-08 → 2025-12-23 A (+15d) | 0% → 100% | 43d → none |  |
| P2.1.HE.6940.1140 | Panels Ready to Energize - Lock Doors and Limit Access / L1 / South / 6940 | 2025-12-08 → 2025-12-31 A (+23d) | 2025-12-08 → 2025-12-31 A (+23d) | 0% → 100% | 43d → none |  |

| ID | Task | Start | Finish | Complete | Total float | Predecessors |
| --- | --- | --- | --- | --- | --- | --- |
| P2.1.HE.6940.1120 | Flooring / L1 / South / 6940 | 2025-12-03 → 2026-01-02 (+30d) | 2025-12-04 → 2026-01-05 (+32d) |  | 43d → 170d |  |
| 9 | **House Electrical Room 1-3911** |  | 2025-12-10 → 2026-01-05 (+26d) |  |  |  |
| P2.1.HE.3911.1030 | Pull Wire - In From Distribution Panels / Out to Branch Circuits / L1 / South / 3911 |  |  |  |  | P2.1.HE.3911.1020 → P2.1.HE.3911.1020, P2.L1.S.1360, P2.1.HE.3911.1050 |
| P2.1.HE.3911.1110 | Trim All MEPF Finishes / L1 / South / 3911 | 2025-12-03 → 2025-12-01 A (-2d) | 2025-12-04 → 2025-12-05 A (+1d) | 0% → 100% | 41d → none |  |
| P2.1.HE.3911.1120 | Paint - Finish Coat / L1 / South / 3911 | 2025-12-01 → 2025-12-15 A (+14d) | 2025-12-02 → 2025-12-16 A (+14d) | 0% → 100% | 41d → none |  |
| P2.1.HE.3911.1140 | Doors & Hardware / L1 / South / 3911 | 2025-12-09 → 2025-12-18 A (+9d) | 2025-12-10 → 2025-12-23 A (+13d) | 0% → 100% | 41d → none |  |
| P2.1.HE.3911.1060 | Panels Ready to Energize - Lock Doors and Limit Access / L1 / South / 3911 | 2025-12-10 → 2025-12-31 A (+21d) | 2025-12-10 → 2025-12-31 A (+21d) | 0% → 100% | 41d → none |  |
| P2.1.HE.3911.1130 | Flooring / L1 / South / 3911 | 2025-12-05 → 2026-01-02 (+28d) | 2025-12-08 → 2026-01-05 (+28d) |  | 41d → 170d |  |
| 8 | **House Electrical Room 1-5959** |  | 2025-12-10 → 2026-01-05 (+26d) |  |  |  |
| P2.1.HE.5959.1070 | Pull Wire - In From Distribution Panels / Out to Branch Circuits / L1 / South / 5959 |  |  |  |  | P2.1.HE.5959.1060 → P2.1.HE.5959.1060, P2.1.HE.5959.1080, P2.L1.S.1360 |
| P2.1.HE.5959.1110 | Trim All MEPF Finishes / L1 / South / 5959 | 2025-12-03 → 2025-12-08 A (+5d) | 2025-12-04 → 2025-12-12 A (+8d) | 0% → 100% | 41d → none |  |
| P2.1.HE.5959.1100 | Paint - Finish Coat / L1 / South / 5959 | 2025-12-01 → 2025-12-16 A (+15d) | 2025-12-02 → 2025-12-17 A (+15d) | 0% → 100% | 41d → none |  |
| P2.1.HE.5959.1130 | Doors & Hardware / L1 / South / 5959 | 2025-12-09 → 2025-12-18 A (+9d) | 2025-12-10 → 2025-12-23 A (+13d) | 0% → 100% | 41d → none |  |
| P2.1.HE.5959.1140 | Panels Ready to Energize - Lock Doors and Limit Access / L1 / South / 5959 | 2025-12-10 → 2025-12-31 A (+21d) | 2025-12-10 → 2025-12-31 A (+21d) | 0% → 100% | 41d → none |  |
| P2.1.HE.5959.1120 | Flooring / L1 / South / 5959 | 2025-12-05 → 2026-01-02 (+28d) | 2025-12-08 → 2026-01-05 (+28d) |  | 41d → 170d |  |
| 7 | **House Electrical Room 1-2950** |  | 2025-12-10 → 2026-02-04 (+56d) |  |  |  |
| P2.1.HE.2950.1070 | Pull Wire - In From Distribution Panels / Out to Branch Circuits / L1 / North / 2950 |  |  |  |  | P2.1.HE.2950.1060 → P2.1.HE.2950.1060, P2.1.HE.2950.1080, P2.L1.N.1360 |
| P2.1.HE.2950.1100 | Paint - Finish Coat / L1 / North / 2950 | 2025-12-01 → 2025-12-17 A (+16d) | 2025-12-02 → 2025-12-18 A (+16d) | 0% → 100% | 41d → none |  |
| P2.1.HE.2950.1130 | Doors & Hardware / L1 / North / 2950 | 2025-12-09 → 2025-12-18 A (+9d) | 2025-12-10 → 2025-12-23 A (+13d) | 0% → 100% | 41d → none |  |
| P2.1.HE.2950.1110 | Trim All MEPF Finishes / L1 / North / 2950 | 2025-12-03 → 2026-01-30 (+58d) | 2025-12-04 → 2026-02-02 (+60d) |  | 41d → 148d |  |
| P2.1.HE.2950.1120 | Flooring / L1 / North / 2950 | 2025-12-05 → 2026-02-03 (+60d) | 2025-12-08 → 2026-02-04 (+58d) |  | 41d → 148d |  |
| P2.1.HE.2950.1140 | Panels Ready to Energize - Lock Doors and Limit Access / L1 / North / 2950 | 2025-12-10 → 2026-02-04 (+56d) | 2025-12-10 → 2026-02-04 (+56d) |  | 41d → 148d |  |
| 6 | **House Electrical Room 1-2803** |  | 2025-12-17 → 2026-02-02 (+47d) |  |  |  |
| P2.1.HE.2803.1070 | Pull Wire - In From Distribution Panels / Out to Branch Circuits / L1 / North / 2803 |  |  |  |  | P2.1.HE.2803.1060 → P2.1.HE.2803.1060, P2.1.HE.2803.1080, P2.L1.N.1360 |
| P2.1.HE.2803.1090 | Test & Terminate / L1 / North / 2803 | 2025-12-01 A | 2025-12-05 A | 0% → 100% | 36d → none |  |
| P2.1.HE.2803.1110 | Trim All MEPF Finishes / L1 / North / 2803 | 2025-12-10 → 2025-12-15 A (+5d) | 2025-12-11 → 2025-12-19 A (+8d) | 0% → 100% | 36d → none |  |
| P2.1.HE.2803.1100 | Paint - Finish Coat / L1 / North / 2803 | 2025-12-08 → 2025-12-18 A (+10d) | 2025-12-09 → 2025-12-19 A (+10d) | 0% → 100% | 36d → none |  |
| P2.1.HE.2803.1130 | Doors & Hardware / L1 / North / 2803 | 2025-12-16 → 2025-12-18 A (+2d) | 2025-12-17 → 2025-12-23 A (+6d) | 0% → 100% | 36d → none |  |
| P2.1.HE.2803.1140 | Panels Ready to Energize - Lock Doors and Limit Access / L1 / North / 2803 | 2025-12-17 → 2025-12-31 A (+14d) | 2025-12-17 → 2025-12-31 A (+14d) | 0% → 100% | 36d → none |  |
| P2.1.HE.2803.1120 | Flooring / L1 / North / 2803 | 2025-12-12 → 2026-01-30 (+49d) | 2025-12-15 → 2026-02-02 (+49d) |  | 36d → 190d |  |
| 1 | **Fire Pump Room 1-6950** |  | 2025-12-19 → 2026-01-22 (+34d) |  |  |  |
| P2.1.FP.6950.1050 | Fire Alarm Connections to Fire Pump and Supporting Equipment / L1 / South / 6950 |  | 2025-12-02 → 2026-01-05 (+34d) |  | 250d → 228d |  |
| P2.1.FP.6950.1000 | Paint Prime & 1st Coat / L1 / South / 6950 | 2025-12-01 → 2026-01-02 (+32d) | 2025-12-02 → 2026-01-05 (+34d) |  | 247d → 225d |  |
| P2.1.FP.6950.1040 | Electrical Connections to Fire Pump and Supporting Equipment / L1 / South / 6950 | 2025-12-01 → 2026-01-02 (+32d) | 2025-12-12 → 2026-01-15 (+34d) |  | 242d → 220d |  |
| P2.1.FP.6950.1070 | Flooring Prep - Epoxy Floors / L1 / South / 6950 | 2025-12-03 → 2026-01-06 (+34d) | 2025-12-04 → 2026-01-07 (+34d) |  | 247d → 225d |  |
| P2.1.FP.6950.1080 | Flooring - Epoxy Floors / L1 / South / 6950 | 2025-12-05 → 2026-01-08 (+34d) | 2025-12-05 → 2026-01-08 (+34d) |  | 247d → 225d |  |
| P2.1.FP.6950.1060 | Initial Start Up Fire Pump and Supporting Equipment / L1 / South / 6950 | 2025-12-15 → 2026-01-16 (+32d) | 2025-12-19 → 2026-01-22 (+34d) |  | 242d → 220d |  |
| 4 | **FINISHES - Core & Support Spaces / Level 1** |  | 2026-10-21 → 2026-11-13 (+23d) |  |  |  |
| 7KSF | **Lobby - Storage - Support Areas (5.5K SF) / Level 1** | 2026-03-04 → 2026-03-27 (+23d) | 2026-10-06 → 2026-10-29 (+23d) |  |  |  |
| 1 | **Finishes** | 2026-03-04 → 2026-03-27 (+23d) | 2026-10-06 → 2026-10-29 (+23d) |  |  |  |
| P2.L1.F.CS.1000 | Paint Prime & 1st Coat Walls / L1 / Lobby,Storage | 2026-03-04 → 2026-03-27 (+23d) | 2026-03-10 → 2026-04-02 (+23d) |  | 53d → 36d |  |
| P2.L1.F.CS.1020 | R/I - Ceiling Assemblies & Supports - All Trades (A/V, Oper Part, Glass Part, etc.) / L1 / Lobby,Storage | 2026-03-11 → 2026-04-03 (+23d) | 2026-03-17 → 2026-04-09 (+23d) |  | 94d → 77d |  |
| P2.L1.F.CS.1010 | T-Grid / L1 / Lobby,Storage | 2026-03-18 → 2026-04-10 (+23d) | 2026-03-24 → 2026-04-16 (+23d) |  | 94d → 77d |  |
| P2.L1.F.CS.1050 | Sprinkler Heads in T-Grid / L1 / Lobby,Storage | 2026-03-25 → 2026-04-17 (+23d) | 2026-03-31 → 2026-04-23 (+23d) |  | 94d → 77d |  |
| P2.L1.F.CS.1030 | Diffusers in T-Grid / L1 / Lobby,Storage | 2026-04-01 → 2026-04-24 (+23d) | 2026-04-07 → 2026-04-30 (+23d) |  | 94d → 77d |  |
| P2.L1.F.CS.1040 | Lights & Elec Devices in T-Grid / L1 / Lobby,Storage | 2026-04-08 → 2026-05-01 (+23d) | 2026-04-14 → 2026-05-07 (+23d) |  | 94d → 77d |  |
| P2.L1.F.CS.1070 | Fire Alarm in T-Grid / L1 / Lobby,Storage | 2026-04-15 → 2026-05-08 (+23d) | 2026-04-21 → 2026-05-14 (+23d) |  | 94d → 77d |  |
| P2.L1.F.CS.1060 | Low Voltage in T-Grid / L1 / Lobby,Storage | 2026-04-22 → 2026-05-15 (+23d) | 2026-04-28 → 2026-05-21 (+23d) |  | 94d → 77d |  |
| P2.L1.F.LC.2450 | Fumehood Equipment Install / L1 / Chem Storage 1-6920 | 2026-04-29 → 2026-05-22 (+23d) | 2026-04-29 → 2026-05-22 (+23d) |  | 94d → 77d |  |
| P2.L1.F.LC.3420 | Casework (Before Flooring) / L1 / Lobby - Storage | 2026-04-29 → 2026-05-22 (+23d) | 2026-04-29 → 2026-05-22 (+23d) |  | 94d → 77d |  |
| P2.L1.F.LC.2460 | Fumehood Equipment MEP Connection / L1 / Chem Storage 1-6920 | 2026-04-30 → 2026-05-26 (+26d) | 2026-05-06 → 2026-06-01 (+26d) |  | 94d → 77d |  |
| P2.L1.F.CS.1080 | OH Ceiling Signoff / L1 / Lobby,Storage | 2026-05-07 → 2026-06-02 (+26d) | 2026-05-13 → 2026-06-08 (+26d) |  | 94d → 77d |  |
| P2.L1.F.CS.1090 | Millwork / L1 / Lobby,Storage | 2026-05-14 → 2026-06-09 (+26d) | 2026-05-20 → 2026-06-15 (+26d) |  | 94d → 77d |  |
| P2.L1.F.CS.1100 | Plumbing Fixtures / L1 / Lobby,Storage | 2026-05-14 → 2026-06-09 (+26d) | 2026-05-20 → 2026-06-15 (+26d) |  | 155d → 138d |  |
| P2.L1.F.CS.1110 | Drop Ceiling Tile / L1 / Lobby,Storage | 2026-05-21 → 2026-06-16 (+26d) | 2026-05-28 → 2026-06-22 (+25d) |  | 94d → 77d |  |
| P2.L1.F.CS.1120 | Floor Prep / L1 / Lobby,Storage | 2026-05-29 → 2026-06-23 (+25d) | 2026-06-04 → 2026-06-29 (+25d) |  | 94d → 77d |  |
| P2.L1.F.CS.2300 | Floor Prep - Epoxy Floors / L1 / Chem Storage 1-6920 | 2026-05-29 → 2026-06-23 (+25d) | 2026-06-01 → 2026-06-24 (+23d) |  | 101d → 84d |  |
| P2.L1.F.CS.2310 | Floor Finishes - Epoxy Floors / L1 / Chem Storage 1-6920 | 2026-06-02 → 2026-06-25 (+23d) | 2026-06-02 → 2026-06-25 (+23d) |  | 101d → 84d |  |
| P2.L1.F.CS.1130 | Floor Finishes / L1 / Lobby,Storage | 2026-06-05 → 2026-06-30 (+25d) | 2026-06-11 → 2026-07-07 (+26d) |  | 94d → 77d |  |
| P2.L1.F.LC.3430 | Casework (After Clooring) / L1 / Lobby - Storage | 2026-06-12 → 2026-07-08 (+26d) | 2026-06-12 → 2026-07-08 (+26d) |  | 94d → 77d |  |
| P2.L1.F.CS.1140 | Doors & Hardware / L1 / Lobby,Storage | 2026-06-15 → 2026-07-09 (+24d) | 2026-06-19 → 2026-07-15 (+26d) |  | 94d → 77d |  |
| P2.L1.F.CS.1150 | Paint - Finish Coat / L1 / Lobby,Storage | 2026-06-22 → 2026-07-16 (+24d) | 2026-06-26 → 2026-07-22 (+26d) |  | 94d → 77d |  |
| P2.L1.F.CS.1190 | Interior Building Signage / L1 / Lobby,Storage | 2026-06-29 → 2026-07-23 (+24d) | 2026-07-06 → 2026-07-29 (+23d) |  | 124d → 107d |  |
| P2.L1.F.CS.1200 | Floor Base / L1 / Lobby,Storage | 2026-06-29 → 2026-07-23 (+24d) | 2026-07-06 → 2026-07-29 (+23d) |  | 94d → 77d |  |
| P2.L1.F.CS.1210 | Demountable Partitions / L1 / Lobby,Storage | 2026-07-07 → 2026-07-30 (+23d) | 2026-07-13 → 2026-08-05 (+23d) |  | 94d → 77d |  |
| P2.L1.F.CS.1180 | Building Specialities / L1 / Lobby,Storage | 2026-07-14 → 2026-08-06 (+23d) | 2026-07-20 → 2026-08-12 (+23d) |  | 94d → 77d |  |
| P2.L1.F.CS.1170 | Trim T-Stats / L1 / Lobby,Storage | 2026-07-21 → 2026-08-13 (+23d) | 2026-07-27 → 2026-08-19 (+23d) |  | 94d → 77d |  |
| P2.L1.F.CS.1160 | Set AV/IT Devices and Configure / L1 / Lobby,Storage | 2026-07-28 → 2026-08-20 (+23d) | 2026-08-03 → 2026-08-26 (+23d) |  | 94d → 77d |  |
| P2.L1.F.CS.1220 | Trim Electrical / L1 / Lobby,Storage | 2026-08-04 → 2026-08-27 (+23d) | 2026-08-10 → 2026-09-02 (+23d) |  | 94d → 77d |  |
| P2.L1.F.CS.1230 | Trim Telephone/ Data / L1 / Lobby,Storage | 2026-08-11 → 2026-09-03 (+23d) | 2026-08-17 → 2026-09-10 (+24d) |  | 94d → 77d |  |

| ID | Task | Start | Finish | Total float |
| --- | --- | --- | --- | --- |
| P2.L1.F.CS.1240 | Work Completion List - Finishes / L1 / Lobby,Storage | 2026-08-18 → 2026-09-11 (+24d) | 2026-08-24 → 2026-09-17 (+24d) | 94d → 77d |
| P2.L1.F.CS.1250 | Rough Clean / L1 / Lobby,Storage | 2026-08-25 → 2026-09-18 (+24d) | 2026-08-31 → 2026-09-24 (+24d) | 94d → 77d |
| P2.L1.F.CS.1260 | FF&E / L1 / Lobby,Storage | 2026-09-01 → 2026-09-25 (+24d) | 2026-09-08 → 2026-10-01 (+23d) | 94d → 77d |
| P2.L1.F.CS.1270 | Prepare Punchlist / L1 / Lobby,Storage | 2026-09-09 → 2026-10-02 (+23d) | 2026-09-15 → 2026-10-08 (+23d) | 94d → 77d |
| P2.L1.F.CS.1280 | Correct Punchlist / L1 / Lobby,Storage | 2026-09-16 → 2026-10-09 (+23d) | 2026-09-29 → 2026-10-22 (+23d) | 94d → 77d |
| P2.L1.F.CS.1290 | Final Clean / L1 / Lobby,Storage | 2026-09-30 → 2026-10-23 (+23d) | 2026-10-06 → 2026-10-29 (+23d) | 94d → 77d |
| 7KSF1 | **Offices (7K SF) / Level 1** | 2026-02-25 → 2026-03-20 (+23d) | 2026-09-03 → 2026-09-29 (+26d) |  |
| 1 | **Finishes** | 2026-02-25 → 2026-03-20 (+23d) | 2026-09-03 → 2026-09-29 (+26d) |  |
| P2.L1.F.CS.2000 | Paint Prime & 1st Coat Walls / L1 / Offices | 2026-02-25 → 2026-03-20 (+23d) | 2026-03-03 → 2026-03-26 (+23d) | 53d → 36d |
| P2.L1.F.CS.2020 | R/I - Ceiling Assemblies & Supports - All Trades (A/V, Oper Part, Glass Part, etc.) / L1 / Offices | 2026-03-04 → 2026-03-27 (+23d) | 2026-03-10 → 2026-04-02 (+23d) | 116d → 99d |
| P2.L1.F.CS.2010 | T-Grid / L1 / Offices | 2026-03-11 → 2026-04-03 (+23d) | 2026-03-17 → 2026-04-09 (+23d) | 116d → 99d |
| P2.L1.F.CS.2050 | Sprinkler Heads in T-Grid / L1 / Offices | 2026-03-18 → 2026-04-10 (+23d) | 2026-03-24 → 2026-04-16 (+23d) | 116d → 99d |
| P2.L1.F.CS.2030 | Diffusers in T-Grid / L1 / Offices | 2026-03-25 → 2026-04-17 (+23d) | 2026-03-31 → 2026-04-23 (+23d) | 116d → 99d |
| P2.L1.F.CS.2040 | Lights & Elec Devices in T-Grid / L1 / Offices | 2026-04-01 → 2026-04-24 (+23d) | 2026-04-07 → 2026-04-30 (+23d) | 116d → 99d |
| P2.L1.F.CS.2070 | Fire Alarm in T-Grid / L1 / Offices | 2026-04-08 → 2026-05-01 (+23d) | 2026-04-14 → 2026-05-07 (+23d) | 116d → 99d |
| P2.L1.F.CS.2060 | Low Voltage in T-Grid / L1 / Offices | 2026-04-15 → 2026-05-08 (+23d) | 2026-04-21 → 2026-05-14 (+23d) | 116d → 99d |
| P2.L1.F.CS.2080 | OH Ceiling Signoff / L1 / Offices | 2026-04-22 → 2026-05-15 (+23d) | 2026-04-28 → 2026-05-21 (+23d) | 116d → 99d |
| P2.L1.F.CS.2090 | Millwork / L1 / Offices | 2026-04-29 → 2026-05-22 (+23d) | 2026-05-05 → 2026-05-29 (+24d) | 116d → 99d |
| P2.L1.F.CS.2100 | Plumbing Fixtures / L1 / Offices | 2026-04-29 → 2026-05-22 (+23d) | 2026-05-05 → 2026-05-29 (+24d) | 116d → 99d |
| P2.L1.F.CS.2110 | Drop Ceiling Tile / L1 / Offices | 2026-05-06 → 2026-06-01 (+26d) | 2026-05-12 → 2026-06-05 (+24d) | 116d → 99d |
| P2.L1.F.CS.2120 | Floor Prep / L1 / Offices | 2026-05-13 → 2026-06-08 (+26d) | 2026-05-19 → 2026-06-12 (+24d) | 116d → 99d |
| P2.L1.F.CS.2130 | Floor Finishes / L1 / Offices | 2026-05-20 → 2026-06-15 (+26d) | 2026-05-27 → 2026-06-19 (+23d) | 116d → 99d |
| P2.L1.F.CS.2140 | Doors & Hardware / L1 / Offices | 2026-05-28 → 2026-06-22 (+25d) | 2026-06-03 → 2026-06-26 (+23d) | 116d → 99d |
| P2.L1.F.CS.2150 | Paint - Finish Coat / L1 / Offices | 2026-06-04 → 2026-06-29 (+25d) | 2026-06-10 → 2026-07-06 (+26d) | 116d → 99d |
| P2.L1.F.CS.2200 | Floor Base / L1 / Offices | 2026-06-11 → 2026-07-07 (+26d) | 2026-06-17 → 2026-07-13 (+26d) | 116d → 99d |
| P2.L1.F.CS.2170 | Trim T-Stats / L1 / Offices | 2026-06-18 → 2026-07-14 (+26d) | 2026-06-24 → 2026-07-20 (+26d) | 116d → 99d |
| P2.L1.F.CS.2210 | Demountable Partitions / L1 / Offices | 2026-06-18 → 2026-07-14 (+26d) | 2026-06-24 → 2026-07-20 (+26d) | 121d → 104d |
| P2.L1.F.CS.2160 | Set AV/IT Devices and Configure / L1 / Offices | 2026-06-25 → 2026-07-21 (+26d) | 2026-07-01 → 2026-07-27 (+26d) | 116d → 99d |
| P2.L1.F.CS.2180 | Building Specialities / L1 / Offices | 2026-07-02 → 2026-07-28 (+26d) | 2026-07-09 → 2026-08-03 (+25d) | 116d → 99d |
| P2.L1.F.CS.2220 | Trim Electrical / L1 / Offices | 2026-07-02 → 2026-07-28 (+26d) | 2026-07-09 → 2026-08-03 (+25d) | 116d → 99d |
| P2.L1.F.CS.2190 | Interior Building Signage / L1 / Offices | 2026-07-10 → 2026-08-04 (+25d) | 2026-07-16 → 2026-08-10 (+25d) | 116d → 99d |
| P2.L1.F.CS.2230 | Trim Telephone/ Data / L1 / Offices | 2026-07-10 → 2026-08-04 (+25d) | 2026-07-16 → 2026-08-10 (+25d) | 116d → 99d |
| P2.L1.F.CS.2240 | Work Completion List - Finishes / L1 / Offices | 2026-07-17 → 2026-08-11 (+25d) | 2026-07-23 → 2026-08-17 (+25d) | 116d → 99d |
| P2.L1.F.CS.2250 | Rough Clean / L1 / Offices | 2026-07-24 → 2026-08-18 (+25d) | 2026-07-30 → 2026-08-24 (+25d) | 116d → 99d |
| P2.L1.F.CS.2260 | FF&E / L1 / Offices | 2026-07-31 → 2026-08-25 (+25d) | 2026-08-06 → 2026-08-31 (+25d) | 116d → 99d |
| P2.L1.F.CS.2270 | Prepare Punchlist / L1 / Offices | 2026-08-07 → 2026-09-01 (+25d) | 2026-08-13 → 2026-09-08 (+26d) | 116d → 99d |
| P2.L1.F.CS.2280 | Correct Punchlist / L1 / Offices | 2026-08-14 → 2026-09-09 (+26d) | 2026-08-27 → 2026-09-22 (+26d) | 116d → 99d |
| P2.L1.F.CS.2290 | Final Clean / L1 / Offices | 2026-08-28 → 2026-09-23 (+26d) | 2026-09-03 → 2026-09-29 (+26d) | 116d → 99d |
| 1 | **Bathrooms-Break Rooms - Locker Rooms / Level 1** |  | 2026-01-30 → 2026-03-03 (+32d) |  |
| 5 | **Toilet 1-2859** |  | 2026-01-26 → 2026-02-25 (+30d) |  |
| P2.L1.BR.1030 | R/I - Electrical _ Hard Lids / L1 / Toilet 2859 | 2025-12-01 → 2026-01-02 (+32d) | 2025-12-02 → 2026-01-05 (+34d) | 152d → 130d |
| P2.L1.BR.1040 | Trim Sprinkler Drops _ Hard Lids / L1 / Toilet 2859 | 2025-12-01 → 2026-01-02 (+32d) | 2025-12-02 → 2026-01-05 (+34d) | 154d → 132d |
| P2.L1.BR.1060 | R/I - Fire Alarm _ Hard Lids / L1 / Toilet 2859 | 2025-12-03 → 2026-01-06 (+34d) | 2025-12-04 → 2026-01-07 (+34d) | 152d → 130d |
| P2.L1.BR.1080 | Inspection - Close In - Walls and Hard Lid Ceilings / L1 / Toilet 2859 | 2025-12-05 → 2026-01-08 (+34d) | 2025-12-09 → 2026-01-12 (+34d) | 152d → 130d |
| P2.L1.BR.1090 | Hang-Tape-Finish _ Walls and Hard Lids Ceilings / L1 / Toilet 2859 | 2025-12-10 → 2026-01-13 (+34d) | 2025-12-16 → 2026-01-19 (+34d) | 152d → 130d |
| P2.L1.BR.1100 | Paint Prime & Final Coat _ Walls & Hard Lid Ceilings / L1 / Toilet 2859 | 2025-12-17 → 2026-01-20 (+34d) | 2025-12-18 → 2026-01-21 (+34d) | 152d → 130d |
| P2.L1.BR.1140 | Trim - HVAC G/R/D's / L1 / Toilet 2859 | 2025-12-19 → 2026-01-22 (+34d) | 2025-12-22 → 2026-01-23 (+32d) | 152d → 130d |
| P2.L1.BR.1120 | Pull Wire & Trim Devices - Electrical / L1 / Toilet 2859 | 2025-12-23 → 2026-01-26 (+34d) | 2025-12-24 → 2026-01-27 (+34d) | 152d → 130d |
| P2.L1.BR.1130 | Lights - Set & Terminate / L1 / Toilet 2859 | 2025-12-23 → 2026-01-26 (+34d) | 2025-12-24 → 2026-01-27 (+34d) | 154d → 132d |
| P2.L1.BR.1110 | Pull Wire & Trim Devices - Fire Alarm / L1 / Toilet 2859 | 2025-12-26 → 2026-01-28 (+33d) | 2025-12-29 → 2026-01-29 (+31d) | 152d → 130d |
| P2.L1.BR.1150 | Wall Tile / L1 / Toilet 2859 | 2025-12-30 → 2026-01-30 (+31d) | 2026-01-06 → 2026-02-05 (+30d) | 152d → 130d |
| P2.L1.BR.5260 | Flooring Prep - Epoxy Floors / L1 / Toilet 2859 | 2026-01-09 → 2026-02-10 (+32d) | 2026-01-09 → 2026-02-10 (+32d) | 150d → 128d |
| P2.L1.BR.5270 | Flooring - Epoxy Floors / L1 / Toilet 2859 | 2026-01-12 → 2026-02-11 (+30d) | 2026-01-13 → 2026-02-12 (+30d) | 257d → 235d |
| P2.L1.BR.1160 | Doors & Hardware / L1 / Toilet 2859 | 2026-01-14 → 2026-02-13 (+30d) | 2026-01-15 → 2026-02-16 (+32d) | 257d → 235d |
| P2.L1.BR.1170 | Plumbing Fixtures / Sinks / Showers / L1 / Toilet 2859 | 2026-01-14 → 2026-02-13 (+30d) | 2026-01-15 → 2026-02-16 (+32d) | 272d → 250d |
| P2.L1.BR.1180 | Bathroom Accessories / L1 / Toilet 2859 | 2026-01-16 → 2026-02-17 (+32d) | 2026-01-19 → 2026-02-18 (+30d) | 272d → 250d |
| P2.L1.BR.1190 | Work Completion List - Finishes / L1 / Toilet 2859 | 2026-01-20 → 2026-02-19 (+30d) | 2026-01-26 → 2026-02-25 (+30d) | 272d → 250d |
| 4 | **Toilets 1-2804 / 1-2806** |  | 2026-01-27 → 2026-02-26 (+30d) |  |
| P2.L1.BR.2030 | R/I - Electrical _ Hard Lids / L1 / Toilets 2804 & 06 | 2025-12-01 → 2026-01-02 (+32d) | 2025-12-02 → 2026-01-05 (+34d) | 151d → 129d |
| P2.L1.BR.2040 | Trim Sprinkler Drops _ Hard Lids / L1 / Toilets 2804 & 06 | 2025-12-01 → 2026-01-02 (+32d) | 2025-12-02 → 2026-01-05 (+34d) | 153d → 131d |
| P2.L1.BR.2060 | R/I - Fire Alarm _ Hard Lids / L1 / Toilets 2804 & 06 | 2025-12-03 → 2026-01-06 (+34d) | 2025-12-04 → 2026-01-07 (+34d) | 151d → 129d |
| P2.L1.BR.2080 | Inspection - Close In - Walls and Hard Lid Ceilings / L1 / Toilets 2804 & 06 | 2025-12-05 → 2026-01-08 (+34d) | 2025-12-09 → 2026-01-12 (+34d) | 151d → 129d |
| P2.L1.BR.2090 | Hang-Tape-Finish _ Walls and Hard Lids Ceilings / L1 / Toilets 2804 & 06 | 2025-12-10 → 2026-01-13 (+34d) | 2025-12-16 → 2026-01-19 (+34d) | 151d → 129d |
| P2.L1.BR.2100 | Paint Prime & Final Coat _ Walls & Hard Lid Ceilings / L1 / Toilets 2804 & 06 | 2025-12-17 → 2026-01-20 (+34d) | 2025-12-18 → 2026-01-21 (+34d) | 151d → 129d |
| P2.L1.BR.2140 | Trim - HVAC G/R/D's / L1 / Toilets 2804 & 06 | 2025-12-19 → 2026-01-22 (+34d) | 2025-12-22 → 2026-01-23 (+32d) | 151d → 129d |
| P2.L1.BR.2120 | Pull Wire & Trim Devices - Electrical / L1 / Toilets 2804 & 06 | 2025-12-23 → 2026-01-26 (+34d) | 2025-12-24 → 2026-01-27 (+34d) | 151d → 129d |
| P2.L1.BR.2130 | Lights - Set & Terminate / L1 / Toilets 2804 & 06 | 2025-12-23 → 2026-01-26 (+34d) | 2025-12-24 → 2026-01-27 (+34d) | 153d → 131d |
| P2.L1.BR.2110 | Pull Wire & Trim Devices - Fire Alarm / L1 / Toilets 2804 & 06 | 2025-12-26 → 2026-01-28 (+33d) | 2025-12-29 → 2026-01-29 (+31d) | 151d → 129d |
| P2.L1.BR.2150 | Wall Tile / L1 / Toilets 2804 & 06 | 2025-12-30 → 2026-01-30 (+31d) | 2026-01-06 → 2026-02-05 (+30d) | 151d → 129d |
| P2.L1.BR.5240 | Flooring Prep - Epoxy Floors / L1 / Toilets 2804 & 06 | 2026-01-08 → 2026-02-09 (+32d) | 2026-01-08 → 2026-02-09 (+32d) | 150d → 128d |

| ID | Task | Start | Finish | Total float |
| --- | --- | --- | --- | --- |
| P2.L1.BR.5250 | Flooring - Epoxy Floors / L1 / Toilets 2804 & 06 | 2026-01-09 → 2026-02-10 (+32d) | 2026-01-12 → 2026-02-11 (+30d) | 258d → 236d |
| P2.L1.BR.2160 | Doors & Hardware / L1 / Toilets 2804 & 06 | 2026-01-13 → 2026-02-12 (+30d) | 2026-01-14 → 2026-02-13 (+30d) | 258d → 236d |
| P2.L1.BR.2170 | Plumbing Fixtures / Sinks / Showers / L1 / Toilets 2804 & 06 | 2026-01-15 → 2026-02-16 (+32d) | 2026-01-16 → 2026-02-17 (+32d) | 271d → 249d |
| P2.L1.BR.2180 | Bathroom Accessories / L1 / Toilets 2804 & 06 | 2026-01-19 → 2026-02-18 (+30d) | 2026-01-20 → 2026-02-19 (+30d) | 271d → 249d |
| P2.L1.BR.2190 | Work Completion List - Finishes / L1 / Toilets 2804 & 06 | 2026-01-21 → 2026-02-20 (+30d) | 2026-01-27 → 2026-02-26 (+30d) | 271d → 249d |
| 3 | **Toilet 1-2940A** |  | 2026-01-26 → 2026-02-25 (+30d) |  |
| P2.L1.BR.3030 | R/I - Electrical _ Hard Lids / L1 / Toilets 2940A | 2025-12-01 → 2026-01-02 (+32d) | 2025-12-02 → 2026-01-05 (+34d) | 150d → 128d |
| P2.L1.BR.3040 | Trim Sprinkler Drops _ Hard Lids / L1 / Toilets 2940A | 2025-12-01 → 2026-01-02 (+32d) | 2025-12-02 → 2026-01-05 (+34d) | 152d → 130d |
| P2.L1.BR.3060 | R/I - Fire Alarm _ Hard Lids / L1 / Toilets 2940A | 2025-12-03 → 2026-01-06 (+34d) | 2025-12-04 → 2026-01-07 (+34d) | 150d → 128d |
| P2.L1.BR.3080 | Inspection - Close In - Walls and Hard Lid Ceilings / L1 / Toilets 2940A | 2025-12-05 → 2026-01-08 (+34d) | 2025-12-09 → 2026-01-12 (+34d) | 150d → 128d |
| P2.L1.BR.3090 | Hang-Tape-Finish _ Walls and Hard Lids Ceilings / L1 / Toilets 2940A | 2025-12-10 → 2026-01-13 (+34d) | 2025-12-16 → 2026-01-19 (+34d) | 150d → 128d |
| P2.L1.BR.3100 | Paint Prime & Final Coat _ Walls & Hard Lid Ceilings / L1 / Toilets 2940A | 2025-12-17 → 2026-01-20 (+34d) | 2025-12-18 → 2026-01-21 (+34d) | 150d → 128d |
| P2.L1.BR.3140 | Trim - HVAC G/R/D's / L1 / Toilets 2940A | 2025-12-19 → 2026-01-22 (+34d) | 2025-12-22 → 2026-01-23 (+32d) | 150d → 128d |
| P2.L1.BR.3120 | Pull Wire & Trim Devices - Electrical / L1 / Toilets 2940A | 2025-12-23 → 2026-01-26 (+34d) | 2025-12-24 → 2026-01-27 (+34d) | 150d → 128d |
| P2.L1.BR.3130 | Lights - Set & Terminate / L1 / Toilets 2940A | 2025-12-23 → 2026-01-26 (+34d) | 2025-12-24 → 2026-01-27 (+34d) | 152d → 130d |
| P2.L1.BR.3110 | Pull Wire & Trim Devices - Fire Alarm / L1 / Toilets 2940A | 2025-12-26 → 2026-01-28 (+33d) | 2025-12-29 → 2026-01-29 (+31d) | 150d → 128d |
| P2.L1.BR.3150 | Wall Tile / L1 / Toilets 2940A | 2025-12-30 → 2026-01-30 (+31d) | 2026-01-06 → 2026-02-05 (+30d) | 150d → 128d |
| P2.L1.BR.5280 | Flooring Prep - Epoxy Floors / L1 / Toilets 2940A | 2026-01-07 → 2026-02-06 (+30d) | 2026-01-07 → 2026-02-06 (+30d) | 150d → 128d |
| P2.L1.BR.5290 | Flooring - Epoxy Floors / L1 / Toilets 2940A | 2026-01-08 → 2026-02-09 (+32d) | 2026-01-09 → 2026-02-10 (+32d) | 259d → 237d |
| P2.L1.BR.3160 | Doors & Hardware / L1 / Toilets 2940A | 2026-01-12 → 2026-02-11 (+30d) | 2026-01-13 → 2026-02-12 (+30d) | 259d → 237d |
| P2.L1.BR.3170 | Plumbing Fixtures / Sinks / Showers / L1 / Toilets 2940A | 2026-01-14 → 2026-02-13 (+30d) | 2026-01-15 → 2026-02-16 (+32d) | 272d → 250d |
| P2.L1.BR.3180 | Bathroom Accessories / L1 / Toilets 2940A | 2026-01-16 → 2026-02-17 (+32d) | 2026-01-19 → 2026-02-18 (+30d) | 272d → 250d |
| P2.L1.BR.3190 | Work Completion List - Finishes / L1 / Toilets 2940A | 2026-01-20 → 2026-02-19 (+30d) | 2026-01-26 → 2026-02-25 (+30d) | 272d → 250d |
| 1 | **Toilet 1-3902C** |  | 2026-01-30 → 2026-03-03 (+32d) |  |
| P2.L1.BR.4030 | R/I - Electrical _ Hard Lids / L1 / Toilets 3902C | 2025-12-01 → 2026-01-02 (+32d) | 2025-12-02 → 2026-01-05 (+34d) | 154d → 132d |
| P2.L1.BR.4040 | Trim Sprinkler Drops _ Hard Lids / L1 / Toilets 3902C | 2025-12-01 → 2026-01-02 (+32d) | 2025-12-02 → 2026-01-05 (+34d) | 156d → 134d |
| P2.L1.BR.4060 | R/I - Fire Alarm _ Hard Lids / L1 / Toilets 3902C | 2025-12-03 → 2026-01-06 (+34d) | 2025-12-04 → 2026-01-07 (+34d) | 154d → 132d |
| P2.L1.BR.4080 | Inspection - Close In - Walls and Hard Lid Ceilings / L1 / Toilets 3902C | 2025-12-05 → 2026-01-08 (+34d) | 2025-12-09 → 2026-01-12 (+34d) | 154d → 132d |
| P2.L1.BR.4090 | Hang-Tape-Finish _ Walls and Hard Lids Ceilings / L1 / Toilets 3902C | 2025-12-10 → 2026-01-13 (+34d) | 2025-12-16 → 2026-01-19 (+34d) | 154d → 132d |
| P2.L1.BR.4100 | Paint Prime & Final Coat _ Walls & Hard Lid Ceilings / L1 / Toilets 3902C | 2025-12-17 → 2026-01-20 (+34d) | 2025-12-18 → 2026-01-21 (+34d) | 154d → 132d |
| P2.L1.BR.4140 | Trim - HVAC G/R/D's / L1 / Toilets 3902C | 2025-12-19 → 2026-01-22 (+34d) | 2025-12-22 → 2026-01-23 (+32d) | 154d → 132d |
| P2.L1.BR.4120 | Pull Wire & Trim Devices - Electrical / L1 / Toilets 3902C | 2025-12-23 → 2026-01-26 (+34d) | 2025-12-24 → 2026-01-27 (+34d) | 154d → 132d |
| P2.L1.BR.4130 | Lights - Set & Terminate / L1 / Toilets 3902C | 2025-12-23 → 2026-01-26 (+34d) | 2025-12-24 → 2026-01-27 (+34d) | 156d → 134d |
| P2.L1.BR.4110 | Pull Wire & Trim Devices - Fire Alarm / L1 / Toilets 3902C | 2025-12-26 → 2026-01-28 (+33d) | 2025-12-29 → 2026-01-29 (+31d) | 154d → 132d |
| P2.L1.BR.4150 | Wall Tile / L1 / Toilets 3902C | 2025-12-30 → 2026-01-30 (+31d) | 2026-01-06 → 2026-02-05 (+30d) | 154d → 132d |
| P2.L1.BR.5220 | Flooring Prep - Epoxy Floors / L1 / Toilets 3902C | 2026-01-13 → 2026-02-12 (+30d) | 2026-01-13 → 2026-02-12 (+30d) | 150d → 128d |
| P2.L1.BR.5230 | Flooring - Epoxy Floors / L1 / Toilets 3902C | 2026-01-14 → 2026-02-13 (+30d) | 2026-01-15 → 2026-02-16 (+32d) | 150d → 128d |
| P2.L1.BR.4160 | Doors & Hardware / L1 / Toilets 3902C | 2026-01-16 → 2026-02-17 (+32d) | 2026-01-19 → 2026-02-18 (+30d) | 255d → 233d |
| P2.L1.BR.4170 | Plumbing Fixtures / Sinks / Showers / L1 / Toilets 3902C | 2026-01-20 → 2026-02-19 (+30d) | 2026-01-21 → 2026-02-20 (+30d) | 268d → 246d |
| P2.L1.BR.4180 | Bathroom Accessories / L1 / Toilets 3902C | 2026-01-22 → 2026-02-23 (+32d) | 2026-01-23 → 2026-02-24 (+32d) | 268d → 246d |
| P2.L1.BR.4190 | Work Completion List - Finishes / L1 / Toilets 3902C | 2026-01-26 → 2026-02-25 (+30d) | 2026-01-30 → 2026-03-03 (+32d) | 268d → 246d |
| 2 | **Toilet 1-2878** |  | 2026-01-23 → 2026-02-24 (+32d) |  |
| P2.L1.BR.5030 | R/I - Electrical _ Hard Lids / L1 / Toilet 2878 | 2025-12-01 → 2026-01-02 (+32d) | 2025-12-02 → 2026-01-05 (+34d) | 153d → 131d |
| P2.L1.BR.5040 | Trim Sprinkler Drops _ Hard Lids / L1 / Toilet 2878 | 2025-12-01 → 2026-01-02 (+32d) | 2025-12-02 → 2026-01-05 (+34d) | 155d → 133d |
| P2.L1.BR.5060 | R/I - Fire Alarm _ Hard Lids / L1 / Toilet 2878 | 2025-12-03 → 2026-01-06 (+34d) | 2025-12-04 → 2026-01-07 (+34d) | 153d → 131d |
| P2.L1.BR.5080 | Inspection - Close In - Walls and Hard Lid Ceilings / L1 / Toilet 2878 | 2025-12-05 → 2026-01-08 (+34d) | 2025-12-09 → 2026-01-12 (+34d) | 153d → 131d |
| P2.L1.BR.5090 | Hang-Tape-Finish _ Walls and Hard Lids Ceilings / L1 / Toilet 2878 | 2025-12-10 → 2026-01-13 (+34d) | 2025-12-16 → 2026-01-19 (+34d) | 153d → 131d |
| P2.L1.BR.5100 | Paint Prime & Final Coat _ Walls & Hard Lid Ceilings / L1 / Toilet 2878 | 2025-12-17 → 2026-01-20 (+34d) | 2025-12-18 → 2026-01-21 (+34d) | 153d → 131d |
| P2.L1.BR.5140 | Trim - HVAC G/R/D's / L1 / Toilet 2878 | 2025-12-19 → 2026-01-22 (+34d) | 2025-12-22 → 2026-01-23 (+32d) | 153d → 131d |
| P2.L1.BR.5120 | Pull Wire & Trim Devices - Electrical / L1 / Toilet 2878 | 2025-12-23 → 2026-01-26 (+34d) | 2025-12-24 → 2026-01-27 (+34d) | 153d → 131d |
| P2.L1.BR.5130 | Lights - Set & Terminate / L1 / Toilet 2878 | 2025-12-23 → 2026-01-26 (+34d) | 2025-12-24 → 2026-01-27 (+34d) | 155d → 133d |
| P2.L1.BR.5110 | Pull Wire & Trim Devices - Fire Alarm / L1 / Toilet 2878 | 2025-12-26 → 2026-01-28 (+33d) | 2025-12-29 → 2026-01-29 (+31d) | 153d → 131d |
| P2.L1.BR.5150 | Wall Tile / L1 / Toilet 2878 | 2025-12-30 → 2026-01-30 (+31d) | 2026-01-06 → 2026-02-05 (+30d) | 153d → 131d |
| P2.L1.BR.5160 | Doors & Hardware / L1 / Toilet 2878 | 2026-01-07 → 2026-02-06 (+30d) | 2026-01-08 → 2026-02-09 (+32d) | 262d → 240d |
| P2.L1.BR.5170 | Plumbing Fixtures / Sinks / Showers / L1 / Toilet 2878 | 2026-01-07 → 2026-02-06 (+30d) | 2026-01-08 → 2026-02-09 (+32d) | 277d → 255d |
| P2.L1.BR.5200 | Flooring Prep - Epoxy Floors / L1 / Toilet 2878 | 2026-01-12 → 2026-02-11 (+30d) | 2026-01-12 → 2026-02-11 (+30d) | 150d → 128d |
| P2.L1.BR.5210 | Flooring - Epoxy Floors / L1 / Toilet 2878 | 2026-01-13 → 2026-02-12 (+30d) | 2026-01-14 → 2026-02-13 (+30d) | 273d → 251d |
| P2.L1.BR.5180 | Bathroom Accessories / L1 / Toilet 2878 | 2026-01-15 → 2026-02-16 (+32d) | 2026-01-16 → 2026-02-17 (+32d) | 273d → 251d |
| P2.L1.BR.5190 | Work Completion List - Finishes / L1 / Toilet 2878 | 2026-01-19 → 2026-02-18 (+30d) | 2026-01-23 → 2026-02-24 (+32d) | 273d → 251d |
| 6 | **Corridors & Lobbies / Level 1** | 2026-03-11 → 2026-04-03 (+23d) | 2026-10-21 → 2026-11-13 (+23d) |  |
| P2.L1.CL.1000 | Paint Prime & 1st Coat Walls / L1 / Corr & Lobbies | 2026-03-11 → 2026-04-03 (+23d) | 2026-03-17 → 2026-04-09 (+23d) | 53d → 36d |
| P2.L1.CL.1010 | Framing - Hard Lid Ceilings / L1 / Corr & Lobbies | 2026-03-18 → 2026-04-10 (+23d) | 2026-03-31 → 2026-04-23 (+23d) | 58d → 41d |
| P2.L1.CL.1020 | T-Grid / L1 / Corr & Lobbies | 2026-03-18 → 2026-04-10 (+23d) | 2026-03-31 → 2026-04-23 (+23d) | 53d → 36d |
| P2.L1.CL.1070 | Trim - Sprinkler Heads @ T-Grid / L1 / Corr & Lobbies | 2026-03-27 → 2026-04-21 (+25d) | 2026-04-02 → 2026-04-27 (+25d) | 53d → 36d |
| P2.L1.CL.1040 | R/I - Trim Sprinkler Heads- All Ceilings / L1 / Corr & Lobbies | 2026-04-03 → 2026-04-28 (+25d) | 2026-04-09 → 2026-05-04 (+25d) | 53d → 36d |
| P2.L1.CL.1050 | R/I - HVAC- All Ceilings / L1 / Corr & Lobbies | 2026-04-10 → 2026-05-05 (+25d) | 2026-04-16 → 2026-05-11 (+25d) | 53d → 36d |
| P2.L1.CL.1030 | R/I - Electrical - All Ceilings / L1 / Corr & Lobbies | 2026-04-17 → 2026-05-12 (+25d) | 2026-04-23 → 2026-05-18 (+25d) | 53d → 36d |
| P2.L1.CL.1080 | R/I - Fire Alarm/Life Safety - All Ceilings / L1 / Corr & Lobbies | 2026-04-24 → 2026-05-19 (+25d) | 2026-04-30 → 2026-05-26 (+26d) | 53d → 36d |
| P2.L1.CL.1100 | Pull Wire - Electrical / L1 / Corr & Lobbies | 2026-04-24 → 2026-05-19 (+25d) | 2026-04-30 → 2026-05-26 (+26d) | 88d → 71d |
| P2.L1.CL.1060 | R/I - All Remaining Low Voltage - All Ceilings / L1 / Corr & Lobbies | 2026-05-01 → 2026-05-27 (+26d) | 2026-05-07 → 2026-06-02 (+26d) | 53d → 36d |

| ID | Task | Start | Finish | Total float |
| --- | --- | --- | --- | --- |
| P2.L1.CL.1110 | Pull Wire - Fire Alarm / L1 / Corr & Lobbies | 2026-05-01 → 2026-05-27 (+26d) | 2026-05-07 → 2026-06-02 (+26d) | 93d → 76d |
| P2.L1.CL.1090 | Inspections - Close In- All Ceilings / L1 / Corr & Lobbies | 2026-05-08 → 2026-06-03 (+26d) | 2026-05-14 → 2026-06-09 (+26d) | 53d → 36d |
| P2.L1.CL.1120 | Pull Wire - All Remianing Low Voltage Systems / L1 / Corr & Lobbies | 2026-05-08 → 2026-06-03 (+26d) | 2026-05-14 → 2026-06-09 (+26d) | 98d → 81d |
| P2.L1.CL.1130 | Hang/Tape/Finish- Hard Lid Ceilings / L1 / Corr & Lobbies | 2026-05-15 → 2026-06-10 (+26d) | 2026-05-29 → 2026-06-23 (+25d) | 53d → 36d |
| P2.L1.CL.1140 | Drop Ceiling Tiles @ T-Grid / L1 / Corr & Lobbies | 2026-05-15 → 2026-06-10 (+26d) | 2026-05-21 → 2026-06-16 (+26d) | 111d → 94d |
| P2.L1.CL.1190 | Paint - Hard Lid Ceilings / L1 / Corr & Lobbies | 2026-06-01 → 2026-06-24 (+23d) | 2026-06-05 → 2026-06-30 (+25d) | 53d → 36d |
| P2.L1.CL.1180 | Ceiling Mounted - HVAC GRD's / L1 / Corr & Lobbies | 2026-06-08 → 2026-07-01 (+23d) | 2026-06-26 → 2026-07-22 (+26d) | 53d → 36d |
| P2.L1.CL.1150 | Ceiling Mounted - Electrical Devices and Lights / L1 / Corr & Lobbies | 2026-06-22 → 2026-07-16 (+24d) | 2026-07-13 → 2026-08-05 (+23d) | 53d → 36d |
| P2.L1.CL.1160 | Ceiling Mounted - Fire Alarm/Life Saftey Devices / L1 / Corr & Lobbies | 2026-07-07 → 2026-07-30 (+23d) | 2026-07-27 → 2026-08-19 (+23d) | 53d → 36d |
| P2.L1.CL.1170 | Ceiling Mounted - All Low Voltage Devices / L1 / Corr & Lobbies | 2026-07-21 → 2026-08-13 (+23d) | 2026-08-10 → 2026-09-02 (+23d) | 53d → 36d |
| P2.L1.CL.1200 | Prep Flooring / L1 / Corr & Lobbies | 2026-08-11 → 2026-09-03 (+23d) | 2026-08-12 → 2026-09-04 (+23d) | 53d → 36d |
| P2.L1.CL.1330 | Flooring / L1 / Corr & Lobbies | 2026-08-13 → 2026-09-08 (+26d) | 2026-08-24 → 2026-09-17 (+24d) | 53d → 36d |
| P2.L1.CL.1210 | Final Paint / L1 / Corr & Lobbies | 2026-08-20 → 2026-09-15 (+26d) | 2026-08-26 → 2026-09-21 (+26d) | 83d → 66d |
| P2.L1.CL.1220 | Floor Base / L1 / Corr & Lobbies | 2026-08-27 → 2026-09-22 (+26d) | 2026-09-02 → 2026-09-28 (+26d) | 103d → 86d |
| P2.L1.CL.1250 | Trim - HVAC - Wall Mounted Devices / L1 / Corr & Lobbies | 2026-08-27 → 2026-09-22 (+26d) | 2026-09-02 → 2026-09-28 (+26d) | 83d → 66d |
| P2.L1.CL.1230 | Trim - All Electrical - Wall Mounted Devices / L1 / Corr & Lobbies | 2026-09-03 → 2026-09-29 (+26d) | 2026-09-10 → 2026-10-05 (+25d) | 83d → 66d |
| P2.L1.CL.1240 | Trim - Fire Alarm - Wall Mounted Devices / L1 / Corr & Lobbies | 2026-09-11 → 2026-10-06 (+25d) | 2026-09-17 → 2026-10-12 (+25d) | 83d → 66d |
| P2.L1.CL.1260 | Trim - All Remining Low Voltage Systems - Wall Mounted Devices / L1 / Corr & Lobbies | 2026-09-18 → 2026-10-13 (+25d) | 2026-09-24 → 2026-10-19 (+25d) | 83d → 66d |
| P2.L1.CL.1270 | Building Signage / L1 / Corr & Lobbies | 2026-09-25 → 2026-10-20 (+25d) | 2026-10-01 → 2026-10-26 (+25d) | 83d → 66d |
| P2.L1.CL.1280 | Work Completion List / L1 / Corr & Lobbies | 2026-10-02 → 2026-10-27 (+25d) | 2026-10-08 → 2026-11-02 (+25d) | 83d → 66d |
| P2.L1.CL.1290 | Rough Clean / L1 / Corr & Lobbies | 2026-10-09 → 2026-11-03 (+25d) | 2026-10-12 → 2026-11-04 (+23d) | 83d → 66d |
| P2.L1.CL.1300 | Punchlist / L1 / Corr & Lobbies | 2026-10-13 → 2026-11-05 (+23d) | 2026-10-19 → 2026-11-11 (+23d) | 83d → 66d |
| P2.L1.CL.1310 | Final Clean / L1 / Corr & Lobbies | 2026-10-20 → 2026-11-12 (+23d) | 2026-10-21 → 2026-11-13 (+23d) | 83d → 66d |
| L1 | **LAB & CLINICAL SPACES (Below Interstitials) / LEVEL 1** |  | 2026-10-20 → 2026-11-18 (+29d) |  |
| 13 | **FINISHES - Lab & Clinical Spaces / Level 1** | 2026-03-13 → 2026-04-13 (+31d) | 2026-10-20 → 2026-11-18 (+29d) |  |
| 2 | **CT Suites - Room Blocks 1-39.. (6K SF) / Level 1** | 2026-03-13 → 2026-04-13 (+31d) | 2026-10-07 → 2026-11-05 (+29d) |  |
| P2.L1.F.LC.3440 | Headwall Set for MEP Tie in / L1 / CT Suites | 2026-03-13 → 2026-04-13 (+31d) | 2026-03-13 → 2026-04-13 (+31d) | 196d → 175d |
| P2.L1.F.LC.3450 | Headwall MEP Tie in / L1 / CT Suites | 2026-03-16 → 2026-04-14 (+29d) | 2026-03-16 → 2026-04-14 (+29d) | 196d → 175d |
| P2.L1.F.LC.3460 | Headwall Coverplate Install / L1 / CT Suites | 2026-03-17 → 2026-04-15 (+29d) | 2026-03-17 → 2026-04-15 (+29d) | 196d → 175d |
| P2.L1.F.LC.1000 | Paint - Walls / L1 / CT Suites | 2026-04-03 → 2026-05-04 (+31d) | 2026-04-09 → 2026-05-08 (+29d) | 93d → 72d |
| P2.L1.F.LC.1010 | R/I - Ceiling Assemblies & Supports - Med Equip / L1 / CT Suites | 2026-04-10 → 2026-05-11 (+31d) | 2026-04-16 → 2026-05-15 (+29d) | 93d → 72d |
| P2.L1.F.LC.1020 | Framing - Hard Lid Ceilings / L1 / CT Suites | 2026-04-17 → 2026-05-18 (+31d) | 2026-04-23 → 2026-05-22 (+29d) | 93d → 72d |
| P2.L1.F.LC.1030 | R/I - Lights & Devices - Hard Lids Ceilings / L1 / CT Suites | 2026-04-24 → 2026-05-26 (+32d) | 2026-04-30 → 2026-06-01 (+32d) | 93d → 72d |
| P2.L1.F.LC.1040 | R/I - Diffusers - Hard Lid Ceilings / L1 / CT Suites | 2026-04-24 → 2026-05-26 (+32d) | 2026-04-30 → 2026-06-01 (+32d) | 93d → 72d |
| P2.L1.F.LC.1050 | R/I - Sprinkler Heads - Hard Lid Ceilings / L1 / CT Suites | 2026-04-24 → 2026-05-26 (+32d) | 2026-04-30 → 2026-06-01 (+32d) | 93d → 72d |
| P2.L1.F.LC.1060 | R/I - Fire Alarm - Hard Lid Ceilings / L1 / CT Suites | 2026-04-24 → 2026-05-26 (+32d) | 2026-04-30 → 2026-06-01 (+32d) | 93d → 72d |
| P2.L1.F.LC.1070 | OH Ceiling Inspection & Signoff - Hard Lid Ceilings / L1 / CT Suites | 2026-05-01 → 2026-06-02 (+32d) | 2026-05-07 → 2026-06-08 (+32d) | 93d → 72d |
| P2.L1.F.LC.1080 | Hang-Tape-Finish _Hard Lid Ceilings / L1 / CT Suites | 2026-05-08 → 2026-06-09 (+32d) | 2026-05-14 → 2026-06-15 (+32d) | 93d → 72d |
| P2.L1.F.LC.1090 | Paint Ceilings / L1 / CT Suites | 2026-05-15 → 2026-06-16 (+32d) | 2026-05-21 → 2026-06-22 (+32d) | 93d → 72d |
| P2.L1.F.LC.1100 | Waterproof Ceramic Tile / L1 / CT Suites | 2026-05-22 → 2026-06-23 (+32d) | 2026-05-29 → 2026-06-29 (+31d) | 93d → 72d |
| P2.L1.F.LC.1110 | Ceramic Tile / L1 / CT Suites | 2026-06-01 → 2026-06-30 (+29d) | 2026-06-05 → 2026-07-07 (+32d) | 93d → 72d |
| P2.L1.F.LC.1120 | T-Grid / L1 / CT Suites | 2026-06-08 → 2026-07-08 (+30d) | 2026-06-12 → 2026-07-14 (+32d) | 93d → 72d |
| P2.L1.F.LC.1130 | Diffusers in T-Grid / L1 / CT Suites | 2026-06-15 → 2026-07-15 (+30d) | 2026-06-19 → 2026-07-21 (+32d) | 93d → 72d |
| P2.L1.F.LC.1140 | Lights & Devices / L1 / CT Suites | 2026-06-15 → 2026-07-15 (+30d) | 2026-06-19 → 2026-07-21 (+32d) | 93d → 72d |
| P2.L1.F.LC.1150 | Sprinkler Heads / L1 / CT Suites | 2026-06-15 → 2026-07-15 (+30d) | 2026-06-19 → 2026-07-21 (+32d) | 93d → 72d |
| P2.L1.F.LC.1160 | Trim Low Voltage / L1 / CT Suites | 2026-06-15 → 2026-07-15 (+30d) | 2026-06-19 → 2026-07-21 (+32d) | 93d → 72d |
| P2.L1.F.LC.1170 | Trim Fire Alarm / L1 / CT Suites | 2026-06-15 → 2026-07-15 (+30d) | 2026-06-19 → 2026-07-21 (+32d) | 93d → 72d |
| P2.L1.F.LC.1180 | OH Ceiling Signoff / L1 / CT Suites | 2026-06-22 → 2026-07-22 (+30d) | 2026-07-06 → 2026-08-04 (+29d) | 93d → 72d |
| P2.L1.F.LC.1190 | Casework (Before Flooring) / L1 / CT Suites | 2026-07-07 → 2026-08-05 (+29d) | 2026-07-07 → 2026-08-05 (+29d) | 93d → 72d |
| P2.L1.F.LC.1200 | Drop Ceiling Tile / L1 / CT Suites | 2026-07-07 → 2026-08-05 (+29d) | 2026-07-13 → 2026-08-11 (+29d) | 99d → 78d |
| P2.L1.F.LC.1210 | Wall Protection / L1 / CT Suites | 2026-07-08 → 2026-08-06 (+29d) | 2026-07-14 → 2026-08-12 (+29d) | 93d → 72d |
| P2.L1.F.LC.1220 | Plumbing Fixtures & Drinking Fountains / L1 / CT Suites | 2026-07-08 → 2026-08-06 (+29d) | 2026-07-14 → 2026-08-12 (+29d) | 98d → 77d |
| P2.L1.F.LC.1260 | Doors & Hardware / L1 / CT Suites | 2026-07-08 → 2026-08-06 (+29d) | 2026-07-14 → 2026-08-12 (+29d) | 98d → 77d |
| P2.L1.F.LC.1230 | Trim T-Stats / L1 / CT Suites | 2026-07-15 → 2026-08-13 (+29d) | 2026-07-21 → 2026-08-19 (+29d) | 93d → 72d |
| P2.L1.F.LC.1240 | Trim Electrical / L1 / CT Suites | 2026-07-15 → 2026-08-13 (+29d) | 2026-07-21 → 2026-08-19 (+29d) | 93d → 72d |
| P2.L1.F.LC.1250 | Trim Telephone/ Data / L1 / CT Suites | 2026-07-15 → 2026-08-13 (+29d) | 2026-07-21 → 2026-08-19 (+29d) | 93d → 72d |
| P2.L1.F.LC.1270 | Trim Med Gas / L1 / CT Suites | 2026-07-15 → 2026-08-13 (+29d) | 2026-07-21 → 2026-08-19 (+29d) | 93d → 72d |
| P2.L1.F.LC.1280 | Floor Prep / L1 / CT Suites | 2026-07-22 → 2026-08-20 (+29d) | 2026-07-28 → 2026-08-26 (+29d) | 93d → 72d |
| P2.L1.F.LC.1290 | Flooring / L1 / CT Suites | 2026-07-29 → 2026-08-27 (+29d) | 2026-08-04 → 2026-09-02 (+29d) | 93d → 72d |
| P2.L1.F.LC.1300 | Building Specialities / L1 / CT Suites | 2026-08-05 → 2026-09-03 (+29d) | 2026-08-11 → 2026-09-10 (+30d) | 93d → 72d |
| P2.L1.F.LC.1310 | Interior Building Signage / L1 / CT Suites | 2026-08-05 → 2026-09-03 (+29d) | 2026-08-11 → 2026-09-10 (+30d) | 93d → 72d |
| P2.L1.F.LC.1320 | Work Completion List - Finishes / L1 / CT Suites | 2026-08-12 → 2026-09-11 (+30d) | 2026-08-18 → 2026-09-17 (+30d) | 93d → 72d |
| P2.L1.F.LC.1330 | Remaining Equipment Post Flooring / L1 / CT Suites | 2026-08-19 → 2026-09-18 (+30d) | 2026-08-25 → 2026-09-24 (+30d) | 93d → 72d |
| P2.L1.F.LC.1340 | Remaining MEP Hook-Ups / L1 / CT Suites | 2026-08-26 → 2026-09-25 (+30d) | 2026-09-01 → 2026-10-01 (+30d) | 93d → 72d |
| P2.L1.F.LC.1350 | OFOI Furniture & Equipment / L1 / CT Suites | 2026-08-26 → 2026-09-25 (+30d) | 2026-09-01 → 2026-10-01 (+30d) | 103d → 82d |
| P2.L1.F.LC.1360 | Rough Clean / L1 / CT Suites | 2026-09-02 → 2026-10-02 (+30d) | 2026-09-09 → 2026-10-08 (+29d) | 93d → 72d |
| P2.L1.F.LC.1370 | Prepare Punchlist / L1 / CT Suites | 2026-09-10 → 2026-10-09 (+29d) | 2026-09-16 → 2026-10-15 (+29d) | 93d → 72d |
| P2.L1.F.LC.1380 | Correct Punchlist / L1 / CT Suites | 2026-09-17 → 2026-10-16 (+29d) | 2026-09-30 → 2026-10-29 (+29d) | 93d → 72d |
| P2.L1.F.LC.1390 | Final Clean / L1 / CT Suites | 2026-10-01 → 2026-10-30 (+29d) | 2026-10-07 → 2026-11-05 (+29d) | 93d → 72d |
| 3 | **Control / WorkStations - Room Blocks 1-29.. (3K SF) / Level 1** | 2026-03-13 → 2026-04-13 (+31d) | 2026-09-29 → 2026-10-28 (+29d) |  |

| ID | Task | Start | Finish | Total float |
| --- | --- | --- | --- | --- |
| P2.L1.F.LC.2190 | Casework (Before Flooring) / L1 / Ctrl,Wrkstn 294X | 2026-03-13 → 2026-04-13 (+31d) | 2026-03-16 → 2026-04-14 (+29d) | 152d → 131d |
| P2.L1.F.LC.3470 | Headwall Set for MEP Tie in / L1 / Ctrl,Wrkstn 294X | 2026-03-13 → 2026-04-13 (+31d) | 2026-03-17 → 2026-04-15 (+29d) | 193d → 172d |
| P2.L1.F.LC.2210 | Wall Protection / L1 / Ctrl,Wrkstn 294X | 2026-03-17 → 2026-04-15 (+29d) | 2026-03-23 → 2026-04-21 (+29d) | 172d → 151d |
| P2.L1.F.LC.2220 | Plumbing Fixtures & Drinking Fountains / L1 / Ctrl,Wrkstn 294X | 2026-03-17 → 2026-04-15 (+29d) | 2026-03-23 → 2026-04-21 (+29d) | 177d → 156d |
| P2.L1.F.LC.2260 | Doors & Hardware / L1 / Ctrl,Wrkstn 294X | 2026-03-17 → 2026-04-15 (+29d) | 2026-03-23 → 2026-04-21 (+29d) | 177d → 156d |
| P2.L1.F.LC.3480 | Headwall MEP Tie in / L1 / Ctrl,Wrkstn 294X | 2026-03-18 → 2026-04-16 (+29d) | 2026-03-19 → 2026-04-17 (+29d) | 193d → 172d |
| P2.L1.F.LC.3490 | Headwall Coverplate Install / L1 / Ctrl,Wrkstn 294X | 2026-03-20 → 2026-04-20 (+31d) | 2026-03-20 → 2026-04-20 (+31d) | 193d → 172d |
| P2.L1.F.LC.2230 | Trim T-Stats / L1 / Ctrl,Wrkstn 294X | 2026-03-24 → 2026-04-22 (+29d) | 2026-03-30 → 2026-04-28 (+29d) | 172d → 151d |
| P2.L1.F.LC.2240 | Trim Electrical / L1 / Ctrl,Wrkstn 294X | 2026-03-24 → 2026-04-22 (+29d) | 2026-03-30 → 2026-04-28 (+29d) | 172d → 151d |
| P2.L1.F.LC.2250 | Trim Telephone/ Data / L1 / Ctrl,Wrkstn 294X | 2026-03-24 → 2026-04-22 (+29d) | 2026-03-30 → 2026-04-28 (+29d) | 172d → 151d |
| P2.L1.F.LC.2270 | Trim Med Gas / L1 / Ctrl,Wrkstn 294X | 2026-03-24 → 2026-04-22 (+29d) | 2026-03-30 → 2026-04-28 (+29d) | 172d → 151d |
| P2.L1.F.LC.2000 | Paint - Walls / L1 / Ctrl,Wrkstn 294X | 2026-04-03 → 2026-05-04 (+31d) | 2026-04-09 → 2026-05-08 (+29d) | 99d → 78d |
| P2.L1.F.LC.2010 | R/I - Ceiling Assemblies & Supports - Med Equip / L1 / Ctrl,Wrkstn 294X | 2026-04-10 → 2026-05-11 (+31d) | 2026-04-16 → 2026-05-15 (+29d) | 99d → 78d |
| P2.L1.F.LC.2020 | Framing - Hard Lid Ceilings / L1 / Ctrl,Wrkstn 294X | 2026-04-17 → 2026-05-18 (+31d) | 2026-04-23 → 2026-05-22 (+29d) | 99d → 78d |
| P2.L1.F.LC.2030 | R/I - Lights & Devices - Hard Lids Ceilings / L1 / Ctrl,Wrkstn 294X | 2026-04-24 → 2026-05-26 (+32d) | 2026-04-30 → 2026-06-01 (+32d) | 99d → 78d |
| P2.L1.F.LC.2040 | R/I - Diffusers - Hard Lid Ceilings / L1 / Ctrl,Wrkstn 294X | 2026-04-24 → 2026-05-26 (+32d) | 2026-04-30 → 2026-06-01 (+32d) | 99d → 78d |
| P2.L1.F.LC.2050 | R/I - Sprinkler Heads - Hard Lid Ceilings / L1 / Ctrl,Wrkstn 294X | 2026-04-24 → 2026-05-26 (+32d) | 2026-04-30 → 2026-06-01 (+32d) | 99d → 78d |
| P2.L1.F.LC.2060 | R/I - Fire Alarm - Hard Lid Ceilings / L1 / Ctrl,Wrkstn 294X | 2026-04-24 → 2026-05-26 (+32d) | 2026-04-30 → 2026-06-01 (+32d) | 99d → 78d |
| P2.L1.F.LC.2070 | OH Ceiling Inspection & Signoff - Hard Lid Ceilings / L1 / Ctrl,Wrkstn 294X | 2026-05-01 → 2026-06-02 (+32d) | 2026-05-07 → 2026-06-08 (+32d) | 99d → 78d |
| P2.L1.F.LC.2080 | Hang-Tape-Finish _Hard Lid Ceilings / L1 / Ctrl,Wrkstn 294X | 2026-05-08 → 2026-06-09 (+32d) | 2026-05-14 → 2026-06-15 (+32d) | 99d → 78d |
| P2.L1.F.LC.2090 | Paint Ceilings / L1 / Ctrl,Wrkstn 294X | 2026-05-15 → 2026-06-16 (+32d) | 2026-05-21 → 2026-06-22 (+32d) | 99d → 78d |
| P2.L1.F.LC.2100 | Waterproof Ceramic Tile / L1 / Ctrl,Wrkstn 294X | 2026-05-22 → 2026-06-23 (+32d) | 2026-05-29 → 2026-06-29 (+31d) | 99d → 78d |
| P2.L1.F.LC.3400 | Floor Prep - Epoxy Floors / L1 / TLT-ISO 1-294X | 2026-05-22 → 2026-06-23 (+32d) | 2026-05-27 → 2026-06-25 (+29d) | 104d → 83d |
| P2.L1.F.LC.3410 | Flooring - Epoxy Floors / L1 / TLT-ISO 1-294X | 2026-05-28 → 2026-06-26 (+29d) | 2026-05-29 → 2026-06-29 (+31d) | 104d → 83d |
| P2.L1.F.LC.2110 | Ceramic Tile / L1 / Ctrl,Wrkstn 294X | 2026-06-01 → 2026-06-30 (+29d) | 2026-06-05 → 2026-07-07 (+32d) | 99d → 78d |
| P2.L1.F.LC.2120 | T-Grid / L1 / Ctrl,Wrkstn 294X | 2026-06-08 → 2026-07-08 (+30d) | 2026-06-12 → 2026-07-14 (+32d) | 99d → 78d |
| P2.L1.F.LC.2130 | Diffusers in T-Grid / L1 / Ctrl,Wrkstn 294X | 2026-06-15 → 2026-07-15 (+30d) | 2026-06-19 → 2026-07-21 (+32d) | 99d → 78d |
| P2.L1.F.LC.2140 | Lights & Devices / L1 / Ctrl,Wrkstn 294X | 2026-06-15 → 2026-07-15 (+30d) | 2026-06-19 → 2026-07-21 (+32d) | 99d → 78d |
| P2.L1.F.LC.2150 | Sprinkler Heads / L1 / Ctrl,Wrkstn 294X | 2026-06-15 → 2026-07-15 (+30d) | 2026-06-19 → 2026-07-21 (+32d) | 99d → 78d |
| P2.L1.F.LC.2160 | Trim Low Voltage / L1 / Ctrl,Wrkstn 294X | 2026-06-15 → 2026-07-15 (+30d) | 2026-06-19 → 2026-07-21 (+32d) | 99d → 78d |
| P2.L1.F.LC.2170 | Trim Fire Alarm / L1 / Ctrl,Wrkstn 294X | 2026-06-15 → 2026-07-15 (+30d) | 2026-06-19 → 2026-07-21 (+32d) | 99d → 78d |
| P2.L1.F.LC.2180 | OH Ceiling Signoff / L1 / Ctrl,Wrkstn 294X | 2026-06-22 → 2026-07-22 (+30d) | 2026-07-06 → 2026-08-04 (+29d) | 99d → 78d |
| P2.L1.F.LC.2200 | Drop Ceiling Tile / L1 / Ctrl,Wrkstn 294X | 2026-07-07 → 2026-08-05 (+29d) | 2026-07-13 → 2026-08-11 (+29d) | 99d → 78d |
| P2.L1.F.LC.2280 | Floor Prep / L1 / Ctrl,Wrkstn 294X | 2026-07-14 → 2026-08-12 (+29d) | 2026-07-20 → 2026-08-18 (+29d) | 99d → 78d |
| P2.L1.F.LC.2290 | Flooring / L1 / Ctrl,Wrkstn 294X | 2026-07-21 → 2026-08-19 (+29d) | 2026-07-27 → 2026-08-25 (+29d) | 99d → 78d |
| P2.L1.F.LC.2300 | Building Specialities / L1 / Ctrl,Wrkstn 294X | 2026-07-28 → 2026-08-26 (+29d) | 2026-08-03 → 2026-09-01 (+29d) | 99d → 78d |
| P2.L1.F.LC.2310 | Interior Building Signage / L1 / Ctrl,Wrkstn 294X | 2026-07-28 → 2026-08-26 (+29d) | 2026-08-03 → 2026-09-01 (+29d) | 99d → 78d |
| P2.L1.F.LC.2320 | Work Completion List - Finishes / L1 / Ctrl,Wrkstn 294X | 2026-08-04 → 2026-09-02 (+29d) | 2026-08-10 → 2026-09-09 (+30d) | 99d → 78d |
| P2.L1.F.LC.2330 | Remaining Equipment Post Flooring / L1 / Ctrl,Wrkstn 294X | 2026-08-11 → 2026-09-10 (+30d) | 2026-08-17 → 2026-09-16 (+30d) | 99d → 78d |
| P2.L1.F.LC.2340 | Remaining MEP Hook-Ups / L1 / Ctrl,Wrkstn 294X | 2026-08-18 → 2026-09-17 (+30d) | 2026-08-24 → 2026-09-23 (+30d) | 99d → 78d |
| P2.L1.F.LC.2350 | OFOI Furniture & Equipment / L1 / Ctrl,Wrkstn 294X | 2026-08-18 → 2026-09-17 (+30d) | 2026-08-24 → 2026-09-23 (+30d) | 109d → 88d |
| P2.L1.F.LC.2360 | Rough Clean / L1 / Ctrl,Wrkstn 294X | 2026-08-25 → 2026-09-24 (+30d) | 2026-08-31 → 2026-09-30 (+30d) | 99d → 78d |
| P2.L1.F.LC.2370 | Prepare Punchlist / L1 / Ctrl,Wrkstn 294X | 2026-09-01 → 2026-10-01 (+30d) | 2026-09-08 → 2026-10-07 (+29d) | 99d → 78d |
| P2.L1.F.LC.2380 | Correct Punchlist / L1 / Ctrl,Wrkstn 294X | 2026-09-09 → 2026-10-08 (+29d) | 2026-09-22 → 2026-10-21 (+29d) | 99d → 78d |
| P2.L1.F.LC.2390 | Final Clean / L1 / Ctrl,Wrkstn 294X | 2026-09-23 → 2026-10-22 (+29d) | 2026-09-29 → 2026-10-28 (+29d) | 99d → 78d |
| 4 | **MRI Suites - Room Blocks 1-28.. (13.5K SF) / Level 1** | 2026-03-13 → 2026-04-13 (+31d) | 2026-10-20 → 2026-11-18 (+29d) |  |
| P2.L1.F.LC.3500 | Headwall Set for MEP Tie in / L1 / MRI 28XX | 2026-03-13 → 2026-04-13 (+31d) | 2026-03-13 → 2026-04-13 (+31d) | 196d → 175d |
| P2.L1.F.LC.3510 | Headwall MEP Tie in / L1 / MRI 28XX | 2026-03-16 → 2026-04-14 (+29d) | 2026-03-16 → 2026-04-14 (+29d) | 196d → 175d |
| P2.L1.F.LC.3520 | Headwall Coverplate Install / L1 / MRI 28XX | 2026-03-17 → 2026-04-15 (+29d) | 2026-03-17 → 2026-04-15 (+29d) | 196d → 175d |
| P2.L1.F.LC.3000 | Paint - Walls / L1 / MRI 28XX | 2026-04-03 → 2026-05-04 (+31d) | 2026-04-09 → 2026-05-08 (+29d) | 84d → 63d |
| P2.L1.F.LC.3010 | R/I - Ceiling Assemblies & Supports - Med Equip / L1 / MRI 28XX | 2026-04-10 → 2026-05-11 (+31d) | 2026-04-16 → 2026-05-15 (+29d) | 84d → 63d |
| P2.L1.F.LC.3020 | Framing - Hard Lid Ceilings / L1 / MRI 28XX | 2026-04-17 → 2026-05-18 (+31d) | 2026-04-23 → 2026-05-22 (+29d) | 84d → 63d |
| P2.L1.F.LC.3030 | R/I - Lights & Devices - Hard Lids Ceilings / L1 / MRI 28XX | 2026-04-24 → 2026-05-26 (+32d) | 2026-04-30 → 2026-06-01 (+32d) | 84d → 63d |
| P2.L1.F.LC.3040 | R/I - Diffusers - Hard Lid Ceilings / L1 / MRI 28XX | 2026-04-24 → 2026-05-26 (+32d) | 2026-04-30 → 2026-06-01 (+32d) | 84d → 63d |
| P2.L1.F.LC.3050 | R/I - Sprinkler Heads - Hard Lid Ceilings / L1 / MRI 28XX | 2026-04-24 → 2026-05-26 (+32d) | 2026-04-30 → 2026-06-01 (+32d) | 84d → 63d |
| P2.L1.F.LC.3060 | R/I - Fire Alarm - Hard Lid Ceilings / L1 / MRI 28XX | 2026-04-24 → 2026-05-26 (+32d) | 2026-04-30 → 2026-06-01 (+32d) | 84d → 63d |
| P2.L1.F.LC.3070 | OH Ceiling Inspection & Signoff - Hard Lid Ceilings / L1 / MRI 28XX | 2026-05-01 → 2026-06-02 (+32d) | 2026-05-07 → 2026-06-08 (+32d) | 84d → 63d |
| P2.L1.F.LC.3080 | Hang-Tape-Finish _Hard Lid Ceilings / L1 / MRI 28XX | 2026-05-08 → 2026-06-09 (+32d) | 2026-05-14 → 2026-06-15 (+32d) | 84d → 63d |
| P2.L1.F.LC.3090 | Paint Ceilings / L1 / MRI 28XX | 2026-05-15 → 2026-06-16 (+32d) | 2026-05-21 → 2026-06-22 (+32d) | 84d → 63d |
| P2.L1.F.LC.3100 | Waterproof Ceramic Tile / L1 / MRI 28XX | 2026-05-22 → 2026-06-23 (+32d) | 2026-05-29 → 2026-06-29 (+31d) | 84d → 63d |
| P2.L1.F.LC.3110 | Ceramic Tile / L1 / MRI 28XX | 2026-06-01 → 2026-06-30 (+29d) | 2026-06-05 → 2026-07-07 (+32d) | 84d → 63d |
| P2.L1.F.LC.3120 | T-Grid / L1 / MRI 28XX | 2026-06-08 → 2026-07-08 (+30d) | 2026-06-12 → 2026-07-14 (+32d) | 84d → 63d |
| P2.L1.F.LC.3130 | Diffusers in T-Grid / L1 / MRI 28XX | 2026-06-15 → 2026-07-15 (+30d) | 2026-06-19 → 2026-07-21 (+32d) | 84d → 63d |
| P2.L1.F.LC.3140 | Lights & Devices / L1 / MRI 28XX | 2026-06-15 → 2026-07-15 (+30d) | 2026-06-19 → 2026-07-21 (+32d) | 84d → 63d |
| P2.L1.F.LC.3150 | Sprinkler Heads / L1 / MRI 28XX | 2026-06-15 → 2026-07-15 (+30d) | 2026-06-19 → 2026-07-21 (+32d) | 84d → 63d |
| P2.L1.F.LC.3160 | Trim Low Voltage / L1 / MRI 28XX | 2026-06-15 → 2026-07-15 (+30d) | 2026-06-19 → 2026-07-21 (+32d) | 84d → 63d |
| P2.L1.F.LC.3170 | Trim Fire Alarm / L1 / MRI 28XX | 2026-06-15 → 2026-07-15 (+30d) | 2026-06-19 → 2026-07-21 (+32d) | 84d → 63d |
| P2.L1.F.LC.3180 | OH Ceiling Signoff / L1 / MRI 28XX | 2026-06-22 → 2026-07-22 (+30d) | 2026-07-06 → 2026-08-04 (+29d) | 84d → 63d |
| P2.L1.F.LC.3190 | Casework/ Equipment / L1 / MRI 28XX | 2026-07-07 → 2026-08-05 (+29d) | 2026-07-20 → 2026-08-18 (+29d) | 84d → 63d |
| P2.L1.F.LC.3200 | Drop Ceiling Tile / L1 / MRI 28XX | 2026-07-07 → 2026-08-05 (+29d) | 2026-07-13 → 2026-08-11 (+29d) | 99d → 78d |

| ID | Task | Start | Finish | Complete | Total float |
| --- | --- | --- | --- | --- | --- |
| P2.L1.F.LC.3210 | Wall Protection / L1 / MRI 28XX | 2026-07-21 → 2026-08-19 (+29d) | 2026-07-27 → 2026-08-25 (+29d) |  | 84d → 63d |
| P2.L1.F.LC.3220 | Plumbing Fixtures & Drinking Fountains / L1 / MRI 28XX | 2026-07-21 → 2026-08-19 (+29d) | 2026-07-27 → 2026-08-25 (+29d) |  | 89d → 68d |
| P2.L1.F.LC.3260 | Doors & Hardware / L1 / MRI 28XX | 2026-07-21 → 2026-08-19 (+29d) | 2026-07-27 → 2026-08-25 (+29d) |  | 89d → 68d |
| P2.L1.F.LC.3230 | Trim T-Stats / L1 / MRI 28XX | 2026-07-28 → 2026-08-26 (+29d) | 2026-08-03 → 2026-09-01 (+29d) |  | 84d → 63d |
| P2.L1.F.LC.3240 | Trim Electrical / L1 / MRI 28XX | 2026-07-28 → 2026-08-26 (+29d) | 2026-08-03 → 2026-09-01 (+29d) |  | 84d → 63d |
| P2.L1.F.LC.3250 | Trim Telephone/ Data / L1 / MRI 28XX | 2026-07-28 → 2026-08-26 (+29d) | 2026-08-03 → 2026-09-01 (+29d) |  | 84d → 63d |
| P2.L1.F.LC.3270 | Trim Med Gas / L1 / MRI 28XX | 2026-07-28 → 2026-08-26 (+29d) | 2026-08-03 → 2026-09-01 (+29d) |  | 84d → 63d |
| P2.L1.F.LC.3280 | Floor Prep / L1 / MRI 28XX | 2026-08-04 → 2026-09-02 (+29d) | 2026-08-10 → 2026-09-09 (+30d) |  | 84d → 63d |
| P2.L1.F.LC.3290 | Flooring / L1 / MRI 28XX | 2026-08-11 → 2026-09-10 (+30d) | 2026-08-17 → 2026-09-16 (+30d) |  | 84d → 63d |
| P2.L1.F.LC.3300 | Building Specialities / L1 / MRI 28XX | 2026-08-18 → 2026-09-17 (+30d) | 2026-08-24 → 2026-09-23 (+30d) |  | 84d → 63d |
| P2.L1.F.LC.3310 | Interior Building Signage / L1 / MRI 28XX | 2026-08-18 → 2026-09-17 (+30d) | 2026-08-24 → 2026-09-23 (+30d) |  | 84d → 63d |
| P2.L1.F.LC.3320 | Work Completion List - Finishes / L1 / MRI 28XX | 2026-08-25 → 2026-09-24 (+30d) | 2026-08-31 → 2026-09-30 (+30d) |  | 84d → 63d |
| P2.L1.F.LC.3330 | Remaining Equipment Post Flooring / L1 / MRI 28XX | 2026-09-01 → 2026-10-01 (+30d) | 2026-09-08 → 2026-10-07 (+29d) |  | 84d → 63d |
| P2.L1.F.LC.3340 | Remaining MEP Hook-Ups / L1 / MRI 28XX | 2026-09-09 → 2026-10-08 (+29d) | 2026-09-15 → 2026-10-14 (+29d) |  | 84d → 63d |
| P2.L1.F.LC.3350 | OFOI Furniture & Equipment / L1 / MRI 28XX | 2026-09-09 → 2026-10-08 (+29d) | 2026-09-15 → 2026-10-14 (+29d) |  | 94d → 73d |
| P2.L1.F.LC.3360 | Rough Clean / L1 / MRI 28XX | 2026-09-16 → 2026-10-15 (+29d) | 2026-09-22 → 2026-10-21 (+29d) |  | 84d → 63d |
| P2.L1.F.LC.3370 | Prepare Punchlist / L1 / MRI 28XX | 2026-09-23 → 2026-10-22 (+29d) | 2026-09-29 → 2026-10-28 (+29d) |  | 84d → 63d |
| P2.L1.F.LC.3380 | Correct Punchlist / L1 / MRI 28XX | 2026-09-30 → 2026-10-29 (+29d) | 2026-10-13 → 2026-11-11 (+29d) |  | 84d → 63d |
| P2.L1.F.LC.3390 | Final Clean / L1 / MRI 28XX | 2026-10-14 → 2026-11-12 (+29d) | 2026-10-20 → 2026-11-18 (+29d) |  | 84d → 63d |
| 3 | **ROUGH IN - Lab & Clinical Spaces (22K SF) / Level 1** |  | 2026-04-02 → 2026-05-01 (+29d) |  |  |
| P2.L1.LC.1450 | In Wall - Backing/Blocking/Supports / L1 / Lab & Clinical | 2025-12-29 → 2025-12-08 A (-21d) | 2026-01-12 → 2026-01-19 (+7d) |  | 45d → 40d |
| P2.L1.LC.1440 | In Wall - Electrical - Framing / L1 / Lab & Clinical | 2025-12-29 → 2025-12-15 A (-14d) | 2026-01-12 → 2026-01-19 (+7d) |  | 35d → 30d |
| P2.L1.LC.1250 | Pull Wire - Electrical - 480/277v Distribution / L1 / Lab & Clinical | 2025-12-01 → 2026-01-02 (+32d) | 2025-12-12 → 2026-01-15 (+34d) |  | 89d → 67d |
| P2.L1.LC.1360 | Pull Wire - Electrical - 208/120v Branch & Equip / L1 / Lab & Clinical | 2026-01-13 → 2026-01-20 (+7d) | 2026-01-26 → 2026-02-02 (+7d) |  | 35d → 30d |
| P2.L1.LC.1330 | OH - HVAC Piping - Equip Tie In / L1 / Lab & Clinical | 2026-01-28 → 2026-02-20 (+23d) | 2026-02-10 → 2026-03-05 (+23d) |  | 49d → 32d |
| P2.L1.LC.1460 | AHJ Inspections - Wall Close In / L1 / Lab & Clinical | 2026-02-20 → 2026-03-23 (+31d) | 2026-02-26 → 2026-03-27 (+29d) |  | 17d → -4d |
| P2.L1.LC.1470 | Hang-Tape-Finish - Walls and Hard Lid Ceilings / L1 / Lab & Clinical | 2026-02-27 → 2026-03-30 (+31d) | 2026-03-12 → 2026-04-10 (+29d) |  | 17d → -4d |
| P2.L1.LC.1480 | Spray/Seal/Firestop - Head of Wall / L1 / Lab & Clinical | 2026-03-13 → 2026-04-13 (+31d) | 2026-03-26 → 2026-04-24 (+29d) |  | 17d → -4d |
| P2.L1.LC.1490 | Firestop - Thru Wall / L1 / Lab & Clinical | 2026-03-13 → 2026-04-13 (+31d) | 2026-03-26 → 2026-04-24 (+29d) |  | 17d → -4d |
| P2.L1.LC.1500 | Pull Wire - Low Volt - BAS/Controls / L1 / Lab & Clinical | 2026-03-13 → 2026-04-13 (+31d) | 2026-03-26 → 2026-04-24 (+29d) |  | 17d → -4d |
| P2.L1.LC.1510 | Pull Wire - Low Volt - Fire Alarm / L1 / Lab & Clinical | 2026-03-13 → 2026-04-13 (+31d) | 2026-03-26 → 2026-04-24 (+29d) |  | 17d → -4d |
| P2.L1.LC.1520 | Pull Wire - Low Volt - Telecom / L1 / Lab & Clinical | 2026-03-13 → 2026-04-13 (+31d) | 2026-03-26 → 2026-04-24 (+29d) |  | 17d → -4d |
| P2.L1.LC.1530 | Pull Wire - Low Volt - Security / L1 / Lab & Clinical | 2026-03-13 → 2026-04-13 (+31d) | 2026-03-26 → 2026-04-24 (+29d) |  | 17d → -4d |
| P2.L1.LC.1540 | Pull Wire - Low Volt - Medical Services/Nurse Call (?) / L1 / Lab & Clinical | 2026-03-13 → 2026-04-13 (+31d) | 2026-03-26 → 2026-04-24 (+29d) |  | 17d → -4d |
| P2.L1.LC.1550 | Trades Inspect & Verify R/I Work Completed to Specs / L1 / Lab & Clinical | 2026-03-27 → 2026-04-27 (+31d) | 2026-04-02 → 2026-05-01 (+29d) |  | 17d → -4d |
| 1 | **MECHANICAL TOWERS / LEVEL 1** |  | 2026-03-11 → 2026-04-10 (+30d) |  |  |
| 8 | **East Mechanical Tower / Rough In & Finish (3K SF) / Level 1** |  | 2026-03-11 → 2026-04-10 (+30d) |  |  |
| P2.L1.EMT.1110 | HVAC Piping - Equip Tie In / L1 - E. Mech Tower | 2026-01-28 → 2025-12-01 A (-58d) | 2026-02-10 → 2025-12-11 A (-61d) | 0% → 100% | 89d → none |
| P2.L1.EMT.1090 | Panelboards, Interconnect Wiring, and Remaining Room Buildout of All Elec/FA Systems / L1 - E. Mech Tower | 2025-12-08 A | 2025-12-19 A | 0% → 100% | 157d → none |
| P2.L1.EMT.1130 | Test/Inspect Duct & Piping / L1 - E. Mech Tower | 2026-01-23 → 2025-12-10 A (-44d) | 2026-01-29 → 2025-12-15 A (-45d) | 0% → 100% | 137d → none |
| P2.L1.EMT.1250 | Flooring Prep - Epoxy Floors / L1 - E. Mech Tower | 2025-12-01 → 2026-01-02 (+32d) | 2025-12-03 → 2026-01-06 (+34d) |  | 48d → 26d |
| P2.L1.EMT.1200 | Flooring - Epoxy Floors / L1 - E. Mech Tower | 2025-12-04 → 2026-01-07 (+34d) | 2025-12-05 → 2026-01-08 (+34d) |  | 48d → 26d |
| P2.L1.EMT.1160 | Electrical Tie in to Equipment / L1 - E. Mech Tower | 2025-12-22 → 2026-01-09 (+18d) | 2025-12-29 → 2026-01-15 (+17d) |  | 162d → 150d |
| P2.L1.EMT.1170 | Test & Terminate / L1 - E. Mech Tower | 2025-12-22 → 2026-01-09 (+18d) | 2025-12-29 → 2026-01-15 (+17d) |  | 157d → 145d |
| P2.L1.EMT.1180 | Paint - Finish Coat / L1 - E. Mech Tower | 2025-12-30 → 2026-01-16 (+17d) | 2025-12-31 → 2026-01-19 (+19d) |  | 157d → 145d |
| P2.L1.EMT.1210 | Doors & Hardware / L1 - E. Mech Tower | 2025-12-30 → 2026-01-16 (+17d) | 2025-12-31 → 2026-01-19 (+19d) |  | 162d → 150d |
| P2.L1.EMT.1190 | Trim All MEPF Finishes / L1 - E. Mech Tower | 2026-01-02 → 2026-01-20 (+18d) | 2026-01-05 → 2026-01-21 (+16d) |  | 210d → 198d |
| P2.L1.EMT.1150 | Insulate HVAC / Plumbing Pipe / L1 - E. Mech Tower | 2026-02-11 → 2026-02-20 (+9d) | 2026-02-17 → 2026-02-26 (+9d) |  | 129d → 122d |
| P2.L1.EMT.1340 | Wall Protection / L1 - E. Mech Tower | 2026-02-19 → 2026-03-23 (+32d) | 2026-02-25 → 2026-03-27 (+30d) |  | 123d → 101d |
| P2.L1.EMT.1220 | Trades Inspect & Verify R/I Work Completed to Specs / L1 - E. Mech Tower | 2026-02-26 → 2026-03-30 (+32d) | 2026-03-04 → 2026-04-03 (+30d) |  | 123d → 101d |
| P2.L1.EMT.1240 | Energize Elec Panels - Lock Doors and Limit Access / L1 - E. Mech Tower | 2026-03-05 → 2026-04-06 (+32d) | 2026-03-11 → 2026-04-10 (+30d) |  | 123d → 101d |
| P2.L1.EMT.1230 | HVAC System Ready for Start Up / L1 - E. Mech Tower | 2026-03-11 → 2026-04-10 (+30d) | 2026-03-11 → 2026-04-10 (+30d) |  | 163d → 141d |
| L2 | **L2 / BUILDOUT** |  | 2026-11-04 → 2026-12-01 (+27d) |  |  |
| L2 | **CORE & SUPPORT SPACES / LEVEL 2** |  | 2026-11-04 → 2026-12-01 (+27d) |  |  |
| 1 | **ROUGH IN - Core & Support Spaces / Level 2** |  | 2026-03-03 → 2026-04-10 (+38d) |  |  |
| Z1 | **South (9K SF) / Level 2** |  | 2026-03-03 → 2026-04-02 (+30d) |  |  |
| P2.L2.S.1250 | Pull Wire - Electrical - 480/277v Distribution / L2 / South | 2025-12-01 → 2026-01-02 (+32d) | 2025-12-12 → 2026-01-15 (+34d) |  | 89d → 67d |
| P2.L2.S.1320 | OH - Electrical - Equip Tie In / L2 / South | 2025-12-01 → 2026-01-02 (+32d) | 2025-12-12 → 2026-01-15 (+34d) |  | 69d → 47d |
| P2.L2.S.1460 | AHJ Inspections - Wall Close In / L2 / South | 2025-12-01 → 2026-01-02 (+32d) | 2025-12-05 → 2026-01-08 (+34d) |  | 39d → 17d |
| P2.L2.S.1360 | Pull Wire - Electrical - 208/120v Branch & Equip / L2 / South | 2025-12-15 → 2026-01-16 (+32d) | 2026-01-13 → 2026-02-12 (+30d) |  | 69d → 47d |
| P2.L2.S.1330 | OH - HVAC Piping - Equip Tie In / L2 / South | 2026-01-28 → 2026-02-20 (+23d) | 2026-02-10 → 2026-03-05 (+23d) |  | 49d → 32d |
| P2.L2.S.1470 | Hang-Tape-Finish - Walls and Hard Lid Ceilings / L2 / South | 2026-01-21 → 2026-02-20 (+30d) | 2026-02-10 → 2026-03-12 (+30d) |  | 9d → -13d |
| P2.L2.S.1480 | Spray/Seal/Firestop - Head of Wall / L2 / South | 2026-02-11 → 2026-03-13 (+30d) | 2026-02-24 → 2026-03-26 (+30d) |  | 39d → 17d |
| P2.L2.S.1490 | Firestop - Thru Wall / L2 / South | 2026-02-11 → 2026-03-13 (+30d) | 2026-02-24 → 2026-03-26 (+30d) |  | 39d → 17d |
| P2.L2.S.1500 | Pull Wire - Low Volt - BAS/Controls / L2 / South | 2026-02-11 → 2026-03-13 (+30d) | 2026-02-24 → 2026-03-26 (+30d) |  | 39d → 17d |
| P2.L2.S.1510 | Pull Wire - Low Volt - Fire Alarm / L2 / South | 2026-02-11 → 2026-03-13 (+30d) | 2026-02-24 → 2026-03-26 (+30d) |  | 39d → 17d |
| P2.L2.S.1520 | Pull Wire - Low Volt - Telecom / L2 / South | 2026-02-11 → 2026-03-13 (+30d) | 2026-02-24 → 2026-03-26 (+30d) |  | 39d → 17d |
| P2.L2.S.1530 | Pull Wire - Low Volt - Security / L2 / South | 2026-02-11 → 2026-03-13 (+30d) | 2026-02-24 → 2026-03-26 (+30d) |  | 39d → 17d |
| P2.L2.S.1540 | Pull Wire - Low Volt - Medical Services/Nurse Call (?) / L2 / South | 2026-02-11 → 2026-03-13 (+30d) | 2026-02-24 → 2026-03-26 (+30d) |  | 39d → 17d |
| P2.L2.S.1550 | Trades Inspect & Verify R/I Work Completed to Specs / L2 / South | 2026-02-25 → 2026-03-27 (+30d) | 2026-03-03 → 2026-04-02 (+30d) |  | 39d → 17d |

| ID | Task | Start | Finish | Complete | Total float | Predecessors |
| --- | --- | --- | --- | --- | --- | --- |
| Z11 | **North (16K SF) / Level 2** |  | 2026-03-03 → 2026-04-02 (+30d) |  |  |  |
| P2.L2.N.1170 | AHJ Inspections - Wall Close In / L2 / North | 2025-12-01 → 2026-01-02 (+32d) | 2025-12-05 → 2026-01-08 (+34d) |  | 39d → 17d |  |
| P2.L2.N.1210 | OH - Electrical - Equip Tie In / L2 / North | 2025-12-01 → 2026-01-02 (+32d) | 2025-12-12 → 2026-01-15 (+34d) |  | 69d → 47d |  |
| P2.L2.N.1470 | Pull Wire - Electrical - 480/277v Distribution / L2 / North | 2025-12-01 → 2026-01-02 (+32d) | 2025-12-12 → 2026-01-15 (+34d) |  | 89d → 67d |  |
| P2.L2.N.1420 | Pull Wire - Electrical - 208/120v Branch & Equip / L2 / North | 2025-12-15 → 2026-01-16 (+32d) | 2026-01-13 → 2026-02-12 (+30d) |  | 69d → 47d |  |
| P2.L2.N.1180 | Hang-Tape-Finish - Walls and Hard Lid Ceilings / L2 / North | 2026-01-21 → 2026-02-20 (+30d) | 2026-02-10 → 2026-03-12 (+30d) |  | 9d → -13d |  |
| P2.L2.N.1230 | OH - HVAC Piping - Equip Tie In / L2 / North | 2026-01-28 → 2026-02-20 (+23d) | 2026-02-17 → 2026-03-12 (+23d) |  | 44d → 27d |  |
| P2.L2.N.1130 | Spray/Seal/Firestop - Head of Wall / L2 / North | 2026-02-11 → 2026-03-13 (+30d) | 2026-02-24 → 2026-03-26 (+30d) |  | 39d → 17d |  |
| P2.L2.N.1160 | Firestop - Thru Wall / L2 / North | 2026-02-11 → 2026-03-13 (+30d) | 2026-02-24 → 2026-03-26 (+30d) |  | 39d → 17d |  |
| P2.L2.N.1430 | Pull Wire - Low Volt - BAS/Controls / L2 / North | 2026-02-11 → 2026-03-13 (+30d) | 2026-02-24 → 2026-03-26 (+30d) |  | 39d → 17d |  |
| P2.L2.N.1440 | Pull Wire - Low Volt - Fire Alarm / L2 / North | 2026-02-11 → 2026-03-13 (+30d) | 2026-02-24 → 2026-03-26 (+30d) |  | 39d → 17d |  |
| P2.L2.N.1450 | Pull Wire - Low Volt - Telecom / L2 / North | 2026-02-11 → 2026-03-13 (+30d) | 2026-02-24 → 2026-03-26 (+30d) |  | 39d → 17d |  |
| P2.L2.N.1460 | Pull Wire - Low Volt - Security / L2 / North | 2026-02-11 → 2026-03-13 (+30d) | 2026-02-24 → 2026-03-26 (+30d) |  | 39d → 17d |  |
| P2.L2.N.1480 | Pull Wire - Low Volt - Medical Services/Nurse Call (?) / L2 / North | 2026-02-11 → 2026-03-13 (+30d) | 2026-02-24 → 2026-03-26 (+30d) |  | 39d → 17d |  |
| P2.L2.N.1550 | Trades Inspect & Verify R/I Work Completed to Specs / L2 / North | 2026-02-25 → 2026-03-27 (+30d) | 2026-03-03 → 2026-04-02 (+30d) |  | 39d → 17d |  |
| 4 | **House Electrical Rooms / Level 2** |  | 2025-12-17 → 2026-02-16 (+61d) |  |  |  |
| 7 | **House Electrical Room / 2-5959** |  | 2025-12-17 → 2025-12-31 (+14d) |  |  |  |
| P2.2.HE.5959.1070 | Pull Wire - In From Distribution Panels / Out to Branch Circuits / L2 / South / 5959 |  |  |  |  | P2.2.HE.5959.1060 → P2.2.HE.5959.1060, P2.L2.INT.S.1270, P2.L2.S.1360 |
| P2.2.HE.5959.1090 | Test & Terminate / L2 / South / 5959 | 2025-12-01 A | 2025-12-05 A | 0% → 100% | 36d → none |  |
| P2.2.HE.5959.1120 | Flooring / L2 / South / 5959 | 2025-12-12 → 2025-12-01 A (-11d) | 2025-12-15 → 2025-12-05 A (-10d) | 0% → 100% | 36d → none |  |
| P2.2.HE.5959.1100 | Paint - Finish Coat / L2 / South / 5959 | 2025-12-08 A | 2025-12-09 → 2025-12-12 A (+3d) | 0% → 100% | 36d → none |  |
| P2.2.HE.5959.1110 | Trim All MEPF Finishes / L2 / South / 5959 | 2025-12-10 → 2025-12-16 A (+6d) | 2025-12-11 → 2025-12-19 A (+8d) | 0% → 100% | 36d → none |  |
| P2.2.HE.5959.1130 | Doors & Hardware / L2 / South / 5959 | 2025-12-16 → 2025-12-18 A (+2d) | 2025-12-17 → 2025-12-23 A (+6d) | 0% → 100% | 36d → none |  |
| P2.2.HE.5959.1140 | Panels Ready to Energize - Lock Doors and Limit Access / L2 / South / 5959 | 2025-12-17 → 2025-12-31 A (+14d) | 2025-12-17 → 2025-12-31 A (+14d) | 0% → 100% | 36d → none |  |
| 3 | **House Electrical Room / 2-2803** |  | 2025-12-17 → 2026-02-16 (+61d) |  |  |  |
| P2.2.HE.2803.1070 | Pull Wire - In From Distribution Panels / Out to Branch Circuits / L2 / North / 2803 |  |  |  |  | P2.2.HE.2803.1060 → P2.2.HE.2803.1060, P2.L2.INT.N.1270, P2.L2.N.1420 |
| P2.2.HE.2803.1090 | Test & Terminate / L2 / North / 2803 | 2025-12-01 A | 2025-12-05 A | 0% → 100% | 36d → none |  |
| P2.2.HE.2803.1100 | Paint - Finish Coat / L2 / North / 2803 | 2025-12-08 A | 2025-12-09 → 2025-12-12 A (+3d) | 0% → 100% | 36d → none |  |
| P2.2.HE.2803.1110 | Trim All MEPF Finishes / L2 / North / 2803 | 2025-12-10 → 2025-12-18 A (+8d) | 2025-12-11 → 2025-12-22 A (+11d) | 0% → 100% | 36d → none |  |
| P2.2.HE.2803.1130 | Doors & Hardware / L2 / North / 2803 | 2025-12-16 → 2025-12-18 A (+2d) | 2025-12-17 → 2025-12-23 A (+6d) | 0% → 100% | 36d → none |  |
| P2.2.HE.2803.1120 | Flooring / L2 / North / 2803 | 2025-12-12 → 2026-02-13 (+63d) | 2025-12-15 → 2026-02-16 (+63d) |  | 36d → 65d |  |
| P2.2.HE.2803.1140 | Panels Ready to Energize - Lock Doors and Limit Access / L2 / North / 2803 | 2025-12-17 → 2026-02-16 (+61d) | 2025-12-17 → 2026-02-16 (+61d) |  | 36d → 65d |  |
| 2 | **House Electrical Room / 2-2949** |  | 2025-12-17 → 2025-12-31 (+14d) |  |  |  |
| P2.2.HE.2949.1070 | Pull Wire - In From Distribution Panels / Out to Branch Circuits / L2 / North / 2949 |  |  |  |  | P2.2.HE.2949.1060 → P2.2.HE.2949.1060, P2.L2.INT.N.1270, P2.L2.N.1420 |
| P2.2.HE.2949.1090 | Test & Terminate / L2 / North / 2949 | 2025-12-01 A | 2025-12-05 A | 0% → 100% | 36d → none |  |
| P2.2.HE.2949.1120 | Flooring / L2 / North / 2949 | 2025-12-12 → 2025-12-01 A (-11d) | 2025-12-15 → 2025-12-05 A (-10d) | 0% → 100% | 36d → none |  |
| P2.2.HE.2949.1100 | Paint - Finish Coat / L2 / North / 2949 | 2025-12-08 A | 2025-12-09 → 2025-12-12 A (+3d) | 0% → 100% | 36d → none |  |
| P2.2.HE.2949.1110 | Trim All MEPF Finishes / L2 / North / 2949 | 2025-12-10 → 2025-12-15 A (+5d) | 2025-12-11 → 2025-12-17 A (+6d) | 0% → 100% | 36d → none |  |
| P2.2.HE.2949.1130 | Doors & Hardware / L2 / North / 2949 | 2025-12-16 → 2025-12-18 A (+2d) | 2025-12-17 → 2025-12-23 A (+6d) | 0% → 100% | 36d → none |  |
| P2.2.HE.2949.1140 | Panels Ready to Energize - Lock Doors and Limit Access / L2 / North / 2949 | 2025-12-17 → 2025-12-31 A (+14d) | 2025-12-17 → 2025-12-31 A (+14d) | 0% → 100% | 36d → none |  |
| 1 | **House Electrical Room / 2-5966** |  | 2025-12-17 → 2026-02-16 (+61d) |  |  |  |
| P2.2.HE.5966.1070 | Pull Wire - In From Distribution Panels / Out to Branch Circuits / L2 / South / 5966 |  |  |  |  | P2.2.HE.5966.1060 → P2.2.HE.5966.1060, P2.L2.INT.S.1270, P2.L2.S.1360 |
| P2.2.HE.5966.1100 | Paint - Finish Coat / L2 / South / 5966 | 2025-12-08 A | 2025-12-09 → 2025-12-12 A (+3d) | 0% → 100% | 36d → none |  |
| P2.2.HE.5966.1090 | Test & Terminate / L2 / South / 5966 | 2025-12-01 → 2025-12-10 A (+9d) | 2025-12-05 → 2025-12-16 A (+11d) | 0% → 100% | 36d → none |  |
| P2.2.HE.5966.1110 | Trim All MEPF Finishes / L2 / South / 5966 | 2025-12-10 → 2025-12-16 A (+6d) | 2025-12-11 → 2025-12-22 A (+11d) | 0% → 100% | 36d → none |  |
| P2.2.HE.5966.1130 | Doors & Hardware / L2 / South / 5966 | 2025-12-16 → 2025-12-18 A (+2d) | 2025-12-17 → 2025-12-23 A (+6d) | 0% → 100% | 36d → none |  |
| P2.2.HE.5966.1140 | Panels Ready to Energize - Lock Doors and Limit Access / L2 / South / 5966 | 2025-12-17 → 2025-12-31 A (+14d) | 2025-12-17 → 2025-12-31 A (+14d) | 0% → 100% | 36d → none |  |
| P2.2.HE.5966.1120 | Flooring / L2 / South / 5966 | 2025-12-12 → 2026-02-13 (+63d) | 2025-12-15 → 2026-02-16 (+63d) |  | 36d → 65d |  |
| 2 | **IT Closets / Level 2** |  | 2026-02-10 → 2026-04-10 (+59d) |  |  |  |
| 1 | **IT Closet 2-5957** |  | 2026-02-05 → 2026-04-03 (+57d) |  |  |  |
| P2.2.IT.5957.150 | Flooring / L2 / South / 5957 | 2025-12-03 → 2025-11-17 A (-16d) | 2025-12-09 → 2025-11-21 A (-18d) | 0% → 100% | 178d → none |  |
| P2.2.IT.5957.230 | Doors & Hardware / L2 / South / 5957 | 2026-01-16 → 2025-12-18 A (-29d) | 2026-01-19 → 2025-12-23 A (-27d) | 0% → 100% | 182d → none |  |
| P2.2.IT.5957.170 | OH Cable Tray / L2 / South / 5957 | 2025-12-15 → 2026-01-16 (+32d) | 2025-12-19 → 2026-01-22 (+34d) |  | 172d → 150d |  |
| P2.2.IT.5957.140 | Trim all MEPF / L2 / South / 5957 | 2025-12-01 → 2026-02-13 (+74d) | 2025-12-02 → 2026-02-16 (+76d) |  | 178d → 131d |  |
| P2.2.IT.5957.180 | Grounding and Bonding / L2 / South / 5957 | 2025-12-10 → 2026-02-17 (+69d) | 2025-12-11 → 2026-02-18 (+69d) |  | 178d → 131d |  |
| P2.2.IT.5957.260 | Room Ready - CIT / L2 / South / 5957 | 2025-12-22 → 2026-02-19 (+59d) | 2025-12-29 → 2026-02-25 (+58d) |  | 172d → 131d |  |
| P2.2.IT.5957.160 | Equipment Racks and Ladders / L2 / South / 5957 | 2025-12-30 → 2026-02-26 (+58d) | 2026-01-06 → 2026-03-04 (+57d) |  | 172d → 131d |  |
| P2.2.IT.5957.190 | Pull Wire - Backbone Cabling Into Racks / L2 / South / 5957 | 2026-01-07 → 2026-03-05 (+57d) | 2026-01-13 → 2026-03-11 (+57d) |  | 172d → 131d |  |
| P2.2.IT.5957.200 | Pull Wire - Horizontal Cabling Out to Termination Points / L2 / South / 5957 | 2026-01-07 → 2026-03-05 (+57d) | 2026-01-13 → 2026-03-11 (+57d) |  | 172d → 131d |  |
| P2.2.IT.5957.210 | Paint - Finish Coat / L2 / South / 5957 | 2026-01-14 → 2026-03-12 (+57d) | 2026-01-15 → 2026-03-13 (+57d) |  | 172d → 131d |  |
| P2.2.IT.5957.220 | Terminations and Punch Downs - All Cabling / L2 / South / 5957 | 2026-01-16 → 2026-03-16 (+59d) | 2026-02-05 → 2026-04-03 (+57d) |  | 172d → 131d |  |
| P2.2.IT.5957.240 | Energize Elec Panels Serving Comms Racks / L2 / South / 5957 | 2026-01-20 → 2026-03-16 (+55d) | 2026-01-22 → 2026-03-18 (+55d) |  | 182d → 143d |  |
| P2.2.IT.5957.250 | Comms Racks In Service / L2 / South / 5957 | 2026-02-05 → 2026-04-03 (+57d) | 2026-02-05 → 2026-04-03 (+57d) |  | 172d → 131d |  |
| 2 | **IT Closet 2-2818** |  | 2026-02-05 → 2026-04-03 (+57d) |  |  |  |
| P2.2.IT.2818.150 | Flooring / L2 / North / 2818 | 2025-12-10 → 2025-11-17 A (-23d) | 2025-12-16 → 2025-11-21 A (-25d) | 0% → 100% | 173d → none |  |
| P2.2.IT.2818.120 | Electrical Panels / Conduit Connections / Wire Terminations / L2 / North / 2818 | 2025-12-01 → 2025-12-08 A (+7d) | 2025-12-05 → 2025-12-11 A (+6d) | 0% → 100% | 173d → none |  |
| P2.2.IT.2818.230 | Doors & Hardware / L2 / North / 2818 | 2026-01-16 → 2025-12-18 A (-29d) | 2026-01-19 → 2025-12-23 A (-27d) | 0% → 100% | 182d → none |  |
| P2.2.IT.2818.170 | OH Cable Tray / L2 / North / 2818 | 2025-12-15 → 2026-01-16 (+32d) | 2025-12-19 → 2026-01-22 (+34d) |  | 172d → 150d |  |
| P2.2.IT.2818.140 | Trim all MEPF / L2 / North / 2818 | 2025-12-08 → 2026-02-13 (+67d) | 2025-12-09 → 2026-02-16 (+69d) |  | 173d → 131d |  |
| P2.2.IT.2818.180 | Grounding and Bonding / L2 / North / 2818 | 2025-12-17 → 2026-02-17 (+62d) | 2025-12-18 → 2026-02-18 (+62d) |  | 173d → 131d |  |

| ID | Task | Start | Finish | Total float |
| --- | --- | --- | --- | --- |
| P2.2.IT.2818.260 | Room Ready - CIT / L2 / North / 2818 | 2025-12-22 → 2026-02-19 (+59d) | 2025-12-29 → 2026-02-25 (+58d) | 172d → 131d |
| P2.2.IT.2818.160 | Equipment Racks and Ladders / L2 / North / 2818 | 2025-12-30 → 2026-02-26 (+58d) | 2026-01-06 → 2026-03-04 (+57d) | 172d → 131d |
| P2.2.IT.2818.190 | Pull Wire - Backbone Cabling Into Racks / L2 / North / 2818 | 2026-01-07 → 2026-03-05 (+57d) | 2026-01-13 → 2026-03-11 (+57d) | 172d → 131d |
| P2.2.IT.2818.200 | Pull Wire - Horizontal Cabling Out to Termination Points / L2 / North / 2818 | 2026-01-07 → 2026-03-05 (+57d) | 2026-01-13 → 2026-03-11 (+57d) | 172d → 131d |
| P2.2.IT.2818.210 | Paint - Finish Coat / L2 / North / 2818 | 2026-01-14 → 2026-03-12 (+57d) | 2026-01-15 → 2026-03-13 (+57d) | 172d → 131d |
| P2.2.IT.2818.220 | Terminations and Punch Downs - All Cabling / L2 / North / 2818 | 2026-01-16 → 2026-03-16 (+59d) | 2026-02-05 → 2026-04-03 (+57d) | 172d → 131d |
| P2.2.IT.2818.240 | Energize Elec Panels Serving Comms Racks / L2 / North / 2818 | 2026-01-20 → 2026-03-16 (+55d) | 2026-01-22 → 2026-03-18 (+55d) | 182d → 143d |
| P2.2.IT.2818.250 | Comms Racks In Service / L2 / North / 2818 | 2026-02-05 → 2026-04-03 (+57d) | 2026-02-05 → 2026-04-03 (+57d) | 172d → 131d |
| 3 | **IT Closet 2-3910** |  | 2026-02-10 → 2026-04-10 (+59d) |  |
| P2.2.IT.3910.100 | Hang Plywood Backboards / L2 / South / 3910 | 2025-12-01 → 2026-01-02 (+32d) | 2025-12-02 → 2026-01-05 (+34d) | 169d → 147d |
| P2.2.IT.3910.110 | Paint Prime & 1st Coat / L2 / South / 3910 | 2025-12-03 → 2026-01-06 (+34d) | 2025-12-04 → 2026-01-07 (+34d) | 169d → 147d |
| P2.2.IT.3910.120 | Electrical Panels / Conduit Connections / Wire Terminations / L2 / South / 3910 | 2025-12-05 → 2026-02-06 (+63d) | 2025-12-11 → 2026-02-12 (+63d) | 169d → 126d |
| P2.2.IT.3910.140 | Trim all MEPF / L2 / South / 3910 | 2025-12-12 → 2026-02-13 (+63d) | 2025-12-15 → 2026-02-16 (+63d) | 169d → 126d |
| P2.2.IT.3910.170 | OH Cable Tray / L2 / South / 3910 | 2025-12-15 → 2026-02-13 (+60d) | 2025-12-19 → 2026-02-19 (+62d) | 172d → 130d |
| P2.2.IT.3910.150 | Flooring / L2 / South / 3910 | 2025-12-16 → 2026-02-17 (+63d) | 2025-12-22 → 2026-02-23 (+63d) | 169d → 126d |
| P2.2.IT.3910.180 | Grounding and Bonding / L2 / South / 3910 | 2025-12-23 → 2026-02-24 (+63d) | 2025-12-24 → 2026-02-25 (+63d) | 169d → 126d |
| P2.2.IT.3910.340 | Room Ready - CIT / L2 / South / 3910 | 2025-12-26 → 2026-02-26 (+62d) | 2026-01-02 → 2026-03-04 (+61d) | 169d → 126d |
| P2.2.IT.3910.160 | Equipment Racks and Ladders / L2 / South / 3910 | 2026-01-05 → 2026-03-05 (+59d) | 2026-01-09 → 2026-03-11 (+61d) | 169d → 126d |
| P2.2.IT.3910.190 | Pull Wire - Backbone Cabling Into Racks / L2 / South / 3910 | 2026-01-12 → 2026-03-12 (+59d) | 2026-01-16 → 2026-03-18 (+61d) | 169d → 126d |
| P2.2.IT.3910.200 | Pull Wire - Horizontal Cabling Out to Termination Points / L2 / South / 3910 | 2026-01-12 → 2026-03-12 (+59d) | 2026-01-16 → 2026-03-18 (+61d) | 169d → 126d |
| P2.2.IT.3910.210 | Paint - Finish Coat / L2 / South / 3910 | 2026-01-19 → 2026-03-19 (+59d) | 2026-01-20 → 2026-03-20 (+59d) | 169d → 126d |
| P2.2.IT.3910.220 | Terminations and Punch Downs - All Cabling / L2 / South / 3910 | 2026-01-21 → 2026-03-23 (+61d) | 2026-02-10 → 2026-04-10 (+59d) | 169d → 126d |
| P2.2.IT.3910.230 | Doors & Hardware / L2 / South / 3910 | 2026-01-21 → 2026-03-23 (+61d) | 2026-01-22 → 2026-03-24 (+61d) | 179d → 136d |
| P2.2.IT.3910.240 | Energize Elec Panels Serving Comms Racks / L2 / South / 3910 | 2026-01-23 → 2026-03-25 (+61d) | 2026-01-27 → 2026-03-27 (+59d) | 179d → 136d |
| P2.2.IT.3910.250 | Comms Racks In Service / L2 / South / 3910 | 2026-02-10 → 2026-04-10 (+59d) | 2026-02-10 → 2026-04-10 (+59d) | 169d → 126d |
| 2 | **FINISHES - CORE & SUPPORT SPACES / Level 2** |  | 2026-11-04 → 2026-12-01 (+27d) |  |
| 7KSF | **DPM/IR Area (5K SF) / Level 2** | 2026-03-11 → 2026-04-10 (+30d) | 2026-10-09 → 2026-11-10 (+32d) |  |
| 1 | **Finishes** | 2026-03-11 → 2026-04-10 (+30d) | 2026-10-09 → 2026-11-10 (+32d) |  |
| P2.L2.F.CS.1000 | Paint Prime & 1st Coat Walls / L2 / DPM/IR | 2026-03-11 → 2026-04-10 (+30d) | 2026-03-17 → 2026-04-16 (+30d) | 63d → 41d |
| P2.L2.F.CS.1020 | R/I - Ceiling Assemblies & Supports - All Trades (A/V, Oper Part, Glass Part, etc.) / L2 / DPM/IR | 2026-03-18 → 2026-04-17 (+30d) | 2026-03-24 → 2026-04-23 (+30d) | 84d → 62d |
| P2.L2.F.CS.1010 | T-Grid / L2 / DPM/IR | 2026-03-25 → 2026-04-24 (+30d) | 2026-03-31 → 2026-04-30 (+30d) | 84d → 62d |
| P2.L2.F.CS.1050 | Sprinkler Heads in T-Grid / L2 / DPM/IR | 2026-04-01 → 2026-05-01 (+30d) | 2026-04-07 → 2026-05-07 (+30d) | 84d → 62d |
| P2.L2.F.CS.1030 | Diffusers in T-Grid / L2 / DPM/IR | 2026-04-08 → 2026-05-08 (+30d) | 2026-04-14 → 2026-05-14 (+30d) | 84d → 62d |
| P2.L2.F.CS.1040 | Lights & Elec Devices in T-Grid / L2 / DPM/IR | 2026-04-15 → 2026-05-15 (+30d) | 2026-04-21 → 2026-05-21 (+30d) | 84d → 62d |
| P2.L2.F.CS.1070 | Fire Alarm in T-Grid / L2 / DPM/IR | 2026-04-22 → 2026-05-22 (+30d) | 2026-04-28 → 2026-05-29 (+31d) | 84d → 62d |
| P2.L2.F.CS.1060 | Low Voltage in T-Grid / L2 / DPM/IR | 2026-04-29 → 2026-06-01 (+33d) | 2026-05-05 → 2026-06-05 (+31d) | 84d → 62d |
| P2.L2.F.CS.1080 | OH Ceiling Signoff / L2 / DPM/IR | 2026-05-06 → 2026-06-08 (+33d) | 2026-05-12 → 2026-06-12 (+31d) | 84d → 62d |
| P2.L2.F.CS.1110 | Drop Ceiling Tile / L2 / DPM/IR | 2026-05-13 → 2026-06-15 (+33d) | 2026-05-19 → 2026-06-19 (+31d) | 84d → 62d |
| P2.L2.F.CS.1090 | Millwork / L2 / DPM/IR | 2026-05-20 → 2026-06-22 (+33d) | 2026-05-27 → 2026-06-26 (+30d) | 84d → 62d |
| P2.L2.F.CS.1100 | Plumbing Fixtures / L2 / DPM/IR | 2026-05-28 → 2026-06-29 (+32d) | 2026-06-03 → 2026-07-06 (+33d) | 84d → 62d |
| P2.L2.F.CS.1120 | Floor Prep / L2 / DPM/IR | 2026-06-04 → 2026-07-07 (+33d) | 2026-06-10 → 2026-07-13 (+33d) | 84d → 62d |
| P2.L2.F.CS.2300 | Floor Prep - Epoxy Floors / L2 / Showers & Lockers | 2026-06-04 → 2026-07-07 (+33d) | 2026-06-04 → 2026-07-07 (+33d) | 89d → 67d |
| P2.L2.F.CS.2310 | Floor - Epoxy Floors / L2 / Showers & Lockers | 2026-06-05 → 2026-07-08 (+33d) | 2026-06-10 → 2026-07-13 (+33d) | 89d → 67d |
| P2.L2.F.CS.1130 | Floor Finishes / L2 / DPM/IR | 2026-06-11 → 2026-07-14 (+33d) | 2026-06-17 → 2026-07-20 (+33d) | 84d → 62d |
| P2.L2.F.CS.1140 | Doors & Hardware / L2 / DPM/IR | 2026-06-18 → 2026-07-21 (+33d) | 2026-06-24 → 2026-07-27 (+33d) | 84d → 62d |
| P2.L2.F.CS.2320 | Interior Glazing / L2 / DPM/IR | 2026-06-18 → 2026-07-21 (+33d) | 2026-06-18 → 2026-07-21 (+33d) | 95d → 73d |
| P2.L2.F.CS.1150 | Paint - Finish Coat / L2 / DPM/IR | 2026-06-25 → 2026-07-28 (+33d) | 2026-07-01 → 2026-08-03 (+33d) | 91d → 69d |
| P2.L2.F.CS.1200 | Floor Base / L2 / DPM/IR | 2026-07-02 → 2026-08-04 (+33d) | 2026-07-09 → 2026-08-10 (+32d) | 91d → 69d |
| P2.L2.F.CS.1180 | Building Specialities / L2 / DPM/IR | 2026-07-10 → 2026-08-11 (+32d) | 2026-07-16 → 2026-08-17 (+32d) | 91d → 69d |
| P2.L2.F.CS.1210 | Demountable Partitions / L2 / DPM/IR | 2026-07-10 → 2026-08-11 (+32d) | 2026-07-16 → 2026-08-17 (+32d) | 101d → 79d |
| P2.L2.F.CS.1170 | Trim T-Stats / L2 / DPM/IR | 2026-07-17 → 2026-08-18 (+32d) | 2026-07-23 → 2026-08-24 (+32d) | 91d → 69d |
| P2.L2.F.CS.1160 | Set AV/IT Devices and Configure / L2 / DPM/IR | 2026-07-24 → 2026-08-25 (+32d) | 2026-07-30 → 2026-08-31 (+32d) | 91d → 69d |
| P2.L2.F.CS.1220 | Trim Electrical / L2 / DPM/IR | 2026-07-31 → 2026-09-01 (+32d) | 2026-08-06 → 2026-09-08 (+33d) | 91d → 69d |
| P2.L2.F.CS.1230 | Trim Telephone/ Data / L2 / DPM/IR | 2026-08-07 → 2026-09-09 (+33d) | 2026-08-13 → 2026-09-15 (+33d) | 91d → 69d |
| P2.L2.F.CS.1190 | Interior Building Signage / L2 / DPM/IR | 2026-08-14 → 2026-09-16 (+33d) | 2026-08-20 → 2026-09-22 (+33d) | 91d → 69d |
| P2.L2.F.CS.1240 | Work Completion List - Finishes / L2 / DPM/IR | 2026-08-21 → 2026-09-23 (+33d) | 2026-08-27 → 2026-09-29 (+33d) | 91d → 69d |
| P2.L2.F.CS.1250 | Rough Clean / L2 / DPM/IR | 2026-08-28 → 2026-09-30 (+33d) | 2026-09-03 → 2026-10-06 (+33d) | 91d → 69d |
| P2.L2.F.CS.1260 | FF&E / L2 / DPM/IR | 2026-09-04 → 2026-10-07 (+33d) | 2026-09-11 → 2026-10-13 (+32d) | 91d → 69d |
| P2.L2.F.CS.1270 | Prepare Punchlist / L2 / DPM/IR | 2026-09-14 → 2026-10-14 (+30d) | 2026-09-18 → 2026-10-20 (+32d) | 91d → 69d |
| P2.L2.F.CS.1280 | Correct Punchlist / L2 / DPM/IR | 2026-09-21 → 2026-10-21 (+30d) | 2026-10-02 → 2026-11-03 (+32d) | 91d → 69d |
| P2.L2.F.CS.1290 | Final Clean / L2 / DPM/IR | 2026-10-05 → 2026-11-04 (+30d) | 2026-10-09 → 2026-11-10 (+32d) | 91d → 69d |
| 7KSF1 | **Shared and Open Offices (6K SF) / Level 2** | 2026-03-04 → 2026-04-03 (+30d) | 2026-09-25 → 2026-10-27 (+32d) |  |
| 1 | **Finishes** | 2026-03-04 → 2026-04-03 (+30d) | 2026-09-25 → 2026-10-27 (+32d) |  |
| P2.L2.F.CS.2000 | Paint Prime & 1st Coat Walls / L2 / Offices | 2026-03-04 → 2026-04-03 (+30d) | 2026-03-10 → 2026-04-09 (+30d) | 63d → 41d |
| P2.L2.F.CS.2020 | R/I - Ceiling Assemblies & Supports - All Trades (A/V, Oper Part, Glass Part, etc.) / L2 / Offices | 2026-03-11 → 2026-04-10 (+30d) | 2026-03-17 → 2026-04-16 (+30d) | 89d → 67d |
| P2.L2.F.CS.2010 | T-Grid / L2 / Offices | 2026-03-18 → 2026-04-17 (+30d) | 2026-03-24 → 2026-04-23 (+30d) | 89d → 67d |
| P2.L2.F.CS.2050 | Sprinkler Heads in T-Grid / L2 / Offices | 2026-03-25 → 2026-04-24 (+30d) | 2026-03-31 → 2026-04-30 (+30d) | 89d → 67d |
| P2.L2.F.CS.2030 | Diffusers in T-Grid / L2 / Offices | 2026-04-01 → 2026-05-01 (+30d) | 2026-04-07 → 2026-05-07 (+30d) | 89d → 67d |
| P2.L2.F.CS.2040 | Lights & Elec Devices in T-Grid / L2 / Offices | 2026-04-08 → 2026-05-08 (+30d) | 2026-04-14 → 2026-05-14 (+30d) | 89d → 67d |
| P2.L2.F.CS.2070 | Fire Alarm in T-Grid / L2 / Offices | 2026-04-15 → 2026-05-15 (+30d) | 2026-04-21 → 2026-05-21 (+30d) | 89d → 67d |

| ID | Task | Start | Finish | Complete | Total float |
| --- | --- | --- | --- | --- | --- |
| P2.L2.F.CS.2060 | Low Voltage in T-Grid / L2 / Offices | 2026-04-22 → 2026-05-22 (+30d) | 2026-04-28 → 2026-05-29 (+31d) |  | 89d → 67d |
| P2.L2.F.CS.2080 | OH Ceiling Signoff / L2 / Offices | 2026-04-29 → 2026-06-01 (+33d) | 2026-05-05 → 2026-06-05 (+31d) |  | 89d → 67d |
| P2.L2.F.CS.2110 | Drop Ceiling Tile / L2 / Offices | 2026-05-06 → 2026-06-08 (+33d) | 2026-05-12 → 2026-06-12 (+31d) |  | 89d → 67d |
| P2.L2.F.CS.2090 | Millwork / L2 / Offices | 2026-05-13 → 2026-06-15 (+33d) | 2026-05-19 → 2026-06-19 (+31d) |  | 89d → 67d |
| P2.L2.F.CS.2100 | Plumbing Fixtures / L2 / Offices | 2026-05-20 → 2026-06-22 (+33d) | 2026-05-27 → 2026-06-26 (+30d) |  | 89d → 67d |
| P2.L2.F.CS.2120 | Floor Prep / L2 / Offices | 2026-05-28 → 2026-06-29 (+32d) | 2026-06-03 → 2026-07-06 (+33d) |  | 89d → 67d |
| P2.L2.F.CS.2130 | Floor Finishes / L2 / Offices | 2026-06-04 → 2026-07-07 (+33d) | 2026-06-10 → 2026-07-13 (+33d) |  | 89d → 67d |
| P2.L2.F.CS.2140 | Doors & Hardware / L2 / Offices | 2026-06-11 → 2026-07-14 (+33d) | 2026-06-17 → 2026-07-20 (+33d) |  | 89d → 67d |
| P2.L2.F.CS.2150 | Paint - Finish Coat / L2 / Offices | 2026-06-18 → 2026-07-21 (+33d) | 2026-06-24 → 2026-07-27 (+33d) |  | 101d → 79d |
| P2.L2.F.CS.2200 | Floor Base / L2 / Offices | 2026-06-25 → 2026-07-28 (+33d) | 2026-07-01 → 2026-08-03 (+33d) |  | 101d → 79d |
| P2.L2.F.CS.2210 | Demountable Partitions / L2 / Offices | 2026-07-02 → 2026-08-04 (+33d) | 2026-07-09 → 2026-08-10 (+32d) |  | 101d → 79d |
| P2.L2.F.CS.2180 | Building Specialities / L2 / Offices | 2026-07-10 → 2026-08-11 (+32d) | 2026-07-16 → 2026-08-17 (+32d) |  | 101d → 79d |
| P2.L2.F.CS.2170 | Trim T-Stats / L2 / Offices | 2026-07-17 → 2026-08-18 (+32d) | 2026-07-23 → 2026-08-24 (+32d) |  | 101d → 79d |
| P2.L2.F.CS.2220 | Trim Electrical / L2 / Offices | 2026-07-17 → 2026-08-18 (+32d) | 2026-07-23 → 2026-08-24 (+32d) |  | 111d → 89d |
| P2.L2.F.CS.2160 | Set AV/IT Devices and Configure / L2 / Offices | 2026-07-24 → 2026-08-25 (+32d) | 2026-07-30 → 2026-08-31 (+32d) |  | 101d → 79d |
| P2.L2.F.CS.2230 | Trim Telephone/ Data / L2 / Offices | 2026-07-24 → 2026-08-25 (+32d) | 2026-07-30 → 2026-08-31 (+32d) |  | 106d → 84d |
| P2.L2.F.CS.2190 | Interior Building Signage / L2 / Offices | 2026-07-31 → 2026-09-01 (+32d) | 2026-08-06 → 2026-09-08 (+33d) |  | 101d → 79d |
| P2.L2.F.CS.2240 | Work Completion List - Finishes / L2 / Offices | 2026-08-07 → 2026-09-09 (+33d) | 2026-08-13 → 2026-09-15 (+33d) |  | 101d → 79d |
| P2.L2.F.CS.2250 | Rough Clean / L2 / Offices | 2026-08-14 → 2026-09-16 (+33d) | 2026-08-20 → 2026-09-22 (+33d) |  | 101d → 79d |
| P2.L2.F.CS.2260 | FF&E / L2 / Offices | 2026-08-21 → 2026-09-23 (+33d) | 2026-08-27 → 2026-09-29 (+33d) |  | 101d → 79d |
| P2.L2.F.CS.2270 | Prepare Punchlist / L2 / Offices | 2026-08-28 → 2026-09-30 (+33d) | 2026-09-03 → 2026-10-06 (+33d) |  | 101d → 79d |
| P2.L2.F.CS.2280 | Correct Punchlist / L2 / Offices | 2026-09-04 → 2026-10-07 (+33d) | 2026-09-18 → 2026-10-20 (+32d) |  | 101d → 79d |
| P2.L2.F.CS.2290 | Final Clean / L2 / Offices | 2026-09-21 → 2026-10-21 (+30d) | 2026-09-25 → 2026-10-27 (+32d) |  | 101d → 79d |
| 3 | **Bathrooms - Break Rooms - Locker Rooms / Level 2** |  | 2026-05-14 → 2026-06-12 (+29d) |  |  |
| 3 | **Toilet 2-2954** |  | 2026-02-05 → 2026-03-09 (+32d) |  |  |
| P2.L2.BR.1010 | Framing & Blocking - Walls and Hard Lid Ceilings / L2 / Toilet 2954 |  | 2025-12-01 → 2026-01-02 (+32d) |  | 158d → 136d |
| P2.L2.BR.1050 | Duct Drops _ Hard Lids / L2 / Toilet 2954 | 2025-12-03 A | 2025-12-04 A | 0% → 100% | 158d → none |
| P2.L2.BR.1030 | R/I - Electrical _ Hard Lids / L2 / Toilet 2954 | 2025-12-01 → 2026-01-02 (+32d) | 2025-12-02 → 2026-01-05 (+34d) |  | 158d → 136d |
| P2.L2.BR.1040 | Trim Sprinkler Drops _ Hard Lids / L2 / Toilet 2954 | 2025-12-01 → 2026-01-02 (+32d) | 2025-12-02 → 2026-01-05 (+34d) |  | 158d → 138d |
| P2.L2.BR.1060 | R/I - Fire Alarm _ Hard Lids / L2 / Toilet 2954 | 2025-12-03 → 2026-01-06 (+34d) | 2025-12-04 → 2026-01-07 (+34d) |  | 158d → 136d |
| P2.L2.BR.1080 | Inspection - Close In - Walls and Hard Lid Ceilings / L2 / Toilet 2954 | 2025-12-05 → 2026-01-08 (+34d) | 2025-12-09 → 2026-01-12 (+34d) |  | 158d → 136d |
| P2.L2.BR.1090 | Hang-Tape-Finish _ Walls and Hard Lids Ceilings / L2 / Toilet 2954 | 2025-12-10 → 2026-01-13 (+34d) | 2025-12-16 → 2026-01-19 (+34d) |  | 158d → 136d |
| P2.L2.BR.1100 | Paint Prime & Final Coat _ Walls & Hard Lid Ceilings / L2 / Toilet 2954 | 2025-12-17 → 2026-01-20 (+34d) | 2025-12-18 → 2026-01-21 (+34d) |  | 158d → 136d |
| P2.L2.BR.1140 | Trim - HVAC G/R/D's / L2 / Toilet 2954 | 2025-12-19 → 2026-01-22 (+34d) | 2025-12-22 → 2026-01-23 (+32d) |  | 158d → 136d |
| P2.L2.BR.1120 | Pull Wire & Trim Devices - Electrical / L2 / Toilet 2954 | 2025-12-23 → 2026-01-26 (+34d) | 2025-12-24 → 2026-01-27 (+34d) |  | 158d → 136d |
| P2.L2.BR.1130 | Lights - Set & Terminate / L2 / Toilet 2954 | 2025-12-23 → 2026-01-26 (+34d) | 2025-12-24 → 2026-01-27 (+34d) |  | 160d → 138d |
| P2.L2.BR.1110 | Pull Wire & Trim Devices - Fire Alarm / L2 / Toilet 2954 | 2025-12-26 → 2026-01-28 (+33d) | 2025-12-29 → 2026-01-29 (+31d) |  | 158d → 136d |
| P2.L2.BR.1150 | Wall Tile / L2 / Toilet 2954 | 2025-12-30 → 2026-01-30 (+31d) | 2026-01-06 → 2026-02-05 (+30d) |  | 158d → 136d |
| P2.L2.BR.4370 | Flooring Prep - Epoxy Floors / L2 / Toilet 2954 | 2026-01-19 → 2026-02-18 (+30d) | 2026-01-19 → 2026-02-18 (+30d) |  | 150d → 128d |
| P2.L2.BR.4380 | Flooring - Epoxy Floors / L2 / Toilet 2954 | 2026-01-20 → 2026-02-19 (+30d) | 2026-01-21 → 2026-02-20 (+30d) |  | 191d → 169d |
| P2.L2.BR.1160 | Doors & Hardware / L2 / Toilet 2954 | 2026-01-22 → 2026-02-23 (+32d) | 2026-01-23 → 2026-02-24 (+32d) |  | 191d → 169d |
| P2.L2.BR.1170 | Plumbing Fixtures / Sinks / Showers / L2 / Toilet 2954 | 2026-01-26 → 2026-02-25 (+30d) | 2026-01-27 → 2026-02-26 (+30d) |  | 264d → 242d |
| P2.L2.BR.1180 | Bathroom Accessories / L2 / Toilet 2954 | 2026-01-28 → 2026-02-27 (+30d) | 2026-01-29 → 2026-03-02 (+32d) |  | 264d → 242d |
| P2.L2.BR.1190 | Work Completion List - Finishes / L2 / Toilet 2954 | 2026-01-30 → 2026-03-03 (+32d) | 2026-02-05 → 2026-03-09 (+32d) |  | 264d → 242d |
| 2 | **Toilets 2-3956 / 2-3958** |  | 2026-02-02 → 2026-03-04 (+30d) |  |  |
| P2.L2.BR.2010 | Framing & Blocking - Walls and Hard Lid Ceilings / L2 / Toilets 395X |  | 2025-12-01 → 2026-01-02 (+32d) |  | 157d → 135d |
| P2.L2.BR.2050 | Duct Drops _ Hard Lids / L2 / Toilets 395X | 2025-12-03 A | 2025-12-04 A | 0% → 100% | 157d → none |
| P2.L2.BR.2030 | R/I - Electrical _ Hard Lids / L2 / Toilets 395X | 2025-12-01 → 2026-01-02 (+32d) | 2025-12-02 → 2026-01-05 (+34d) |  | 157d → 135d |
| P2.L2.BR.2040 | Trim Sprinkler Drops _ Hard Lids / L2 / Toilets 395X | 2025-12-01 → 2026-01-02 (+32d) | 2025-12-02 → 2026-01-05 (+34d) |  | 157d → 137d |
| P2.L2.BR.2060 | R/I - Fire Alarm _ Hard Lids / L2 / Toilets 395X | 2025-12-03 → 2026-01-06 (+34d) | 2025-12-04 → 2026-01-07 (+34d) |  | 157d → 135d |
| P2.L2.BR.2080 | Inspection - Close In - Walls and Hard Lid Ceilings / L2 / Toilets 395X | 2025-12-05 → 2026-01-08 (+34d) | 2025-12-09 → 2026-01-12 (+34d) |  | 157d → 135d |
| P2.L2.BR.2090 | Hang-Tape-Finish _ Walls and Hard Lids Ceilings / L2 / Toilets 395X | 2025-12-10 → 2026-01-13 (+34d) | 2025-12-16 → 2026-01-19 (+34d) |  | 157d → 135d |
| P2.L2.BR.2100 | Paint Prime & Final Coat _ Walls & Hard Lid Ceilings / L2 / Toilets 395X | 2025-12-17 → 2026-01-20 (+34d) | 2025-12-18 → 2026-01-21 (+34d) |  | 157d → 135d |
| P2.L2.BR.2140 | Trim - HVAC G/R/D's / L2 / Toilets 395X | 2025-12-19 → 2026-01-22 (+34d) | 2025-12-22 → 2026-01-23 (+32d) |  | 157d → 135d |
| P2.L2.BR.2120 | Pull Wire & Trim Devices - Electrical / L2 / Toilets 395X | 2025-12-23 → 2026-01-26 (+34d) | 2025-12-24 → 2026-01-27 (+34d) |  | 157d → 135d |
| P2.L2.BR.2130 | Lights - Set & Terminate / L2 / Toilets 395X | 2025-12-23 → 2026-01-26 (+34d) | 2025-12-24 → 2026-01-27 (+34d) |  | 159d → 137d |
| P2.L2.BR.2110 | Pull Wire & Trim Devices - Fire Alarm / L2 / Toilets 395X | 2025-12-26 → 2026-01-28 (+33d) | 2025-12-29 → 2026-01-29 (+31d) |  | 157d → 135d |
| P2.L2.BR.2150 | Wall Tile / L2 / Toilets 395X | 2025-12-30 → 2026-01-30 (+31d) | 2026-01-06 → 2026-02-05 (+30d) |  | 157d → 135d |
| P2.L2.BR.2170 | Plumbing Fixtures / Sinks / Showers / L2 / Toilets 395X | 2026-01-07 → 2026-02-06 (+30d) | 2026-01-08 → 2026-02-09 (+32d) |  | 277d → 255d |
| P2.L2.BR.4310 | Flooring Prep - Epoxy Floors / L2 / Toilets 395X | 2026-01-16 → 2026-02-17 (+32d) | 2026-01-16 → 2026-02-17 (+32d) |  | 150d → 128d |
| P2.L2.BR.4320 | Flooring - Epoxy Floors / L2 / Toilets 395X | 2026-01-19 → 2026-02-18 (+30d) | 2026-01-20 → 2026-02-19 (+30d) |  | 192d → 170d |
| P2.L2.BR.2160 | Doors & Hardware / L2 / Toilets 395X | 2026-01-21 → 2026-02-20 (+30d) | 2026-01-22 → 2026-02-23 (+32d) |  | 192d → 170d |
| P2.L2.BR.2180 | Bathroom Accessories / L2 / Toilets 395X | 2026-01-23 → 2026-02-24 (+32d) | 2026-01-26 → 2026-02-25 (+30d) |  | 267d → 245d |
| P2.L2.BR.2190 | Work Completion List - Finishes / L2 / Toilets 395X | 2026-01-27 → 2026-02-26 (+30d) | 2026-02-02 → 2026-03-04 (+30d) |  | 267d → 245d |
| 4 | **DPM/IR Male Lockers, Toilets, and Showers 2-3931** |  | 2026-05-14 → 2026-06-12 (+29d) |  |  |
| P2.L2.BR.3080 | In Wall - Insulate Plumbing / L2 / DPM/IR Mens 3931 |  | 2025-12-02 A | 60% → 100% | 117d → none |
| P2.L2.BR.3020 | Frame - Chase Walls and Hard Lid Ceilings / L2 / DPM/IR Mens 3931 |  | 2025-12-01 → 2026-01-02 (+32d) |  | 117d → 97d |
| P2.L2.BR.3060 | Duct Drops _ Hard Lids / L2 / DPM/IR Mens 3931 | 2025-12-08 A | 2025-12-12 A | 0% → 100% | 119d → none |
| P2.L2.BR.3040 | R/I - Electrical _ Hard Lids / L2 / DPM/IR Mens 3931 | 2025-12-03 → 2026-01-02 (+30d) | 2025-12-09 → 2026-01-08 (+30d) |  | 117d → 97d |
| P2.L2.BR.3050 | Trim Sprinkler Drops _ Hard Lids / L2 / DPM/IR Mens 3931 | 2025-12-01 → 2026-01-02 (+32d) | 2025-12-05 → 2026-01-08 (+34d) |  | 119d → 102d |

| ID | Task | Start | Finish | Complete | Total float |
| --- | --- | --- | --- | --- | --- |
| P2.L2.BR.3070 | R/I - Fire Alarm _ Hard Lids / L2 / DPM/IR Mens 3931 | 2025-12-10 → 2026-01-09 (+30d) | 2025-12-16 → 2026-01-15 (+30d) |  | 117d → 97d |
| P2.L2.BR.3090 | Inspection - Close In - Chase Walls and Hard Lid Ceilings / L2 / DPM/IR Mens 3931 | 2025-12-17 → 2026-01-16 (+30d) | 2025-12-23 → 2026-01-22 (+30d) |  | 117d → 97d |
| P2.L2.BR.3100 | Hang-Tape-Finish _ Chase Walls and Hard Lids Ceilings / L2 / DPM/IR Mens 3931 | 2025-12-24 → 2026-01-23 (+30d) | 2025-12-31 → 2026-01-29 (+29d) |  | 117d → 97d |
| P2.L2.BR.3110 | Paint Prime & 1st Coat _ Walls & Hard Lid Ceilings / L2 / DPM/IR Mens 3931 | 2026-01-02 → 2026-01-30 (+28d) | 2026-01-08 → 2026-02-05 (+28d) |  | 117d → 97d |
| P2.L2.BR.3140 | Ceiling Grid / L2 / DPM/IR Mens 3931 | 2026-01-09 → 2026-02-06 (+28d) | 2026-01-15 → 2026-02-12 (+28d) |  | 117d → 97d |
| P2.L2.BR.3170 | Trim Sprinkler Drops _ Ceiling Tiles / L2 / DPM/IR Mens 3931 | 2026-01-16 → 2026-02-13 (+28d) | 2026-01-22 → 2026-02-19 (+28d) |  | 117d → 97d |
| P2.L2.BR.3160 | Trim - HVAC G/R/D's / L2 / DPM/IR Mens 3931 | 2026-01-23 → 2026-02-20 (+28d) | 2026-01-29 → 2026-02-26 (+28d) |  | 117d → 97d |
| P2.L2.BR.3130 | Pull Wire - Electrical / L2 / DPM/IR Mens 3931 | 2026-01-30 → 2026-02-27 (+28d) | 2026-02-05 → 2026-03-05 (+28d) |  | 117d → 97d |
| P2.L2.BR.3120 | Pull Wire - Fire Alarm / L2 / DPM/IR Mens 3931 | 2026-02-06 → 2026-03-06 (+28d) | 2026-02-12 → 2026-03-12 (+28d) |  | 167d → 147d |
| P2.L2.BR.3150 | Lights - Set & Terminate / L2 / DPM/IR Mens 3931 | 2026-02-06 → 2026-03-06 (+28d) | 2026-02-12 → 2026-03-12 (+28d) |  | 117d → 97d |
| P2.L2.BR.3180 | Inspection - Ceiling Close In - ACT Ceilings / L2 / DPM/IR Mens 3931 | 2026-02-13 → 2026-03-13 (+28d) | 2026-02-19 → 2026-03-19 (+28d) |  | 117d → 97d |
| P2.L2.BR.3190 | Ceiling Tiles / L2 / DPM/IR Mens 3931 | 2026-02-20 → 2026-03-20 (+28d) | 2026-02-26 → 2026-03-26 (+28d) |  | 117d → 97d |
| P2.L2.BR.3200 | Wall Tile / L2 / DPM/IR Mens 3931 | 2026-02-27 → 2026-03-27 (+28d) | 2026-03-05 → 2026-04-02 (+28d) |  | 117d → 97d |
| P2.L2.BR.4330 | Flooring Prep - Epoxy Floors / L2 / DPM/IR Mens 3931 | 2026-03-06 → 2026-04-03 (+28d) | 2026-03-06 → 2026-04-03 (+28d) |  | 117d → 97d |
| P2.L2.BR.4340 | Flooring - Epoxy Floors / L2 / DPM/IR Mens 3931 | 2026-03-09 → 2026-04-06 (+28d) | 2026-03-12 → 2026-04-09 (+28d) |  | 117d → 97d |
| P2.L2.BR.3210 | Paint - Finish Coat / L2 / DPM/IR Mens 3931 | 2026-03-13 → 2026-04-10 (+28d) | 2026-03-19 → 2026-04-16 (+28d) |  | 117d → 97d |
| P2.L2.BR.3220 | Countertops / L2 / DPM/IR Mens 3931 | 2026-03-20 → 2026-04-17 (+28d) | 2026-03-26 → 2026-04-23 (+28d) |  | 117d → 97d |
| P2.L2.BR.3260 | Lockers & Benches / L2 / DPM/IR Mens 3931 | 2026-03-27 → 2026-04-24 (+28d) | 2026-04-02 → 2026-04-30 (+28d) |  | 127d → 107d |
| P2.L2.BR.3270 | Plumbing Fixtures / Sinks / Showers / L2 / DPM/IR Mens 3931 | 2026-03-27 → 2026-04-24 (+28d) | 2026-04-02 → 2026-04-30 (+28d) |  | 117d → 97d |
| P2.L2.BR.3280 | Toilet Partitions / L2 / DPM/IR Mens 3931 | 2026-04-03 → 2026-05-01 (+28d) | 2026-04-09 → 2026-05-07 (+28d) |  | 117d → 97d |
| P2.L2.BR.3290 | Bathroom Accessories / L2 / DPM/IR Mens 3931 | 2026-04-10 → 2026-05-08 (+28d) | 2026-04-16 → 2026-05-14 (+28d) |  | 117d → 97d |
| P2.L2.BR.3240 | Trim - Electrical Devices / L2 / DPM/IR Mens 3931 | 2026-04-17 → 2026-05-15 (+28d) | 2026-04-23 → 2026-05-21 (+28d) |  | 117d → 97d |
| P2.L2.BR.3230 | Trim - Fire Alarm Devices / L2 / DPM/IR Mens 3931 | 2026-04-24 → 2026-05-22 (+28d) | 2026-04-30 → 2026-05-29 (+29d) |  | 117d → 97d |
| P2.L2.BR.3250 | Doors & Hardware / L2 / DPM/IR Mens 3931 | 2026-05-01 → 2026-06-01 (+31d) | 2026-05-07 → 2026-06-05 (+29d) |  | 117d → 97d |
| P2.L2.BR.3300 | Work Completion List - Finishes / L2 / DPM/IR Mens 3931 | 2026-05-08 → 2026-06-08 (+31d) | 2026-05-14 → 2026-06-12 (+29d) |  | 194d → 174d |
| 1 | **DPM/IR Female Lockers, Toilets, and Showers 2-2958** |  | 2026-05-05 → 2026-06-05 (+31d) |  |  |
| P2.L2.BR.4060 | Duct Drops _ Hard Lids / L2 / DPM/IR Womens 3931 | 2025-12-15 A | 2025-12-19 A | 0% → 100% | 124d → none |
| P2.L2.BR.4020 | Frame - Chase Walls and Hard Lid Ceilings / L2 / DPM/IR Womens 3931 | 2025-12-01 → 2026-01-02 (+32d) | 2025-12-05 → 2026-01-08 (+34d) |  | 124d → 102d |
| P2.L2.BR.4040 | R/I - Electrical _ Hard Lids / L2 / DPM/IR Womens 3931 | 2025-12-08 → 2026-01-09 (+32d) | 2025-12-12 → 2026-01-15 (+34d) |  | 124d → 102d |
| P2.L2.BR.4050 | Trim Sprinkler Drops _ Hard Lids / L2 / DPM/IR Womens 3931 | 2025-12-08 → 2026-01-09 (+32d) | 2025-12-12 → 2026-01-15 (+34d) |  | 124d → 107d |
| P2.L2.BR.4070 | R/I - Fire Alarm _ Hard Lids / L2 / DPM/IR Womens 3931 | 2025-12-15 → 2026-01-16 (+32d) | 2025-12-19 → 2026-01-22 (+34d) |  | 124d → 102d |
| P2.L2.BR.4090 | Inspection - Close In - Chase Walls and Hard Lid Ceilings / L2 / DPM/IR Womens 3931 | 2025-12-22 → 2026-01-23 (+32d) | 2025-12-29 → 2026-01-29 (+31d) |  | 124d → 102d |
| P2.L2.BR.4100 | Hang-Tape-Finish _ Chase Walls and Hard Lids Ceilings / L2 / DPM/IR Womens 3931 | 2025-12-30 → 2026-01-30 (+31d) | 2026-01-06 → 2026-02-05 (+30d) |  | 124d → 102d |
| P2.L2.BR.4110 | Paint Prime & 1st Coat _ Walls & Hard Lid Ceilings / L2 / DPM/IR Womens 3931 | 2026-01-07 → 2026-02-06 (+30d) | 2026-01-13 → 2026-02-12 (+30d) |  | 124d → 102d |
| P2.L2.BR.4140 | Ceiling Grid / L2 / DPM/IR Womens 3931 | 2026-01-14 → 2026-02-13 (+30d) | 2026-01-20 → 2026-02-19 (+30d) |  | 124d → 102d |
| P2.L2.BR.4170 | Trim Sprinkler Drops _ Ceiling Tiles / L2 / DPM/IR Womens 3931 | 2026-01-21 → 2026-02-20 (+30d) | 2026-01-27 → 2026-02-26 (+30d) |  | 124d → 102d |
| P2.L2.BR.4160 | Trim - HVAC G/R/D's / L2 / DPM/IR Womens 3931 | 2026-01-28 → 2026-02-27 (+30d) | 2026-02-03 → 2026-03-05 (+30d) |  | 124d → 102d |
| P2.L2.BR.4130 | Pull Wire - Electrical / L2 / DPM/IR Womens 3931 | 2026-02-04 → 2026-03-06 (+30d) | 2026-02-10 → 2026-03-12 (+30d) |  | 124d → 102d |
| P2.L2.BR.4120 | Pull Wire - Fire Alarm / L2 / DPM/IR Womens 3931 | 2026-02-11 → 2026-03-13 (+30d) | 2026-02-17 → 2026-03-19 (+30d) |  | 164d → 142d |
| P2.L2.BR.4150 | Lights - Set & Terminate / L2 / DPM/IR Womens 3931 | 2026-02-11 → 2026-03-13 (+30d) | 2026-02-17 → 2026-03-19 (+30d) |  | 124d → 102d |
| P2.L2.BR.4180 | Inspection - Ceiling Close In - ACT Ceilings / L2 / DPM/IR Womens 3931 | 2026-02-18 → 2026-03-20 (+30d) | 2026-02-24 → 2026-03-26 (+30d) |  | 124d → 102d |
| P2.L2.BR.4190 | Ceiling Tiles / L2 / DPM/IR Womens 3931 | 2026-02-25 → 2026-03-27 (+30d) | 2026-03-03 → 2026-04-02 (+30d) |  | 124d → 102d |
| P2.L2.BR.4200 | Wall Tile / L2 / DPM/IR Womens 3931 | 2026-03-04 → 2026-04-03 (+30d) | 2026-03-10 → 2026-04-09 (+30d) |  | 124d → 102d |
| P2.L2.BR.4350 | Flooring Prep - Epoxy Floors / L2 / DPM/IR Womens 3931 | 2026-03-11 → 2026-04-10 (+30d) | 2026-03-11 → 2026-04-10 (+30d) |  | 124d → 102d |
| P2.L2.BR.4360 | Flooring - Epoxy Floors / L2 / DPM/IR Womens 3931 | 2026-03-12 → 2026-04-13 (+32d) | 2026-03-17 → 2026-04-16 (+30d) |  | 124d → 102d |
| P2.L2.BR.4210 | Paint - Finish Coat / L2 / DPM/IR Womens 3931 | 2026-03-18 → 2026-04-17 (+30d) | 2026-03-24 → 2026-04-23 (+30d) |  | 124d → 102d |
| P2.L2.BR.4220 | Countertops / L2 / DPM/IR Womens 3931 | 2026-03-25 → 2026-04-24 (+30d) | 2026-03-31 → 2026-04-30 (+30d) |  | 124d → 102d |
| P2.L2.BR.4260 | Lockers & Benches / L2 / DPM/IR Womens 3931 | 2026-04-01 → 2026-05-01 (+30d) | 2026-04-07 → 2026-05-07 (+30d) |  | 124d → 102d |
| P2.L2.BR.4270 | Plumbing Fixtures / Sinks / Showers / L2 / DPM/IR Womens 3931 | 2026-04-01 → 2026-05-01 (+30d) | 2026-04-07 → 2026-05-07 (+30d) |  | 211d → 189d |
| P2.L2.BR.4240 | Trim - Electrical Devices / L2 / DPM/IR Womens 3931 | 2026-04-08 → 2026-05-08 (+30d) | 2026-04-14 → 2026-05-14 (+30d) |  | 124d → 102d |
| P2.L2.BR.4280 | Toilet Partitions / L2 / DPM/IR Womens 3931 | 2026-04-08 → 2026-05-08 (+30d) | 2026-04-14 → 2026-05-14 (+30d) |  | 211d → 189d |
| P2.L2.BR.4290 | Bathroom Accessories / L2 / DPM/IR Womens 3931 | 2026-04-08 → 2026-05-08 (+30d) | 2026-04-14 → 2026-05-14 (+30d) |  | 211d → 189d |
| P2.L2.BR.4230 | Trim - Fire Alarm Devices / L2 / DPM/IR Womens 3931 | 2026-04-15 → 2026-05-15 (+30d) | 2026-04-21 → 2026-05-21 (+30d) |  | 124d → 102d |
| P2.L2.BR.4250 | Doors & Hardware / L2 / DPM/IR Womens 3931 | 2026-04-22 → 2026-05-22 (+30d) | 2026-04-28 → 2026-05-29 (+31d) |  | 124d → 102d |
| P2.L2.BR.4300 | Work Completion List - Finishes / L2 / DPM/IR Womens 3931 | 2026-04-29 → 2026-06-01 (+33d) | 2026-05-05 → 2026-06-05 (+31d) |  | 201d → 179d |
| 1 | **Corridors & Lobbies / Level 2** | 2026-03-18 → 2026-04-17 (+30d) | 2026-11-04 → 2026-12-01 (+27d) |  |  |
| P2.L2.CL.1000 | Paint Prime & 1st Coat Walls / L2 / Corr & Lobbies | 2026-03-18 → 2026-04-17 (+30d) | 2026-03-24 → 2026-04-23 (+30d) |  | 63d → 41d |
| P2.L2.CL.1010 | Framing - Hard Lid Ceilings / L2 / Corr & Lobbies | 2026-03-25 → 2026-04-24 (+30d) | 2026-04-07 → 2026-05-07 (+30d) |  | 63d → 41d |
| P2.L2.CL.1020 | T-Grid / L2 / Corr & Lobbies | 2026-03-25 → 2026-04-24 (+30d) | 2026-04-07 → 2026-05-07 (+30d) |  | 63d → 41d |
| P2.L2.CL.1040 | R/I - Trim Sprinkler Heads- All Ceilings / L2 / Corr & Lobbies | 2026-04-03 → 2026-05-05 (+32d) | 2026-04-09 → 2026-05-11 (+32d) |  | 63d → 41d |
| P2.L2.CL.1070 | Trim - Sprinkler Heads @ T-Grid / L2 / Corr & Lobbies | 2026-04-03 → 2026-05-05 (+32d) | 2026-04-09 → 2026-05-11 (+32d) |  | 146d → 124d |
| P2.L2.CL.1050 | R/I - HVAC- All Ceilings / L2 / Corr & Lobbies | 2026-04-10 → 2026-05-12 (+32d) | 2026-04-16 → 2026-05-18 (+32d) |  | 63d → 41d |
| P2.L2.CL.1030 | R/I - Electrical - All Ceilings / L2 / Corr & Lobbies | 2026-04-17 → 2026-05-19 (+32d) | 2026-04-23 → 2026-05-26 (+33d) |  | 63d → 41d |
| P2.L2.CL.1060 | R/I - All Remaining Low Voltage - All Ceilings / L2 / Corr & Lobbies | 2026-04-24 → 2026-05-27 (+33d) | 2026-04-30 → 2026-06-02 (+33d) |  | 63d → 41d |
| P2.L2.CL.1100 | Pull Wire - Electrical / L2 / Corr & Lobbies | 2026-04-24 → 2026-05-27 (+33d) | 2026-05-07 → 2026-06-09 (+33d) |  | 93d → 71d |
| P2.L2.CL.1080 | R/I - Fire Alarm/Life Safety - All Ceilings / L2 / Corr & Lobbies | 2026-05-01 → 2026-06-03 (+33d) | 2026-05-07 → 2026-06-09 (+33d) |  | 63d → 41d |
| P2.L2.CL.1090 | Inspections - Close In- All Ceilings / L2 / Corr & Lobbies | 2026-05-08 → 2026-06-10 (+33d) | 2026-05-14 → 2026-06-16 (+33d) |  | 63d → 41d |
| P2.L2.CL.1110 | Pull Wire - Fire Alarm / L2 / Corr & Lobbies | 2026-05-08 → 2026-06-10 (+33d) | 2026-05-14 → 2026-06-16 (+33d) |  | 98d → 76d |
| P2.L2.CL.1120 | Pull Wire - All Remianing Low Voltage Systems / L2 / Corr & Lobbies | 2026-05-15 → 2026-06-17 (+33d) | 2026-05-21 → 2026-06-23 (+33d) |  | 103d → 81d |
| P2.L2.CL.1130 | Hang/Tape/Finish- Hard Lid Ceilings / L2 / Corr & Lobbies | 2026-05-15 → 2026-06-17 (+33d) | 2026-05-29 → 2026-06-30 (+32d) |  | 63d → 41d |

| ID | Task | Start | Finish | Complete | Total float |
| --- | --- | --- | --- | --- | --- |
| P2.L2.CL.1140 | Drop Ceiling Tiles @ T-Grid / L2 / Corr & Lobbies | 2026-05-22 → 2026-06-24 (+33d) | 2026-05-29 → 2026-06-30 (+32d) |  | 116d → 94d |
| P2.L2.CL.1190 | Paint - Hard Lid Ceilings / L2 / Corr & Lobbies | 2026-06-01 → 2026-07-01 (+30d) | 2026-06-05 → 2026-07-08 (+33d) |  | 63d → 41d |
| P2.L2.CL.1180 | Ceiling Mounted - HVAC GRD's / L2 / Corr & Lobbies | 2026-06-08 → 2026-07-09 (+31d) | 2026-06-26 → 2026-07-29 (+33d) |  | 63d → 41d |
| P2.L2.CL.1150 | Ceiling Mounted - Electrical Devices and Lights / L2 / Corr & Lobbies | 2026-06-22 → 2026-07-23 (+31d) | 2026-07-20 → 2026-08-19 (+30d) |  | 63d → 41d |
| P2.L2.CL.1160 | Ceiling Mounted - Fire Alarm/Life Saftey Devices / L2 / Corr & Lobbies | 2026-07-07 → 2026-08-06 (+30d) | 2026-07-27 → 2026-08-26 (+30d) |  | 63d → 41d |
| P2.L2.CL.1170 | Ceiling Mounted - All Low Voltage Devices / L2 / Corr & Lobbies | 2026-07-21 → 2026-08-20 (+30d) | 2026-08-10 → 2026-09-10 (+31d) |  | 63d → 41d |
| P2.L2.CL.1320 | Prep Flooring / L2 / Corr & Lobbies | 2026-08-25 → 2026-09-18 (+24d) | 2026-08-26 → 2026-09-21 (+26d) |  | 53d → 36d |
| P2.L2.CL.1200 | Flooring / L2 / Corr & Lobbies | 2026-08-27 → 2026-09-22 (+26d) | 2026-09-08 → 2026-10-01 (+23d) |  | 53d → 36d |
| P2.L2.CL.1210 | Final Paint / L2 / Corr & Lobbies | 2026-09-03 → 2026-09-29 (+26d) | 2026-09-10 → 2026-10-05 (+25d) |  | 73d → 56d |
| P2.L2.CL.1220 | Floor Base / L2 / Corr & Lobbies | 2026-09-11 → 2026-10-06 (+25d) | 2026-09-17 → 2026-10-12 (+25d) |  | 88d → 71d |
| P2.L2.CL.1250 | Trim - HVAC - Wall Mounted Devices / L2 / Corr & Lobbies | 2026-09-11 → 2026-10-06 (+25d) | 2026-09-17 → 2026-10-12 (+25d) |  | 73d → 56d |
| P2.L2.CL.1230 | Trim - All Electrical - Wall Mounted Devices / L2 / Corr & Lobbies | 2026-09-18 → 2026-10-13 (+25d) | 2026-09-24 → 2026-10-19 (+25d) |  | 73d → 56d |
| P2.L2.CL.1330 | Wall Protection / L2 / Corr & Lobbies | 2026-09-18 → 2026-10-13 (+25d) | 2026-09-24 → 2026-10-19 (+25d) |  | 88d → 71d |
| P2.L2.CL.1240 | Trim - Fire Alarm - Wall Mounted Devices / L2 / Corr & Lobbies | 2026-09-25 → 2026-10-20 (+25d) | 2026-10-01 → 2026-10-26 (+25d) |  | 73d → 56d |
| P2.L2.CL.1260 | Trim - All Remining Low Voltage Systems - Wall Mounted Devices / L2 / Corr & Lobbies | 2026-10-02 → 2026-10-27 (+25d) | 2026-10-08 → 2026-11-02 (+25d) |  | 73d → 56d |
| P2.L2.CL.1270 | Building Signage / L2 / Corr & Lobbies | 2026-10-09 → 2026-11-03 (+25d) | 2026-10-15 → 2026-11-09 (+25d) |  | 73d → 56d |
| P2.L2.CL.1280 | Work Completion List / L2 / Corr & Lobbies | 2026-10-16 → 2026-11-10 (+25d) | 2026-10-22 → 2026-11-16 (+25d) |  | 73d → 56d |
| P2.L2.CL.1290 | Rough Clean / L2 / Corr & Lobbies | 2026-10-23 → 2026-11-17 (+25d) | 2026-10-26 → 2026-11-18 (+23d) |  | 73d → 56d |
| P2.L2.CL.1300 | Punchlist / L2 / Corr & Lobbies | 2026-10-27 → 2026-11-19 (+23d) | 2026-11-02 → 2026-11-25 (+23d) |  | 73d → 56d |
| P2.L2.CL.1310 | Final Clean / L2 / Corr & Lobbies | 2026-11-03 → 2026-11-30 (+27d) | 2026-11-04 → 2026-12-01 (+27d) |  | 73d → 56d |
| INT | **INTERSTITIAL / LEVEL 2** |  | 2026-04-30 → 2026-05-26 (+26d) |  |  |
| 1 | **South Interstitial (9K SF) / 2-3925** |  | 2026-04-30 → 2026-05-26 (+26d) |  |  |
| Z1 | **Rough In - South Interstitial / 2-3925** |  | 2026-02-26 → 2026-03-23 (+25d) |  |  |
| P2.L2.INT.S.1200 | OH - Electrical - Equip Tie In / L2 / South Int | 2025-12-01 A | 2025-12-12 → 2026-01-15 (+34d) |  | 72d → 50d |
| P2.L2.INT.S.1310 | OH - Insulate LP Duct / L2 / South Int | 2025-12-01 A | 2025-12-12 A | 0% → 100% | 82d → none |
| P2.L2.INT.S.1300 | OH - Insulate HVAC Pipe / L2 / South Int | 2025-12-01 → 2025-12-15 A (+14d) | 2025-12-12 → 2025-12-19 A (+7d) | 0% → 100% | 82d → none |
| P2.L2.INT.S.1370 | Pull Wire - Low Volt - Fire Alarm / L2 / South Int | 2025-12-15 → 2026-01-02 (+18d) | 2025-12-29 → 2026-01-15 (+17d) |  | 82d → 70d |
| P2.L2.INT.S.1380 | Pull Wire - Low Volt - Telecom / L2 / South Int | 2025-12-15 → 2026-01-02 (+18d) | 2025-12-29 → 2026-01-15 (+17d) |  | 82d → 70d |
| P2.L2.INT.S.1390 | Pull Wire - Low Volt - Security / L2 / South Int | 2025-12-15 → 2026-01-02 (+18d) | 2025-12-29 → 2026-01-15 (+17d) |  | 82d → 70d |
| P2.L2.INT.S.1270 | Pull Wire - Electrical - 208/120v Branch & Equip / L2 / South Int | 2025-12-15 → 2026-01-16 (+32d) | 2026-01-13 → 2026-02-12 (+30d) |  | 72d → 50d |
| P2.L2.INT.S.1280 | Pull Wire - Electrical - 480/277v Distribution / L2 / South Int | 2025-12-15 → 2026-01-16 (+32d) | 2025-12-29 → 2026-01-29 (+31d) |  | 82d → 60d |
| P2.L2.INT.S.1290 | OH - HVAC Piping - Equip Tie In / L2 / South Int | 2026-01-28 → 2026-02-20 (+23d) | 2026-02-10 → 2026-03-05 (+23d) |  | 42d → 25d |
| P2.L2.INT.S.1360 | Pull Wire - Low Volt - BAS/Controls / L2 / South Int | 2026-02-11 → 2026-03-06 (+23d) | 2026-02-24 → 2026-03-19 (+23d) |  | 42d → 25d |
| P2.L2.INT.S.1400 | Trades Inspect & Verify R/I Work Completed to Specs / L2 / South Int | 2026-02-25 → 2026-03-20 (+23d) | 2026-02-26 → 2026-03-23 (+25d) |  | 42d → 25d |
| S | **Finishes - South Interstitial / 2-3925** | 2026-02-27 → 2026-03-24 (+25d) | 2026-04-30 → 2026-05-26 (+26d) |  |  |
| P2.L2.INT.S.2000 | Flooring Prep - Epoxy Floors / L2 / South Int | 2026-02-27 → 2026-03-24 (+25d) | 2026-03-09 → 2026-04-01 (+23d) |  | 152d → 135d |
| P2.L2.INT.S.2090 | Flooring - Epoxy Floors / L2 / South Int | 2026-03-10 → 2026-04-02 (+23d) | 2026-03-12 → 2026-04-06 (+25d) |  | 152d → 135d |
| P2.L2.INT.S.2010 | Paint - Finish Coat / L2 / South Int | 2026-03-13 → 2026-04-07 (+25d) | 2026-03-19 → 2026-04-13 (+25d) |  | 204d → 187d |
| P2.L2.INT.S.2020 | Doors & Hardware / L2 / South Int | 2026-03-13 → 2026-04-07 (+25d) | 2026-03-19 → 2026-04-13 (+25d) |  | 152d → 135d |
| P2.L2.INT.S.2030 | Trim All MEP Finishes / L2 / South Int | 2026-03-20 → 2026-04-14 (+25d) | 2026-03-26 → 2026-04-20 (+25d) |  | 204d → 187d |
| P2.L2.INT.S.2040 | Building Signage / L2 / South Int | 2026-03-20 → 2026-04-14 (+25d) | 2026-03-26 → 2026-04-20 (+25d) |  | 204d → 187d |
| P2.L2.INT.S.2050 | Rough Clean / L2 / South Int | 2026-03-27 → 2026-04-21 (+25d) | 2026-04-02 → 2026-04-27 (+25d) |  | 204d → 187d |
| P2.L2.INT.S.2060 | Prepare Punchlist / L2 / South Int | 2026-04-03 → 2026-04-28 (+25d) | 2026-04-09 → 2026-05-04 (+25d) |  | 204d → 187d |
| P2.L2.INT.S.2070 | Correct Punchlist / L2 / South Int | 2026-04-10 → 2026-05-05 (+25d) | 2026-04-23 → 2026-05-18 (+25d) |  | 204d → 187d |
| P2.L2.INT.S.2080 | Final Clean / L2 / South Int | 2026-04-24 → 2026-05-19 (+25d) | 2026-04-30 → 2026-05-26 (+26d) |  | 204d → 187d |
| INT1 | **North Interstitial (16K SF) / 2-2855** |  | 2026-04-30 → 2026-05-26 (+26d) |  |  |
| Z11 | **Rough In - North Interstitial / 2-2855** |  | 2026-02-26 → 2026-03-23 (+25d) |  |  |
| P2.L2.INT.N.1200 | OH - Electrical - Equip Tie In / L2 / North Int | 2025-12-01 A | 2025-12-12 → 2026-01-15 (+34d) |  | 72d → 50d |
| P2.L2.INT.N.1300 | OH - Insulate HVAC Pipe / L2 / North Int | 2025-12-01 → 2025-12-15 A (+14d) | 2025-12-12 → 2025-12-19 A (+7d) | 0% → 100% | 82d → none |
| P2.L2.INT.N.1310 | OH - Insulate LP Duct / L2 / North Int | 2025-12-01 → 2026-01-02 (+32d) | 2025-12-12 → 2026-01-15 (+34d) |  | 82d → 60d |
| P2.L2.INT.N.1390 | Pull Wire - Low Volt - Security / L2 / North Int | 2025-12-15 → 2026-01-02 (+18d) | 2025-12-29 → 2026-01-15 (+17d) |  | 82d → 70d |
| P2.L2.INT.N.1110 | Firestop - Thru Wall / L2 / North Int | 2025-12-15 → 2026-01-16 (+32d) | 2025-12-19 → 2026-01-22 (+34d) |  | 87d → 65d |
| P2.L2.INT.N.1270 | Pull Wire - Electrical - 208/120v Branch & Equip / L2 / North Int | 2025-12-15 → 2026-01-16 (+32d) | 2026-01-13 → 2026-02-12 (+30d) |  | 72d → 50d |
| P2.L2.INT.N.1280 | Pull Wire - Electrical - 480/277v Distribution / L2 / North Int | 2025-12-15 → 2026-01-16 (+32d) | 2025-12-29 → 2026-01-29 (+31d) |  | 82d → 60d |
| P2.L2.INT.N.1370 | Pull Wire - Low Volt - Fire Alarm / L2 / North Int | 2025-12-15 → 2026-01-16 (+32d) | 2025-12-29 → 2026-01-29 (+31d) |  | 82d → 60d |
| P2.L2.INT.N.1380 | Pull Wire - Low Volt - Telecom / L2 / North Int | 2025-12-15 → 2026-01-16 (+32d) | 2025-12-29 → 2026-01-29 (+31d) |  | 82d → 60d |
| P2.L2.INT.N.1290 | OH - HVAC Piping - Equip Tie In / L2 / North Int | 2026-01-28 → 2026-02-20 (+23d) | 2026-02-10 → 2026-03-05 (+23d) |  | 42d → 25d |
| P2.L2.INT.N.1360 | Pull Wire - Low Volt - BAS/Controls / L2 / North Int | 2026-02-11 → 2026-03-06 (+23d) | 2026-02-24 → 2026-03-19 (+23d) |  | 42d → 25d |
| P2.L2.INT.N.1400 | Trades Inspect & Verify R/I Work Completed to Specs / L2 / North Int | 2026-02-25 → 2026-03-20 (+23d) | 2026-02-26 → 2026-03-23 (+25d) |  | 42d → 25d |
| N | **Finishes - North Interstitial / 2-2855** | 2026-02-27 → 2026-03-24 (+25d) | 2026-04-30 → 2026-05-26 (+26d) |  |  |
| P2.L2.INT.N.2270 | Flooring Prep - Epoxy Floors / L2 / North Int | 2026-02-27 → 2026-03-24 (+25d) | 2026-03-09 → 2026-04-01 (+23d) |  | 152d → 135d |
| P2.L2.INT.N.2000 | Flooring - Epoxy Floors / L2 / North Int | 2026-03-10 → 2026-04-02 (+23d) | 2026-03-12 → 2026-04-06 (+25d) |  | 152d → 135d |
| P2.L2.INT.N.2010 | Paint - Finish Coat / L2 / North Int | 2026-03-13 → 2026-04-07 (+25d) | 2026-03-19 → 2026-04-13 (+25d) |  | 204d → 187d |
| P2.L2.INT.N.2020 | Doors & Hardware / L2 / North Int | 2026-03-13 → 2026-04-07 (+25d) | 2026-03-19 → 2026-04-13 (+25d) |  | 152d → 135d |
| P2.L2.INT.N.2030 | Trim All MEP Finishes / L2 / North Int | 2026-03-20 → 2026-04-14 (+25d) | 2026-03-26 → 2026-04-20 (+25d) |  | 204d → 187d |
| P2.L2.INT.N.2040 | Building Signage / L2 / North Int | 2026-03-20 → 2026-04-14 (+25d) | 2026-03-26 → 2026-04-20 (+25d) |  | 204d → 187d |
| P2.L2.INT.N.2050 | Rough Clean / L2 / North Int | 2026-03-27 → 2026-04-21 (+25d) | 2026-04-02 → 2026-04-27 (+25d) |  | 204d → 187d |
| P2.L2.INT.N.2060 | Prepare Punchlist / L2 / North Int | 2026-04-03 → 2026-04-28 (+25d) | 2026-04-09 → 2026-05-04 (+25d) |  | 204d → 187d |
| P2.L2.INT.N.2070 | Correct Punchlist / L2 / North Int | 2026-04-10 → 2026-05-05 (+25d) | 2026-04-23 → 2026-05-18 (+25d) |  | 204d → 187d |
| P2.L2.INT.N.2080 | Final Clean / L2 / North Int | 2026-04-24 → 2026-05-19 (+25d) | 2026-04-30 → 2026-05-26 (+26d) |  | 204d → 187d |

| ID | Task | Start | Finish | Complete | Total float |
| --- | --- | --- | --- | --- | --- |
| 1 | **MECHANICAL TOWERS / LEVEL 2** |  | 2026-03-17 → 2026-04-10 (+24d) |  |  |
| 4 | **South Mechanical Tower (5K SF) / Rough In & Finish / Level 2** |  | 2026-03-11 → 2026-04-10 (+30d) |  |  |
| P2.L2.SMT.1140 | Pull Wire - In From Distribution Panels / Out to Branch Circuits / L2 - S. Mech Tower |  | 2025-12-05 A | 0% → 100% | 35d → none |
| P2.L2.SMT.1160 | Electrical Tie in to Equipment / L2 - S. Mech Tower |  | 2025-12-12 A | 0% → 100% | 209d → none |
| P2.L2.SMT.1120 | BAS - Equip Tie In / L2 - S. Mech Tower | 2025-12-01 A | 2025-12-05 A | 0% → 100% | 104d → none |
| P2.L2.SMT.1180 | Paint - Finish Coat / L2 - S. Mech Tower | 2025-12-15 → 2025-12-01 A (-14d) | 2025-12-16 → 2025-12-02 A (-14d) | 0% → 100% | 35d → none |
| P2.L2.SMT.1170 | Test & Terminate / L2 - S. Mech Tower | 2025-12-08 → 2026-01-02 (+25d) | 2025-12-12 → 2026-01-08 (+27d) |  | 35d → 20d |
| P2.L2.SMT.1190 | Trim All MEPF Finishes / L2 - S. Mech Tower | 2025-12-17 → 2026-01-09 (+23d) | 2025-12-18 → 2026-01-12 (+25d) |  | 35d → 20d |
| P2.L2.SMT.1250 | Prep Flooring - Epoxy Floors / L2 - S. Mech Tower | 2025-12-19 → 2026-01-13 (+25d) | 2025-12-22 → 2026-01-14 (+23d) |  | 35d → 20d |
| P2.L2.SMT.1200 | Flooring - Epoxy Floors / L2 - S. Mech Tower | 2025-12-23 → 2026-01-15 (+23d) | 2025-12-24 → 2026-01-16 (+23d) |  | 35d → 20d |
| P2.L2.SMT.1210 | Doors & Hardware / L2 - S. Mech Tower | 2025-12-26 → 2026-01-19 (+24d) | 2025-12-29 → 2026-01-20 (+22d) |  | 89d → 74d |
| P2.L2.SMT.1110 | HVAC Piping - Equip Tie In / L2 - S. Mech Tower | 2026-01-28 → 2026-02-20 (+23d) | 2026-02-10 → 2026-03-05 (+23d) |  | 54d → 37d |
| P2.L2.SMT.1150 | Insulate HVAC / Plumbing Pipe / L2 - S. Mech Tower | 2026-02-11 → 2026-03-06 (+23d) | 2026-02-17 → 2026-03-12 (+23d) |  | 54d → 37d |
| P2.L2.SMT.1350 | Wall Protection / L2 - S. Mech Tower | 2026-02-19 → 2026-03-23 (+32d) | 2026-02-25 → 2026-03-27 (+30d) |  | 48d → 26d |
| P2.L2.SMT.1220 | Trades Inspect & Verify R/I Work Completed to Specs / L2 - S. Mech Tower | 2026-02-26 → 2026-03-30 (+32d) | 2026-03-04 → 2026-04-03 (+30d) |  | 48d → 26d |
| P2.L2.SMT.1240 | Energize Elec Panels - Lock Doors and Limit Access / L2 - S. Mech Tower | 2026-03-05 → 2026-04-06 (+32d) | 2026-03-11 → 2026-04-10 (+30d) |  | 48d → 26d |
| P2.L2.SMT.1230 | HVAC System Ready for Start Up / L2 - S. Mech Tower | 2026-03-11 → 2026-04-10 (+30d) | 2026-03-11 → 2026-04-10 (+30d) |  | 148d → 126d |
| 8 | **East Mechanical Tower (3.5K SF) / Rough In & Finish / Level 2** |  | 2026-03-17 → 2026-04-10 (+24d) |  |  |
| P2.L2.EMT.1090 | Panelboards, Interconnect Wiring, and Remaining Room Buildout of All Elec/FA Systems / L2 - E. Mech Tower | 2025-12-01 → 2026-01-02 (+32d) | 2025-12-12 → 2026-01-15 (+34d) |  | 87d → 65d |
| P2.L2.EMT.1200 | Flooring Prep - Epoxy Floors / L2 - E. Mech Tower | 2025-12-08 → 2026-01-09 (+32d) | 2025-12-10 → 2026-01-13 (+34d) |  | 48d → 26d |
| P2.L2.EMT.1260 | Flooring - Epoxy Floors / L2 - E. Mech Tower | 2025-12-11 → 2026-01-14 (+34d) | 2025-12-12 → 2026-01-15 (+34d) |  | 48d → 26d |
| P2.L2.EMT.1160 | Electrical Tie in to Equipment / L2 - E. Mech Tower | 2025-12-15 → 2026-01-16 (+32d) | 2025-12-19 → 2026-01-22 (+34d) |  | 204d → 182d |
| P2.L2.EMT.1170 | Test & Terminate / L2 - E. Mech Tower | 2025-12-15 → 2026-01-16 (+32d) | 2025-12-19 → 2026-01-22 (+34d) |  | 87d → 65d |
| P2.L2.EMT.1180 | Paint - Finish Coat / L2 - E. Mech Tower | 2025-12-22 → 2026-01-23 (+32d) | 2025-12-23 → 2026-01-26 (+34d) |  | 87d → 65d |
| P2.L2.EMT.1190 | Trim All MEPF Finishes / L2 - E. Mech Tower | 2025-12-24 → 2026-01-27 (+34d) | 2025-12-26 → 2026-01-28 (+33d) |  | 88d → 66d |
| P2.L2.EMT.1210 | Doors & Hardware / L2 - E. Mech Tower | 2025-12-29 → 2026-01-29 (+31d) | 2025-12-30 → 2026-01-30 (+31d) |  | 88d → 66d |
| P2.L2.EMT.1110 | HVAC Piping - Equip Tie In / L2 - E. Mech Tower | 2026-01-28 → 2026-02-20 (+23d) | 2026-02-24 → 2026-03-19 (+23d) |  | 44d → 27d |
| P2.L2.EMT.1150 | Insulate HVAC / Plumbing Pipe / L2 - E. Mech Tower | 2026-02-25 → 2026-03-20 (+23d) | 2026-03-03 → 2026-03-26 (+23d) |  | 44d → 27d |
| P2.L2.EMT.1340 | Wall Protection / L2 - E. Mech Tower | 2026-02-19 → 2026-03-23 (+32d) | 2026-02-25 → 2026-03-27 (+30d) |  | 48d → 26d |
| P2.L2.EMT.1220 | Trades Inspect & Verify R/I Work Completed to Specs / L2 - E. Mech Tower | 2026-03-04 → 2026-03-30 (+26d) | 2026-03-10 → 2026-04-03 (+24d) |  | 44d → 26d |
| P2.L2.EMT.1240 | Energize Elec Panels - Lock Doors and Limit Access / L2 - E. Mech Tower | 2026-03-11 → 2026-04-06 (+26d) | 2026-03-17 → 2026-04-10 (+24d) |  | 44d → 26d |
| P2.L2.EMT.1230 | HVAC System Ready for Start Up / L2 - E. Mech Tower | 2026-03-17 → 2026-04-10 (+24d) | 2026-03-17 → 2026-04-10 (+24d) |  | 144d → 126d |
| L3 | **L3 / BUILDOUT** |  | 2026-11-20 → 2026-12-16 (+26d) |  |  |
| L3 | **CORE & SUPPORT SPACES / LEVEL 3** |  | 2026-11-20 → 2026-12-16 (+26d) |  |  |
| 2 | **ROUGH IN - Core & Support Spaces / Level 3** |  | 2026-04-01 → 2026-04-23 (+22d) |  |  |
| Z11 | **South (12.5K SF) / Level 3** |  | 2026-03-24 → 2026-04-23 (+30d) |  |  |
| P2.L3.S.1370 | OH - Conduit - Low Volt - BAS/Controls / L3 / South |  | 2025-12-11 A | 10% → 100% | 80d → none |
| P2.L3.S.1420 | Framing - Balance of Framing & Door Frames / L3 / South | 2025-12-15 → 2025-12-08 A (-7d) | 2025-12-29 → 2025-12-15 A (-14d) | 0% → 100% | 24d → none |
| P2.L3.S.1430 | In Wall - Plumbing - Framing / L3 / South | 2025-12-30 A | 2026-01-13 → 2026-01-28 (+15d) | 0% → 10% | 24d → 13d |
| P2.L3.S.1440 | In Wall - Electrical - Framing / L3 / South | 2025-12-30 A | 2026-01-13 → 2026-01-28 (+15d) | 0% → 10% | 24d → 13d |
| P2.L3.S.1450 | In Wall - Backing/Blocking/Supports / L3 / South | 2025-12-30 A | 2026-01-13 → 2026-01-28 (+15d) | 0% → 10% | 24d → 13d |
| P2.L3.S.1250 | Pull Wire - Electrical - 480/277v Distribution / L3 / South | 2025-12-01 → 2026-01-02 (+32d) | 2025-12-12 → 2026-01-15 (+34d) |  | 89d → 67d |
| P2.L3.S.1350 | OH - Insulate LP Duct / L3 / South | 2025-12-01 → 2026-01-02 (+32d) | 2025-12-12 → 2026-01-15 (+34d) |  | 24d → 13d |
| P2.L3.S.1400 | OH - Conduit - Low Volt - Security / L3 / South | 2025-12-01 → 2026-01-02 (+32d) | 2025-12-12 → 2026-01-15 (+34d) |  | 79d → 57d |
| P2.L3.S.1410 | OH - Conduit - Low Volt - Medical Services/Nurse Call (?) / L3 / South | 2025-12-15 → 2026-01-16 (+32d) | 2025-12-29 → 2026-01-29 (+31d) |  | 69d → 47d |
| P2.L3.S.1360 | Pull Wire - Electrical - 208/120v Branch & Equip / L3 / South | 2026-01-14 → 2026-01-29 (+15d) | 2026-01-27 → 2026-02-11 (+15d) |  | 59d → 48d |
| P2.L3.S.1460 | AHJ Inspections - Wall Close In / L3 / South | 2026-01-14 → 2026-01-29 (+15d) | 2026-01-20 → 2026-02-04 (+15d) |  | 24d → 13d |
| P2.L3.S.1330 | OH - HVAC Piping - Equip Tie In / L3 / South | 2026-01-28 → 2026-02-20 (+23d) | 2026-02-10 → 2026-03-05 (+23d) |  | 49d → 32d |
| P2.L3.S.1470 | Hang-Tape-Finish - Walls and Hard Lid Ceilings / L3 / South | 2026-02-11 → 2026-03-13 (+30d) | 2026-03-03 → 2026-04-02 (+30d) |  | 9d → -13d |
| P2.L3.S.1480 | Spray/Seal/Firestop - Head of Wall / L3 / South | 2026-03-04 → 2026-04-03 (+30d) | 2026-03-17 → 2026-04-16 (+30d) |  | 24d → 2d |
| P2.L3.S.1490 | Firestop - Thru Wall / L3 / South | 2026-03-04 → 2026-04-03 (+30d) | 2026-03-17 → 2026-04-16 (+30d) |  | 24d → 2d |
| P2.L3.S.1500 | Pull Wire - Low Volt - BAS/Controls / L3 / South | 2026-03-04 → 2026-04-03 (+30d) | 2026-03-17 → 2026-04-16 (+30d) |  | 24d → 2d |
| P2.L3.S.1510 | Pull Wire - Low Volt - Fire Alarm / L3 / South | 2026-03-04 → 2026-04-03 (+30d) | 2026-03-17 → 2026-04-16 (+30d) |  | 24d → 2d |
| P2.L3.S.1520 | Pull Wire - Low Volt - Telecom / L3 / South | 2026-03-04 → 2026-04-03 (+30d) | 2026-03-17 → 2026-04-16 (+30d) |  | 24d → 2d |
| P2.L3.S.1530 | Pull Wire - Low Volt - Security / L3 / South | 2026-03-04 → 2026-04-03 (+30d) | 2026-03-17 → 2026-04-16 (+30d) |  | 24d → 2d |
| P2.L3.S.1540 | Pull Wire - Low Volt - Medical Services/Nurse Call (?) / L3 / South | 2026-03-04 → 2026-04-03 (+30d) | 2026-03-17 → 2026-04-16 (+30d) |  | 24d → 2d |
| P2.L3.S.1550 | Trades Inspect & Verify R/I Work Completed to Specs / L3 / South | 2026-03-18 → 2026-04-17 (+30d) | 2026-03-24 → 2026-04-23 (+30d) |  | 24d → 2d |
| Z111 | **North (15K SF) / Level 3** |  | 2026-04-01 → 2026-04-23 (+22d) |  |  |
| P2.L3.N.1370 | OH - Conduit - Low Volt - BAS/Controls / L3 / North | 2025-12-01 A | 2025-12-12 A | 0% → 100% | 79d → none |
| P2.L3.N.1630 | Chair Carrier - In Wall Rough-in / L3 / North | 2025-12-29 A | 2025-12-29 A | 0% → 100% | 39d → none |
| P2.L3.N.1420 | Framing - Balance of Framing & Door Frames / L3 / North | 2025-12-15 → 2025-12-30 A (+15d) | 2025-12-29 → 2026-01-28 (+30d) | 0% → 10% | 39d → 18d |
| P2.L3.N.1250 | Pull Wire - Electrical - 480/277v Distribution / L3 / North | 2025-12-01 → 2026-01-02 (+32d) | 2025-12-12 → 2026-01-15 (+34d) |  | 89d → 67d |
| P2.L3.N.1350 | OH - Insulate LP Duct / L3 / North | 2025-12-01 → 2026-01-02 (+32d) | 2025-12-12 → 2026-01-15 (+34d) |  | 39d → 18d |
| P2.L3.N.1400 | OH - Conduit - Low Volt - Security / L3 / North | 2025-12-01 → 2026-01-02 (+32d) | 2025-12-12 → 2026-01-15 (+34d) |  | 79d → 57d |
| P2.L3.N.1410 | OH - Conduit - Low Volt - Medical Services/Nurse Call (?) / L3 / North | 2025-12-15 → 2026-01-16 (+32d) | 2025-12-29 → 2026-01-29 (+31d) |  | 69d → 47d |
| P2.L3.N.1440 | In Wall - Electrical - Framing / L3 / North | 2025-12-30 → 2026-01-29 (+30d) | 2026-01-13 → 2026-02-11 (+29d) |  | 39d → 18d |
| P2.L3.N.1450 | In Wall - Backing/Blocking/Supports / L3 / North | 2025-12-30 → 2026-01-29 (+30d) | 2026-01-13 → 2026-02-11 (+29d) |  | 39d → 18d |
| P2.L3.N.1430 | In Wall - Plumbing - Framing / L3 / North | 2026-01-29 → 2026-02-11 (+13d) | 2026-02-11 → 2026-02-24 (+13d) |  | 18d → 9d |
| P2.L3.N.1360 | Pull Wire - Electrical - 208/120v Branch & Equip / L3 / North | 2026-01-14 → 2026-02-12 (+29d) | 2026-02-10 → 2026-03-11 (+29d) |  | 49d → 28d |
| P2.L3.N.1330 | OH - HVAC Piping - Equip Tie In / L3 / North | 2026-01-28 → 2026-02-20 (+23d) | 2026-02-10 → 2026-03-05 (+23d) |  | 49d → 32d |

| ID | Task | Start | Finish | Complete | Total float | Predecessors |
| --- | --- | --- | --- | --- | --- | --- |
| P2.L3.N.1460 | AHJ Inspections - Wall Close In / L3 / North | 2026-02-12 → 2026-02-25 (+13d) | 2026-02-18 → 2026-03-03 (+13d) |  | 18d → 9d |  |
| P2.L3.N.1470 | Hang-Tape-Finish - Walls and Hard Lid Ceilings / L3 / North | 2026-02-19 → 2026-03-13 (+22d) | 2026-03-11 → 2026-04-02 (+22d) |  | 18d → 2d |  |
| P2.L3.N.1480 | Spray/Seal/Firestop - Head of Wall / L3 / North | 2026-03-12 → 2026-04-03 (+22d) | 2026-03-25 → 2026-04-16 (+22d) |  | 18d → 2d |  |
| P2.L3.N.1490 | Firestop - Thru Wall / L3 / North | 2026-03-12 → 2026-04-03 (+22d) | 2026-03-25 → 2026-04-16 (+22d) |  | 18d → 2d |  |
| P2.L3.N.1500 | Pull Wire - Low Volt - BAS/Controls / L3 / North | 2026-03-12 → 2026-04-03 (+22d) | 2026-03-25 → 2026-04-16 (+22d) |  | 18d → 2d |  |
| P2.L3.N.1510 | Pull Wire - Low Volt - Fire Alarm / L3 / North | 2026-03-12 → 2026-04-03 (+22d) | 2026-03-25 → 2026-04-16 (+22d) |  | 18d → 2d |  |
| P2.L3.N.1520 | Pull Wire - Low Volt - Telecom / L3 / North | 2026-03-12 → 2026-04-03 (+22d) | 2026-03-25 → 2026-04-16 (+22d) |  | 18d → 2d |  |
| P2.L3.N.1530 | Pull Wire - Low Volt - Security / L3 / North | 2026-03-12 → 2026-04-03 (+22d) | 2026-03-25 → 2026-04-16 (+22d) |  | 18d → 2d |  |
| P2.L3.N.1540 | Pull Wire - Low Volt - Medical Services/Nurse Call (?) / L3 / North | 2026-03-12 → 2026-04-03 (+22d) | 2026-03-25 → 2026-04-16 (+22d) |  | 18d → 2d |  |
| P2.L3.N.1550 | Trades Inspect & Verify R/I Work Completed to Specs / L3 / North | 2026-03-26 → 2026-04-17 (+22d) | 2026-04-01 → 2026-04-23 (+22d) |  | 18d → 2d |  |
| 1 | **House Electrical Rooms / Level 3** |  | 2026-01-02 → 2026-03-20 (+77d) |  |  |  |
| 9 | **House Electrical Room - 3-5959** |  | 2026-01-02 → 2026-03-18 (+75d) |  |  |  |
| P2.3.HE.5959.1070 | Pull Wire - In From Distribution Panels / Out to Branch Circuits / L3 / South / 5959 |  |  |  |  | P2.3.HE.5959.1060 → P2.3.HE.5959.1060, P2.L3.S.1360, P2.L3.LC.1420 |
| P2.3.HE.5959.1080 | Panelboards, Interconnect Wiring, and Remaining Room Buildout of All Systems / L3 / South / 5959 | 2025-12-01 A | 2025-12-12 A | 0% → 100% | 26d → none |  |
| P2.3.HE.5959.1100 | Paint - Finish Coat / L3 / South / 5959 | 2025-12-22 → 2025-12-08 A (-14d) | 2025-12-23 → 2025-12-10 A (-13d) | 0% → 100% | 26d → none |  |
| P2.3.HE.5959.1090 | Test & Terminate / L3 / South / 5959 | 2025-12-15 A | 2025-12-19 A | 0% → 100% | 26d → none |  |
| P2.3.HE.5959.1130 | Doors & Hardware / L3 / South / 5959 | 2025-12-31 → 2025-12-18 A (-13d) | 2026-01-02 → 2025-12-24 A (-9d) | 0% → 100% | 26d → none |  |
| P2.3.HE.5959.1110 | Trim All MEPF Finishes / L3 / South / 5959 | 2025-12-24 → 2026-03-13 (+79d) | 2025-12-26 → 2026-03-16 (+80d) |  | 26d → 43d |  |
| P2.3.HE.5959.1120 | Flooring / L3 / South / 5959 | 2025-12-29 → 2026-03-17 (+78d) | 2025-12-30 → 2026-03-18 (+78d) |  | 26d → 43d |  |
| P2.3.HE.5959.1140 | Panels Ready to Energize - Lock Doors and Limit Access / L3 / South / 5959 | 2026-01-02 → 2026-03-18 (+75d) | 2026-01-02 → 2026-03-18 (+75d) |  | 26d → 43d |  |
| 1 | **House Electrical Room - 3-2937** |  | 2026-01-02 → 2026-03-18 (+75d) |  |  |  |
| P2.3.HE.2937.1070 | Pull Wire - In From Distribution Panels / Out to Branch Circuits / L3 / North / 2937 |  |  |  |  | P2.3.HE.2937.1060 → P2.3.HE.2937.1060, P2.L3.N.1360, P2.L3.LC.1420 |
| P2.3.HE.2937.1080 | Panelboards, Interconnect Wiring, and Remaining Room Buildout of All Systems / L3 / North / 2937 | 2025-12-01 A | 2025-12-12 A | 0% → 100% | 26d → none |  |
| P2.3.HE.2937.1100 | Paint - Finish Coat / L3 / North / 2937 | 2025-12-22 → 2025-12-08 A (-14d) | 2025-12-23 → 2025-12-10 A (-13d) | 0% → 100% | 26d → none |  |
| P2.3.HE.2937.1090 | Test & Terminate / L3 / North / 2937 | 2025-12-15 A | 2025-12-19 A | 0% → 100% | 26d → none |  |
| P2.3.HE.2937.1130 | Doors & Hardware / L3 / North / 2937 | 2025-12-31 → 2025-12-18 A (-13d) | 2026-01-02 → 2025-12-24 A (-9d) | 0% → 100% | 26d → none |  |
| P2.3.HE.2937.1110 | Trim All MEPF Finishes / L3 / North / 2937 | 2025-12-24 → 2026-03-13 (+79d) | 2025-12-26 → 2026-03-16 (+80d) |  | 26d → 43d |  |
| P2.3.HE.2937.1120 | Flooring / L3 / North / 2937 | 2025-12-29 → 2026-03-17 (+78d) | 2025-12-30 → 2026-03-18 (+78d) |  | 26d → 43d |  |
| P2.3.HE.2937.1140 | Panels Ready to Energize - Lock Doors and Limit Access / L3 / North / 2937 | 2026-01-02 → 2026-03-18 (+75d) | 2026-01-02 → 2026-03-18 (+75d) |  | 26d → 43d |  |
| 8 | **House Electrical Room - 3-2803** |  | 2026-01-02 → 2026-03-20 (+77d) |  |  |  |
| P2.3.HE.2803.1070 | Pull Wire - In From Distribution Panels / Out to Branch Circuits / L3 / North / 2803 |  |  |  |  | P2.3.HE.2803.1060 → P2.3.HE.2803.1060, P2.L3.LC.1420, P2.L3.N.1360 |
| P2.3.HE.2803.1080 | Panelboards, Interconnect Wiring, and Remaining Room Buildout of All Systems / L3 / North / 2803 | 2025-12-01 A | 2025-12-12 A | 0% → 100% | 26d → none |  |
| P2.3.HE.2803.1100 | Paint - Finish Coat / L3 / North / 2803 | 2025-12-22 → 2025-12-08 A (-14d) | 2025-12-23 → 2025-12-10 A (-13d) | 0% → 100% | 26d → none |  |
| P2.3.HE.2803.1090 | Test & Terminate / L3 / North / 2803 | 2025-12-15 A | 2025-12-19 A | 0% → 100% | 26d → none |  |
| P2.3.HE.2803.1110 | Trim All MEPF Finishes / L3 / North / 2803 | 2025-12-24 → 2026-03-13 (+79d) | 2025-12-26 → 2026-03-16 (+80d) |  | 26d → 41d |  |
| P2.3.HE.2803.1120 | Flooring / L3 / North / 2803 | 2025-12-29 → 2026-03-17 (+78d) | 2025-12-30 → 2026-03-18 (+78d) |  | 26d → 41d |  |
| P2.3.HE.2803.1130 | Doors & Hardware / L3 / North / 2803 | 2025-12-31 → 2026-03-19 (+78d) | 2026-01-02 → 2026-03-20 (+77d) |  | 26d → 41d |  |
| P2.3.HE.2803.1140 | Panels Ready to Energize - Lock Doors and Limit Access / L3 / North / 2803 | 2026-01-02 → 2026-03-20 (+77d) | 2026-01-02 → 2026-03-20 (+77d) |  | 26d → 41d |  |
| 7 | **House Electrical Room - 3-2845** |  | 2026-01-02 → 2026-03-18 (+75d) |  |  |  |
| P2.3.HE.5966.1070 | Pull Wire - In From Distribution Panels / Out to Branch Circuits / L3 / South / 5966 |  |  |  |  | P2.3.HE.5966.1060 → P2.3.HE.5966.1060, P2.L3.LC.1420, P2.L3.S.1360 |
| P2.3.HE.5966.1080 | Panelboards, Interconnect Wiring, and Remaining Room Buildout of All Systems / L3 / South / 5966 | 2025-12-01 A | 2025-12-12 A | 0% → 100% | 26d → none |  |
| P2.3.HE.5966.1100 | Paint - Finish Coat / L3 / South / 5966 | 2025-12-22 → 2025-12-08 A (-14d) | 2025-12-23 → 2025-12-10 A (-13d) | 0% → 100% | 26d → none |  |
| P2.3.HE.5966.1090 | Test & Terminate / L3 / South / 5966 | 2025-12-15 A | 2025-12-19 A | 0% → 100% | 26d → none |  |
| P2.3.HE.5966.1130 | Doors & Hardware / L3 / South / 5966 | 2025-12-31 → 2025-12-18 A (-13d) | 2026-01-02 → 2025-12-24 A (-9d) | 0% → 100% | 26d → none |  |
| P2.3.HE.5966.1110 | Trim All MEPF Finishes / L3 / South / 5966 | 2025-12-24 → 2026-03-13 (+79d) | 2025-12-26 → 2026-03-16 (+80d) |  | 26d → 43d |  |
| P2.3.HE.5966.1120 | Flooring / L3 / South / 5966 | 2025-12-29 → 2026-03-17 (+78d) | 2025-12-30 → 2026-03-18 (+78d) |  | 26d → 43d |  |
| P2.3.HE.5966.1140 | Panels Ready to Energize - Lock Doors and Limit Access / L3 / South / 5966 | 2026-01-02 → 2026-03-18 (+75d) | 2026-01-02 → 2026-03-18 (+75d) |  | 26d → 43d |  |
| 6 | **House Electrical Room - Panel Closet 3-5968** |  | 2026-01-02 → 2026-03-18 (+75d) |  |  |  |
| P2.3.HE.5968.1070 | Pull Wire - In From Distribution Panels / Out to Branch Circuits / L3 / South / 5968 |  |  |  |  | P2.3.HE.5968.1060 → P2.3.HE.5968.1060, P2.L3.LC.1420, P2.L3.S.1360 |
| P2.3.HE.5968.1080 | Panelboards, Interconnect Wiring, and Remaining Room Buildout of All Systems / L3 / South / 5968 | 2025-12-01 A | 2025-12-12 A | 0% → 100% | 26d → none |  |
| P2.3.HE.5968.1100 | Paint - Finish Coat / L3 / South / 5968 | 2025-12-22 → 2025-12-08 A (-14d) | 2025-12-23 → 2025-12-10 A (-13d) | 0% → 100% | 26d → none |  |
| P2.3.HE.5968.1090 | Test & Terminate / L3 / South / 5968 | 2025-12-15 A | 2025-12-19 A | 0% → 100% | 26d → none |  |
| P2.3.HE.5968.1130 | Doors & Hardware / L3 / South / 5968 | 2025-12-31 → 2025-12-18 A (-13d) | 2026-01-02 → 2025-12-24 A (-9d) | 0% → 100% | 26d → none |  |
| P2.3.HE.5968.1110 | Trim All MEPF Finishes / L3 / South / 5968 | 2025-12-24 → 2026-03-13 (+79d) | 2025-12-26 → 2026-03-16 (+80d) |  | 26d → 43d |  |
| P2.3.HE.5968.1120 | Flooring / L3 / South / 5968 | 2025-12-29 → 2026-03-17 (+78d) | 2025-12-30 → 2026-03-18 (+78d) |  | 26d → 43d |  |
| P2.3.HE.5968.1140 | Panels Ready to Energize - Lock Doors and Limit Access / L3 / South / 5968 | 2026-01-02 → 2026-03-18 (+75d) | 2026-01-02 → 2026-03-18 (+75d) |  | 26d → 43d |  |
| 1 | **FINISHES - Core & Support Spaces / Level 3** |  | 2026-11-20 → 2026-12-16 (+26d) |  |  |  |
| 7KSF1 | **OR Support - Freezer - Gas - Blood Area (2.5K SF) / Level 3** | 2026-04-09 → 2026-05-01 (+22d) | 2026-11-20 → 2026-12-16 (+26d) |  |  |  |
| 1 | **Finishes** | 2026-04-09 → 2026-05-01 (+22d) | 2026-11-20 → 2026-12-16 (+26d) |  |  |  |
| P2.L3.F.CS.1000 | Paint Prime & 1st Coat Walls / L3 / South / OR Support | 2026-04-09 → 2026-05-01 (+22d) | 2026-04-15 → 2026-05-07 (+22d) |  | 52d → 36d |  |
| P2.L3.F.CS.1020 | R/I - Ceiling Assemblies & Supports - All Trades (A/V, Oper Part, Glass Part, etc.) / L3 / South / OR Support | 2026-04-16 → 2026-05-08 (+22d) | 2026-04-22 → 2026-05-14 (+22d) |  | 61d → 45d |  |
| P2.L3.F.CS.1010 | T-Grid / L3 / South / OR Support | 2026-04-23 → 2026-05-15 (+22d) | 2026-04-29 → 2026-05-21 (+22d) |  | 61d → 45d |  |
| P2.L3.F.CS.1050 | Sprinkler Heads in T-Grid / L3 / South / OR Support | 2026-04-30 → 2026-05-22 (+22d) | 2026-05-06 → 2026-05-29 (+23d) |  | 61d → 45d |  |
| P2.L3.F.CS.1030 | Diffusers in T-Grid / L3 / South / OR Support | 2026-05-07 → 2026-06-01 (+25d) | 2026-05-13 → 2026-06-05 (+23d) |  | 61d → 45d |  |
| P2.L3.F.CS.1040 | Lights & Elec Devices in T-Grid / L3 / South / OR Support | 2026-05-14 → 2026-06-08 (+25d) | 2026-05-20 → 2026-06-12 (+23d) |  | 61d → 45d |  |
| P2.L3.F.CS.1070 | Fire Alarm in T-Grid / L3 / South / OR Support | 2026-05-21 → 2026-06-15 (+25d) | 2026-05-28 → 2026-06-19 (+22d) |  | 61d → 45d |  |
| P2.L3.F.CS.1060 | Low Voltage in T-Grid / L3 / South / OR Support | 2026-05-29 → 2026-06-22 (+24d) | 2026-06-04 → 2026-06-26 (+22d) |  | 61d → 45d |  |
| P2.L3.F.CS.1300 | Fumehood Equipment Install / L3 / South / OR Support | 2026-06-05 → 2026-06-29 (+24d) | 2026-06-05 → 2026-06-29 (+24d) |  | 61d → 45d |  |
| P2.L3.F.CS.2300 | Casework (Before Flooring) / L3 / South / OR Support | 2026-06-05 → 2026-06-29 (+24d) | 2026-06-05 → 2026-06-29 (+24d) |  | 61d → 45d |  |
| P2.L3.F.CS.1310 | Fumehood Equipment MEP Connection / L3 / South / OR Support | 2026-06-08 → 2026-06-30 (+22d) | 2026-06-08 → 2026-06-30 (+22d) |  | 61d → 45d |  |

| ID | Task | Start | Finish | Complete | Total float |
| --- | --- | --- | --- | --- | --- |
| P2.L3.F.CS.1080 | OH Ceiling Signoff / L3 / South / OR Support | 2026-06-09 → 2026-07-01 (+22d) | 2026-06-15 → 2026-07-08 (+23d) |  | 61d → 45d |
| P2.L3.F.CS.1110 | Drop Ceiling Tile / L3 / South / OR Support | 2026-06-16 → 2026-07-09 (+23d) | 2026-06-22 → 2026-07-15 (+23d) |  | 61d → 45d |
| P2.L3.F.CS.1090 | Millwork / L3 / South / OR Support | 2026-06-23 → 2026-07-16 (+23d) | 2026-06-29 → 2026-07-22 (+23d) |  | 61d → 45d |
| P2.L3.F.CS.1100 | Plumbing Fixtures / L3 / South / OR Support | 2026-06-30 → 2026-07-23 (+23d) | 2026-07-07 → 2026-07-29 (+22d) |  | 61d → 45d |
| P2.L3.F.CS.1120 | Floor Prep / L3 / South / OR Support | 2026-07-08 → 2026-07-30 (+22d) | 2026-07-14 → 2026-08-05 (+22d) |  | 61d → 45d |
| P2.L3.F.CS.1130 | Floor Finishes / L3 / South / OR Support | 2026-07-15 → 2026-08-06 (+22d) | 2026-07-21 → 2026-08-12 (+22d) |  | 61d → 45d |
| P2.L3.F.CS.2310 | Casework (After Flooring) / L3 / South / OR Support | 2026-07-22 → 2026-08-13 (+22d) | 2026-07-22 → 2026-08-13 (+22d) |  | 61d → 45d |
| P2.L3.F.CS.1140 | Doors & Hardware / L3 / South / OR Support | 2026-07-23 → 2026-08-14 (+22d) | 2026-07-29 → 2026-08-20 (+22d) |  | 61d → 45d |
| P2.L3.F.CS.1150 | Paint - Finish Coat / L3 / South / OR Support | 2026-07-30 → 2026-08-21 (+22d) | 2026-08-05 → 2026-08-27 (+22d) |  | 61d → 45d |
| P2.L3.F.CS.1200 | Floor Base / L3 / South / OR Support | 2026-08-06 → 2026-08-28 (+22d) | 2026-08-12 → 2026-09-03 (+22d) |  | 61d → 45d |
| P2.L3.F.CS.1210 | Demountable Partitions / L3 / South / OR Support | 2026-08-13 → 2026-09-04 (+22d) | 2026-08-19 → 2026-09-11 (+23d) |  | 61d → 45d |
| P2.L3.F.CS.1180 | Building Specialities / L3 / South / OR Support | 2026-08-20 → 2026-09-14 (+25d) | 2026-08-26 → 2026-09-18 (+23d) |  | 61d → 45d |
| P2.L3.F.CS.1170 | Trim T-Stats / L3 / South / OR Support | 2026-08-27 → 2026-09-21 (+25d) | 2026-09-02 → 2026-09-25 (+23d) |  | 61d → 45d |
| P2.L3.F.CS.1160 | Set AV/IT Devices and Configure / L3 / South / OR Support | 2026-09-03 → 2026-09-28 (+25d) | 2026-09-10 → 2026-10-02 (+22d) |  | 61d → 45d |
| P2.L3.F.CS.1220 | Trim Electrical / L3 / South / OR Support | 2026-09-11 → 2026-10-05 (+24d) | 2026-09-17 → 2026-10-09 (+22d) |  | 61d → 45d |
| P2.L3.F.CS.1230 | Trim Telephone/ Data / L3 / South / OR Support | 2026-09-18 → 2026-10-12 (+24d) | 2026-09-24 → 2026-10-16 (+22d) |  | 61d → 45d |
| P2.L3.F.CS.1190 | Interior Building Signage / L3 / South / OR Support | 2026-09-25 → 2026-10-19 (+24d) | 2026-10-01 → 2026-10-23 (+22d) |  | 61d → 45d |
| P2.L3.F.CS.2320 | Remaining Equipment Post Flooring / L3 / South / OR Support | 2026-10-02 → 2026-10-26 (+24d) | 2026-10-02 → 2026-10-26 (+24d) |  | 61d → 45d |
| P2.L3.F.CS.1240 | Work Completion List - Finishes / L3 / South / OR Support | 2026-10-05 → 2026-10-27 (+22d) | 2026-10-09 → 2026-11-02 (+24d) |  | 61d → 45d |
| P2.L3.F.CS.1250 | Rough Clean / L3 / South / OR Support | 2026-10-12 → 2026-11-03 (+22d) | 2026-10-16 → 2026-11-09 (+24d) |  | 61d → 45d |
| P2.L3.F.CS.1260 | FF&E / L3 / South / OR Support | 2026-10-19 → 2026-11-10 (+22d) | 2026-10-23 → 2026-11-16 (+24d) |  | 61d → 45d |
| P2.L3.F.CS.1270 | Prepare Punchlist / L3 / South / OR Support | 2026-10-26 → 2026-11-17 (+22d) | 2026-10-30 → 2026-11-23 (+24d) |  | 61d → 45d |
| P2.L3.F.CS.1280 | Correct Punchlist / L3 / South / OR Support | 2026-11-02 → 2026-11-24 (+22d) | 2026-11-13 → 2026-12-09 (+26d) |  | 61d → 45d |
| P2.L3.F.CS.1290 | Final Clean / L3 / South / OR Support | 2026-11-16 → 2026-12-10 (+24d) | 2026-11-20 → 2026-12-16 (+26d) |  | 61d → 45d |
| 7KSF | **OR/IR / IR Teaming Support (1K SF) / Level 3** | 2026-04-02 → 2026-04-24 (+22d) | 2026-11-09 → 2026-12-03 (+24d) |  |  |
| 1 | **Finishes** | 2026-04-02 → 2026-04-24 (+22d) | 2026-11-09 → 2026-12-03 (+24d) |  |  |
| P2.L3.F.CS.2000 | Paint Prime & 1st Coat Walls / L3 / North / OR/IR Teaming | 2026-04-02 → 2026-04-24 (+22d) | 2026-04-08 → 2026-04-30 (+22d) |  | 52d → 36d |
| P2.L3.F.CS.2020 | R/I - Ceiling Assemblies & Supports - All Trades (A/V, Oper Part, Glass Part, etc.) / L3 / North / OR/IR Teaming | 2026-04-09 → 2026-05-01 (+22d) | 2026-04-15 → 2026-05-07 (+22d) |  | 70d → 54d |
| P2.L3.F.CS.2010 | T-Grid / L3 / North / OR/IR Teaming | 2026-04-16 → 2026-05-08 (+22d) | 2026-04-22 → 2026-05-14 (+22d) |  | 70d → 54d |
| P2.L3.F.CS.2050 | Sprinkler Heads in T-Grid / L3 / North / OR/IR Teaming | 2026-04-23 → 2026-05-15 (+22d) | 2026-04-29 → 2026-05-21 (+22d) |  | 70d → 54d |
| P2.L3.F.CS.2030 | Diffusers in T-Grid / L3 / North / OR/IR Teaming | 2026-04-30 → 2026-05-22 (+22d) | 2026-05-06 → 2026-05-29 (+23d) |  | 70d → 54d |
| P2.L3.F.CS.2040 | Lights & Elec Devices in T-Grid / L3 / North / OR/IR Teaming | 2026-05-07 → 2026-06-01 (+25d) | 2026-05-13 → 2026-06-05 (+23d) |  | 70d → 54d |
| P2.L3.F.CS.2070 | Fire Alarm in T-Grid / L3 / North / OR/IR Teaming | 2026-05-14 → 2026-06-08 (+25d) | 2026-05-20 → 2026-06-12 (+23d) |  | 70d → 54d |
| P2.L3.F.CS.2060 | Low Voltage in T-Grid / L3 / North / OR/IR Teaming | 2026-05-21 → 2026-06-15 (+25d) | 2026-05-28 → 2026-06-19 (+22d) |  | 70d → 54d |
| P2.L3.F.CS.2080 | OH Ceiling Signoff / L3 / North / OR/IR Teaming | 2026-05-29 → 2026-06-22 (+24d) | 2026-06-04 → 2026-06-26 (+22d) |  | 70d → 54d |
| P2.L3.F.CS.2110 | Drop Ceiling Tile / L3 / North / OR/IR Teaming | 2026-06-05 → 2026-06-29 (+24d) | 2026-06-11 → 2026-07-06 (+25d) |  | 70d → 54d |
| P2.L3.F.CS.2090 | Millwork / L3 / North / OR/IR Teaming | 2026-06-12 → 2026-07-07 (+25d) | 2026-06-18 → 2026-07-13 (+25d) |  | 70d → 54d |
| P2.L3.F.CS.2100 | Plumbing Fixtures / L3 / North / OR/IR Teaming | 2026-06-19 → 2026-07-14 (+25d) | 2026-06-25 → 2026-07-20 (+25d) |  | 70d → 54d |
| P2.L3.F.CS.2120 | Floor Prep / L3 / North / OR/IR Teaming | 2026-06-26 → 2026-07-21 (+25d) | 2026-07-02 → 2026-07-27 (+25d) |  | 70d → 54d |
| P2.L3.F.CS.2130 | Floor Finishes / L3 / North / OR/IR Teaming | 2026-07-06 → 2026-07-28 (+22d) | 2026-07-10 → 2026-08-03 (+24d) |  | 70d → 54d |
| P2.L3.F.CS.2140 | Doors & Hardware / L3 / North / OR/IR Teaming | 2026-07-13 → 2026-08-04 (+22d) | 2026-07-17 → 2026-08-10 (+24d) |  | 70d → 54d |
| P2.L3.F.CS.2150 | Paint - Finish Coat / L3 / North / OR/IR Teaming | 2026-07-20 → 2026-08-11 (+22d) | 2026-07-24 → 2026-08-17 (+24d) |  | 70d → 54d |
| P2.L3.F.CS.2200 | Floor Base / L3 / North / OR/IR Teaming | 2026-07-27 → 2026-08-18 (+22d) | 2026-07-31 → 2026-08-24 (+24d) |  | 70d → 54d |
| P2.L3.F.CS.2210 | Demountable Partitions / L3 / North / OR/IR Teaming | 2026-08-03 → 2026-08-25 (+22d) | 2026-08-07 → 2026-08-31 (+24d) |  | 70d → 54d |
| P2.L3.F.CS.2170 | Trim T-Stats / L3 / North / OR/IR Teaming | 2026-08-10 → 2026-09-01 (+22d) | 2026-08-14 → 2026-09-08 (+25d) |  | 70d → 54d |
| P2.L3.F.CS.2160 | Set AV/IT Devices and Configure / L3 / North / OR/IR Teaming | 2026-08-17 → 2026-09-09 (+23d) | 2026-08-21 → 2026-09-15 (+25d) |  | 70d → 54d |
| P2.L3.F.CS.2220 | Trim Electrical / L3 / North / OR/IR Teaming | 2026-08-24 → 2026-09-16 (+23d) | 2026-08-28 → 2026-09-22 (+25d) |  | 70d → 54d |
| P2.L3.F.CS.2230 | Trim Telephone/ Data / L3 / North / OR/IR Teaming | 2026-08-31 → 2026-09-23 (+23d) | 2026-09-04 → 2026-09-29 (+25d) |  | 70d → 54d |
| P2.L3.F.CS.2180 | Building Specialities / L3 / North / OR/IR Teaming | 2026-09-08 → 2026-09-30 (+22d) | 2026-09-14 → 2026-10-06 (+22d) |  | 70d → 54d |
| P2.L3.F.CS.2190 | Interior Building Signage / L3 / North / OR/IR Teaming | 2026-09-15 → 2026-10-07 (+22d) | 2026-09-21 → 2026-10-13 (+22d) |  | 70d → 54d |
| P2.L3.F.CS.2240 | Work Completion List - Finishes / L3 / North / OR/IR Teaming | 2026-09-22 → 2026-10-14 (+22d) | 2026-09-28 → 2026-10-20 (+22d) |  | 70d → 54d |
| P2.L3.F.CS.2250 | Rough Clean / L3 / North / OR/IR Teaming | 2026-09-29 → 2026-10-21 (+22d) | 2026-10-05 → 2026-10-27 (+22d) |  | 70d → 54d |
| P2.L3.F.CS.2260 | FF&E / L3 / North / OR/IR Teaming | 2026-10-06 → 2026-10-28 (+22d) | 2026-10-12 → 2026-11-03 (+22d) |  | 70d → 54d |
| P2.L3.F.CS.2270 | Prepare Punchlist / L3 / North / OR/IR Teaming | 2026-10-13 → 2026-11-04 (+22d) | 2026-10-19 → 2026-11-10 (+22d) |  | 70d → 54d |
| P2.L3.F.CS.2280 | Correct Punchlist / L3 / North / OR/IR Teaming | 2026-10-20 → 2026-11-11 (+22d) | 2026-11-02 → 2026-11-24 (+22d) |  | 70d → 54d |
| P2.L3.F.CS.2290 | Final Clean / L3 / North / OR/IR Teaming | 2026-11-03 → 2026-11-25 (+22d) | 2026-11-09 → 2026-12-03 (+24d) |  | 70d → 54d |
| 5 | **Bathrooms - Break Rooms - Locker Rooms / Level 3** |  | 2026-04-03 → 2026-05-05 (+32d) |  |  |
| 3 | **3 Gang Toilet Area Z1 - No Room Tag. 3-59??** |  | 2026-03-31 → 2026-04-30 (+30d) |  |  |
| P2.L3.BR.1050 | Duct Drops _ Hard Lids / L3 / South / Toilets 59XX | 2025-12-03 A | 2025-12-04 A | 0% → 100% | 171d → none |
| P2.L3.BR.1070 | In Wall - Insulate Plumbing / L3 / South / Toilets 59XX | 2025-12-05 A | 2025-12-08 A | 0% → 100% | 171d → none |
| P2.L3.BR.1040 | Trim Sprinkler Drops _ Hard Lids / L3 / South / Toilets 59XX | 2025-12-01 → 2026-01-02 (+32d) | 2025-12-02 → 2026-01-05 (+34d) |  | 171d → 153d |
| P2.L3.BR.1030 | R/I - Electrical _ Hard Lids / L3 / South / Toilets 59XX | 2025-12-09 → 2026-01-06 (+28d) | 2025-12-10 → 2026-01-07 (+28d) |  | 171d → 153d |
| P2.L3.BR.1060 | R/I - Fire Alarm _ Hard Lids / L3 / South / Toilets 59XX | 2025-12-11 → 2026-01-08 (+28d) | 2025-12-12 → 2026-01-09 (+28d) |  | 171d → 153d |
| P2.L3.BR.1080 | Inspection - Close In - Walls and Hard Lid Ceilings / L3 / South / Toilets 59XX | 2025-12-15 → 2026-01-12 (+28d) | 2025-12-17 → 2026-01-14 (+28d) |  | 171d → 153d |
| P2.L3.BR.1090 | Hang-Tape-Finish _ Walls and Hard Lids Ceilings / L3 / South / Toilets 59XX | 2025-12-18 → 2026-01-15 (+28d) | 2025-12-24 → 2026-01-21 (+28d) |  | 171d → 153d |
| P2.L3.BR.1100 | Paint Prime & Final Coat _ Walls & Hard Lid Ceilings / L3 / South / Toilets 59XX | 2025-12-26 → 2026-01-22 (+27d) | 2025-12-29 → 2026-01-23 (+25d) |  | 171d → 153d |
| P2.L3.BR.1140 | Trim - HVAC G/R/D's / L3 / South / Toilets 59XX | 2025-12-30 → 2026-01-26 (+27d) | 2025-12-31 → 2026-01-27 (+27d) |  | 171d → 153d |
| P2.L3.BR.1120 | Pull Wire & Trim Devices - Electrical / L3 / South / Toilets 59XX | 2026-01-02 → 2026-01-28 (+26d) | 2026-01-05 → 2026-01-29 (+24d) |  | 171d → 153d |
| P2.L3.BR.1130 | Lights - Set & Terminate / L3 / South / Toilets 59XX | 2026-01-02 → 2026-01-28 (+26d) | 2026-01-05 → 2026-01-29 (+24d) |  | 173d → 155d |
| P2.L3.BR.1110 | Pull Wire & Trim Devices - Fire Alarm / L3 / South / Toilets 59XX | 2026-01-06 → 2026-01-30 (+24d) | 2026-01-07 → 2026-02-02 (+26d) |  | 171d → 153d |

| ID | Task | Start | Finish | Complete | Total float |
| --- | --- | --- | --- | --- | --- |
| P2.L3.BR.1150 | Wall Tile / L3 / South / Toilets 59XX | 2026-01-08 → 2026-02-03 (+26d) | 2026-01-14 → 2026-02-09 (+26d) |  | 171d → 153d |
| P2.L3.BR.4260 | Flooring Prep - Epoxy Floors / L3 / South / Toilets 59XX | 2026-03-12 → 2026-04-13 (+32d) | 2026-03-12 → 2026-04-13 (+32d) |  | 131d → 109d |
| P2.L3.BR.4270 | Flooring - Epoxy Floors / L3 / South / Toilets 59XX | 2026-03-13 → 2026-04-14 (+32d) | 2026-03-16 → 2026-04-15 (+30d) |  | 218d → 196d |
| P2.L3.BR.1160 | Doors & Hardware / L3 / South / Toilets 59XX | 2026-03-17 → 2026-04-16 (+30d) | 2026-03-18 → 2026-04-17 (+30d) |  | 218d → 196d |
| P2.L3.BR.1170 | Plumbing Fixtures / Sinks / Showers / L3 / South / Toilets 59XX | 2026-03-19 → 2026-04-20 (+32d) | 2026-03-20 → 2026-04-21 (+32d) |  | 226d → 204d |
| P2.L3.BR.1180 | Bathroom Accessories / L3 / South / Toilets 59XX | 2026-03-23 → 2026-04-22 (+30d) | 2026-03-24 → 2026-04-23 (+30d) |  | 226d → 204d |
| P2.L3.BR.1190 | Work Completion List - Finishes / L3 / South / Toilets 59XX | 2026-03-25 → 2026-04-24 (+30d) | 2026-03-31 → 2026-04-30 (+30d) |  | 226d → 204d |
| 1 | **Toilet 3-2867** |  | 2026-04-02 → 2026-05-04 (+32d) |  |  |
| P2.L3.BR.2050 | Duct Drops _ Hard Lids / L3 / North / Toilet 2867 | 2025-12-03 A | 2025-12-04 A | 0% → 100% | 173d → none |
| P2.L3.BR.2070 | In Wall - Insulate Plumbing / L3 / North / Toilet 2867 | 2025-12-05 A | 2025-12-08 A | 0% → 100% | 173d → none |
| P2.L3.BR.2040 | Trim Sprinkler Drops _ Hard Lids / L3 / North / Toilet 2867 | 2025-12-01 → 2026-01-02 (+32d) | 2025-12-02 → 2026-01-05 (+34d) |  | 173d → 155d |
| P2.L3.BR.2030 | R/I - Electrical _ Hard Lids / L3 / North / Toilet 2867 | 2025-12-09 → 2026-01-06 (+28d) | 2025-12-10 → 2026-01-07 (+28d) |  | 173d → 155d |
| P2.L3.BR.2060 | R/I - Fire Alarm _ Hard Lids / L3 / North / Toilet 2867 | 2025-12-11 → 2026-01-08 (+28d) | 2025-12-12 → 2026-01-09 (+28d) |  | 173d → 155d |
| P2.L3.BR.2080 | Inspection - Close In - Walls and Hard Lid Ceilings / L3 / North / Toilet 2867 | 2025-12-15 → 2026-01-12 (+28d) | 2025-12-17 → 2026-01-14 (+28d) |  | 173d → 155d |
| P2.L3.BR.2090 | Hang-Tape-Finish _ Walls and Hard Lids Ceilings / L3 / North / Toilet 2867 | 2025-12-18 → 2026-01-15 (+28d) | 2025-12-24 → 2026-01-21 (+28d) |  | 173d → 155d |
| P2.L3.BR.2100 | Paint Prime & Final Coat _ Walls & Hard Lid Ceilings / L3 / North / Toilet 2867 | 2025-12-26 → 2026-01-22 (+27d) | 2025-12-29 → 2026-01-23 (+25d) |  | 173d → 155d |
| P2.L3.BR.2140 | Trim - HVAC G/R/D's / L3 / North / Toilet 2867 | 2025-12-30 → 2026-01-26 (+27d) | 2025-12-31 → 2026-01-27 (+27d) |  | 173d → 155d |
| P2.L3.BR.2120 | Pull Wire & Trim Devices - Electrical / L3 / North / Toilet 2867 | 2026-01-02 → 2026-01-28 (+26d) | 2026-01-05 → 2026-01-29 (+24d) |  | 173d → 155d |
| P2.L3.BR.2130 | Lights - Set & Terminate / L3 / North / Toilet 2867 | 2026-01-02 → 2026-01-28 (+26d) | 2026-01-05 → 2026-01-29 (+24d) |  | 175d → 157d |
| P2.L3.BR.2110 | Pull Wire & Trim Devices - Fire Alarm / L3 / North / Toilet 2867 | 2026-01-06 → 2026-01-30 (+24d) | 2026-01-07 → 2026-02-02 (+26d) |  | 173d → 155d |
| P2.L3.BR.2150 | Wall Tile / L3 / North / Toilet 2867 | 2026-01-08 → 2026-02-03 (+26d) | 2026-01-14 → 2026-02-09 (+26d) |  | 173d → 155d |
| P2.L3.BR.4240 | Flooring Prep - Epoxy Floors / L3 / North / Toilet 2867 | 2026-03-16 → 2026-04-15 (+30d) | 2026-03-16 → 2026-04-15 (+30d) |  | 131d → 109d |
| P2.L3.BR.4250 | Flooring - Epoxy Floors / L3 / North / Toilet 2867 | 2026-03-17 → 2026-04-16 (+30d) | 2026-03-18 → 2026-04-17 (+30d) |  | 216d → 194d |
| P2.L3.BR.2160 | Doors & Hardware / L3 / North / Toilet 2867 | 2026-03-19 → 2026-04-20 (+32d) | 2026-03-20 → 2026-04-21 (+32d) |  | 216d → 194d |
| P2.L3.BR.2170 | Plumbing Fixtures / Sinks / Showers / L3 / North / Toilet 2867 | 2026-03-23 → 2026-04-22 (+30d) | 2026-03-24 → 2026-04-23 (+30d) |  | 224d → 202d |
| P2.L3.BR.2180 | Bathroom Accessories / L3 / North / Toilet 2867 | 2026-03-25 → 2026-04-24 (+30d) | 2026-03-26 → 2026-04-27 (+32d) |  | 224d → 202d |
| P2.L3.BR.2190 | Work Completion List - Finishes / L3 / North / Toilet 2867 | 2026-03-27 → 2026-04-28 (+32d) | 2026-04-02 → 2026-05-04 (+32d) |  | 224d → 202d |
| 2 | **Toilet 3-2933** |  | 2026-04-01 → 2026-05-01 (+30d) |  |  |
| P2.L3.BR.3020 | Plumbing - Test Pipe / L3 / North / Toilet 2933 | 2025-12-01 A | 2025-12-02 A | 0% → 100% | 174d → none |
| P2.L3.BR.3050 | Duct Drops _ Hard Lids / L3 / North / Toilet 2933 | 2025-12-03 A | 2025-12-04 A | 0% → 100% | 172d → none |
| P2.L3.BR.3070 | In Wall - Insulate Plumbing / L3 / North / Toilet 2933 | 2025-12-05 A | 2025-12-08 A | 0% → 100% | 172d → none |
| P2.L3.BR.3040 | Trim Sprinkler Drops _ Hard Lids / L3 / North / Toilet 2933 | 2025-12-01 → 2026-01-02 (+32d) | 2025-12-02 → 2026-01-05 (+34d) |  | 172d → 154d |
| P2.L3.BR.3030 | R/I - Electrical _ Hard Lids / L3 / North / Toilet 2933 | 2025-12-09 → 2026-01-06 (+28d) | 2025-12-10 → 2026-01-07 (+28d) |  | 172d → 154d |
| P2.L3.BR.3060 | R/I - Fire Alarm _ Hard Lids / L3 / North / Toilet 2933 | 2025-12-11 → 2026-01-08 (+28d) | 2025-12-12 → 2026-01-09 (+28d) |  | 172d → 154d |
| P2.L3.BR.3080 | Inspection - Close In - Walls and Hard Lid Ceilings / L3 / North / Toilet 2933 | 2025-12-15 → 2026-01-12 (+28d) | 2025-12-17 → 2026-01-14 (+28d) |  | 172d → 154d |
| P2.L3.BR.3090 | Hang-Tape-Finish _ Walls and Hard Lids Ceilings / L3 / North / Toilet 2933 | 2025-12-18 → 2026-01-15 (+28d) | 2025-12-24 → 2026-01-21 (+28d) |  | 172d → 154d |
| P2.L3.BR.3100 | Paint Prime & Final Coat _ Walls & Hard Lid Ceilings / L3 / North / Toilet 2933 | 2025-12-26 → 2026-01-22 (+27d) | 2025-12-29 → 2026-01-23 (+25d) |  | 172d → 154d |
| P2.L3.BR.3140 | Trim - HVAC G/R/D's / L3 / North / Toilet 2933 | 2025-12-30 → 2026-01-26 (+27d) | 2025-12-31 → 2026-01-27 (+27d) |  | 172d → 154d |
| P2.L3.BR.3120 | Pull Wire & Trim Devices - Electrical / L3 / North / Toilet 2933 | 2026-01-02 → 2026-01-28 (+26d) | 2026-01-05 → 2026-01-29 (+24d) |  | 172d → 154d |
| P2.L3.BR.3130 | Lights - Set & Terminate / L3 / North / Toilet 2933 | 2026-01-02 → 2026-01-28 (+26d) | 2026-01-05 → 2026-01-29 (+24d) |  | 174d → 156d |
| P2.L3.BR.3110 | Pull Wire & Trim Devices - Fire Alarm / L3 / North / Toilet 2933 | 2026-01-06 → 2026-01-30 (+24d) | 2026-01-07 → 2026-02-02 (+26d) |  | 172d → 154d |
| P2.L3.BR.3150 | Wall Tile / L3 / North / Toilet 2933 | 2026-01-08 → 2026-02-03 (+26d) | 2026-01-14 → 2026-02-09 (+26d) |  | 172d → 154d |
| P2.L3.BR.4200 | Flooring Prep - Epoxy Floors / L3 / North / Toilet 2933 | 2026-03-13 → 2026-04-14 (+32d) | 2026-03-13 → 2026-04-14 (+32d) |  | 131d → 109d |
| P2.L3.BR.4210 | Flooring - Epoxy Floors / L3 / North / Toilet 2933 | 2026-03-16 → 2026-04-15 (+30d) | 2026-03-17 → 2026-04-16 (+30d) |  | 217d → 195d |
| P2.L3.BR.3160 | Doors & Hardware / L3 / North / Toilet 2933 | 2026-03-18 → 2026-04-17 (+30d) | 2026-03-19 → 2026-04-20 (+32d) |  | 217d → 195d |
| P2.L3.BR.3170 | Plumbing Fixtures / Sinks / Showers / L3 / North / Toilet 2933 | 2026-03-20 → 2026-04-21 (+32d) | 2026-03-23 → 2026-04-22 (+30d) |  | 225d → 203d |
| P2.L3.BR.3180 | Bathroom Accessories / L3 / North / Toilet 2933 | 2026-03-24 → 2026-04-23 (+30d) | 2026-03-25 → 2026-04-24 (+30d) |  | 225d → 203d |
| P2.L3.BR.3190 | Work Completion List - Finishes / L3 / North / Toilet 2933 | 2026-03-26 → 2026-04-27 (+32d) | 2026-04-01 → 2026-05-01 (+30d) |  | 225d → 203d |
| 4 | **Toilets 3-2804 / 3-2806** |  | 2026-04-03 → 2026-05-05 (+32d) |  |  |
| P2.L3.BR.4050 | Duct Drops _ Hard Lids / L3 / North / Toilets 280X | 2025-12-04 A | 2025-12-05 A | 0% → 100% | 173d → none |
| P2.L3.BR.4070 | In Wall - Insulate Plumbing / L3 / North / Toilets 280X | 2025-12-08 A | 2025-12-09 A | 0% → 100% | 173d → none |
| P2.L3.BR.4010 | Framing & Blocking - Walls and Hard Lid Ceilings / L3 / North / Toilets 280X | 2025-12-01 → 2026-01-02 (+32d) | 2025-12-01 → 2026-01-02 (+32d) |  | 173d → 155d |
| P2.L3.BR.4040 | Trim Sprinkler Drops _ Hard Lids / L3 / North / Toilets 280X | 2025-12-02 → 2026-01-05 (+34d) | 2025-12-03 → 2026-01-06 (+34d) |  | 173d → 155d |
| P2.L3.BR.4030 | R/I - Electrical _ Hard Lids / L3 / North / Toilets 280X | 2025-12-10 → 2026-01-07 (+28d) | 2025-12-11 → 2026-01-08 (+28d) |  | 173d → 155d |
| P2.L3.BR.4060 | R/I - Fire Alarm _ Hard Lids / L3 / North / Toilets 280X | 2025-12-12 → 2026-01-09 (+28d) | 2025-12-15 → 2026-01-12 (+28d) |  | 173d → 155d |
| P2.L3.BR.4080 | Inspection - Close In - Walls and Hard Lid Ceilings / L3 / North / Toilets 280X | 2025-12-16 → 2026-01-13 (+28d) | 2025-12-18 → 2026-01-15 (+28d) |  | 173d → 155d |
| P2.L3.BR.4090 | Hang-Tape-Finish _ Walls and Hard Lids Ceilings / L3 / North / Toilets 280X | 2025-12-19 → 2026-01-16 (+28d) | 2025-12-26 → 2026-01-22 (+27d) |  | 173d → 155d |
| P2.L3.BR.4100 | Paint Prime & Final Coat _ Walls & Hard Lid Ceilings / L3 / North / Toilets 280X | 2025-12-29 → 2026-01-23 (+25d) | 2025-12-30 → 2026-01-26 (+27d) |  | 173d → 155d |
| P2.L3.BR.4140 | Trim - HVAC G/R/D's / L3 / North / Toilets 280X | 2025-12-31 → 2026-01-27 (+27d) | 2026-01-02 → 2026-01-28 (+26d) |  | 173d → 155d |
| P2.L3.BR.4120 | Pull Wire & Trim Devices - Electrical / L3 / North / Toilets 280X | 2026-01-05 → 2026-01-29 (+24d) | 2026-01-06 → 2026-01-30 (+24d) |  | 173d → 155d |
| P2.L3.BR.4130 | Lights - Set & Terminate / L3 / North / Toilets 280X | 2026-01-05 → 2026-01-29 (+24d) | 2026-01-06 → 2026-01-30 (+24d) |  | 175d → 157d |
| P2.L3.BR.4110 | Pull Wire & Trim Devices - Fire Alarm / L3 / North / Toilets 280X | 2026-01-07 → 2026-02-02 (+26d) | 2026-01-08 → 2026-02-03 (+26d) |  | 173d → 155d |
| P2.L3.BR.4150 | Wall Tile / L3 / North / Toilets 280X | 2026-01-09 → 2026-02-04 (+26d) | 2026-01-15 → 2026-02-10 (+26d) |  | 173d → 155d |
| P2.L3.BR.4220 | Flooring Prep - Epoxy Floors / L3 / North / Toilets 280X | 2026-03-17 → 2026-04-16 (+30d) | 2026-03-17 → 2026-04-16 (+30d) |  | 131d → 109d |
| P2.L3.BR.4230 | Flooring - Epoxy Floors / L3 / North / Toilets 280X | 2026-03-18 → 2026-04-17 (+30d) | 2026-03-19 → 2026-04-20 (+32d) |  | 215d → 193d |
| P2.L3.BR.4160 | Doors & Hardware / L3 / North / Toilets 280X | 2026-03-20 → 2026-04-21 (+32d) | 2026-03-23 → 2026-04-22 (+30d) |  | 215d → 193d |
| P2.L3.BR.4170 | Plumbing Fixtures / Sinks / Showers / L3 / North / Toilets 280X | 2026-03-24 → 2026-04-23 (+30d) | 2026-03-25 → 2026-04-24 (+30d) |  | 223d → 201d |
| P2.L3.BR.4180 | Bathroom Accessories / L3 / North / Toilets 280X | 2026-03-26 → 2026-04-27 (+32d) | 2026-03-27 → 2026-04-28 (+32d) |  | 223d → 201d |
| P2.L3.BR.4190 | Work Completion List - Finishes / L3 / North / Toilets 280X | 2026-03-30 → 2026-04-29 (+30d) | 2026-04-03 → 2026-05-05 (+32d) |  | 223d → 201d |
| 1 | **Corridors & Lobbies / Level 3** | 2026-04-16 → 2026-05-08 (+22d) | 2026-11-19 → 2026-12-15 (+26d) |  |  |

| ID | Task | Start | Finish | Complete | Total float | Predecessors |
| --- | --- | --- | --- | --- | --- | --- |
| P2.L3.CL.1000 | Paint Prime & 1st Coat Walls / L3 / Corr & Lobbies | 2026-04-16 → 2026-05-08 (+22d) | 2026-04-22 → 2026-05-14 (+22d) |  | 52d → 36d |  |
| P2.L3.CL.1010 | Framing - Hard Lid Ceilings / L3 / Corr & Lobbies | 2026-04-23 → 2026-05-15 (+22d) | 2026-05-06 → 2026-05-29 (+23d) |  | 52d → 36d |  |
| P2.L3.CL.1020 | T-Grid / L3 / Corr & Lobbies | 2026-04-23 → 2026-05-15 (+22d) | 2026-05-06 → 2026-05-29 (+23d) |  | 52d → 36d |  |
| P2.L3.CL.1040 | R/I - Trim Sprinkler Heads- All Ceilings / L3 / Corr & Lobbies | 2026-05-04 → 2026-05-27 (+23d) | 2026-05-08 → 2026-06-02 (+25d) |  | 52d → 36d |  |
| P2.L3.CL.1070 | Trim - Sprinkler Heads @ T-Grid / L3 / Corr & Lobbies | 2026-05-04 → 2026-05-27 (+23d) | 2026-05-08 → 2026-06-02 (+25d) |  | 135d → 119d |  |
| P2.L3.CL.1050 | R/I - HVAC- All Ceilings / L3 / Corr & Lobbies | 2026-05-11 → 2026-06-03 (+23d) | 2026-05-15 → 2026-06-09 (+25d) |  | 52d → 36d |  |
| P2.L3.CL.1030 | R/I - Electrical - All Ceilings / L3 / Corr & Lobbies | 2026-05-18 → 2026-06-10 (+23d) | 2026-05-22 → 2026-06-16 (+25d) |  | 52d → 36d |  |
| P2.L3.CL.1060 | R/I - All Remaining Low Voltage - All Ceilings / L3 / Corr & Lobbies | 2026-05-26 → 2026-06-17 (+22d) | 2026-06-01 → 2026-06-23 (+22d) |  | 52d → 36d |  |
| P2.L3.CL.1100 | Pull Wire - Electrical / L3 / Corr & Lobbies | 2026-05-26 → 2026-06-17 (+22d) | 2026-06-08 → 2026-06-30 (+22d) |  | 82d → 66d |  |
| P2.L3.CL.1080 | R/I - Fire Alarm/Life Safety - All Ceilings / L3 / Corr & Lobbies | 2026-06-02 → 2026-06-24 (+22d) | 2026-06-08 → 2026-06-30 (+22d) |  | 52d → 36d |  |
| P2.L3.CL.1090 | Inspections - Close In- All Ceilings / L3 / Corr & Lobbies | 2026-06-09 → 2026-07-01 (+22d) | 2026-06-15 → 2026-07-08 (+23d) |  | 52d → 36d |  |
| P2.L3.CL.1110 | Pull Wire - Fire Alarm / L3 / Corr & Lobbies | 2026-06-09 → 2026-07-01 (+22d) | 2026-06-15 → 2026-07-08 (+23d) |  | 87d → 71d |  |
| P2.L3.CL.1120 | Pull Wire - All Remianing Low Voltage Systems / L3 / Corr & Lobbies | 2026-06-16 → 2026-07-09 (+23d) | 2026-06-22 → 2026-07-15 (+23d) |  | 92d → 76d |  |
| P2.L3.CL.1130 | Hang/Tape/Finish- Hard Lid Ceilings / L3 / Corr & Lobbies | 2026-06-16 → 2026-07-09 (+23d) | 2026-06-29 → 2026-07-22 (+23d) |  | 52d → 36d |  |
| P2.L3.CL.1140 | Drop Ceiling Tiles @ T-Grid / L3 / Corr & Lobbies | 2026-06-23 → 2026-07-16 (+23d) | 2026-06-29 → 2026-07-22 (+23d) |  | 105d → 89d |  |
| P2.L3.CL.1190 | Paint - Hard Lid Ceilings / L3 / Corr & Lobbies | 2026-06-30 → 2026-07-23 (+23d) | 2026-07-07 → 2026-07-29 (+22d) |  | 52d → 36d |  |
| P2.L3.CL.1180 | Ceiling Mounted - HVAC GRD's / L3 / Corr & Lobbies | 2026-07-08 → 2026-07-30 (+22d) | 2026-07-28 → 2026-08-19 (+22d) |  | 52d → 36d |  |
| P2.L3.CL.1150 | Ceiling Mounted - Electrical Devices and Lights / L3 / Corr & Lobbies | 2026-07-22 → 2026-08-13 (+22d) | 2026-08-18 → 2026-09-10 (+23d) |  | 52d → 36d |  |
| P2.L3.CL.1160 | Ceiling Mounted - Fire Alarm/Life Saftey Devices / L3 / Corr & Lobbies | 2026-08-05 → 2026-08-27 (+22d) | 2026-08-25 → 2026-09-17 (+23d) |  | 52d → 36d |  |
| P2.L3.CL.1170 | Ceiling Mounted - All Low Voltage Devices / L3 / Corr & Lobbies | 2026-08-19 → 2026-09-11 (+23d) | 2026-09-09 → 2026-10-01 (+22d) |  | 52d → 36d |  |
| P2.L3.CL.1320 | Prep Flooring / L3 / Corr & Lobbies | 2026-09-10 → 2026-10-02 (+22d) | 2026-09-11 → 2026-10-05 (+24d) |  | 52d → 36d |  |
| P2.L3.CL.1200 | Flooring / L3 / Corr & Lobbies | 2026-09-14 → 2026-10-06 (+22d) | 2026-09-23 → 2026-10-15 (+22d) |  | 52d → 36d |  |
| P2.L3.CL.1210 | Final Paint / L3 / Corr & Lobbies | 2026-09-21 → 2026-10-13 (+22d) | 2026-09-25 → 2026-10-19 (+24d) |  | 62d → 46d |  |
| P2.L3.CL.1220 | Floor Base / L3 / Corr & Lobbies | 2026-09-28 → 2026-10-20 (+22d) | 2026-10-02 → 2026-10-26 (+24d) |  | 82d → 66d |  |
| P2.L3.CL.1250 | Trim - HVAC - Wall Mounted Devices / L3 / Corr & Lobbies | 2026-09-28 → 2026-10-20 (+22d) | 2026-10-02 → 2026-10-26 (+24d) |  | 62d → 46d |  |
| P2.L3.CL.1230 | Trim - All Electrical - Wall Mounted Devices / L3 / Corr & Lobbies | 2026-10-05 → 2026-10-27 (+22d) | 2026-10-09 → 2026-11-02 (+24d) |  | 62d → 46d |  |
| P2.L3.CL.1240 | Trim - Fire Alarm - Wall Mounted Devices / L3 / Corr & Lobbies | 2026-10-12 → 2026-11-03 (+22d) | 2026-10-16 → 2026-11-09 (+24d) |  | 62d → 46d |  |
| P2.L3.CL.1260 | Trim - All Remining Low Voltage Systems - Wall Mounted Devices / L3 / Corr & Lobbies | 2026-10-19 → 2026-11-10 (+22d) | 2026-10-23 → 2026-11-16 (+24d) |  | 62d → 46d |  |
| P2.L3.CL.1270 | Building Signage / L3 / Corr & Lobbies | 2026-10-26 → 2026-11-17 (+22d) | 2026-10-30 → 2026-11-23 (+24d) |  | 62d → 46d |  |
| P2.L3.CL.1280 | Work Completion List / L3 / Corr & Lobbies | 2026-11-02 → 2026-11-24 (+22d) | 2026-11-06 → 2026-12-02 (+26d) |  | 62d → 46d |  |
| P2.L3.CL.1290 | Rough Clean / L3 / Corr & Lobbies | 2026-11-09 → 2026-12-03 (+24d) | 2026-11-10 → 2026-12-04 (+24d) |  | 62d → 46d |  |
| P2.L3.CL.1300 | Punchlist / L3 / Corr & Lobbies | 2026-11-11 → 2026-12-07 (+26d) | 2026-11-17 → 2026-12-11 (+24d) |  | 62d → 46d |  |
| P2.L3.CL.1310 | Final Clean / L3 / Corr & Lobbies | 2026-11-18 → 2026-12-14 (+26d) | 2026-11-19 → 2026-12-15 (+26d) |  | 62d → 46d |  |
| L3F | **LAB & CLINICAL SPACES / LEVEL 3** |  | 2026-11-11 → 2026-10-22 (-20d) |  |  |  |
| 3 | **ROUGH IN - Lab & Clinical Spaces (Below Interstitials) / Level 3** |  | 2026-04-08 → 2026-04-17 (+9d) |  |  |  |
| P2.L3.LC.1120 | OH - Hang Duct - LP Branch / L3 / Lab & Clinical | 2025-12-01 A | 2025-12-29 A | 0% → 100% | 49d → none |  |
| P2.L3.LC.2480 | OH - Integrated Ceilings MEP Infrastructure (Trunkline, monotrack, Etc.) / L3 / Lab & Clinical | 2025-12-01 A | 2025-12-05 → 2025-12-31 A (+26d) | 0% → 100% | 216d → none |  |
| P2.L3.LC.1410 | Framing - Balance of Framing & Door Frames / L3 / Lab & Clinical | 2025-12-01 → 2025-12-22 A (+21d) | 2025-12-12 → 2026-01-15 (+34d) |  | 49d → 32d |  |
| P2.L3.LC.1130 | Spray/Seal/Firestop - Head of Wall / L3 / Lab & Clinical | 2026-03-19 → 2026-01-02 (-76d) | 2026-04-01 → 2026-01-15 (-76d) |  | 13d → 67d | P2.L3.LC.1180 → none |
| P2.L3.LC.1160 | Firestop - Thru Wall / L3 / Lab & Clinical | 2026-03-19 → 2026-01-02 (-76d) | 2026-04-01 → 2026-01-15 (-76d) |  | 13d → 67d | P2.L3.LC.1180, P2.L3.LC.1270 → P2.L3.LC.1270 |
| P2.L3.LC.1210 | OH - Electrical - Equip Tie In / L3 / Lab & Clinical | 2025-12-01 → 2026-01-02 (+32d) | 2025-12-12 → 2026-01-15 (+34d) |  | 69d → 47d |  |
| P2.L3.LC.1260 | OH - Insulate LP Duct / L3 / Lab & Clinical | 2025-12-30 → 2026-01-02 (+3d) | 2026-01-13 → 2026-01-15 (+2d) |  | 49d → 47d |  |
| P2.L3.LC.1470 | Pull Wire - Electrical - 480/277v Distribution / L3 / Lab & Clinical | 2025-12-01 → 2026-01-02 (+32d) | 2025-12-12 → 2026-01-15 (+34d) |  | 89d → 67d |  |
| P2.L3.LC.1490 | OH - Conduit - Low Volt - BAS/Controls / L3 / Lab & Clinical | 2025-12-01 → 2026-01-02 (+32d) | 2025-12-12 → 2026-01-15 (+34d) |  | 79d → 57d |  |
| P2.L3.LC.1520 | OH - Conduit - Low Volt - Security / L3 / Lab & Clinical | 2025-12-01 → 2026-01-02 (+32d) | 2025-12-12 → 2026-01-15 (+34d) |  | 79d → 57d |  |
| P2.L3.LC.1430 | Pull Wire - Low Volt - BAS/Controls / L3 / Lab & Clinical | 2026-03-19 → 2026-01-16 (-62d) | 2026-04-01 → 2026-01-29 (-62d) |  | 13d → 57d | P2.L3.LC.1180, P2.L3.LC.1490 → P2.L3.LC.1490 |
| P2.L3.LC.1460 | Pull Wire - Low Volt - Security / L3 / Lab & Clinical | 2026-03-19 → 2026-01-16 (-62d) | 2026-04-01 → 2026-01-29 (-62d) |  | 13d → 57d | P2.L3.LC.1180, P2.L3.LC.1520 → P2.L3.LC.1520 |
| P2.L3.LC.1500 | OH - Conduit - Low Volt - Fire Alarm / L3 / Lab & Clinical | 2026-01-14 → 2026-01-16 (+2d) | 2026-01-27 → 2026-01-29 (+2d) |  | 49d → 47d |  |
| P2.L3.LC.1510 | OH - Conduit - Low Volt - Telecom / L3 / Lab & Clinical | 2026-01-14 → 2026-01-16 (+2d) | 2026-01-27 → 2026-01-29 (+2d) |  | 49d → 47d |  |
| P2.L3.LC.1530 | OH - Conduit - Low Volt - Medical Services/Nurse Call (?) / L3 / Lab & Clinical | 2026-01-14 → 2026-01-16 (+2d) | 2026-01-27 → 2026-01-29 (+2d) |  | 49d → 47d |  |
| P2.L3.LC.1140 | In Wall - Electrical - Framing / L3 / Lab & Clinical | 2026-01-15 → 2026-01-30 (+15d) | 2026-01-28 → 2026-02-12 (+15d) |  | 28d → 27d |  |
| P2.L3.LC.1150 | In Wall - Backing/Blocking/Supports / L3 / Lab & Clinical | 2026-01-15 → 2026-01-30 (+15d) | 2026-01-28 → 2026-02-12 (+15d) |  | 28d → 162d |  |
| P2.L3.LC.1440 | Pull Wire - Low Volt - Fire Alarm / L3 / Lab & Clinical | 2026-03-19 → 2026-01-30 (-48d) | 2026-04-01 → 2026-02-12 (-48d) |  | 13d → 47d | P2.L3.LC.1180, P2.L3.LC.1500 → P2.L3.LC.1500 |
| P2.L3.LC.1450 | Pull Wire - Low Volt - Telecom / L3 / Lab & Clinical | 2026-03-19 → 2026-01-30 (-48d) | 2026-04-01 → 2026-02-12 (-48d) |  | 13d → 47d | P2.L3.LC.1180, P2.L3.LC.1510 → P2.L3.LC.1510 |
| P2.L3.LC.1480 | Pull Wire - Low Volt - Medical Services/Nurse Call (?) / L3 / Lab & Clinical | 2026-03-19 → 2026-01-30 (-48d) | 2026-04-01 → 2026-02-12 (-48d) |  | 13d → 47d | P2.L3.LC.1180, P2.L3.LC.1530 → P2.L3.LC.1530 |
| P2.L3.LC.1110 | In Wall - Plumbing - Framing / L3 / Lab & Clinical | 2026-01-29 → 2026-02-11 (+13d) | 2026-02-11 → 2026-02-24 (+13d) |  | 18d → 154d |  |
| P2.L3.LC.1420 | Pull Wire - Electrical - 208/120v Branch & Equip / L3 / Lab & Clinical | 2026-01-29 → 2026-02-13 (+15d) | 2026-02-25 → 2026-03-12 (+15d) |  | 38d → 27d |  |
| P2.L3.LC.1230 | OH - HVAC Piping - Equip Tie In / L3 / Lab & Clinical | 2026-01-28 → 2026-02-20 (+23d) | 2026-02-10 → 2026-03-05 (+23d) |  | 49d → 32d |  |
| P2.L3.LC.1550 | Trades Inspect & Verify R/I Work Completed to Specs / L3 / Lab & Clinical | 2026-04-02 → 2026-03-13 (-20d) | 2026-04-08 → 2026-03-19 (-20d) |  | 13d → 27d |  |
| P2.L3.LC.1170 | AHJ Inspections - Wall Close In / L3 / Lab & Clinical | 2026-02-19 → 2026-03-23 (+32d) | 2026-02-25 → 2026-03-27 (+30d) |  | 13d → 136d |  |
| P2.L3.LC.1180 | Hang-Tape-Finish - Walls and Hard Lid Ceilings / L3 / Lab & Clinical | 2026-02-26 → 2026-03-30 (+32d) | 2026-03-18 → 2026-04-17 (+30d) |  | 13d → 136d |  |
| 13 | **FINISHES - Lab & Clinical Spaces (Below Interstitials) / Level 3** | 2026-03-19 → 2026-03-20 (+1d) | 2026-11-11 → 2026-10-22 (-20d) |  |  |  |
| 2 | **ORs 2-6 / Minor Procedure Suites - Room Blocks 3-39.. & 3-29.. / Level 3** | 2026-03-19 → 2026-03-20 (+1d) | 2026-11-11 → 2026-10-22 (-20d) |  |  |  |
| P2.L3.F.LC.1000 | Paint - Walls / L3 / ORs 2-6 & Procedures | 2026-04-09 → 2026-03-20 (-20d) | 2026-04-15 → 2026-03-26 (-20d) |  | 60d → 74d |  |
| P2.L3.F.LC.1010 | R/I - Ceiling Assemblies & Supports - Med Equip / L3 / ORs 2-6 & Procedures | 2026-04-16 → 2026-03-27 (-20d) | 2026-04-22 → 2026-04-02 (-20d) |  | 60d → 74d |  |
| P2.L3.F.LC.1020 | Framing - Hard Lid Ceilings / L3 / ORs 2-6 & Procedures | 2026-04-23 → 2026-04-03 (-20d) | 2026-04-29 → 2026-04-09 (-20d) |  | 60d → 74d |  |
| P2.L3.F.LC.1030 | R/I - Lights & Devices - Hard Lids Ceilings / L3 / ORs 2-6 & Procedures | 2026-04-30 → 2026-04-10 (-20d) | 2026-05-13 → 2026-04-23 (-20d) |  | 60d → 74d |  |
| P2.L3.F.LC.1040 | R/I - Diffusers - Hard Lid Ceilings / L3 / ORs 2-6 & Procedures | 2026-04-30 → 2026-04-10 (-20d) | 2026-05-06 → 2026-04-16 (-20d) |  | 65d → 79d |  |
| P2.L3.F.LC.1050 | R/I - Sprinkler Heads - Hard Lid Ceilings / L3 / ORs 2-6 & Procedures | 2026-04-30 → 2026-04-10 (-20d) | 2026-05-06 → 2026-04-16 (-20d) |  | 65d → 79d |  |
| P2.L3.F.LC.1060 | R/I - Fire Alarm - Hard Lid Ceilings / L3 / ORs 2-6 & Procedures | 2026-04-30 → 2026-04-10 (-20d) | 2026-05-06 → 2026-04-16 (-20d) |  | 65d → 79d |  |

| ID | Task | Start | Finish | Total float |
| --- | --- | --- | --- | --- |
| P2.L3.F.LC.3460 | Casework (Before Flooring) / L3 / ORs 2-6 & Procedures | 2026-03-19 → 2026-04-20 (+32d) | 2026-03-19 → 2026-04-20 (+32d) | 174d → 152d |
| P2.L3.F.LC.3470 | Equipment (Before Flooring) / L3 / ORs 2-6 & Procedures | 2026-03-19 → 2026-04-20 (+32d) | 2026-03-23 → 2026-04-22 (+30d) | 177d → 155d |
| P2.L3.F.LC.1070 | OH Ceiling Inspection & Signoff - Hard Lid Ceilings / L3 / ORs 2-6 & Procedures | 2026-05-14 → 2026-04-24 (-20d) | 2026-05-20 → 2026-04-30 (-20d) | 60d → 74d |
| P2.L3.F.LC.1080 | Hang-Tape-Finish _Hard Lid Ceilings / L3 / ORs 2-6 & Procedures | 2026-05-21 → 2026-05-01 (-20d) | 2026-05-28 → 2026-05-07 (-21d) | 60d → 74d |
| P2.L3.F.LC.1090 | Paint Ceilings / L3 / ORs 2-6 & Procedures | 2026-05-29 → 2026-05-08 (-21d) | 2026-06-04 → 2026-05-14 (-21d) | 60d → 74d |
| P2.L3.F.LC.1100 | Waterproof Ceramic Tile / L3 / ORs 2-6 & Procedures | 2026-06-05 → 2026-05-15 (-21d) | 2026-06-11 → 2026-05-21 (-21d) | 60d → 74d |
| P2.L3.F.LC.1110 | Ceramic Tile / L3 / ORs 2-6 & Procedures | 2026-06-12 → 2026-05-22 (-21d) | 2026-06-18 → 2026-05-29 (-20d) | 60d → 74d |
| P2.L3.F.LC.1120 | T-Grid / L3 / ORs 2-6 & Procedures | 2026-06-19 → 2026-06-01 (-18d) | 2026-06-25 → 2026-06-05 (-20d) | 60d → 74d |
| P2.L3.F.LC.1130 | Diffusers in T-Grid / L3 / ORs 2-6 & Procedures | 2026-06-26 → 2026-06-08 (-18d) | 2026-07-02 → 2026-06-12 (-20d) | 60d → 74d |
| P2.L3.F.LC.1140 | Lights & Devices / L3 / ORs 2-6 & Procedures | 2026-06-26 → 2026-06-08 (-18d) | 2026-07-02 → 2026-06-12 (-20d) | 60d → 74d |
| P2.L3.F.LC.1150 | Sprinkler Heads / L3 / ORs 2-6 & Procedures | 2026-06-26 → 2026-06-08 (-18d) | 2026-07-02 → 2026-06-12 (-20d) | 60d → 74d |
| P2.L3.F.LC.1160 | Trim Low Voltage / L3 / ORs 2-6 & Procedures | 2026-06-26 → 2026-06-08 (-18d) | 2026-07-02 → 2026-06-12 (-20d) | 60d → 74d |
| P2.L3.F.LC.1170 | Trim Fire Alarm / L3 / ORs 2-6 & Procedures | 2026-06-26 → 2026-06-08 (-18d) | 2026-07-02 → 2026-06-12 (-20d) | 60d → 74d |
| P2.L3.F.LC.1180 | OH Ceiling Signoff / L3 / ORs 2-6 & Procedures | 2026-07-06 → 2026-06-15 (-21d) | 2026-07-17 → 2026-06-26 (-21d) | 60d → 74d |
| P2.L3.F.LC.1200 | Drop Ceiling Tile / L3 / ORs 2-6 & Procedures | 2026-07-20 → 2026-06-29 (-21d) | 2026-07-24 → 2026-07-06 (-18d) | 60d → 74d |
| P2.L3.F.LC.3400 | Floor Prep - Epoxy Floors / L3 / ORs 2-6 | 2026-07-20 → 2026-06-29 (-21d) | 2026-07-24 → 2026-07-06 (-18d) | 58d → 72d |
| P2.L3.F.LC.3410 | Flooring - Epoxy Floors / L3 / ORs 2-6 | 2026-07-27 → 2026-07-07 (-20d) | 2026-07-28 → 2026-07-08 (-20d) | 58d → 72d |
| P2.L3.F.LC.1190 | Casework (After Flooring) / L3 / ORs 2-6 & Procedures | 2026-07-29 → 2026-07-09 (-20d) | 2026-07-30 → 2026-07-10 (-20d) | 76d → 90d |
| P2.L3.F.LC.2400 | Integrated Ceilings Panel Install (Finishes) / L3 / Lab & Clinical | 2026-07-29 → 2026-07-09 (-20d) | 2026-08-18 → 2026-07-29 (-20d) | 58d → 72d |
| P2.L3.F.LC.1210 | Wall Protection / L3 / ORs 2-6 & Procedures | 2026-07-31 → 2026-07-13 (-18d) | 2026-08-06 → 2026-07-17 (-20d) | 76d → 90d |
| P2.L3.F.LC.1220 | Plumbing Fixtures & Drinking Fountains / L3 / ORs 2-6 & Procedures | 2026-07-31 → 2026-07-13 (-18d) | 2026-08-06 → 2026-07-17 (-20d) | 81d → 95d |
| P2.L3.F.LC.1260 | Doors & Hardware / L3 / ORs 2-6 & Procedures | 2026-07-31 → 2026-07-13 (-18d) | 2026-08-06 → 2026-07-17 (-20d) | 81d → 95d |
| P2.L3.F.LC.1230 | Trim T-Stats / L3 / ORs 2-6 & Procedures | 2026-08-19 → 2026-07-30 (-20d) | 2026-08-25 → 2026-08-05 (-20d) | 68d → 82d |
| P2.L3.F.LC.1240 | Trim Electrical / L3 / ORs 2-6 & Procedures | 2026-08-19 → 2026-07-30 (-20d) | 2026-08-25 → 2026-08-05 (-20d) | 68d → 82d |
| P2.L3.F.LC.1250 | Trim Telephone/ Data / L3 / ORs 2-6 & Procedures | 2026-08-19 → 2026-07-30 (-20d) | 2026-08-25 → 2026-08-05 (-20d) | 68d → 82d |
| P2.L3.F.LC.1270 | Trim Med Gas / L3 / ORs 2-6 & Procedures | 2026-08-19 → 2026-07-30 (-20d) | 2026-08-25 → 2026-08-05 (-20d) | 68d → 82d |
| P2.L3.F.LC.1280 | Floor Prep / L3 / Procedures | 2026-08-26 → 2026-08-06 (-20d) | 2026-09-01 → 2026-08-12 (-20d) | 68d → 82d |
| P2.L3.F.LC.1290 | Flooring / L3 / Procedures | 2026-09-02 → 2026-08-13 (-20d) | 2026-09-09 → 2026-08-19 (-21d) | 68d → 82d |
| P2.L3.F.LC.1300 | Building Specialities / L3 / ORs 2-6 & Procedures | 2026-09-10 → 2026-08-20 (-21d) | 2026-09-16 → 2026-08-26 (-21d) | 68d → 82d |
| P2.L3.F.LC.1310 | Interior Building Signage / L3 / ORs 2-6 & Procedures | 2026-09-10 → 2026-08-20 (-21d) | 2026-09-16 → 2026-08-26 (-21d) | 68d → 82d |
| P2.L3.F.LC.1320 | Work Completion List - Finishes / L3 / ORs 2-6 & Procedures | 2026-09-17 → 2026-08-27 (-21d) | 2026-09-23 → 2026-09-02 (-21d) | 68d → 82d |
| P2.L3.F.LC.1330 | Remaining Equipment Post Flooring / L3 / ORs 2-6 & Procedures | 2026-09-24 → 2026-09-03 (-21d) | 2026-09-30 → 2026-09-10 (-20d) | 68d → 82d |
| P2.L3.F.LC.1340 | Remaining MEP Hook-Ups / L3 / ORs 2-6 & Procedures | 2026-10-01 → 2026-09-11 (-20d) | 2026-10-07 → 2026-09-17 (-20d) | 68d → 82d |
| P2.L3.F.LC.1350 | OFOI Furniture & Equipment / L3 / ORs 2-6 & Procedures | 2026-10-01 → 2026-09-11 (-20d) | 2026-10-07 → 2026-09-17 (-20d) | 78d → 92d |
| P2.L3.F.LC.1360 | Rough Clean / L3 / ORs 2-6 & Procedures | 2026-10-08 → 2026-09-18 (-20d) | 2026-10-14 → 2026-09-24 (-20d) | 68d → 82d |
| P2.L3.F.LC.1370 | Prepare Punchlist / L3 / ORs 2-6 & Procedures | 2026-10-15 → 2026-09-25 (-20d) | 2026-10-21 → 2026-10-01 (-20d) | 68d → 82d |
| P2.L3.F.LC.1380 | Correct Punchlist / L3 / ORs 2-6 & Procedures | 2026-10-22 → 2026-10-02 (-20d) | 2026-11-04 → 2026-10-15 (-20d) | 68d → 82d |
| P2.L3.F.LC.1390 | Final Clean / L3 / ORs 2-6 & Procedures | 2026-11-05 → 2026-10-16 (-20d) | 2026-11-11 → 2026-10-22 (-20d) | 68d → 82d |
| 3 | **IR Procedure / Anesth Suites - Room Blocks 3-29.. / Level 3** | 2026-03-19 → 2026-03-20 (+1d) | 2026-11-05 → 2026-10-16 (-20d) |  |
| P2.L3.F.LC.2000 | Paint - Walls / L3 / IR Procedures | 2026-04-09 → 2026-03-20 (-20d) | 2026-04-15 → 2026-03-26 (-20d) | 58d → 72d |
| P2.L3.F.LC.2010 | R/I - Ceiling Assemblies & Supports - Med Equip / L3 / IR Procedures | 2026-04-16 → 2026-03-27 (-20d) | 2026-04-22 → 2026-04-02 (-20d) | 58d → 72d |
| P2.L3.F.LC.2020 | Framing - Hard Lid Ceilings / L3 / IR Procedures | 2026-04-23 → 2026-04-03 (-20d) | 2026-04-29 → 2026-04-09 (-20d) | 58d → 72d |
| P2.L3.F.LC.2030 | R/I - Lights & Devices - Hard Lids Ceilings / L3 / IR Procedures | 2026-04-30 → 2026-04-10 (-20d) | 2026-05-13 → 2026-04-23 (-20d) | 58d → 72d |
| P2.L3.F.LC.2040 | R/I - Diffusers - Hard Lid Ceilings / L3 / IR Procedures | 2026-04-30 → 2026-04-10 (-20d) | 2026-05-06 → 2026-04-16 (-20d) | 63d → 77d |
| P2.L3.F.LC.2050 | R/I - Sprinkler Heads - Hard Lid Ceilings / L3 / IR Procedures | 2026-04-30 → 2026-04-10 (-20d) | 2026-05-06 → 2026-04-16 (-20d) | 63d → 77d |
| P2.L3.F.LC.2060 | R/I - Fire Alarm - Hard Lid Ceilings / L3 / IR Procedures | 2026-04-30 → 2026-04-10 (-20d) | 2026-05-06 → 2026-04-16 (-20d) | 63d → 77d |
| P2.L3.F.LC.3480 | Equipment (Before Flooring) / L3 / IR Procedures | 2026-03-19 → 2026-04-20 (+32d) | 2026-03-19 → 2026-04-20 (+32d) | 179d → 157d |
| P2.L3.F.LC.2070 | OH Ceiling Inspection & Signoff - Hard Lid Ceilings / L3 / IR Procedures | 2026-05-14 → 2026-04-24 (-20d) | 2026-05-20 → 2026-04-30 (-20d) | 58d → 72d |
| P2.L3.F.LC.2080 | Hang-Tape-Finish _Hard Lid Ceilings / L3 / IR Procedures | 2026-05-21 → 2026-05-01 (-20d) | 2026-05-28 → 2026-05-07 (-21d) | 58d → 72d |
| P2.L3.F.LC.2090 | Paint Ceilings / L3 / IR Procedures | 2026-05-29 → 2026-05-08 (-21d) | 2026-06-04 → 2026-05-14 (-21d) | 58d → 72d |
| P2.L3.F.LC.2100 | Waterproof Ceramic Tile / L3 / IR Procedures | 2026-06-05 → 2026-05-15 (-21d) | 2026-06-11 → 2026-05-21 (-21d) | 58d → 72d |
| P2.L3.F.LC.2110 | Ceramic Tile / L3 / IR Procedures | 2026-06-12 → 2026-05-22 (-21d) | 2026-06-18 → 2026-05-29 (-20d) | 58d → 72d |
| P2.L3.F.LC.2120 | T-Grid / L3 / IR Procedures | 2026-06-19 → 2026-06-01 (-18d) | 2026-06-25 → 2026-06-05 (-20d) | 58d → 72d |
| P2.L3.F.LC.2130 | Diffusers in T-Grid / L3 / IR Procedures | 2026-06-26 → 2026-06-08 (-18d) | 2026-07-02 → 2026-06-12 (-20d) | 58d → 72d |
| P2.L3.F.LC.2140 | Lights & Devices / L3 / IR Procedures | 2026-06-26 → 2026-06-08 (-18d) | 2026-07-02 → 2026-06-12 (-20d) | 58d → 72d |
| P2.L3.F.LC.2150 | Sprinkler Heads / L3 / IR Procedures | 2026-06-26 → 2026-06-08 (-18d) | 2026-07-02 → 2026-06-12 (-20d) | 58d → 72d |
| P2.L3.F.LC.2160 | Trim Low Voltage / L3 / IR Procedures | 2026-06-26 → 2026-06-08 (-18d) | 2026-07-02 → 2026-06-12 (-20d) | 58d → 72d |
| P2.L3.F.LC.2170 | Trim Fire Alarm / L3 / IR Procedures | 2026-06-26 → 2026-06-08 (-18d) | 2026-07-02 → 2026-06-12 (-20d) | 58d → 72d |
| P2.L3.F.LC.2180 | OH Ceiling Signoff / L3 / IR Procedures | 2026-07-06 → 2026-06-15 (-21d) | 2026-07-17 → 2026-06-26 (-21d) | 58d → 72d |
| P2.L3.F.LC.2200 | Drop Ceiling Tile / L3 / IR Procedures | 2026-07-20 → 2026-06-29 (-21d) | 2026-07-24 → 2026-07-06 (-18d) | 75d → 89d |
| P2.L3.F.LC.2280 | Floor Prep - Epoxy Floors / L3 / IR Procedures | 2026-07-20 → 2026-06-29 (-21d) | 2026-07-24 → 2026-07-06 (-18d) | 72d → 86d |
| P2.L3.F.LC.2290 | Flooring - Epoxy Floors / L3 / IR Procedures | 2026-07-27 → 2026-07-07 (-20d) | 2026-07-28 → 2026-07-08 (-20d) | 72d → 86d |
| P2.L3.F.LC.2190 | Casework (After Flooring) / L3 / IR Procedures | 2026-07-29 → 2026-07-09 (-20d) | 2026-07-29 → 2026-07-09 (-20d) | 72d → 86d |
| P2.L3.F.LC.2210 | Wall Protection / L3 / IR Procedures | 2026-07-30 → 2026-07-10 (-20d) | 2026-08-05 → 2026-07-16 (-20d) | 77d → 91d |
| P2.L3.F.LC.2220 | Plumbing Fixtures & Drinking Fountains / L3 / IR Procedures | 2026-07-30 → 2026-07-10 (-20d) | 2026-08-05 → 2026-07-16 (-20d) | 82d → 96d |
| P2.L3.F.LC.2260 | Doors & Hardware / L3 / IR Procedures | 2026-07-30 → 2026-07-10 (-20d) | 2026-08-05 → 2026-07-16 (-20d) | 82d → 96d |
| P2.L3.F.LC.2520 | Integrated Ceilings Panel Install (Finishes) / L3 / IR Procedures | 2026-07-30 → 2026-07-10 (-20d) | 2026-08-12 → 2026-07-23 (-20d) | 72d → 86d |
| P2.L3.F.LC.2230 | Trim T-Stats / L3 / IR Procedures | 2026-08-13 → 2026-07-24 (-20d) | 2026-08-19 → 2026-07-30 (-20d) | 72d → 86d |
| P2.L3.F.LC.2240 | Trim Electrical / L3 / IR Procedures | 2026-08-13 → 2026-07-24 (-20d) | 2026-08-19 → 2026-07-30 (-20d) | 72d → 86d |
| P2.L3.F.LC.2250 | Trim Telephone/ Data / L3 / IR Procedures | 2026-08-13 → 2026-07-24 (-20d) | 2026-08-19 → 2026-07-30 (-20d) | 72d → 86d |

| ID | Task | Start | Finish | Complete | Total float |
| --- | --- | --- | --- | --- | --- |
| P2.L3.F.LC.2270 | Trim Med Gas / L3 / IR Procedures | 2026-08-13 → 2026-07-24 (-20d) | 2026-08-19 → 2026-07-30 (-20d) |  | 72d → 86d |
| P2.L3.F.LC.3420 | Floor Prep / L3 / IR Control, Storage & Anesth | 2026-08-20 → 2026-07-31 (-20d) | 2026-08-26 → 2026-08-06 (-20d) |  | 72d → 86d |
| P2.L3.F.LC.3430 | Flooring / L3 / IR Control, Storage & Anesth | 2026-08-27 → 2026-08-07 (-20d) | 2026-09-02 → 2026-08-13 (-20d) |  | 72d → 86d |
| P2.L3.F.LC.2300 | Building Specialities / L3 / IR Procedures | 2026-09-03 → 2026-08-14 (-20d) | 2026-09-10 → 2026-08-20 (-21d) |  | 72d → 86d |
| P2.L3.F.LC.2310 | Interior Building Signage / L3 / IR Procedures | 2026-09-03 → 2026-08-14 (-20d) | 2026-09-10 → 2026-08-20 (-21d) |  | 72d → 86d |
| P2.L3.F.LC.2320 | Work Completion List - Finishes / L3 / IR Procedures | 2026-09-11 → 2026-08-21 (-21d) | 2026-09-17 → 2026-08-27 (-21d) |  | 72d → 86d |
| P2.L3.F.LC.2330 | Remaining Equipment Post Flooring / L3 / IR Procedures | 2026-09-18 → 2026-08-28 (-21d) | 2026-09-24 → 2026-09-03 (-21d) |  | 72d → 86d |
| P2.L3.F.LC.2340 | Remaining MEP Hook-Ups / L3 / IR Procedures | 2026-09-25 → 2026-09-04 (-21d) | 2026-10-01 → 2026-09-11 (-20d) |  | 72d → 86d |
| P2.L3.F.LC.2350 | OFOI Furniture & Equipment / L3 / IR Procedures | 2026-09-25 → 2026-09-04 (-21d) | 2026-10-01 → 2026-09-11 (-20d) |  | 82d → 96d |
| P2.L3.F.LC.2360 | Rough Clean / L3 / IR Procedures | 2026-10-02 → 2026-09-14 (-18d) | 2026-10-08 → 2026-09-18 (-20d) |  | 72d → 86d |
| P2.L3.F.LC.2370 | Prepare Punchlist / L3 / IR Procedures | 2026-10-09 → 2026-09-21 (-18d) | 2026-10-15 → 2026-09-25 (-20d) |  | 72d → 86d |
| P2.L3.F.LC.2380 | Correct Punchlist / L3 / IR Procedures | 2026-10-16 → 2026-09-28 (-18d) | 2026-10-29 → 2026-10-09 (-20d) |  | 72d → 86d |
| P2.L3.F.LC.2390 | Final Clean / L3 / IR Procedures | 2026-10-30 → 2026-10-12 (-18d) | 2026-11-05 → 2026-10-16 (-20d) |  | 72d → 86d |
| 4 | **Hybrid OR / MRI Suites - Room Blocks 3-28.. / Level 3** | 2026-03-19 → 2026-03-20 (+1d) | 2026-10-29 → 2026-10-09 (-20d) |  |  |
| P2.L3.F.LC.3000 | Paint - Walls / L3 / Hybrid OR, MRI | 2026-04-09 → 2026-03-20 (-20d) | 2026-04-15 → 2026-03-26 (-20d) |  | 75d → 89d |
| P2.L3.F.LC.3010 | R/I - Ceiling Assemblies & Supports - Med Equip / L3 / Hybrid OR, MRI | 2026-04-16 → 2026-03-27 (-20d) | 2026-04-22 → 2026-04-02 (-20d) |  | 75d → 89d |
| P2.L3.F.LC.3020 | Framing - Hard Lid Ceilings / L3 / Hybrid OR, MRI | 2026-04-23 → 2026-04-03 (-20d) | 2026-04-29 → 2026-04-09 (-20d) |  | 75d → 89d |
| P2.L3.F.LC.3030 | R/I - Lights & Devices - Hard Lids Ceilings / L3 / Hybrid OR, MRI | 2026-04-30 → 2026-04-10 (-20d) | 2026-05-13 → 2026-04-23 (-20d) |  | 75d → 89d |
| P2.L3.F.LC.3040 | R/I - Diffusers - Hard Lid Ceilings / L3 / Hybrid OR, MRI | 2026-04-30 → 2026-04-10 (-20d) | 2026-05-06 → 2026-04-16 (-20d) |  | 80d → 94d |
| P2.L3.F.LC.3050 | R/I - Sprinkler Heads - Hard Lid Ceilings / L3 / Hybrid OR, MRI | 2026-04-30 → 2026-04-10 (-20d) | 2026-05-06 → 2026-04-16 (-20d) |  | 80d → 94d |
| P2.L3.F.LC.3060 | R/I - Fire Alarm - Hard Lid Ceilings / L3 / Hybrid OR, MRI | 2026-04-30 → 2026-04-10 (-20d) | 2026-05-06 → 2026-04-16 (-20d) |  | 80d → 94d |
| P2.L3.F.LC.3490 | Casework (Before Flooring) / L3 / Hybrid OR, MRI | 2026-03-19 → 2026-04-20 (+32d) | 2026-03-19 → 2026-04-20 (+32d) |  | 159d → 137d |
| P2.L3.F.LC.3500 | Equipment (Before Flooring) / L3 / Hybrid OR, MRI | 2026-03-19 → 2026-04-20 (+32d) | 2026-03-20 → 2026-04-21 (+32d) |  | 158d → 136d |
| P2.L3.F.LC.3070 | OH Ceiling Inspection & Signoff - Hard Lid Ceilings / L3 / Hybrid OR, MRI | 2026-05-14 → 2026-04-24 (-20d) | 2026-05-20 → 2026-04-30 (-20d) |  | 75d → 89d |
| P2.L3.F.LC.3080 | Hang-Tape-Finish _Hard Lid Ceilings / L3 / Hybrid OR, MRI | 2026-05-21 → 2026-05-01 (-20d) | 2026-05-28 → 2026-05-07 (-21d) |  | 75d → 89d |
| P2.L3.F.LC.3090 | Paint Ceilings / L3 / Hybrid OR, MRI | 2026-05-29 → 2026-05-08 (-21d) | 2026-06-04 → 2026-05-14 (-21d) |  | 75d → 89d |
| P2.L3.F.LC.3100 | Waterproof Ceramic Tile / L3 / Hybrid OR, MRI | 2026-06-05 → 2026-05-15 (-21d) | 2026-06-11 → 2026-05-21 (-21d) |  | 75d → 89d |
| P2.L3.F.LC.3110 | Ceramic Tile / L3 / Hybrid OR, MRI | 2026-06-12 → 2026-05-22 (-21d) | 2026-06-18 → 2026-05-29 (-20d) |  | 75d → 89d |
| P2.L3.F.LC.3120 | T-Grid / L3 / Hybrid OR, MRI | 2026-06-19 → 2026-06-01 (-18d) | 2026-06-25 → 2026-06-05 (-20d) |  | 75d → 89d |
| P2.L3.F.LC.3130 | Diffusers in T-Grid / L3 / Hybrid OR, MRI | 2026-06-26 → 2026-06-08 (-18d) | 2026-07-02 → 2026-06-12 (-20d) |  | 75d → 89d |
| P2.L3.F.LC.3140 | Lights & Devices / L3 / Hybrid OR, MRI | 2026-06-26 → 2026-06-08 (-18d) | 2026-07-02 → 2026-06-12 (-20d) |  | 75d → 89d |
| P2.L3.F.LC.3150 | Sprinkler Heads / L3 / Hybrid OR, MRI | 2026-06-26 → 2026-06-08 (-18d) | 2026-07-02 → 2026-06-12 (-20d) |  | 75d → 89d |
| P2.L3.F.LC.3160 | Trim Low Voltage / L3 / Hybrid OR, MRI | 2026-06-26 → 2026-06-08 (-18d) | 2026-07-02 → 2026-06-12 (-20d) |  | 75d → 89d |
| P2.L3.F.LC.3170 | Trim Fire Alarm / L3 / Hybrid OR, MRI | 2026-06-26 → 2026-06-08 (-18d) | 2026-07-02 → 2026-06-12 (-20d) |  | 75d → 89d |
| P2.L3.F.LC.3180 | OH Ceiling Signoff / L3 / Hybrid OR, MRI | 2026-07-06 → 2026-06-15 (-21d) | 2026-07-17 → 2026-06-26 (-21d) |  | 75d → 89d |
| P2.L3.F.LC.3200 | Drop Ceiling Tile / L3 / Hybrid OR, MRI | 2026-07-20 → 2026-06-29 (-21d) | 2026-07-24 → 2026-07-06 (-18d) |  | 78d → 92d |
| P2.L3.F.LC.3440 | Floor Prep - Epoxy Floors / L3 / Hybrid OR | 2026-07-20 → 2026-06-29 (-21d) | 2026-07-24 → 2026-07-06 (-18d) |  | 75d → 89d |
| P2.L3.F.LC.3450 | Flooring - Epoxy Floors / L3 / Hybrid OR | 2026-07-27 → 2026-07-07 (-20d) | 2026-07-28 → 2026-07-08 (-20d) |  | 75d → 89d |
| P2.L3.F.LC.3190 | Casework (After Flooring) / L3 / Hybrid OR, MRI | 2026-07-29 → 2026-07-09 (-20d) | 2026-07-29 → 2026-07-09 (-20d) |  | 75d → 89d |
| P2.L3.F.LC.2530 | Integrated Ceilings Panel Install (Finishes) / L3 / Hybrid OR, MRI | 2026-07-30 → 2026-07-10 (-20d) | 2026-08-19 → 2026-07-30 (-20d) |  | 75d → 89d |
| P2.L3.F.LC.3210 | Wall Protection / L3 / Hybrid OR, MRI | 2026-07-30 → 2026-07-10 (-20d) | 2026-08-05 → 2026-07-16 (-20d) |  | 85d → 99d |
| P2.L3.F.LC.3220 | Plumbing Fixtures & Drinking Fountains / L3 / Hybrid OR, MRI | 2026-07-30 → 2026-07-10 (-20d) | 2026-08-05 → 2026-07-16 (-20d) |  | 92d → 106d |
| P2.L3.F.LC.3260 | Doors & Hardware / L3 / Hybrid OR, MRI | 2026-07-30 → 2026-07-10 (-20d) | 2026-08-05 → 2026-07-16 (-20d) |  | 92d → 106d |
| P2.L3.F.LC.3230 | Trim T-Stats / L3 / Hybrid OR, MRI | 2026-08-20 → 2026-07-31 (-20d) | 2026-08-26 → 2026-08-06 (-20d) |  | 77d → 91d |
| P2.L3.F.LC.3240 | Trim Electrical / L3 / Hybrid OR, MRI | 2026-08-20 → 2026-07-31 (-20d) | 2026-08-26 → 2026-08-06 (-20d) |  | 77d → 91d |
| P2.L3.F.LC.3250 | Trim Telephone/ Data / L3 / Hybrid OR, MRI | 2026-08-20 → 2026-07-31 (-20d) | 2026-08-26 → 2026-08-06 (-20d) |  | 77d → 91d |
| P2.L3.F.LC.3270 | Trim Med Gas / L3 / Hybrid OR, MRI | 2026-08-20 → 2026-07-31 (-20d) | 2026-08-26 → 2026-08-06 (-20d) |  | 75d → 89d |
| P2.L3.F.LC.3280 | Floor Prep / L3 / MRI | 2026-08-27 → 2026-08-07 (-20d) | 2026-09-02 → 2026-08-13 (-20d) |  | 77d → 91d |
| P2.L3.F.LC.3290 | Flooring / L3 / MRI | 2026-09-03 → 2026-08-14 (-20d) | 2026-09-10 → 2026-08-20 (-21d) |  | 77d → 91d |
| P2.L3.F.LC.3300 | Building Specialities / L3 / Hybrid OR, MRI | 2026-09-11 → 2026-08-21 (-21d) | 2026-09-17 → 2026-08-27 (-21d) |  | 77d → 91d |
| P2.L3.F.LC.3310 | Interior Building Signage / L3 / Hybrid OR, MRI | 2026-09-11 → 2026-08-21 (-21d) | 2026-09-17 → 2026-08-27 (-21d) |  | 77d → 91d |
| P2.L3.F.LC.3330 | Remaining Equipment Post Flooring / L3 / Hybrid OR, MRI | 2026-09-11 → 2026-08-21 (-21d) | 2026-09-17 → 2026-08-27 (-21d) |  | 77d → 91d |
| P2.L3.F.LC.3320 | Work Completion List - Finishes / L3 / Hybrid OR, MRI | 2026-09-18 → 2026-08-28 (-21d) | 2026-09-24 → 2026-09-03 (-21d) |  | 77d → 91d |
| P2.L3.F.LC.3340 | Remaining MEP Hook-Ups / L3 / Hybrid OR, MRI | 2026-09-18 → 2026-08-28 (-21d) | 2026-09-24 → 2026-09-03 (-21d) |  | 77d → 91d |
| P2.L3.F.LC.3350 | OFOI Furniture & Equipment / L3 / Hybrid OR, MRI | 2026-09-18 → 2026-08-28 (-21d) | 2026-09-24 → 2026-09-03 (-21d) |  | 87d → 101d |
| P2.L3.F.LC.3360 | Rough Clean / L3 / Hybrid OR, MRI | 2026-09-25 → 2026-09-04 (-21d) | 2026-10-01 → 2026-09-11 (-20d) |  | 77d → 91d |
| P2.L3.F.LC.3370 | Prepare Punchlist / L3 / Hybrid OR, MRI | 2026-10-02 → 2026-09-14 (-18d) | 2026-10-08 → 2026-09-18 (-20d) |  | 77d → 91d |
| P2.L3.F.LC.3380 | Correct Punchlist / L3 / Hybrid OR, MRI | 2026-10-09 → 2026-09-21 (-18d) | 2026-10-22 → 2026-10-02 (-20d) |  | 77d → 91d |
| P2.L3.F.LC.3390 | Final Clean / L3 / Hybrid OR, MRI | 2026-10-23 → 2026-10-05 (-18d) | 2026-10-29 → 2026-10-09 (-20d) |  | 77d → 91d |
| 1 | **MECHANICAL TOWERS / LEVEL 3** |  | 2026-03-11 → 2026-04-10 (+30d) |  |  |
| 4 | **South Mechanical Tower / Rough In & Finish / Level 3** |  | 2026-03-11 → 2026-04-10 (+30d) |  |  |
| P2.L3.SMT.1150 | Insulate HVAC / Plumbing Pipe / L3 - S. Mech Tower | 2026-02-11 → 2025-12-01 A (-72d) | 2026-02-17 → 2025-12-05 A (-74d) | 0% → 100% | 54d → none |
| P2.L3.SMT.1180 | Paint - Finish Coat / L3 - S. Mech Tower | 2025-12-30 → 2025-12-01 A (-29d) | 2025-12-31 → 2025-12-02 A (-29d) | 0% → 100% | 29d → none |
| P2.L3.SMT.1140 | Pull Wire - In From Distribution Panels / Out to Branch Circuits / L3 - S. Mech Tower | 2025-12-15 A | 2025-12-19 A | 0% → 100% | 29d → none |
| P2.L3.SMT.1090 | Panelboards, Interconnect Wiring, and Remaining Room Buildout of All Elec/FA Systems / L3 - S. Mech Tower | 2025-12-01 → 2026-01-02 (+32d) | 2025-12-12 → 2026-01-15 (+34d) |  | 29d → 14d |
| P2.L3.SMT.1160 | Electrical Tie in to Equipment / L3 - S. Mech Tower | 2025-12-22 → 2026-01-16 (+25d) | 2025-12-29 → 2026-01-22 (+24d) |  | 222d → 205d |
| P2.L3.SMT.1170 | Test & Terminate / L3 - S. Mech Tower | 2025-12-22 → 2026-01-16 (+25d) | 2025-12-29 → 2026-01-22 (+24d) |  | 29d → 14d |
| P2.L3.SMT.1190 | Trim All MEPF Finishes / L3 - S. Mech Tower | 2026-01-02 → 2026-01-23 (+21d) | 2026-01-05 → 2026-01-26 (+21d) |  | 29d → 14d |
| P2.L3.SMT.1250 | Prep Flooring - Epoxy Floors / L3 - S. Mech Tower | 2026-01-06 → 2026-01-27 (+21d) | 2026-01-07 → 2026-01-28 (+21d) |  | 29d → 14d |
| P2.L3.SMT.1200 | Flooring - Epoxy Floors / L3 - S. Mech Tower | 2026-01-08 → 2026-01-29 (+21d) | 2026-01-09 → 2026-01-30 (+21d) |  | 29d → 14d |

| ID | Task | Start | Finish | Complete | Total float |
| --- | --- | --- | --- | --- | --- |
| P2.L3.SMT.1210 | Doors & Hardware / L3 - S. Mech Tower | 2026-01-12 → 2026-02-02 (+21d) | 2026-01-13 → 2026-02-03 (+21d) |  | 79d → 64d |
| P2.L3.SMT.1110 | HVAC Piping - Equip Tie In / L3 - S. Mech Tower | 2026-01-28 → 2026-02-20 (+23d) | 2026-02-10 → 2026-03-05 (+23d) |  | 54d → 42d |
| P2.L3.SMT.1340 | Wall Protection / L3 - S. Mech Tower | 2026-02-19 → 2026-03-23 (+32d) | 2026-02-25 → 2026-03-27 (+30d) |  | 48d → 26d |
| P2.L3.SMT.1220 | Trades Inspect & Verify R/I Work Completed to Specs / L3 - S. Mech Tower | 2026-02-26 → 2026-03-30 (+32d) | 2026-03-04 → 2026-04-03 (+30d) |  | 48d → 26d |
| P2.L3.SMT.1240 | Energize Elec Panels - Lock Doors and Limit Access / L3 - S. Mech Tower | 2026-03-05 → 2026-04-06 (+32d) | 2026-03-11 → 2026-04-10 (+30d) |  | 48d → 26d |
| P2.L3.SMT.1230 | HVAC System Ready for Start Up / L3 - S. Mech Tower | 2026-03-11 → 2026-04-10 (+30d) | 2026-03-11 → 2026-04-10 (+30d) |  | 171d → 149d |
| 8 | **East Mechanical Tower / Rough In & Finish / Level 3** |  | 2026-03-04 → 2026-04-03 (+30d) |  |  |
| P2.L3.EMT.1140 | Pull Wire - In From Distribution Panels / Out to Branch Circuits / L3 - E. Mech Tower |  | 2025-12-01 → 2026-01-02 (+32d) |  | 102d → 80d |
| P2.L3.EMT.1260 | Energize Elec Panels - Elevator Priority / L3 - E. Mech Tower | 2025-12-01 A | 2025-12-01 A | 0% → 100% | 246d → none |
| FRG.P2.L3.EMT.1010 | AHU Piping Install / L3 - E. Mech Tower - FRAGNET | 2025-12-01 → 2025-12-08 A (+7d) | 2025-12-19 → 2026-01-22 (+34d) |  | 39d → 17d |
| P2.L3.EMT.1105 | HVAC Duct Connections to Shaft Riser / L3 - E. Mech Tower | 2025-12-01 → 2026-01-02 (+32d) | 2025-12-05 → 2026-01-08 (+34d) |  | 222d → 200d |
| P2.L3.EMT.1160 | Electrical Tie in to Equipment / L3 - E. Mech Tower | 2025-12-02 → 2026-01-05 (+34d) | 2025-12-08 → 2026-01-09 (+32d) |  | 108d → 86d |
| P2.L3.EMT.1170 | Test & Terminate / L3 - E. Mech Tower | 2025-12-02 → 2026-01-05 (+34d) | 2025-12-08 → 2026-01-09 (+32d) |  | 102d → 80d |
| P2.L3.EMT.1130 | Test/Inspect Duct & Piping / L3 - E. Mech Tower | 2025-12-08 → 2026-01-09 (+32d) | 2025-12-12 → 2026-01-15 (+34d) |  | 222d → 200d |
| P2.L3.EMT.1180 | Paint - Finish Coat / L3 - E. Mech Tower | 2025-12-09 → 2026-01-12 (+34d) | 2025-12-10 → 2026-01-13 (+34d) |  | 102d → 80d |
| P2.L3.EMT.1190 | Trim All MEPF Finishes / L3 - E. Mech Tower | 2025-12-11 → 2026-01-14 (+34d) | 2025-12-12 → 2026-01-15 (+34d) |  | 102d → 80d |
| P2.L3.EMT.1210 | Doors & Hardware / L3 - E. Mech Tower | 2025-12-15 → 2026-01-16 (+32d) | 2025-12-16 → 2026-01-19 (+34d) |  | 102d → 80d |
| P2.L3.EMT.1250 | Flooring - Epoxy Floors / L3 - E. Mech Tower | 2025-12-15 → 2026-01-16 (+32d) | 2025-12-16 → 2026-01-19 (+34d) |  | 48d → 26d |
| P2.L3.EMT.1090 | Panelboards, Interconnect Wiring, and Remaining Room Buildout of All Elec/FA Systems / L3 - E. Mech Tower | 2025-12-17 → 2026-01-20 (+34d) | 2025-12-31 → 2026-02-02 (+33d) |  | 92d → 70d |
| P2.L3.EMT.1110 | HVAC Piping - Equip Tie In / L3 - E. Mech Tower | 2026-01-28 → 2026-02-20 (+23d) | 2026-02-10 → 2026-03-05 (+23d) |  | 182d → 165d |
| P2.L3.EMT.1240 | Energize Elec Panels - Lock Doors and Limit Access / L3 - E. Mech Tower | 2026-02-02 → 2026-02-27 (+25d) | 2026-02-06 → 2026-03-05 (+27d) |  | 71d → 52d |
| P2.L3.EMT.1150 | Insulate HVAC / Plumbing Pipe / L3 - E. Mech Tower | 2026-02-11 → 2026-03-06 (+23d) | 2026-02-17 → 2026-03-12 (+23d) |  | 182d → 165d |
| P2.L3.EMT.1340 | Wall Protection / L3 - E. Mech Tower | 2026-02-19 → 2026-03-23 (+32d) | 2026-02-25 → 2026-03-27 (+30d) |  | 176d → 154d |
| P2.L3.EMT.1220 | Trades Inspect & Verify R/I Work Completed to Specs / L3 - E. Mech Tower | 2026-02-26 → 2026-03-30 (+32d) | 2026-03-04 → 2026-04-03 (+30d) |  | 176d → 154d |
| P2.L3.EMT.1230 | HVAC System Ready for Start Up / L3 - E. Mech Tower | 2026-03-04 → 2026-04-03 (+30d) | 2026-03-04 → 2026-04-03 (+30d) |  | 176d → 154d |
| L4 | **L4 / BUILDOUT** |  | 2026-12-18 → 2027-01-21 (+34d) |  |  |
| L4 | **CORE & SUPPORT SPACES / LEVEL 4** |  | 2026-12-18 → 2027-01-21 (+34d) |  |  |
| 2 | **ROUGH IN - Core & Support Spaces / Level 4** |  | 2026-04-14 → 2026-05-15 (+31d) |  |  |
| Z112 | **South / Level 4** |  | 2026-04-14 → 2026-05-14 (+30d) |  |  |
| P2.L4.S.1300 | OH - Hang Duct - LP Branch / L4 / South |  | 2025-12-09 A | 65% → 100% | 60d → none |
| P2.L4.S.1430 | In Wall - Plumbing - Framing / L4 / South | 2025-12-01 A | 2025-12-12 A | 0% → 100% | 59d → none |
| P2.L4.S.1450 | In Wall - Backing/Blocking/Supports / L4 / South | 2025-12-01 A | 2025-12-12 A | 0% → 100% | 59d → none |
| P2.L4.S.1440 | In Wall - Electrical - Framing / L4 / South | 2025-12-01 → 2025-12-15 A (+14d) | 2025-12-12 → 2025-12-22 A (+10d) | 0% → 100% | 59d → none |
| P2.L4.S.1480 | Spray/Seal/Firestop - Head of Wall / L4 / South | 2025-12-01 → 2025-12-15 A (+14d) | 2025-12-12 → 2025-12-22 A (+10d) | 0% → 100% | 89d → none |
| P2.L4.S.1460 | AHJ Inspections - Wall Close In / L4 / South | 2025-12-15 → 2025-12-26 A (+11d) | 2025-12-19 → 2025-12-31 A (+12d) | 0% → 100% | 59d → none |
| P2.L4.S.1250 | Pull Wire - Electrical - 480/277v Distribution / L4 / South | 2025-12-01 → 2026-01-02 (+32d) | 2025-12-12 → 2026-01-15 (+34d) |  | 89d → 67d |
| P2.L4.S.1320 | OH - Electrical - Equip Tie In / L4 / South | 2025-12-01 → 2026-01-02 (+32d) | 2025-12-12 → 2026-01-15 (+34d) |  | 69d → 28d |
| P2.L4.S.1350 | OH - Insulate LP Duct / L4 / South | 2025-12-10 → 2026-01-02 (+23d) | 2025-12-23 → 2026-01-15 (+23d) |  | 60d → 47d |
| P2.L4.S.1400 | OH - Conduit - Low Volt - Security / L4 / South | 2025-12-01 → 2026-01-02 (+32d) | 2025-12-12 → 2026-01-15 (+34d) |  | 79d → 57d |
| P2.L4.S.1360 | Pull Wire - Electrical - 208/120v Branch & Equip / L4 / South | 2025-12-15 → 2026-01-16 (+32d) | 2026-01-13 → 2026-02-12 (+30d) |  | 69d → 28d |
| P2.L4.S.1410 | OH - Conduit - Low Volt - Medical Services/Nurse Call (?) / L4 / South | 2025-12-24 → 2026-01-16 (+23d) | 2026-01-08 → 2026-01-29 (+21d) |  | 62d → 47d |
| P2.L4.S.1330 | OH - HVAC Piping - Equip Tie In / L4 / South | 2026-01-28 → 2026-02-20 (+23d) | 2026-02-17 → 2026-03-12 (+23d) |  | 44d → 27d |
| P2.L4.S.1470 | Hang-Tape-Finish - Walls and Hard Lid Ceilings / L4 / South | 2026-03-04 → 2026-04-03 (+30d) | 2026-03-24 → 2026-04-23 (+30d) |  | 9d → -13d |
| P2.L4.S.1490 | Firestop - Thru Wall / L4 / South | 2026-03-25 → 2026-04-24 (+30d) | 2026-04-07 → 2026-05-07 (+30d) |  | 9d → -13d |
| P2.L4.S.1500 | Pull Wire - Low Volt - BAS/Controls / L4 / South | 2026-03-25 → 2026-04-24 (+30d) | 2026-04-07 → 2026-05-07 (+30d) |  | 9d → -13d |
| P2.L4.S.1510 | Pull Wire - Low Volt - Fire Alarm / L4 / South | 2026-03-25 → 2026-04-24 (+30d) | 2026-04-07 → 2026-05-07 (+30d) |  | 9d → -13d |
| P2.L4.S.1520 | Pull Wire - Low Volt - Telecom / L4 / South | 2026-03-25 → 2026-04-24 (+30d) | 2026-04-07 → 2026-05-07 (+30d) |  | 9d → -13d |
| P2.L4.S.1530 | Pull Wire - Low Volt - Security / L4 / South | 2026-03-25 → 2026-04-24 (+30d) | 2026-04-07 → 2026-05-07 (+30d) |  | 9d → -13d |
| P2.L4.S.1540 | Pull Wire - Low Volt - Medical Services/Nurse Call (?) / L4 / South | 2026-03-25 → 2026-04-24 (+30d) | 2026-04-07 → 2026-05-07 (+30d) |  | 9d → -13d |
| P2.L4.S.1550 | Trades Inspect & Verify R/I Work Completed to Specs / L4 / South | 2026-04-08 → 2026-05-08 (+30d) | 2026-04-14 → 2026-05-14 (+30d) |  | 9d → -13d |
| Z1111 | **North / Level 4** |  | 2026-04-14 → 2026-05-14 (+30d) |  |  |
| P2.L4.N.1340 | OH - Insulate HVAC Pipe / L4 / North |  | 2025-12-05 A | 50% → 100% | 74d → none |
| P2.L4.N.1300 | OH - Hang Duct - LP Branch / L4 / North |  | 2025-12-12 → 2026-01-15 (+34d) |  | 48d → 37d |
| P2.L4.N.1350 | OH - Insulate LP Duct / L4 / North |  | 2025-12-29 → 2026-01-29 (+31d) |  | 48d → 37d |
| P2.L4.N.1390 | OH - Conduit - Low Volt - Telecom / L4 / North |  | 2026-01-12 → 2025-12-15 A (-28d) | 10% → 100% | 48d → none |
| P2.L4.N.1240 | OH - Plumbing - Test / L4 / North | 2025-12-01 A | 2025-12-19 → 2025-12-15 A (-4d) | 0% → 100% | 64d → none |
| P2.L4.N.1280 | OH - Insulate Plumbing / L4 / North | 2025-12-22 → 2025-12-01 A (-21d) | 2026-01-06 → 2025-12-10 A (-27d) | 0% → 100% | 64d → none |
| P2.L4.N.1420 | Framing - Balance of Framing & Door Frames / L4 / North | 2025-12-01 → 2025-12-03 A (+2d) | 2025-12-12 → 2025-12-15 A (+3d) | 0% → 100% | 49d → none |
| P2.L4.N.1430 | In Wall - Plumbing - Framing / L4 / North | 2025-12-15 A | 2025-12-29 A | 0% → 100% | 49d → none |
| P2.L4.N.1440 | In Wall - Electrical - Framing / L4 / North | 2025-12-15 A | 2025-12-29 A | 0% → 100% | 49d → none |
| P2.L4.N.1450 | In Wall - Backing/Blocking/Supports / L4 / North | 2025-12-15 A | 2025-12-29 A | 0% → 100% | 49d → none |
| P2.L4.N.1250 | Pull Wire - Electrical - 480/277v Distribution / L4 / North | 2025-12-01 → 2026-01-02 (+32d) | 2025-12-12 → 2026-01-15 (+34d) |  | 89d → 67d |
| P2.L4.N.1320 | OH - Electrical - Equip Tie In / L4 / North | 2025-12-01 → 2026-01-02 (+32d) | 2025-12-12 → 2026-01-15 (+34d) |  | 69d → 28d |
| P2.L4.N.1370 | OH - Conduit - Low Volt - BAS/Controls / L4 / North | 2025-12-08 → 2026-01-02 (+25d) | 2025-12-19 → 2026-01-15 (+27d) |  | 74d → 57d |
| P2.L4.N.1400 | OH - Conduit - Low Volt - Security / L4 / North | 2025-12-08 → 2026-01-02 (+25d) | 2025-12-19 → 2026-01-15 (+27d) |  | 74d → 57d |
| P2.L4.N.1460 | AHJ Inspections - Wall Close In / L4 / North | 2025-12-30 → 2026-01-02 (+3d) | 2026-01-06 → 2026-01-08 (+2d) |  | 49d → 47d |
| P2.L4.N.1480 | Spray/Seal/Firestop - Head of Wall / L4 / North | 2025-12-01 → 2026-01-02 (+32d) | 2025-12-12 → 2026-01-15 (+34d) |  | 89d → 67d |
| P2.L4.N.1360 | Pull Wire - Electrical - 208/120v Branch & Equip / L4 / North | 2025-12-30 → 2026-01-16 (+17d) | 2026-01-27 → 2026-02-12 (+16d) |  | 59d → 28d |
| P2.L4.N.1410 | OH - Conduit - Low Volt - Medical Services/Nurse Call (?) / L4 / North | 2025-12-30 → 2026-01-30 (+31d) | 2026-01-13 → 2026-02-12 (+30d) |  | 59d → 37d |
| P2.L4.N.1330 | OH - HVAC Piping - Equip Tie In / L4 / North | 2026-01-28 → 2026-02-20 (+23d) | 2026-02-17 → 2026-03-12 (+23d) |  | 44d → 27d |

| ID | Task | Start | Finish | Complete | Total float | Predecessors |
| --- | --- | --- | --- | --- | --- | --- |
| P2.L4.N.1470 | Hang-Tape-Finish - Walls and Hard Lid Ceilings / L4 / North | 2026-03-04 → 2026-04-03 (+30d) | 2026-03-24 → 2026-04-23 (+30d) |  | 9d → -13d |  |
| P2.L4.N.1490 | Firestop - Thru Wall / L4 / North | 2026-03-25 → 2026-04-24 (+30d) | 2026-04-07 → 2026-05-07 (+30d) |  | 9d → -13d |  |
| P2.L4.N.1500 | Pull Wire - Low Volt - BAS/Controls / L4 / North | 2026-03-25 → 2026-04-24 (+30d) | 2026-04-07 → 2026-05-07 (+30d) |  | 9d → -13d |  |
| P2.L4.N.1510 | Pull Wire - Low Volt - Fire Alarm / L4 / North | 2026-03-25 → 2026-04-24 (+30d) | 2026-04-07 → 2026-05-07 (+30d) |  | 9d → -13d |  |
| P2.L4.N.1520 | Pull Wire - Low Volt - Telecom / L4 / North | 2026-03-25 → 2026-04-24 (+30d) | 2026-04-07 → 2026-05-07 (+30d) |  | 9d → -13d |  |
| P2.L4.N.1530 | Pull Wire - Low Volt - Security / L4 / North | 2026-03-25 → 2026-04-24 (+30d) | 2026-04-07 → 2026-05-07 (+30d) |  | 9d → -13d |  |
| P2.L4.N.1540 | Pull Wire - Low Volt - Medical Services/Nurse Call (?) / L4 / North | 2026-03-25 → 2026-04-24 (+30d) | 2026-04-07 → 2026-05-07 (+30d) |  | 9d → -13d |  |
| P2.L4.N.1550 | Trades Inspect & Verify R/I Work Completed to Specs / L4 / North | 2026-04-08 → 2026-05-08 (+30d) | 2026-04-14 → 2026-05-14 (+30d) |  | 9d → -13d |  |
| 1 | **House Electrical Rooms / Level 4** |  | 2026-01-02 → 2026-03-25 (+82d) |  |  |  |
| 9 | **House Electrical Room 4-3959** |  | 2026-01-02 → 2026-02-18 (+47d) |  |  |  |
| P2.4.HE.3959.1070 | Pull Wire - In From Distribution Panels / Out to Branch Circuits / L4 / South / 3959 |  |  |  |  | P2.4.HE.3959.1060 → P2.4.HE.3959.1060, P2.L4.INT.S.1270, P2.L4.S.1360 |
| P2.4.HE.3959.1080 | Panelboards, Interconnect Wiring, and Remaining Room Buildout of All Systems / L4 / South / 3959 | 2025-12-01 A | 2025-12-12 A | 0% → 100% | 26d → none |  |
| P2.4.HE.3959.1100 | Paint - Finish Coat / L4 / South / 3959 | 2025-12-22 → 2025-12-10 A (-12d) | 2025-12-23 → 2025-12-12 A (-11d) | 0% → 100% | 26d → none |  |
| P2.4.HE.3959.1090 | Test & Terminate / L4 / South / 3959 | 2025-12-15 A | 2025-12-19 A | 0% → 100% | 26d → none |  |
| P2.4.HE.3959.1130 | Doors & Hardware / L4 / South / 3959 | 2025-12-31 → 2025-12-18 A (-13d) | 2026-01-02 → 2025-12-24 A (-9d) | 0% → 100% | 26d → none |  |
| P2.4.HE.3959.1110 | Trim All MEPF Finishes / L4 / South / 3959 | 2025-12-24 → 2026-02-13 (+51d) | 2025-12-26 → 2026-02-16 (+52d) |  | 26d → 45d |  |
| P2.4.HE.3959.1120 | Flooring / L4 / South / 3959 | 2025-12-29 → 2026-02-17 (+50d) | 2025-12-30 → 2026-02-18 (+50d) |  | 26d → 45d |  |
| P2.4.HE.3959.1140 | Panels Ready to Energize - Lock Doors and Limit Access / L4 / South / 3959 | 2026-01-02 → 2026-02-18 (+47d) | 2026-01-02 → 2026-02-18 (+47d) |  | 26d → 45d |  |
| 8 | **House Electrical Room 4-2948** |  | 2026-01-02 → 2026-03-25 (+82d) |  |  |  |
| P2.4.HE.2948.1070 | Pull Wire - In From Distribution Panels / Out to Branch Circuits / L4 / North / 2948 |  |  |  |  | P2.4.HE.2948.1060 → P2.4.HE.2948.1060, P2.L4.N.1360, P2.L4.INT.N.1270 |
| P2.4.HE.2948.1080 | Panelboards, Interconnect Wiring, and Remaining Room Buildout of All Systems / L4 / North / 2948 | 2025-12-01 A | 2025-12-12 A | 0% → 100% | 26d → none |  |
| P2.4.HE.2948.1100 | Paint - Finish Coat / L4 / North / 2948 | 2025-12-22 → 2025-12-10 A (-12d) | 2025-12-23 → 2025-12-12 A (-11d) | 0% → 100% | 26d → none |  |
| P2.4.HE.2948.1090 | Test & Terminate / L4 / North / 2948 | 2025-12-15 A | 2025-12-19 A | 0% → 100% | 26d → none |  |
| P2.4.HE.2948.1130 | Doors & Hardware / L4 / North / 2948 | 2025-12-31 → 2025-12-18 A (-13d) | 2026-01-02 → 2025-12-24 A (-9d) | 0% → 100% | 26d → none |  |
| P2.4.HE.2948.1110 | Trim All MEPF Finishes / L4 / North / 2948 | 2025-12-24 → 2026-03-20 (+86d) | 2025-12-26 → 2026-03-23 (+87d) |  | 26d → 23d |  |
| P2.4.HE.2948.1120 | Flooring / L4 / North / 2948 | 2025-12-29 → 2026-03-24 (+85d) | 2025-12-30 → 2026-03-25 (+85d) |  | 26d → 23d |  |
| P2.4.HE.2948.1140 | Panels Ready to Energize - Lock Doors and Limit Access / L4 / North / 2948 | 2026-01-02 → 2026-03-25 (+82d) | 2026-01-02 → 2026-03-25 (+82d) |  | 26d → 23d |  |
| 7 | **House Electrical Room 4-2803** |  | 2026-01-02 → 2026-03-25 (+82d) |  |  |  |
| P2.4.HE.2803.1070 | Pull Wire - In From Distribution Panels / Out to Branch Circuits / L4 / North / 2803 |  |  |  |  | P2.4.HE.2803.1060 → P2.4.HE.2803.1060, P2.L4.INT.N.1270, P2.L4.N.1360 |
| P2.4.HE.2803.1080 | Panelboards, Interconnect Wiring, and Remaining Room Buildout of All Systems / L4 / North / 2803 | 2025-12-01 A | 2025-12-12 A | 0% → 100% | 26d → none |  |
| P2.4.HE.2803.1100 | Paint - Finish Coat / L4 / North / 2803 | 2025-12-22 → 2025-12-10 A (-12d) | 2025-12-23 → 2025-12-12 A (-11d) | 0% → 100% | 26d → none |  |
| P2.4.HE.2803.1090 | Test & Terminate / L4 / North / 2803 | 2025-12-15 A | 2025-12-19 A | 0% → 100% | 26d → none |  |
| P2.4.HE.2803.1130 | Doors & Hardware / L4 / North / 2803 | 2025-12-31 → 2025-12-18 A (-13d) | 2026-01-02 → 2025-12-24 A (-9d) | 0% → 100% | 26d → none |  |
| P2.4.HE.2803.1110 | Trim All MEPF Finishes / L4 / North / 2803 | 2025-12-24 → 2026-03-20 (+86d) | 2025-12-26 → 2026-03-23 (+87d) |  | 26d → 20d |  |
| P2.4.HE.2803.1120 | Flooring / L4 / North / 2803 | 2025-12-29 → 2026-03-24 (+85d) | 2025-12-30 → 2026-03-25 (+85d) |  | 26d → 20d |  |
| P2.4.HE.2803.1140 | Panels Ready to Energize - Lock Doors and Limit Access / L4 / North / 2803 | 2026-01-02 → 2026-03-25 (+82d) | 2026-01-02 → 2026-03-25 (+82d) |  | 26d → 20d |  |
| 6 | **House Electrical Room 4-5966** |  | 2026-01-02 → 2026-02-18 (+47d) |  |  |  |
| P2.4.HE.5966.1070 | Pull Wire - In From Distribution Panels / Out to Branch Circuits / L4 / South / 5966 |  |  |  |  | P2.4.HE.5966.1060 → P2.4.HE.5966.1060, P2.L4.INT.S.1270, P2.L4.S.1360 |
| P2.4.HE.5966.1080 | Panelboards, Interconnect Wiring, and Remaining Room Buildout of All Systems / L4 / South / 5966 | 2025-12-01 A | 2025-12-12 A | 0% → 100% | 26d → none |  |
| P2.4.HE.5966.1100 | Paint - Finish Coat / L4 / South / 5966 | 2025-12-22 → 2025-12-10 A (-12d) | 2025-12-23 → 2025-12-12 A (-11d) | 0% → 100% | 26d → none |  |
| P2.4.HE.5966.1090 | Test & Terminate / L4 / South / 5966 | 2025-12-15 A | 2025-12-19 A | 0% → 100% | 26d → none |  |
| P2.4.HE.5966.1130 | Doors & Hardware / L4 / South / 5966 | 2025-12-31 → 2025-12-18 A (-13d) | 2026-01-02 → 2025-12-24 A (-9d) | 0% → 100% | 26d → none |  |
| P2.4.HE.5966.1110 | Trim All MEPF Finishes / L4 / South / 5966 | 2025-12-24 → 2026-02-13 (+51d) | 2025-12-26 → 2026-02-16 (+52d) |  | 26d → 48d |  |
| P2.4.HE.5966.1120 | Flooring / L4 / South / 5966 | 2025-12-29 → 2026-02-17 (+50d) | 2025-12-30 → 2026-02-18 (+50d) |  | 26d → 48d |  |
| P2.4.HE.5966.1140 | Panels Ready to Energize - Lock Doors and Limit Access / L4 / South / 5966 | 2026-01-02 → 2026-02-18 (+47d) | 2026-01-02 → 2026-02-18 (+47d) |  | 26d → 48d |  |
| 2 | **L4 / IT CLOSETS** |  | 2026-03-05 → 2026-05-15 (+71d) |  |  |  |
| 1 | **IT Closet 4-3930** |  | 2026-03-05 → 2026-04-06 (+32d) |  |  |  |
| P2.4.IT.3930.150 | Flooring / L4 / South / 3930 | 2025-12-03 → 2025-11-17 A (-16d) | 2025-12-09 → 2025-11-21 A (-18d) | 0% → 100% | 73d → none |  |
| P2.4.IT.3930.230 | Doors & Hardware / L4 / South / 3930 | 2026-02-13 → 2025-12-18 A (-57d) | 2026-02-16 → 2025-12-24 A (-54d) | 0% → 100% | 47d → none |  |
| P2.4.IT.3930.140 | Trim all MEPF / L4 / South / 3930 | 2025-12-01 → 2026-02-13 (+74d) | 2025-12-02 → 2026-02-16 (+76d) |  | 73d → 28d |  |
| P2.4.IT.3930.170 | OH Cable Tray / L4 / South / 3930 | 2026-01-14 → 2026-02-13 (+30d) | 2026-01-20 → 2026-02-19 (+30d) |  | 47d → 27d |  |
| P2.4.IT.3930.180 | Grounding and Bonding / L4 / South / 3930 | 2025-12-10 → 2026-02-17 (+69d) | 2025-12-11 → 2026-02-18 (+69d) |  | 73d → 28d |  |
| P2.4.IT.3930.350 | Room Ready - CIT / L4 / South / 3930 | 2026-01-21 → 2026-02-20 (+30d) | 2026-01-27 → 2026-02-26 (+30d) |  | 47d → 27d |  |
| P2.4.IT.3930.160 | Equipment Racks and Ladders / L4 / South / 3930 | 2026-01-28 → 2026-02-27 (+30d) | 2026-02-03 → 2026-03-05 (+30d) |  | 47d → 27d |  |
| P2.4.IT.3930.190 | Pull Wire - Backbone Cabling Into Racks / L4 / South / 3930 | 2026-02-04 → 2026-03-06 (+30d) | 2026-02-10 → 2026-03-12 (+30d) |  | 47d → 27d |  |
| P2.4.IT.3930.200 | Pull Wire - Horizontal Cabling Out to Termination Points / L4 / South / 3930 | 2026-02-04 → 2026-03-06 (+30d) | 2026-02-10 → 2026-03-12 (+30d) |  | 47d → 27d |  |
| P2.4.IT.3930.210 | Paint - Finish Coat / L4 / South / 3930 | 2026-02-11 → 2026-03-13 (+30d) | 2026-02-12 → 2026-03-16 (+32d) |  | 47d → 27d |  |
| P2.4.IT.3930.220 | Terminations and Punch Downs - All Cabling / L4 / South / 3930 | 2026-02-13 → 2026-03-17 (+32d) | 2026-03-05 → 2026-04-06 (+32d) |  | 167d → 145d |  |
| P2.4.IT.3930.240 | Energize Elec Panels Serving Comms Racks / L4 / South / 3930 | 2026-02-17 → 2026-03-17 (+28d) | 2026-02-19 → 2026-03-19 (+28d) |  | 47d → 27d |  |
| P2.4.IT.3930.250 | Comms Racks In Service / L4 / South / 3930 | 2026-03-05 → 2026-04-06 (+32d) | 2026-03-05 → 2026-04-06 (+32d) |  | 167d → 145d |  |
| 2 | **IT Closet 4-2818** |  | 2026-03-05 → 2026-05-08 (+64d) |  |  |  |
| P2.4.IT.2818.150 | Flooring / L4 / North / 2818 | 2025-12-10 → 2025-11-17 A (-23d) | 2025-12-16 → 2025-11-21 A (-25d) | 0% → 100% | 68d → none |  |
| P2.4.IT.2818.120 | Electrical Panels / Conduit Connections / Wire Terminations / L4 / North / 2818 | 2025-12-01 A | 2025-12-05 A | 0% → 100% | 68d → none |  |
| P2.4.IT.2818.230 | Doors & Hardware / L4 / North / 2818 | 2026-02-13 → 2025-12-18 A (-57d) | 2026-02-16 → 2025-12-24 A (-54d) | 0% → 100% | 47d → none |  |
| P2.4.IT.2818.170 | OH Cable Tray / L4 / North / 2818 | 2026-01-14 → 2026-02-13 (+30d) | 2026-01-20 → 2026-02-19 (+30d) |  | 47d → 27d |  |
| P2.4.IT.2818.140 | Trim all MEPF / L4 / North / 2818 | 2025-12-08 → 2026-03-20 (+102d) | 2025-12-09 → 2026-03-23 (+104d) |  | 68d → 3d |  |
| P2.4.IT.2818.180 | Grounding and Bonding / L4 / North / 2818 | 2025-12-17 → 2026-03-24 (+97d) | 2025-12-18 → 2026-03-25 (+97d) |  | 68d → 3d |  |
| P2.4.IT.2818.360 | Room Ready - CIT / L4 / North / 2818 | 2026-01-21 → 2026-03-26 (+64d) | 2026-01-27 → 2026-04-01 (+64d) |  | 47d → 3d |  |
| P2.4.IT.2818.160 | Equipment Racks and Ladders / L4 / North / 2818 | 2026-01-28 → 2026-04-02 (+64d) | 2026-02-03 → 2026-04-08 (+64d) |  | 47d → 3d |  |
| P2.4.IT.2818.190 | Pull Wire - Backbone Cabling Into Racks / L4 / North / 2818 | 2026-02-04 → 2026-04-09 (+64d) | 2026-02-10 → 2026-04-15 (+64d) |  | 47d → 3d |  |

| ID | Task | Start | Finish | Total float |
| --- | --- | --- | --- | --- |
| P2.4.IT.2818.200 | Pull Wire - Horizontal Cabling Out to Termination Points / L4 / North / 2818 | 2026-02-04 → 2026-04-09 (+64d) | 2026-02-10 → 2026-04-15 (+64d) | 47d → 3d |
| P2.4.IT.2818.210 | Paint - Finish Coat / L4 / North / 2818 | 2026-02-11 → 2026-04-16 (+64d) | 2026-02-12 → 2026-04-17 (+64d) | 47d → 3d |
| P2.4.IT.2818.220 | Terminations and Punch Downs - All Cabling / L4 / North / 2818 | 2026-02-13 → 2026-04-20 (+66d) | 2026-03-05 → 2026-05-08 (+64d) | 167d → 121d |
| P2.4.IT.2818.240 | Energize Elec Panels Serving Comms Racks / L4 / North / 2818 | 2026-02-17 → 2026-04-20 (+62d) | 2026-02-19 → 2026-04-22 (+62d) | 47d → 3d |
| P2.4.IT.2818.250 | Comms Racks In Service / L4 / North / 2818 | 2026-03-05 → 2026-05-08 (+64d) | 2026-03-05 → 2026-05-08 (+64d) | 167d → 121d |
| 3 | **IT Closet 4-3875** |  | 2026-03-05 → 2026-05-15 (+71d) |  |
| P2.4.IT.3875.100 | Hang Plywood Backboards / L4 / South / 3875 | 2025-12-01 → 2026-01-02 (+32d) | 2025-12-02 → 2026-01-05 (+34d) | 184d → 162d |
| P2.4.IT.3875.110 | Paint Prime & 1st Coat / L4 / South / 3875 | 2025-12-03 → 2026-01-06 (+34d) | 2025-12-04 → 2026-01-07 (+34d) | 184d → 162d |
| P2.4.IT.3875.130 | HVAC Equipment / L4 / South / 3875 | 2025-12-05 → 2026-01-08 (+34d) | 2025-12-11 → 2026-01-14 (+34d) | 184d → 162d |
| P2.4.IT.3875.120 | Electrical Panels / Conduit Connections / Wire Terminations / L4 / South / 3875 | 2025-12-05 → 2026-03-13 (+98d) | 2025-12-11 → 2026-03-19 (+98d) | 184d → 116d |
| P2.4.IT.3875.140 | Trim all MEPF / L4 / South / 3875 | 2025-12-12 → 2026-03-20 (+98d) | 2025-12-15 → 2026-03-23 (+98d) | 184d → 116d |
| P2.4.IT.3875.170 | OH Cable Tray / L4 / South / 3875 | 2026-01-14 → 2026-03-20 (+65d) | 2026-01-20 → 2026-03-26 (+65d) | 167d → 120d |
| P2.4.IT.3875.150 | Flooring / L4 / South / 3875 | 2025-12-16 → 2026-03-24 (+98d) | 2025-12-22 → 2026-03-30 (+98d) | 184d → 116d |
| P2.4.IT.3875.180 | Grounding and Bonding / L4 / South / 3875 | 2025-12-23 → 2026-03-31 (+98d) | 2025-12-24 → 2026-04-01 (+98d) | 184d → 116d |
| P2.4.IT.3875.370 | Room Ready - CIT / L4 / South / 3875 | 2026-01-21 → 2026-04-02 (+71d) | 2026-01-27 → 2026-04-08 (+71d) | 167d → 116d |
| P2.4.IT.3875.160 | Equipment Racks and Ladders / L4 / South / 3875 | 2026-01-28 → 2026-04-09 (+71d) | 2026-02-03 → 2026-04-15 (+71d) | 167d → 116d |
| P2.4.IT.3875.190 | Pull Wire - Backbone Cabling Into Racks / L4 / South / 3875 | 2026-02-04 → 2026-04-16 (+71d) | 2026-02-10 → 2026-04-22 (+71d) | 167d → 116d |
| P2.4.IT.3875.200 | Pull Wire - Horizontal Cabling Out to Termination Points / L4 / South / 3875 | 2026-02-04 → 2026-04-16 (+71d) | 2026-02-10 → 2026-04-22 (+71d) | 167d → 116d |
| P2.4.IT.3875.210 | Paint - Finish Coat / L4 / South / 3875 | 2026-02-11 → 2026-04-23 (+71d) | 2026-02-12 → 2026-04-24 (+71d) | 167d → 116d |
| P2.4.IT.3875.220 | Terminations and Punch Downs - All Cabling / L4 / South / 3875 | 2026-02-13 → 2026-04-27 (+73d) | 2026-03-05 → 2026-05-15 (+71d) | 167d → 116d |
| P2.4.IT.3875.230 | Doors & Hardware / L4 / South / 3875 | 2026-02-13 → 2026-04-27 (+73d) | 2026-02-16 → 2026-04-28 (+71d) | 177d → 126d |
| P2.4.IT.3875.240 | Energize Elec Panels Serving Comms Racks / L4 / South / 3875 | 2026-02-17 → 2026-04-29 (+71d) | 2026-02-19 → 2026-05-01 (+71d) | 177d → 126d |
| P2.4.IT.3875.250 | Comms Racks In Service / L4 / South / 3875 | 2026-03-05 → 2026-05-15 (+71d) | 2026-03-05 → 2026-05-15 (+71d) | 167d → 116d |
| 6 | **FINISHES - Core & Support Spaces / Level 4** |  | 2026-12-18 → 2027-01-21 (+34d) |  |
| 7KSF1 | **Office Spaces - Z1 (2,429 sf) / Level 4** | 2026-04-15 → 2026-05-15 (+30d) | 2026-10-23 → 2026-11-24 (+32d) |  |
| 1 | **Finishes** | 2026-04-15 → 2026-05-15 (+30d) | 2026-10-23 → 2026-11-24 (+32d) |  |
| P2.L4.F.CS.1000 | Paint Prime & 1st Coat Walls / L4 / South / Z1 | 2026-04-15 → 2026-05-15 (+30d) | 2026-04-21 → 2026-05-21 (+30d) | 43d → 21d |
| P2.L4.F.CS.1020 | R/I - Ceiling Assemblies & Supports - All Trades (A/V, Oper Part, Glass Part, etc.) / L4 / South / Z1 | 2026-04-22 → 2026-05-22 (+30d) | 2026-04-28 → 2026-05-29 (+31d) | 81d → 59d |
| P2.L4.F.CS.1010 | T-Grid / L4 / South / Z1 | 2026-04-29 → 2026-06-01 (+33d) | 2026-05-05 → 2026-06-05 (+31d) | 81d → 59d |
| P2.L4.F.CS.1050 | Sprinkler Heads in T-Grid / L4 / South / Z1 | 2026-05-06 → 2026-06-08 (+33d) | 2026-05-12 → 2026-06-12 (+31d) | 81d → 59d |
| P2.L4.F.CS.1030 | Diffusers in T-Grid / L4 / South / Z1 | 2026-05-13 → 2026-06-15 (+33d) | 2026-05-19 → 2026-06-19 (+31d) | 81d → 59d |
| P2.L4.F.CS.1040 | Lights & Elec Devices in T-Grid / L4 / South / Z1 | 2026-05-20 → 2026-06-22 (+33d) | 2026-06-03 → 2026-07-06 (+33d) | 81d → 59d |
| P2.L4.F.CS.1070 | Fire Alarm in T-Grid / L4 / South / Z1 | 2026-06-04 → 2026-07-07 (+33d) | 2026-06-10 → 2026-07-13 (+33d) | 81d → 59d |
| P2.L4.F.CS.1060 | Low Voltage in T-Grid / L4 / South / Z1 | 2026-06-11 → 2026-07-14 (+33d) | 2026-06-17 → 2026-07-20 (+33d) | 81d → 59d |
| P2.L4.F.CS.1080 | OH Ceiling Signoff / L4 / South / Z1 | 2026-06-18 → 2026-07-21 (+33d) | 2026-06-24 → 2026-07-27 (+33d) | 81d → 59d |
| P2.L4.F.CS.1090 | Millwork / L4 / South / Z1 | 2026-06-25 → 2026-07-28 (+33d) | 2026-07-01 → 2026-08-03 (+33d) | 81d → 59d |
| P2.L4.F.CS.1100 | Plumbing Fixtures / L4 / South / Z1 | 2026-06-25 → 2026-07-28 (+33d) | 2026-07-01 → 2026-08-03 (+33d) | 81d → 59d |
| P2.L4.F.CS.1110 | Drop Ceiling Tile / L4 / South / Z1 | 2026-07-02 → 2026-08-04 (+33d) | 2026-07-09 → 2026-08-10 (+32d) | 81d → 59d |
| P2.L4.F.CS.1120 | Floor Prep / L4 / South / Z1 | 2026-07-10 → 2026-08-11 (+32d) | 2026-07-16 → 2026-08-17 (+32d) | 81d → 59d |
| P2.L4.F.CS.1130 | Floor Finishes / L4 / South / Z1 | 2026-07-17 → 2026-08-18 (+32d) | 2026-07-23 → 2026-08-24 (+32d) | 81d → 59d |
| P2.L4.F.CS.1140 | Doors & Hardware / L4 / South / Z1 | 2026-07-24 → 2026-08-25 (+32d) | 2026-07-30 → 2026-08-31 (+32d) | 81d → 59d |
| P2.L4.F.CS.1150 | Paint - Finish Coat / L4 / South / Z1 | 2026-07-31 → 2026-09-01 (+32d) | 2026-08-06 → 2026-09-08 (+33d) | 81d → 59d |
| P2.L4.F.CS.1180 | Building Specialities / L4 / South / Z1 | 2026-08-07 → 2026-09-09 (+33d) | 2026-08-13 → 2026-09-15 (+33d) | 81d → 59d |
| P2.L4.F.CS.1200 | Floor Base / L4 / South / Z1 | 2026-08-07 → 2026-09-09 (+33d) | 2026-08-13 → 2026-09-15 (+33d) | 86d → 64d |
| P2.L4.F.CS.1190 | Interior Building Signage / L4 / South / Z1 | 2026-08-14 → 2026-09-16 (+33d) | 2026-08-20 → 2026-09-22 (+33d) | 81d → 59d |
| P2.L4.F.CS.1210 | Demountable Partitions / L4 / South / Z1 | 2026-08-14 → 2026-09-16 (+33d) | 2026-08-20 → 2026-09-22 (+33d) | 86d → 64d |
| P2.L4.F.CS.1170 | Trim T-Stats / L4 / South / Z1 | 2026-08-21 → 2026-09-23 (+33d) | 2026-08-27 → 2026-09-29 (+33d) | 81d → 59d |
| P2.L4.F.CS.1220 | Trim Electrical / L4 / South / Z1 | 2026-08-21 → 2026-09-23 (+33d) | 2026-08-27 → 2026-09-29 (+33d) | 86d → 64d |
| P2.L4.F.CS.1160 | Set AV/IT Devices and Configure / L4 / South / Z1 | 2026-08-28 → 2026-09-30 (+33d) | 2026-09-03 → 2026-10-06 (+33d) | 81d → 59d |
| P2.L4.F.CS.1230 | Trim Telephone/ Data / L4 / South / Z1 | 2026-08-28 → 2026-09-30 (+33d) | 2026-09-03 → 2026-10-06 (+33d) | 81d → 59d |
| P2.L4.F.CS.1240 | Work Completion List - Finishes / L4 / South / Z1 | 2026-09-04 → 2026-10-07 (+33d) | 2026-09-11 → 2026-10-13 (+32d) | 81d → 59d |
| P2.L4.F.CS.1250 | Rough Clean / L4 / South / Z1 | 2026-09-14 → 2026-10-14 (+30d) | 2026-09-18 → 2026-10-20 (+32d) | 81d → 59d |
| P2.L4.F.CS.1260 | FF&E / L4 / South / Z1 | 2026-09-21 → 2026-10-21 (+30d) | 2026-09-25 → 2026-10-27 (+32d) | 81d → 59d |
| P2.L4.F.CS.1270 | Prepare Punchlist / L4 / South / Z1 | 2026-09-28 → 2026-10-28 (+30d) | 2026-10-02 → 2026-11-03 (+32d) | 81d → 59d |
| P2.L4.F.CS.1280 | Correct Punchlist / L4 / South / Z1 | 2026-10-05 → 2026-11-04 (+30d) | 2026-10-16 → 2026-11-17 (+32d) | 81d → 59d |
| P2.L4.F.CS.1290 | Final Clean / L4 / South / Z1 | 2026-10-19 → 2026-11-18 (+30d) | 2026-10-23 → 2026-11-24 (+32d) | 81d → 59d |
| 7KSF | **Office Spaces - Z2 (2,300 sf) / Level 4** | 2026-04-22 → 2026-05-22 (+30d) | 2026-11-13 → 2026-12-17 (+34d) |  |
| 1 | **Finishes** | 2026-04-22 → 2026-05-22 (+30d) | 2026-11-13 → 2026-12-17 (+34d) |  |
| P2.L4.F.CS.2000 | Paint Prime & 1st Coat Walls / L4 / North / Z2 | 2026-04-22 → 2026-05-22 (+30d) | 2026-04-28 → 2026-05-29 (+31d) | 43d → 21d |
| P2.L4.F.CS.2020 | R/I - Ceiling Assemblies & Supports - All Trades (A/V, Oper Part, Glass Part, etc.) / L4 / North / Z2 | 2026-04-29 → 2026-06-01 (+33d) | 2026-05-05 → 2026-06-05 (+31d) | 66d → 44d |
| P2.L4.F.CS.2010 | T-Grid / L4 / North / Z2 | 2026-05-06 → 2026-06-08 (+33d) | 2026-05-12 → 2026-06-12 (+31d) | 66d → 44d |
| P2.L4.F.CS.2050 | Sprinkler Heads in T-Grid / L4 / North / Z2 | 2026-05-13 → 2026-06-15 (+33d) | 2026-05-19 → 2026-06-19 (+31d) | 66d → 44d |
| P2.L4.F.CS.2030 | Diffusers in T-Grid / L4 / North / Z2 | 2026-05-20 → 2026-06-22 (+33d) | 2026-05-27 → 2026-06-26 (+30d) | 66d → 44d |
| P2.L4.F.CS.2040 | Lights & Elec Devices in T-Grid / L4 / North / Z2 | 2026-05-28 → 2026-06-29 (+32d) | 2026-06-10 → 2026-07-13 (+33d) | 66d → 44d |
| P2.L4.F.CS.2070 | Fire Alarm in T-Grid / L4 / North / Z2 | 2026-06-11 → 2026-07-14 (+33d) | 2026-06-17 → 2026-07-20 (+33d) | 66d → 44d |
| P2.L4.F.CS.2060 | Low Voltage in T-Grid / L4 / North / Z2 | 2026-06-18 → 2026-07-21 (+33d) | 2026-06-24 → 2026-07-27 (+33d) | 66d → 44d |
| P2.L4.F.CS.2080 | OH Ceiling Signoff / L4 / North / Z2 | 2026-06-25 → 2026-07-28 (+33d) | 2026-07-01 → 2026-08-03 (+33d) | 66d → 44d |
| P2.L4.F.CS.2110 | Drop Ceiling Tile / L4 / North / Z2 | 2026-07-02 → 2026-08-04 (+33d) | 2026-07-09 → 2026-08-10 (+32d) | 66d → 44d |
| P2.L4.F.CS.2090 | Millwork / L4 / North / Z2 | 2026-07-10 → 2026-08-11 (+32d) | 2026-07-16 → 2026-08-17 (+32d) | 66d → 44d |
| P2.L4.F.CS.2100 | Plumbing Fixtures / L4 / North / Z2 | 2026-07-17 → 2026-08-18 (+32d) | 2026-07-23 → 2026-08-24 (+32d) | 111d → 89d |

| ID | Task | Start | Finish | Complete | Total float |
| --- | --- | --- | --- | --- | --- |
| P2.L4.F.CS.2120 | Floor Prep / L4 / North / Z2 | 2026-07-17 → 2026-08-18 (+32d) | 2026-07-23 → 2026-08-24 (+32d) |  | 66d → 44d |
| P2.L4.F.CS.2130 | Floor Finishes / L4 / North / Z2 | 2026-07-24 → 2026-08-25 (+32d) | 2026-07-30 → 2026-08-31 (+32d) |  | 66d → 44d |
| P2.L4.F.CS.2140 | Doors & Hardware / L4 / North / Z2 | 2026-07-31 → 2026-09-01 (+32d) | 2026-08-06 → 2026-09-08 (+33d) |  | 66d → 44d |
| P2.L4.F.CS.2150 | Paint - Finish Coat / L4 / North / Z2 | 2026-08-07 → 2026-09-09 (+33d) | 2026-08-13 → 2026-09-15 (+33d) |  | 66d → 44d |
| P2.L4.F.CS.2200 | Floor Base / L4 / North / Z2 | 2026-08-14 → 2026-09-16 (+33d) | 2026-08-20 → 2026-09-22 (+33d) |  | 66d → 44d |
| P2.L4.F.CS.2180 | Building Specialities / L4 / North / Z2 | 2026-08-21 → 2026-09-23 (+33d) | 2026-08-27 → 2026-09-29 (+33d) |  | 66d → 44d |
| P2.L4.F.CS.2210 | Demountable Partitions / L4 / North / Z2 | 2026-08-21 → 2026-09-23 (+33d) | 2026-08-27 → 2026-09-29 (+33d) |  | 76d → 54d |
| P2.L4.F.CS.2190 | Interior Building Signage / L4 / North / Z2 | 2026-08-28 → 2026-09-30 (+33d) | 2026-09-03 → 2026-10-06 (+33d) |  | 66d → 44d |
| P2.L4.F.CS.2170 | Trim T-Stats / L4 / North / Z2 | 2026-09-04 → 2026-10-07 (+33d) | 2026-09-11 → 2026-10-13 (+32d) |  | 66d → 44d |
| P2.L4.F.CS.2160 | Set AV/IT Devices and Configure / L4 / North / Z2 | 2026-09-14 → 2026-10-14 (+30d) | 2026-09-18 → 2026-10-20 (+32d) |  | 71d → 49d |
| P2.L4.F.CS.2220 | Trim Electrical / L4 / North / Z2 | 2026-09-14 → 2026-10-14 (+30d) | 2026-09-18 → 2026-10-20 (+32d) |  | 66d → 44d |
| P2.L4.F.CS.2230 | Trim Telephone/ Data / L4 / North / Z2 | 2026-09-21 → 2026-10-21 (+30d) | 2026-09-25 → 2026-10-27 (+32d) |  | 66d → 44d |
| P2.L4.F.CS.2240 | Work Completion List - Finishes / L4 / North / Z2 | 2026-09-28 → 2026-10-28 (+30d) | 2026-10-02 → 2026-11-03 (+32d) |  | 66d → 44d |
| P2.L4.F.CS.2250 | Rough Clean / L4 / North / Z2 | 2026-10-05 → 2026-11-04 (+30d) | 2026-10-09 → 2026-11-10 (+32d) |  | 66d → 44d |
| P2.L4.F.CS.2260 | FF&E / L4 / North / Z2 | 2026-10-12 → 2026-11-11 (+30d) | 2026-10-16 → 2026-11-17 (+32d) |  | 66d → 44d |
| P2.L4.F.CS.2270 | Prepare Punchlist / L4 / North / Z2 | 2026-10-19 → 2026-11-18 (+30d) | 2026-10-23 → 2026-11-24 (+32d) |  | 66d → 44d |
| P2.L4.F.CS.2280 | Correct Punchlist / L4 / North / Z2 | 2026-10-26 → 2026-11-25 (+30d) | 2026-11-06 → 2026-12-10 (+34d) |  | 66d → 44d |
| P2.L4.F.CS.2290 | Final Clean / L4 / North / Z2 | 2026-11-09 → 2026-12-11 (+32d) | 2026-11-13 → 2026-12-17 (+34d) |  | 66d → 44d |
| 7KSF11 | **Office Spaces - Z3 (1,943 sf) / Level 4** | 2026-04-29 → 2026-06-01 (+33d) | 2026-11-13 → 2026-12-17 (+34d) |  |  |
| 1 | **Finishes** | 2026-04-29 → 2026-06-01 (+33d) | 2026-11-13 → 2026-12-17 (+34d) |  |  |
| P2.L4.F.CS.3000 | Paint Prime & 1st Coat Walls / L4 / North / Z3 | 2026-04-29 → 2026-06-01 (+33d) | 2026-05-05 → 2026-06-05 (+31d) |  | 43d → 21d |
| P2.L4.F.CS.3020 | R/I - Ceiling Assemblies & Supports - All Trades (A/V, Oper Part, Glass Part, etc.) / L4 / North / Z3 | 2026-05-06 → 2026-06-08 (+33d) | 2026-05-12 → 2026-06-12 (+31d) |  | 66d → 44d |
| P2.L4.F.CS.3010 | T-Grid / L4 / North / Z3 | 2026-05-13 → 2026-06-15 (+33d) | 2026-05-19 → 2026-06-19 (+31d) |  | 66d → 44d |
| P2.L4.F.CS.3050 | Sprinkler Heads in T-Grid / L4 / North / Z3 | 2026-05-20 → 2026-06-22 (+33d) | 2026-05-27 → 2026-06-26 (+30d) |  | 66d → 44d |
| P2.L4.F.CS.3030 | Diffusers in T-Grid / L4 / North / Z3 | 2026-05-28 → 2026-06-29 (+32d) | 2026-06-03 → 2026-07-06 (+33d) |  | 66d → 44d |
| P2.L4.F.CS.3040 | Lights & Elec Devices in T-Grid / L4 / North / Z3 | 2026-06-04 → 2026-07-07 (+33d) | 2026-06-17 → 2026-07-20 (+33d) |  | 66d → 44d |
| P2.L4.F.CS.3070 | Fire Alarm in T-Grid / L4 / North / Z3 | 2026-06-18 → 2026-07-21 (+33d) | 2026-06-24 → 2026-07-27 (+33d) |  | 66d → 44d |
| P2.L4.F.CS.3060 | Low Voltage in T-Grid / L4 / North / Z3 | 2026-06-25 → 2026-07-28 (+33d) | 2026-07-01 → 2026-08-03 (+33d) |  | 66d → 44d |
| P2.L4.F.CS.3080 | OH Ceiling Signoff / L4 / North / Z3 | 2026-07-02 → 2026-08-04 (+33d) | 2026-07-09 → 2026-08-10 (+32d) |  | 66d → 44d |
| P2.L4.F.CS.3110 | Drop Ceiling Tile / L4 / North / Z3 | 2026-07-10 → 2026-08-11 (+32d) | 2026-07-16 → 2026-08-17 (+32d) |  | 66d → 44d |
| P2.L4.F.CS.3090 | Millwork / L4 / North / Z3 | 2026-07-17 → 2026-08-18 (+32d) | 2026-07-23 → 2026-08-24 (+32d) |  | 66d → 44d |
| P2.L4.F.CS.3100 | Plumbing Fixtures / L4 / North / Z3 | 2026-07-17 → 2026-08-18 (+32d) | 2026-07-23 → 2026-08-24 (+32d) |  | 66d → 44d |
| P2.L4.F.CS.3120 | Floor Prep / L4 / North / Z3 | 2026-07-24 → 2026-08-25 (+32d) | 2026-07-30 → 2026-08-31 (+32d) |  | 66d → 44d |
| P2.L4.F.CS.3130 | Floor Finishes / L4 / North / Z3 | 2026-07-31 → 2026-09-01 (+32d) | 2026-08-06 → 2026-09-08 (+33d) |  | 66d → 44d |
| P2.L4.F.CS.3140 | Doors & Hardware / L4 / North / Z3 | 2026-08-07 → 2026-09-09 (+33d) | 2026-08-13 → 2026-09-15 (+33d) |  | 66d → 44d |
| P2.L4.F.CS.3150 | Paint - Finish Coat / L4 / North / Z3 | 2026-08-14 → 2026-09-16 (+33d) | 2026-08-20 → 2026-09-22 (+33d) |  | 66d → 44d |
| P2.L4.F.CS.3200 | Floor Base / L4 / North / Z3 | 2026-08-21 → 2026-09-23 (+33d) | 2026-08-27 → 2026-09-29 (+33d) |  | 66d → 44d |
| P2.L4.F.CS.3180 | Building Specialities / L4 / North / Z3 | 2026-08-28 → 2026-09-30 (+33d) | 2026-09-03 → 2026-10-06 (+33d) |  | 66d → 44d |
| P2.L4.F.CS.3210 | Demountable Partitions / L4 / North / Z3 | 2026-08-28 → 2026-09-30 (+33d) | 2026-09-03 → 2026-10-06 (+33d) |  | 71d → 49d |
| P2.L4.F.CS.3170 | Trim T-Stats / L4 / North / Z3 | 2026-09-04 → 2026-10-07 (+33d) | 2026-09-11 → 2026-10-13 (+32d) |  | 66d → 44d |
| P2.L4.F.CS.3220 | Trim Electrical / L4 / North / Z3 | 2026-09-04 → 2026-10-07 (+33d) | 2026-09-11 → 2026-10-13 (+32d) |  | 71d → 49d |
| P2.L4.F.CS.3160 | Set AV/IT Devices and Configure / L4 / North / Z3 | 2026-09-14 → 2026-10-14 (+30d) | 2026-09-18 → 2026-10-20 (+32d) |  | 66d → 44d |
| P2.L4.F.CS.3230 | Trim Telephone/ Data / L4 / North / Z3 | 2026-09-14 → 2026-10-14 (+30d) | 2026-09-18 → 2026-10-20 (+32d) |  | 71d → 49d |
| P2.L4.F.CS.3190 | Interior Building Signage / L4 / North / Z3 | 2026-09-21 → 2026-10-21 (+30d) | 2026-09-25 → 2026-10-27 (+32d) |  | 66d → 44d |
| P2.L4.F.CS.3240 | Work Completion List - Finishes / L4 / North / Z3 | 2026-09-28 → 2026-10-28 (+30d) | 2026-10-02 → 2026-11-03 (+32d) |  | 66d → 44d |
| P2.L4.F.CS.3250 | Rough Clean / L4 / North / Z3 | 2026-10-05 → 2026-11-04 (+30d) | 2026-10-09 → 2026-11-10 (+32d) |  | 66d → 44d |
| P2.L4.F.CS.3260 | FF&E / L4 / North / Z3 | 2026-10-12 → 2026-11-11 (+30d) | 2026-10-16 → 2026-11-17 (+32d) |  | 66d → 44d |
| P2.L4.F.CS.3270 | Prepare Punchlist / L4 / North / Z3 | 2026-10-19 → 2026-11-18 (+30d) | 2026-10-23 → 2026-11-24 (+32d) |  | 66d → 44d |
| P2.L4.F.CS.3280 | Correct Punchlist / L4 / North / Z3 | 2026-10-26 → 2026-11-25 (+30d) | 2026-11-06 → 2026-12-10 (+34d) |  | 66d → 44d |
| P2.L4.F.CS.3290 | Final Clean / L4 / North / Z3 | 2026-11-09 → 2026-12-11 (+32d) | 2026-11-13 → 2026-12-17 (+34d) |  | 66d → 44d |
| 5 | **Bathrooms - Break Rooms - Locker Rooms / Level 4** |  | 2026-04-06 → 2026-05-06 (+30d) |  |  |
| 4 | **Toilets 4-2802A / 4-2802B** |  | 2026-04-06 → 2026-05-06 (+30d) |  |  |
| P2.L4.BR.1010 | Framing & Blocking - Walls and Hard Lid Ceilings / L4 / Toilets 2802X | 2025-12-22 → 2025-12-01 A (-21d) | 2025-12-23 → 2025-12-10 A (-13d) | 0% → 100% | 153d → none |
| P2.L4.BR.1020 | Plumbing - Test Pipe / L4 / Toilets 2802X | 2025-12-22 → 2025-12-11 A (-11d) | 2025-12-23 → 2025-12-15 A (-8d) | 0% → 100% | 153d → none |
| P2.L4.BR.1070 | In Wall - Insulate Plumbing / L4 / Toilets 2802X | 2025-12-24 → 2025-12-11 A (-13d) | 2025-12-26 → 2025-12-15 A (-11d) | 0% → 100% | 153d → none |
| P2.L4.BR.1030 | R/I - Electrical _ Hard Lids / L4 / Toilets 2802X | 2025-12-29 → 2026-01-02 (+4d) | 2026-01-05 → 2026-01-08 (+3d) |  | 153d → 150d |
| P2.L4.BR.1040 | Trim Sprinkler Drops _ Hard Lids / L4 / Toilets 2802X | 2025-12-24 → 2026-01-02 (+9d) | 2025-12-26 → 2026-01-05 (+10d) |  | 163d → 158d |
| P2.L4.BR.1060 | R/I - Fire Alarm _ Hard Lids / L4 / Toilets 2802X | 2026-01-06 → 2026-01-09 (+3d) | 2026-01-12 → 2026-01-15 (+3d) |  | 153d → 150d |
| P2.L4.BR.1080 | Inspection - Close In - Walls and Hard Lid Ceilings / L4 / Toilets 2802X | 2026-01-13 → 2026-01-16 (+3d) | 2026-01-15 → 2026-01-20 (+5d) |  | 153d → 150d |
| P2.L4.BR.1090 | Hang-Tape-Finish _ Walls and Hard Lids Ceilings / L4 / Toilets 2802X | 2026-01-16 → 2026-01-21 (+5d) | 2026-01-22 → 2026-01-27 (+5d) |  | 153d → 150d |
| P2.L4.BR.1100 | Paint Prime & Final Coat _ Walls & Hard Lid Ceilings / L4 / Toilets 2802X | 2026-01-23 → 2026-01-28 (+5d) | 2026-01-26 → 2026-01-29 (+3d) |  | 153d → 150d |
| P2.L4.BR.1140 | Trim - HVAC G/R/D's / L4 / Toilets 2802X | 2026-01-27 → 2026-01-30 (+3d) | 2026-01-28 → 2026-02-02 (+5d) |  | 153d → 150d |
| P2.L4.BR.1120 | Pull Wire & Trim Devices - Electrical / L4 / Toilets 2802X | 2026-01-29 → 2026-02-03 (+5d) | 2026-01-30 → 2026-02-04 (+5d) |  | 153d → 150d |
| P2.L4.BR.1130 | Lights - Set & Terminate / L4 / Toilets 2802X | 2026-01-29 → 2026-02-03 (+5d) | 2026-01-30 → 2026-02-04 (+5d) |  | 158d → 155d |
| P2.L4.BR.1110 | Pull Wire & Trim Devices - Fire Alarm / L4 / Toilets 2802X | 2026-02-02 → 2026-02-05 (+3d) | 2026-02-06 → 2026-02-11 (+5d) |  | 153d → 150d |
| P2.L4.BR.1150 | Wall Tile / L4 / Toilets 2802X | 2026-02-09 → 2026-02-12 (+3d) | 2026-02-13 → 2026-02-18 (+5d) |  | 153d → 150d |
| P2.L4.BR.1200 | Flooring Prep - Epoxy Floors / L4 / Toilets 2802X | 2026-03-18 → 2026-04-17 (+30d) | 2026-03-18 → 2026-04-17 (+30d) |  | 131d → 109d |
| P2.L4.BR.1210 | Flooring - Epoxy Floors / L4 / Toilets 2802X | 2026-03-19 → 2026-04-20 (+32d) | 2026-03-20 → 2026-04-21 (+32d) |  | 174d → 152d |
| P2.L4.BR.1160 | Doors & Hardware / L4 / Toilets 2802X | 2026-03-23 → 2026-04-22 (+30d) | 2026-03-24 → 2026-04-23 (+30d) |  | 174d → 152d |
| P2.L4.BR.1170 | Plumbing Fixtures / Sinks / Showers / L4 / Toilets 2802X | 2026-03-25 → 2026-04-24 (+30d) | 2026-03-26 → 2026-04-27 (+32d) |  | 222d → 200d |

| ID | Task | Start | Finish | Complete | Total float |
| --- | --- | --- | --- | --- | --- |
| P2.L4.BR.1180 | Bathroom Accessories / L4 / Toilets 2802X | 2026-03-27 → 2026-04-28 (+32d) | 2026-03-30 → 2026-04-29 (+30d) |  | 222d → 200d |
| P2.L4.BR.1190 | Work Completion List - Finishes / L4 / Toilets 2802X | 2026-03-31 → 2026-04-30 (+30d) | 2026-04-06 → 2026-05-06 (+30d) |  | 222d → 200d |
| 1 | **Corridors & Lobbies / Level 4** | 2026-05-06 → 2026-06-08 (+33d) | 2026-12-18 → 2027-01-21 (+34d) |  |  |
| P2.L4.CL.1000 | Paint Prime & 1st Coat Walls / L4 / Corr & Lobbies | 2026-05-06 → 2026-06-08 (+33d) | 2026-05-12 → 2026-06-12 (+31d) |  | 43d → 21d |
| P2.L4.CL.1010 | Framing - Hard Lid Ceilings / L4 / Corr & Lobbies | 2026-05-13 → 2026-06-15 (+33d) | 2026-05-27 → 2026-06-26 (+30d) |  | 43d → 21d |
| P2.L4.CL.1020 | T-Grid / L4 / Corr & Lobbies | 2026-05-13 → 2026-06-15 (+33d) | 2026-05-27 → 2026-06-26 (+30d) |  | 43d → 21d |
| P2.L4.CL.1040 | R/I - Trim Sprinkler Heads- All Ceilings / L4 / Corr & Lobbies | 2026-05-22 → 2026-06-24 (+33d) | 2026-05-29 → 2026-06-30 (+32d) |  | 43d → 21d |
| P2.L4.CL.1070 | Trim - Sprinkler Heads @ T-Grid / L4 / Corr & Lobbies | 2026-05-22 → 2026-06-24 (+33d) | 2026-05-29 → 2026-06-30 (+32d) |  | 131d → 109d |
| P2.L4.CL.1050 | R/I - HVAC- All Ceilings / L4 / Corr & Lobbies | 2026-06-01 → 2026-07-01 (+30d) | 2026-06-05 → 2026-07-08 (+33d) |  | 43d → 21d |
| P2.L4.CL.1030 | R/I - Electrical - All Ceilings / L4 / Corr & Lobbies | 2026-06-08 → 2026-07-09 (+31d) | 2026-06-26 → 2026-07-29 (+33d) |  | 43d → 21d |
| P2.L4.CL.1060 | R/I - All Remaining Low Voltage - All Ceilings / L4 / Corr & Lobbies | 2026-06-29 → 2026-07-30 (+31d) | 2026-07-06 → 2026-08-05 (+30d) |  | 43d → 21d |
| P2.L4.CL.1100 | Pull Wire - Electrical / L4 / Corr & Lobbies | 2026-06-29 → 2026-07-30 (+31d) | 2026-07-13 → 2026-08-12 (+30d) |  | 73d → 51d |
| P2.L4.CL.1080 | R/I - Fire Alarm/Life Safety - All Ceilings / L4 / Corr & Lobbies | 2026-07-07 → 2026-08-06 (+30d) | 2026-07-13 → 2026-08-12 (+30d) |  | 43d → 21d |
| P2.L4.CL.1090 | Inspections - Close In- All Ceilings / L4 / Corr & Lobbies | 2026-07-14 → 2026-08-13 (+30d) | 2026-07-20 → 2026-08-19 (+30d) |  | 43d → 21d |
| P2.L4.CL.1110 | Pull Wire - Fire Alarm / L4 / Corr & Lobbies | 2026-07-14 → 2026-08-13 (+30d) | 2026-07-20 → 2026-08-19 (+30d) |  | 73d → 51d |
| P2.L4.CL.1120 | Pull Wire - All Remianing Low Voltage Systems / L4 / Corr & Lobbies | 2026-07-21 → 2026-08-20 (+30d) | 2026-07-27 → 2026-08-26 (+30d) |  | 78d → 56d |
| P2.L4.CL.1130 | Hang/Tape/Finish- Hard Lid Ceilings / L4 / Corr & Lobbies | 2026-07-21 → 2026-08-20 (+30d) | 2026-08-03 → 2026-09-02 (+30d) |  | 43d → 21d |
| P2.L4.CL.1140 | Drop Ceiling Tiles @ T-Grid / L4 / Corr & Lobbies | 2026-07-28 → 2026-08-27 (+30d) | 2026-08-03 → 2026-09-02 (+30d) |  | 91d → 69d |
| P2.L4.CL.1190 | Paint - Hard Lid Ceilings / L4 / Corr & Lobbies | 2026-08-04 → 2026-09-03 (+30d) | 2026-08-10 → 2026-09-10 (+31d) |  | 43d → 21d |
| P2.L4.CL.1180 | Ceiling Mounted - HVAC GRD's / L4 / Corr & Lobbies | 2026-08-11 → 2026-09-11 (+31d) | 2026-08-31 → 2026-10-01 (+31d) |  | 43d → 21d |
| P2.L4.CL.1150 | Ceiling Mounted - Electrical Devices and Lights / L4 / Corr & Lobbies | 2026-08-25 → 2026-09-25 (+31d) | 2026-09-22 → 2026-10-22 (+30d) |  | 43d → 21d |
| P2.L4.CL.1160 | Ceiling Mounted - Fire Alarm/Life Saftey Devices / L4 / Corr & Lobbies | 2026-09-01 → 2026-10-02 (+31d) | 2026-09-22 → 2026-10-22 (+30d) |  | 43d → 21d |
| P2.L4.CL.1170 | Ceiling Mounted - All Low Voltage Devices / L4 / Corr & Lobbies | 2026-09-16 → 2026-10-16 (+30d) | 2026-10-06 → 2026-11-05 (+30d) |  | 43d → 21d |
| P2.L4.CL.1320 | Prep Flooring / L4 / Corr & Lobbies | 2026-10-07 → 2026-11-06 (+30d) | 2026-10-08 → 2026-11-09 (+32d) |  | 43d → 21d |
| P2.L4.CL.1200 | Flooring / L4 / Corr & Lobbies | 2026-10-09 → 2026-11-10 (+32d) | 2026-10-20 → 2026-11-19 (+30d) |  | 43d → 21d |
| P2.L4.CL.1210 | Final Paint / L4 / Corr & Lobbies | 2026-10-16 → 2026-11-17 (+32d) | 2026-10-22 → 2026-11-23 (+32d) |  | 43d → 21d |
| P2.L4.CL.1220 | Floor Base / L4 / Corr & Lobbies | 2026-10-23 → 2026-11-24 (+32d) | 2026-10-29 → 2026-12-02 (+34d) |  | 58d → 36d |
| P2.L4.CL.1250 | Trim - HVAC - Wall Mounted Devices / L4 / Corr & Lobbies | 2026-10-23 → 2026-11-24 (+32d) | 2026-10-29 → 2026-12-02 (+34d) |  | 43d → 21d |
| P2.L4.CL.1230 | Trim - All Electrical - Wall Mounted Devices / L4 / Corr & Lobbies | 2026-10-30 → 2026-12-03 (+34d) | 2026-11-05 → 2026-12-09 (+34d) |  | 43d → 21d |
| P2.L4.CL.1330 | Wall Protection / L4 / Corr & Lobbies | 2026-10-30 → 2026-12-03 (+34d) | 2026-11-05 → 2026-12-09 (+34d) |  | 58d → 36d |
| P2.L4.CL.1240 | Trim - Fire Alarm - Wall Mounted Devices / L4 / Corr & Lobbies | 2026-11-06 → 2026-12-10 (+34d) | 2026-11-12 → 2026-12-16 (+34d) |  | 43d → 21d |
| P2.L4.CL.1260 | Trim - All Remining Low Voltage Systems - Wall Mounted Devices / L4 / Corr & Lobbies | 2026-11-13 → 2026-12-17 (+34d) | 2026-11-19 → 2026-12-23 (+34d) |  | 43d → 21d |
| P2.L4.CL.1270 | Building Signage / L4 / Corr & Lobbies | 2026-11-20 → 2026-12-24 (+34d) | 2026-11-30 → 2026-12-31 (+31d) |  | 43d → 21d |
| P2.L4.CL.1280 | Work Completion List / L4 / Corr & Lobbies | 2026-12-01 → 2027-01-04 (+34d) | 2026-12-07 → 2027-01-08 (+32d) |  | 43d → 21d |
| P2.L4.CL.1290 | Rough Clean / L4 / Corr & Lobbies | 2026-12-08 → 2027-01-11 (+34d) | 2026-12-09 → 2027-01-12 (+34d) |  | 43d → 21d |
| P2.L4.CL.1300 | Punchlist / L4 / Corr & Lobbies | 2026-12-10 → 2027-01-13 (+34d) | 2026-12-16 → 2027-01-19 (+34d) |  | 43d → 21d |
| P2.L4.CL.1310 | Final Clean / L4 / Corr & Lobbies | 2026-12-17 → 2027-01-20 (+34d) | 2026-12-18 → 2027-01-21 (+34d) |  | 43d → 21d |
| INT | **INTERSTITIAL / LEVEL 4** |  | 2026-05-11 → 2026-06-04 (+24d) |  |  |
| 1 | **South Interstitial 4-3905** |  | 2026-05-11 → 2026-06-04 (+24d) |  |  |
| Z1 | **Rough In - South Interstitial 4-3905** |  | 2026-03-05 → 2026-03-30 (+25d) |  |  |
| P2.L4.INT.S.1230 | OH - Insulate HP Duct / L4 / South Int |  | 2025-12-05 → 2026-01-08 (+34d) |  | 72d → 50d |
| P2.L4.INT.S.1240 | OH - Hang Duct - LP Branch / L4 / South Int |  | 2025-12-12 A | 50% → 100% | 47d → none |
| P2.L4.INT.S.1250 | OH - HVAC Piping - Test / L4 / South Int |  | 2025-12-05 A | 50% → 100% | 72d → none |
| P2.L4.INT.S.1300 | OH - Insulate HVAC Pipe / L4 / South Int |  | 2025-12-12 → 2026-01-15 (+34d) |  | 72d → 50d |
| P2.L4.INT.S.1260 | OH - Insulate Plumbing / L4 / South Int |  | 2025-12-22 → 2025-12-05 A (-17d) | 10% → 100% | 86d → none |
| P2.L4.INT.S.1100 | Spray/Seal/Firestop - Head of Wall / L4 / South Int | 2025-12-01 A | 2025-12-05 A | 0% → 100% | 75d → none |
| P2.L4.INT.S.1280 | Pull Wire - Electrical - 480/277v Distribution / L4 / South Int | 2026-01-14 → 2025-12-01 A (-44d) | 2026-01-27 → 2025-12-12 A (-46d) | 0% → 100% | 62d → none |
| P2.L4.INT.S.1310 | OH - Insulate LP Duct / L4 / South Int |  | 2025-12-29 → 2026-01-15 (+17d) |  | 47d → 37d |
| P2.L4.INT.S.1330 | OH - Conduit - Low Volt - Fire Alarm / L4 / South Int | 2025-12-30 → 2025-12-01 A (-29d) | 2026-01-13 → 2025-12-12 A (-32d) | 0% → 100% | 62d → none |
| P2.L4.INT.S.1320 | OH - Conduit - Low Volt - BAS/Controls / L4 / South Int | 2025-12-15 A | 2025-12-29 A | 0% → 100% | 72d → none |
| P2.L4.INT.S.1170 | Set & Connect - Mech Equipment / L4 / South Int | 2025-12-01 → 2026-01-02 (+32d) | 2025-12-29 → 2026-01-29 (+31d) |  | 57d → 35d |
| P2.L4.INT.S.1270 | Pull Wire - Electrical - 208/120v Branch & Equip / L4 / South Int | 2025-12-10 → 2026-01-02 (+23d) | 2026-01-08 → 2026-01-29 (+21d) |  | 75d → 38d |
| P2.L4.INT.S.1340 | OH - Conduit - Low Volt - Telecom / L4 / South Int | 2025-12-30 → 2026-01-16 (+17d) | 2026-01-13 → 2026-01-29 (+16d) |  | 47d → 37d |
| P2.L4.INT.S.1350 | OH - Conduit - Low Volt - Security / L4 / South Int | 2025-12-15 → 2026-01-16 (+32d) | 2025-12-29 → 2026-01-29 (+31d) |  | 72d → 50d |
| P2.L4.INT.S.1370 | Pull Wire - Low Volt - Fire Alarm / L4 / South Int | 2026-01-14 → 2026-01-16 (+2d) | 2026-01-27 → 2026-01-29 (+2d) |  | 62d → 60d |
| P2.L4.INT.S.1110 | Firestop - Thru Wall / L4 / South Int | 2026-01-14 → 2026-01-30 (+16d) | 2026-01-20 → 2026-02-05 (+16d) |  | 67d → 55d |
| P2.L4.INT.S.1200 | OH - Electrical - Equip Tie In / L4 / South Int | 2025-12-30 → 2026-01-30 (+31d) | 2026-01-13 → 2026-02-12 (+30d) |  | 62d → 50d |
| P2.L4.INT.S.1380 | Pull Wire - Low Volt - Telecom / L4 / South Int | 2026-01-14 → 2026-01-30 (+16d) | 2026-01-27 → 2026-02-12 (+16d) |  | 62d → 50d |
| P2.L4.INT.S.1390 | Pull Wire - Low Volt - Security / L4 / South Int | 2025-12-30 → 2026-01-30 (+31d) | 2026-01-13 → 2026-02-12 (+30d) |  | 72d → 50d |
| P2.L4.INT.S.1290 | OH - HVAC Piping - Equip Tie In / L4 / South Int | 2026-01-28 → 2026-02-20 (+23d) | 2026-02-17 → 2026-03-12 (+23d) |  | 37d → 20d |
| P2.L4.INT.S.1360 | Pull Wire - Low Volt - BAS/Controls / L4 / South Int | 2026-02-18 → 2026-03-13 (+23d) | 2026-03-03 → 2026-03-26 (+23d) |  | 37d → 20d |
| P2.L4.INT.S.1400 | Trades Inspect & Verify R/I Work Completed to Specs / L4 / South Int | 2026-03-04 → 2026-03-27 (+23d) | 2026-03-05 → 2026-03-30 (+25d) |  | 37d → 20d |
| 2 | **Finishes - South Interstitial 4-3905 (8,384 sf) / Level 4** | 2026-03-06 → 2026-03-31 (+25d) | 2026-05-11 → 2026-06-04 (+24d) |  |  |
| P2.L4.INT.S.2100 | Flooring Prep - Epoxy Floors / L4 / South Int | 2026-03-06 → 2026-03-31 (+25d) | 2026-03-12 → 2026-04-06 (+25d) |  | 170d → 153d |
| P2.L4.INT.S.2000 | Flooring - Epoxy Floors / L4 / South Int | 2026-03-13 → 2026-04-07 (+25d) | 2026-03-16 → 2026-04-08 (+23d) |  | 170d → 153d |
| P2.L4.INT.S.2010 | Paint - Finish Coat / L4 / South Int | 2026-03-17 → 2026-04-09 (+23d) | 2026-03-23 → 2026-04-15 (+23d) |  | 170d → 153d |
| P2.L4.INT.S.2020 | Doors & Hardware / L4 / South Int | 2026-03-24 → 2026-04-16 (+23d) | 2026-03-30 → 2026-04-22 (+23d) |  | 170d → 153d |
| P2.L4.INT.S.2040 | Building Signage / L4 / South Int | 2026-03-24 → 2026-04-16 (+23d) | 2026-03-30 → 2026-04-22 (+23d) |  | 202d → 185d |
| P2.L4.INT.S.2030 | Trim All MEP Finishes / L4 / South Int | 2026-03-31 → 2026-04-23 (+23d) | 2026-04-06 → 2026-04-29 (+23d) |  | 197d → 180d |
| P2.L4.INT.S.2050 | Rough Clean / L4 / South Int | 2026-04-07 → 2026-04-30 (+23d) | 2026-04-13 → 2026-05-06 (+23d) |  | 197d → 180d |

| ID | Task | Start | Finish | Complete | Total float |
| --- | --- | --- | --- | --- | --- |
| P2.L4.INT.S.2060 | Prepare Punchlist / L4 / South Int | 2026-04-14 → 2026-05-07 (+23d) | 2026-04-20 → 2026-05-13 (+23d) |  | 197d → 180d |
| P2.L4.INT.S.2070 | Correct Punchlist / L4 / South Int | 2026-04-21 → 2026-05-14 (+23d) | 2026-05-04 → 2026-05-28 (+24d) |  | 197d → 180d |
| P2.L4.INT.S.2080 | Final Clean / L4 / South Int | 2026-05-05 → 2026-05-29 (+24d) | 2026-05-11 → 2026-06-04 (+24d) |  | 197d → 180d |
| 2 | **North Interstitial 4-2835** |  | 2026-05-07 → 2026-06-02 (+26d) |  |  |
| Z11 | **Rough In - North Interstitial 4-2835** |  | 2026-02-26 → 2026-03-23 (+25d) |  |  |
| P2.L4.INT.N.1240 | OH - Hang Duct - LP Branch (Supply) / L4 / North Int |  | 2025-12-05 → 2026-01-08 (+34d) |  | 47d → 3d |
| P2.L4.INT.N.2110 | OH - Hang Duct - LP Branch (Return) / L4 / North Int |  | 2025-12-05 → 2026-01-08 (+34d) |  | 52d → 32d |
| P2.L4.INT.N.1175 | Set & Connect - Elect Panels and Equipment / L4 / North Int | 2025-12-01 A | 2025-12-05 A | 0% → 100% | 67d → none |
| P2.L4.INT.N.1250 | OH - HVAC Piping - Test / L4 / North Int | 2025-12-01 A | 2025-12-12 A | 0% → 100% | 62d → none |
| P2.L4.INT.N.1260 | OH - Insulate Plumbing / L4 / North Int | 2025-12-01 A | 2025-12-12 → 2026-01-08 (+27d) | 0% → 50% | 92d → 75d |
| P2.L4.INT.N.1330 | OH - Conduit - Low Volt - Fire Alarm / L4 / North Int | 2025-12-30 → 2025-12-01 A (-29d) | 2026-01-13 → 2025-12-12 A (-32d) | 0% → 100% | 62d → none |
| P2.L4.INT.N.1320 | OH - Conduit - Low Volt - BAS/Controls / L4 / North Int | 2025-12-30 A | 2026-01-13 → 2026-02-11 (+29d) | 0% → 10% | 62d → 41d |
| P2.L4.INT.N.1110 | Firestop - Thru Wall / L4 / North Int | 2025-12-01 → 2026-01-02 (+32d) | 2025-12-05 → 2026-01-08 (+34d) |  | 97d → 75d |
| P2.L4.INT.N.1230 | OH - Insulate HP Duct / L4 / North Int | 2025-12-01 → 2026-01-02 (+32d) | 2025-12-12 → 2026-01-15 (+34d) |  | 47d → 27d |
| P2.L4.INT.N.1170 | Set & Connect - Mech Equipment / L4 / North Int | 2025-12-08 → 2026-01-09 (+32d) | 2026-01-06 → 2026-02-05 (+30d) |  | 47d → 3d |
| P2.L4.INT.N.1300 | OH - Insulate HVAC Pipe / L4 / North Int | 2025-12-15 → 2026-01-16 (+32d) | 2025-12-29 → 2026-01-29 (+31d) |  | 62d → 40d |
| P2.L4.INT.N.1310 | OH - Insulate LP Duct / L4 / North Int | 2025-12-15 → 2026-01-16 (+32d) | 2025-12-29 → 2026-01-29 (+31d) |  | 47d → 27d |
| P2.L4.INT.N.1340 | OH - Conduit - Low Volt - Telecom / L4 / North Int | 2025-12-30 → 2026-01-30 (+31d) | 2026-01-13 → 2026-02-12 (+30d) |  | 47d → 27d |
| P2.L4.INT.N.1350 | OH - Conduit - Low Volt - Security / L4 / North Int | 2025-12-30 → 2026-01-30 (+31d) | 2026-01-13 → 2026-02-12 (+30d) |  | 62d → 40d |
| P2.L4.INT.N.1370 | Pull Wire - Low Volt - Fire Alarm / L4 / North Int | 2026-01-14 → 2026-01-30 (+16d) | 2026-01-27 → 2026-02-12 (+16d) |  | 62d → 50d |
| P2.L4.INT.N.1200 | OH - Electrical - Equip Tie In / L4 / North Int | 2026-01-07 → 2026-02-06 (+30d) | 2026-01-20 → 2026-02-19 (+30d) |  | 47d → 3d |
| P2.L4.INT.N.1380 | Pull Wire - Low Volt - Telecom / L4 / North Int | 2026-01-14 → 2026-02-13 (+30d) | 2026-01-27 → 2026-02-26 (+30d) |  | 62d → 40d |
| P2.L4.INT.N.1390 | Pull Wire - Low Volt - Security / L4 / North Int | 2026-01-14 → 2026-02-13 (+30d) | 2026-01-27 → 2026-02-26 (+30d) |  | 62d → 40d |
| P2.L4.INT.N.1270 | Pull Wire - Electrical - 208/120v Branch & Equip / L4 / North Int | 2026-01-21 → 2026-02-20 (+30d) | 2026-02-17 → 2026-03-19 (+30d) |  | 47d → 3d |
| P2.L4.INT.N.1290 | OH - HVAC Piping - Equip Tie In / L4 / North Int | 2026-01-28 → 2026-02-20 (+23d) | 2026-02-10 → 2026-03-05 (+23d) |  | 42d → 25d |
| P2.L4.INT.N.1360 | Pull Wire - Low Volt - BAS/Controls / L4 / North Int | 2026-02-11 → 2026-03-06 (+23d) | 2026-02-24 → 2026-03-19 (+23d) |  | 42d → 25d |
| P2.L4.INT.N.1400 | Trades Inspect & Verify R/I Work Completed to Specs / L4 / North Int | 2026-02-25 → 2026-03-20 (+23d) | 2026-02-26 → 2026-03-23 (+25d) |  | 42d → 25d |
| 1 | **Finishes - North Interstitial 4-2835 (21,357 sf) / Level 4** | 2026-02-27 → 2026-03-24 (+25d) | 2026-05-07 → 2026-06-02 (+26d) |  |  |
| P2.L4.INT.N.2000 | Flooring Prep - Epoxy Floors / L4 / North Int | 2026-02-27 → 2026-03-24 (+25d) | 2026-03-09 → 2026-04-01 (+23d) |  | 172d → 155d |
| P2.L4.INT.N.2150 | Flooring - Epoxy Floors / L4 / North Int | 2026-03-10 → 2026-04-02 (+23d) | 2026-03-12 → 2026-04-06 (+25d) |  | 172d → 155d |
| P2.L4.INT.N.2010 | Paint - Finish Coat / L4 / North Int | 2026-03-13 → 2026-04-07 (+25d) | 2026-03-19 → 2026-04-13 (+25d) |  | 172d → 155d |
| P2.L4.INT.N.2020 | Doors & Hardware / L4 / North Int | 2026-03-20 → 2026-04-14 (+25d) | 2026-03-26 → 2026-04-20 (+25d) |  | 172d → 155d |
| P2.L4.INT.N.2040 | Building Signage / L4 / North Int | 2026-03-20 → 2026-04-14 (+25d) | 2026-03-26 → 2026-04-20 (+25d) |  | 204d → 187d |
| P2.L4.INT.N.2030 | Trim All MEP Finishes / L4 / North Int | 2026-03-27 → 2026-04-21 (+25d) | 2026-04-02 → 2026-04-27 (+25d) |  | 199d → 182d |
| P2.L4.INT.N.2050 | Rough Clean / L4 / North Int | 2026-04-03 → 2026-04-28 (+25d) | 2026-04-09 → 2026-05-04 (+25d) |  | 199d → 182d |
| P2.L4.INT.N.2060 | Prepare Punchlist / L4 / North Int | 2026-04-10 → 2026-05-05 (+25d) | 2026-04-16 → 2026-05-11 (+25d) |  | 199d → 182d |
| P2.L4.INT.N.2070 | Correct Punchlist / L4 / North Int | 2026-04-17 → 2026-05-12 (+25d) | 2026-04-30 → 2026-05-26 (+26d) |  | 199d → 182d |
| P2.L4.INT.N.2080 | Final Clean / L4 / North Int | 2026-05-01 → 2026-05-27 (+26d) | 2026-05-07 → 2026-06-02 (+26d) |  | 199d → 182d |
| 1 | **MECHANICAL TOWERS / LEVEL 4** |  | 2026-04-14 → 2026-04-23 (+9d) |  |  |
| 4 | **South Mechanical Tower / Rough In & Finish / Level 4** |  | 2026-04-14 → 2026-04-10 (-4d) |  |  |
| P2.L4.SMT.1110 | HVAC Piping - Equip Tie In (Chilled Water) / L4 - S. Mech Tower |  | 2026-02-24 → 2025-12-31 A (-55d) | 0% → 100% | 9d → none |
| P2.L4.SMT.1150 | Insulate HVAC / Plumbing Pipe / L4 - S. Mech Tower | 2026-03-25 → 2025-12-01 A (-114d) | 2026-03-31 → 2025-12-05 A (-116d) | 0% → 100% | 9d → none |
| P2.L4.SMT.1120 | BAS - Equip Tie In / L4 - S. Mech Tower | 2025-12-01 → 2025-12-15 A (+14d) | 2025-12-05 → 2025-12-19 A (+14d) | 0% → 100% | 89d → none |
| P2.L4.SMT.1270 | Flooring Prep - Epoxy Floors / L4 - S. Mech Tower | 2026-01-12 → 2026-02-02 (+21d) | 2026-01-14 → 2026-02-04 (+21d) |  | 29d → 14d |
| P2.L4.SMT.1200 | Flooring - Epoxy Floors / L4 - S. Mech Tower | 2026-01-15 → 2026-02-05 (+21d) | 2026-01-16 → 2026-02-06 (+21d) |  | 29d → 14d |
| P2.L4.SMT.1090 | Panelboards, Interconnect Wiring, and Remaining Room Buildout of All Elec/FA Systems / L4 - S. Mech Tower | 2026-01-19 → 2026-02-09 (+21d) | 2026-01-30 → 2026-02-20 (+21d) |  | 34d → 19d |
| P2.L4.SMT.1250 | HVAC Piping - Equip Tie In (Reheat) / L4 - S. Mech Tower | 2026-02-25 → 2026-02-20 (-5d) | 2026-03-24 → 2026-03-19 (-5d) |  | 9d → 17d |
| P2.L4.SMT.1140 | Pull Wire - In From Distribution Panels / Out to Branch Circuits / L4 - S. Mech Tower | 2026-02-02 → 2026-02-23 (+21d) | 2026-02-06 → 2026-02-27 (+21d) |  | 34d → 19d |
| P2.L4.SMT.1160 | Electrical Tie in to Equipment / L4 - S. Mech Tower | 2026-02-09 → 2026-03-02 (+21d) | 2026-02-13 → 2026-03-06 (+21d) |  | 181d → 166d |
| P2.L4.SMT.1170 | Test & Terminate / L4 - S. Mech Tower | 2026-02-09 → 2026-03-02 (+21d) | 2026-02-13 → 2026-03-06 (+21d) |  | 34d → 19d |
| P2.L4.SMT.1180 | Paint - Finish Coat / L4 - S. Mech Tower | 2026-02-16 → 2026-03-09 (+21d) | 2026-02-17 → 2026-03-10 (+21d) |  | 34d → 19d |
| P2.L4.SMT.1190 | Trim All MEPF Finishes / L4 - S. Mech Tower | 2026-02-18 → 2026-03-11 (+21d) | 2026-02-19 → 2026-03-12 (+21d) |  | 35d → 20d |
| P2.L4.SMT.1210 | Doors & Hardware / L4 - S. Mech Tower | 2026-02-20 → 2026-03-13 (+21d) | 2026-02-23 → 2026-03-16 (+21d) |  | 35d → 20d |
| P2.L4.SMT.1340 | Wall Protection / L4 - S. Mech Tower | 2026-02-19 → 2026-03-23 (+32d) | 2026-02-25 → 2026-03-27 (+30d) |  | 33d → 11d |
| P2.L4.SMT.1220 | Trades Inspect & Verify R/I Work Completed to Specs / L4 - S. Mech Tower | 2026-04-01 → 2026-03-30 (-2d) | 2026-04-07 → 2026-04-03 (-4d) |  | 9d → 11d |
| P2.L4.SMT.1240 | Energize Elec Panels - Lock Doors and Limit Access / L4 - S. Mech Tower | 2026-04-08 → 2026-04-06 (-2d) | 2026-04-14 → 2026-04-10 (-4d) |  | 9d → 11d |
| P2.L4.SMT.1230 | HVAC System Ready for Start Up / L4 - S. Mech Tower | 2026-04-14 → 2026-04-10 (-4d) | 2026-04-14 → 2026-04-10 (-4d) |  | 139d → 141d |
| 8 | **East Mechanical Tower / Rough In & Finish / Level 4** |  | 2026-03-31 → 2026-04-23 (+23d) |  |  |
| P2.L4.EMT.1140 | Test/Inspect Duct & Piping / L4 - E. Mech Tower | 2025-12-22 A | 2025-12-29 → 2025-12-31 A (+2d) | 0% → 100% | 59d → none |
| P2.L4.EMT.1260 | Flooring - Epoxy Floors / L4 - E. Mech Tower | 2025-12-17 → 2026-01-20 (+34d) | 2025-12-18 → 2026-01-21 (+34d) |  | 48d → 26d |
| P2.L4.EMT.1100 | Panelboards, Interconnect Wiring, and Remaining Room Buildout of All Elec/FA Systems / L4 - E. Mech Tower | 2025-12-19 → 2026-01-22 (+34d) | 2026-01-05 → 2026-02-04 (+30d) |  | 53d → 31d |
| FRG.P2.L4.EMT.1020 | AHU Piping Install / L4 - E. Mech Tower - FRAGNET | 2025-12-22 → 2026-01-23 (+32d) | 2026-01-20 → 2026-02-19 (+30d) |  | 39d → 17d |
| P2.L4.EMT.1150 | Pull Wire - In From Distribution Panels / Out to Branch Circuits / L4 - E. Mech Tower | 2026-01-06 → 2026-02-05 (+30d) | 2026-01-12 → 2026-02-11 (+30d) |  | 53d → 31d |
| P2.L4.EMT.1170 | Electrical Tie in to Equipment / L4 - E. Mech Tower | 2026-01-13 → 2026-02-12 (+30d) | 2026-01-19 → 2026-02-18 (+30d) |  | 200d → 178d |
| P2.L4.EMT.1180 | Test & Terminate / L4 - E. Mech Tower | 2026-01-13 → 2026-02-12 (+30d) | 2026-01-19 → 2026-02-18 (+30d) |  | 53d → 31d |
| P2.L4.EMT.1190 | Paint - Finish Coat / L4 - E. Mech Tower | 2026-01-20 → 2026-02-19 (+30d) | 2026-01-21 → 2026-02-20 (+30d) |  | 53d → 31d |
| P2.L4.EMT.1120 | HVAC Piping - Equip Tie In / L4 - E. Mech Tower | 2026-01-28 → 2026-02-20 (+23d) | 2026-02-24 → 2026-03-19 (+23d) |  | 19d → 2d |
| P2.L4.EMT.1200 | Trim All MEPF Finishes / L4 - E. Mech Tower | 2026-01-22 → 2026-02-23 (+32d) | 2026-01-23 → 2026-02-24 (+32d) |  | 54d → 32d |
| P2.L4.EMT.1220 | Doors & Hardware / L4 - E. Mech Tower | 2026-01-26 → 2026-02-25 (+30d) | 2026-01-27 → 2026-02-26 (+30d) |  | 54d → 32d |
| P2.L4.EMT.1160 | Insulate HVAC / Plumbing Pipe / L4 - E. Mech Tower | 2026-02-25 → 2026-03-20 (+23d) | 2026-03-17 → 2026-04-09 (+23d) |  | 19d → 2d |

| ID | Task | Start | Finish | Complete | Total float | Predecessors |
| --- | --- | --- | --- | --- | --- | --- |
| P2.L4.EMT.1340 | Wall Protection / L4 - E. Mech Tower | 2026-02-19 → 2026-03-23 (+32d) | 2026-02-25 → 2026-03-27 (+30d) |  | 33d → 11d |  |
| P2.L4.EMT.1230 | Trades Inspect & Verify R/I Work Completed to Specs / L4 - E. Mech Tower | 2026-03-18 → 2026-04-10 (+23d) | 2026-03-24 → 2026-04-16 (+23d) |  | 19d → 2d |  |
| P2.L4.EMT.1250 | Energize Elec Panels - Lock Doors and Limit Access / L4 - E. Mech Tower | 2026-03-25 → 2026-04-17 (+23d) | 2026-03-31 → 2026-04-23 (+23d) |  | 19d → 2d |  |
| P2.L4.EMT.1240 | HVAC System Ready for Start Up / L4 - E. Mech Tower | 2026-03-31 → 2026-04-23 (+23d) | 2026-03-31 → 2026-04-23 (+23d) |  | 149d → 132d |  |
| L5 | **L5 / BUILDOUT** |  | 2026-10-28 → 2026-11-20 (+23d) |  |  |  |
| L5 | **CORE & SUPPORT SPACES / LEVEL 5** |  | 2026-10-28 → 2026-11-20 (+23d) |  |  |  |
| 1 | **ROUGH IN - Core & Support Spaces / Level 5** |  | 2026-02-24 → 2026-03-19 (+23d) |  |  |  |
| Z112 | **South / Level 5** |  | 2026-02-24 → 2026-03-19 (+23d) |  |  |  |
| P2.L5.S.1380 | OH - Conduit - Low Volt - Fire Alarm / L5 / South |  | 2026-01-06 → 2026-02-05 (+30d) |  | 68d → 46d |  |
| P2.L5.S.1250 | Pull Wire - Electrical - 480/277v Distribution / L5 / South |  | 2025-12-12 → 2026-01-15 (+34d) |  | 93d → 71d |  |
| P2.L5.S.1370 | OH - Conduit - Low Volt - BAS/Controls / L5 / South |  | 2025-12-29 → 2026-01-29 (+31d) |  | 73d → 51d |  |
| P2.L5.S.1390 | OH - Conduit - Low Volt - Telecom / L5 / South | 2025-12-22 A | 2026-01-06 → 2026-01-29 (+23d) | 0% → 50% | 68d → 51d |  |
| P2.L5.S.1460 | AHJ Inspections - Wall Close In / L5 / South | 2025-12-01 → 2025-12-29 A (+28d) | 2025-12-05 → 2026-01-08 (+34d) |  | 8d → -9d |  |
| P2.L5.S.1200 | Firestop - Thru Wall - Priority Walls / L5 / South | 2025-12-01 → 2026-01-02 (+32d) | 2025-12-05 → 2026-01-08 (+34d) |  | 68d → 46d |  |
| P2.L5.S.1310 | OH - Set & Connect Mech Equipment / L5 / South | 2025-12-01 → 2026-01-02 (+32d) | 2025-12-12 → 2026-01-15 (+34d) |  | 63d → 33d |  |
| P2.L5.S.1400 | OH - Conduit - Low Volt - Security / L5 / South | 2025-12-01 → 2026-01-02 (+32d) | 2025-12-12 → 2026-01-15 (+34d) |  | 83d → 61d |  |
| P2.L5.S.1350 | OH - Insulate LP Duct / L5 / South | 2025-12-08 → 2026-01-09 (+32d) | 2025-12-19 → 2026-01-22 (+34d) |  | 68d → 46d |  |
| P2.L5.S.1470 | Hang-Tape-Finish - Walls and Hard Lid Ceilings / L5 / South | 2025-12-08 → 2026-01-09 (+32d) | 2025-12-29 → 2026-01-29 (+31d) |  | 8d → -9d |  |
| P2.L5.S.1320 | OH - Electrical - Equip Tie In / L5 / South | 2025-12-15 → 2026-01-16 (+32d) | 2025-12-29 → 2026-01-29 (+31d) |  | 63d → 33d |  |
| P2.L5.S.1360 | Pull Wire - Electrical - 208/120v Branch & Equip / L5 / South | 2025-12-30 → 2026-01-30 (+31d) | 2026-01-27 → 2026-02-26 (+30d) |  | 63d → 33d |  |
| P2.L5.S.1480 | Spray/Seal/Firestop - Head of Wall / L5 / South | 2025-12-30 → 2026-01-30 (+31d) | 2026-01-13 → 2026-02-12 (+30d) |  | 73d → 51d |  |
| P2.L5.S.1490 | Firestop - Thru Wall / L5 / South | 2025-12-30 → 2026-01-30 (+31d) | 2026-01-13 → 2026-02-12 (+30d) |  | 73d → 51d |  |
| P2.L5.S.1500 | Pull Wire - Low Volt - BAS/Controls / L5 / South | 2025-12-30 → 2026-01-30 (+31d) | 2026-01-13 → 2026-02-12 (+30d) |  | 73d → 51d |  |
| P2.L5.S.1520 | Pull Wire - Low Volt - Telecom / L5 / South | 2026-01-07 → 2026-01-30 (+23d) | 2026-01-20 → 2026-02-12 (+23d) |  | 68d → 51d |  |
| P2.L5.S.1530 | Pull Wire - Low Volt - Security / L5 / South | 2025-12-30 → 2026-01-30 (+31d) | 2026-01-13 → 2026-02-12 (+30d) |  | 73d → 51d |  |
| P2.L5.S.1510 | Pull Wire - Low Volt - Fire Alarm / L5 / South | 2026-01-07 → 2026-02-06 (+30d) | 2026-01-20 → 2026-02-19 (+30d) |  | 68d → 46d |  |
| P2.L5.S.1330 | OH - HVAC Piping - Equip Tie In / L5 / South | 2026-01-28 → 2026-02-20 (+23d) | 2026-02-17 → 2026-03-12 (+23d) |  | 48d → 31d |  |
| P2.L5.S.1550 | Trades Inspect & Verify R/I Work Completed to Specs / L5 / South | 2026-02-18 → 2026-03-13 (+23d) | 2026-02-24 → 2026-03-19 (+23d) |  | 48d → 31d |  |
| Z1121 | **North / Level 5** |  | 2026-02-24 → 2026-03-19 (+23d) |  |  |  |
| P2.L5.N.1220 | OH - HVAC Piping / L5 / North |  | 2025-12-05 → 2025-10-26 A (-40d) | 75% → 100% | 64d → none |  |
| P2.L5.N.1300 | OH - Hang Duct - LP Branch / L5 / North |  | 2026-01-06 → 2025-11-14 A (-53d) | 67% → 100% | 53d → none |  |
| P2.L5.N.1270 | OH - HVAC Piping - Test / L5 / North |  | 2025-12-12 → 2025-11-24 A (-18d) | 0% → 100% | 64d → none |  |
| P2.L5.N.1290 | OH - Insulate HP Duct / L5 / North | 2025-12-01 A | 2025-12-29 → 2025-12-12 A (-17d) | 0% → 100% | 53d → none |  |
| P2.L5.N.1340 | OH - Insulate HVAC Pipe / L5 / North | 2025-12-30 → 2025-12-15 A (-15d) | 2026-01-13 → 2026-01-15 (+2d) |  | 54d → 52d |  |
| P2.L5.N.1380 | OH - Conduit - Low Volt - Fire Alarm / L5 / North | 2026-01-21 → 2025-12-22 A (-30d) | 2026-02-03 → 2026-02-05 (+2d) |  | 53d → 51d |  |
| P2.L5.N.1390 | OH - Conduit - Low Volt - Telecom / L5 / North | 2026-01-21 → 2025-12-22 A (-30d) | 2026-02-03 → 2026-02-05 (+2d) |  | 53d → 51d |  |
| P2.L5.N.1200 | Firestop - Thru Wall - Priority Walls / L5 / North | 2025-12-01 → 2026-01-02 (+32d) | 2025-12-05 → 2026-01-08 (+34d) |  | 73d → 51d |  |
| P2.L5.N.1250 | Pull Wire - Electrical - 480/277v Distribution / L5 / North | 2025-12-01 → 2026-01-02 (+32d) | 2025-12-12 → 2026-01-15 (+34d) |  | 98d → 76d |  |
| P2.L5.N.1310 | OH - Set & Connect Mech Equipment / L5 / North | 2025-12-01 → 2026-01-02 (+32d) | 2025-12-12 → 2026-01-15 (+34d) |  | 68d → 33d |  |
| P2.L5.N.1460 | AHJ Inspections - Wall Close In / L5 / North | 2025-12-01 → 2026-01-02 (+32d) | 2025-12-05 → 2026-01-08 (+34d) |  | 8d → -9d |  |
| P2.L5.N.1350 | OH - Insulate LP Duct / L5 / North | 2026-01-07 → 2026-01-09 (+2d) | 2026-01-20 → 2026-01-22 (+2d) |  | 53d → 51d |  |
| P2.L5.N.1470 | Hang-Tape-Finish - Walls and Hard Lid Ceilings / L5 / North | 2025-12-08 → 2026-01-09 (+32d) | 2025-12-29 → 2026-01-29 (+31d) |  | 8d → -9d |  |
| P2.L5.N.1320 | OH - Electrical - Equip Tie In / L5 / North | 2025-12-15 → 2026-01-16 (+32d) | 2025-12-29 → 2026-01-29 (+31d) |  | 68d → 33d |  |
| P2.L5.N.1370 | OH - Conduit - Low Volt - BAS/Controls / L5 / North | 2026-01-14 → 2026-01-16 (+2d) | 2026-01-27 → 2026-01-29 (+2d) |  | 54d → 52d |  |
| P2.L5.N.1400 | OH - Conduit - Low Volt - Security / L5 / North | 2026-01-14 → 2026-01-16 (+2d) | 2026-01-27 → 2026-01-29 (+2d) |  | 58d → 56d |  |
| P2.L5.N.1360 | Pull Wire - Electrical - 208/120v Branch & Equip / L5 / North | 2025-12-30 → 2026-01-30 (+31d) | 2026-01-27 → 2026-02-26 (+30d) |  | 68d → 33d |  |
| P2.L5.N.1480 | Spray/Seal/Firestop - Head of Wall / L5 / North | 2025-12-30 → 2026-01-30 (+31d) | 2026-01-13 → 2026-02-12 (+30d) |  | 78d → 56d |  |
| P2.L5.N.1490 | Firestop - Thru Wall / L5 / North | 2025-12-30 → 2026-01-30 (+31d) | 2026-01-13 → 2026-02-12 (+30d) |  | 78d → 56d |  |
| P2.L5.N.1500 | Pull Wire - Low Volt - BAS/Controls / L5 / North | 2026-01-28 → 2026-01-30 (+2d) | 2026-02-10 → 2026-02-12 (+2d) |  | 54d → 52d | P2.L5.N.1470, P2.L5.N.1370 → P2.L5.N.1370 |
| P2.L5.N.1530 | Pull Wire - Low Volt - Security / L5 / North | 2026-01-28 → 2026-01-30 (+2d) | 2026-02-10 → 2026-02-12 (+2d) |  | 58d → 56d | P2.L5.N.1470, P2.L5.N.1400 → P2.L5.N.1400 |
| P2.L5.N.1510 | Pull Wire - Low Volt - Fire Alarm / L5 / North | 2026-02-04 → 2026-02-06 (+2d) | 2026-02-17 → 2026-02-19 (+2d) |  | 53d → 51d | P2.L5.N.1470, P2.L5.N.1380 → P2.L5.N.1380 |
| P2.L5.N.1520 | Pull Wire - Low Volt - Telecom / L5 / North | 2026-02-04 → 2026-02-06 (+2d) | 2026-02-17 → 2026-02-19 (+2d) |  | 53d → 51d | P2.L5.N.1470, P2.L5.N.1390 → P2.L5.N.1390 |
| P2.L5.N.1330 | OH - HVAC Piping - Equip Tie In / L5 / North | 2026-01-28 → 2026-02-20 (+23d) | 2026-02-17 → 2026-03-12 (+23d) |  | 53d → 36d |  |
| P2.L5.N.1550 | Trades Inspect & Verify R/I Work Completed to Specs / L5 / North | 2026-02-18 → 2026-03-13 (+23d) | 2026-02-24 → 2026-03-19 (+23d) |  | 53d → 36d |  |
| 1 | **House Electrical Rooms / Level 5** |  | 2026-01-02 → 2026-03-17 (+74d) |  |  |  |
| 9 | **House Electrical Room 5-3989** |  | 2026-01-02 → 2026-03-17 (+74d) |  |  |  |
| P2.5.HE.3989.1070 | Pull Wire - In From Distribution Panels / Out to Branch Circuits / L5 / South / 3989 |  |  |  |  | P2.5.HE.3989.1060 → P2.5.HE.3989.1060, P2.L5.LC.1360, P2.L5.S.1360, P2.5.HE.3989.1080 |
| P2.5.HE.3989.1080 | Panelboards, Interconnect Wiring, and Remaining Room Buildout of All Systems / L5 / South / 3989 | 2025-12-01 A | 2025-12-12 A | 0% → 100% | 26d → none |  |
| P2.5.HE.3989.1100 | Paint - Finish Coat / L5 / South / 3989 | 2025-12-22 → 2025-12-10 A (-12d) | 2025-12-23 → 2025-12-12 A (-11d) | 0% → 100% | 26d → none |  |
| P2.5.HE.3989.1130 | Doors & Hardware / L5 / South / 3989 | 2025-12-31 → 2025-12-18 A (-13d) | 2026-01-02 → 2025-12-24 A (-9d) | 0% → 100% | 26d → none |  |
| P2.5.HE.3989.1090 | Test & Terminate / L5 / South / 3989 | 2025-12-15 → 2026-03-05 (+80d) | 2025-12-19 → 2026-03-11 (+82d) |  | 26d → 29d |  |
| P2.5.HE.3989.1110 | Trim All MEPF Finishes / L5 / South / 3989 | 2025-12-24 → 2026-03-12 (+78d) | 2025-12-26 → 2026-03-13 (+77d) |  | 26d → 29d |  |
| P2.5.HE.3989.1120 | Flooring / L5 / South / 3989 | 2025-12-29 → 2026-03-16 (+77d) | 2025-12-30 → 2026-03-17 (+77d) |  | 26d → 29d |  |
| P2.5.HE.3989.1140 | Panels Ready to Energize - Lock Doors and Limit Access / L5 / South / 3989 | 2026-01-02 → 2026-03-17 (+74d) | 2026-01-02 → 2026-03-17 (+74d) |  | 26d → 29d |  |
| 8 | **House Electrical Room 5-2949** |  | 2026-01-02 → 2026-03-17 (+74d) |  |  |  |
| P2.5.HE.2949.1070 | Pull Wire - In From Distribution Panels / Out to Branch Circuits / L5 / North / 2949 |  |  |  |  | P2.5.HE.2949.1060 → P2.5.HE.2949.1060, P2.L5.LC.1360, P2.L5.N.1360 |
| P2.5.HE.2949.1080 | Panelboards, Interconnect Wiring, and Remaining Room Buildout of All Systems / L5 / North / 2949 | 2025-12-01 A | 2025-12-12 A | 0% → 100% | 26d → none |  |
| P2.5.HE.2949.1100 | Paint - Finish Coat / L5 / North / 2949 | 2025-12-22 → 2025-12-10 A (-12d) | 2025-12-23 → 2025-12-12 A (-11d) | 0% → 100% | 26d → none |  |
| P2.5.HE.2949.1130 | Doors & Hardware / L5 / North / 2949 | 2025-12-31 → 2025-12-18 A (-13d) | 2026-01-02 → 2025-12-24 A (-9d) | 0% → 100% | 26d → none |  |
| P2.5.HE.2949.1090 | Test & Terminate / L5 / North / 2949 | 2025-12-15 → 2026-03-05 (+80d) | 2025-12-19 → 2026-03-11 (+82d) |  | 26d → 29d |  |

| ID | Task | Start | Finish | Complete | Total float | Predecessors |
| --- | --- | --- | --- | --- | --- | --- |
| P2.5.HE.2949.1110 | Trim All MEPF Finishes / L5 / North / 2949 | 2025-12-24 → 2026-03-12 (+78d) | 2025-12-26 → 2026-03-13 (+77d) |  | 26d → 29d |  |
| P2.5.HE.2949.1120 | Flooring / L5 / North / 2949 | 2025-12-29 → 2026-03-16 (+77d) | 2025-12-30 → 2026-03-17 (+77d) |  | 26d → 29d |  |
| P2.5.HE.2949.1140 | Panels Ready to Energize - Lock Doors and Limit Access / L5 / North / 2949 | 2026-01-02 → 2026-03-17 (+74d) | 2026-01-02 → 2026-03-17 (+74d) |  | 26d → 29d |  |
| 7 | **House Electrical Room 5-2803** |  | 2026-01-02 → 2026-03-17 (+74d) |  |  |  |
| P2.5.HE.2803.1070 | Pull Wire - In From Distribution Panels / Out to Branch Circuits / L5 / North / 2803 |  |  |  |  | P2.5.HE.2803.1060 → P2.5.HE.2803.1060, P2.L5.LC.1360, P2.L5.N.1360 |
| P2.5.HE.2803.1080 | Panelboards, Interconnect Wiring, and Remaining Room Buildout of All Systems / L5 / North / 2803 | 2025-12-01 A | 2025-12-12 A | 0% → 100% | 26d → none |  |
| P2.5.HE.2803.1100 | Paint - Finish Coat / L5 / North / 2803 | 2025-12-22 → 2025-12-10 A (-12d) | 2025-12-23 → 2025-12-12 A (-11d) | 0% → 100% | 26d → none |  |
| P2.5.HE.2803.1130 | Doors & Hardware / L5 / North / 2803 | 2025-12-31 → 2025-12-18 A (-13d) | 2026-01-02 → 2025-12-24 A (-9d) | 0% → 100% | 26d → none |  |
| P2.5.HE.2803.1090 | Test & Terminate / L5 / North / 2803 | 2025-12-15 → 2026-03-05 (+80d) | 2025-12-19 → 2026-03-11 (+82d) |  | 26d → 29d |  |
| P2.5.HE.2803.1110 | Trim All MEPF Finishes / L5 / North / 2803 | 2025-12-24 → 2026-03-12 (+78d) | 2025-12-26 → 2026-03-13 (+77d) |  | 26d → 29d |  |
| P2.5.HE.2803.1120 | Flooring / L5 / North / 2803 | 2025-12-29 → 2026-03-16 (+77d) | 2025-12-30 → 2026-03-17 (+77d) |  | 26d → 29d |  |
| P2.5.HE.2803.1140 | Panels Ready to Energize - Lock Doors and Limit Access / L5 / North / 2803 | 2026-01-02 → 2026-03-17 (+74d) | 2026-01-02 → 2026-03-17 (+74d) |  | 26d → 29d |  |
| 6 | **House Electrical Room 5-5966** |  | 2026-01-02 → 2026-03-17 (+74d) |  |  |  |
| P2.5.HE.5966.1070 | Pull Wire - In From Distribution Panels / Out to Branch Circuits / L5 / South / 5966 |  |  |  |  | P2.5.HE.5966.1060 → P2.5.HE.5966.1060, P2.L5.S.1360, P2.L5.LC.1360 |
| P2.5.HE.5966.1080 | Panelboards, Interconnect Wiring, and Remaining Room Buildout of All Systems / L5 / South / 5966 | 2025-12-01 A | 2025-12-12 A | 0% → 100% | 26d → none | BP1.262.3.100, BP1.262.3.210, P2.5.HE.5966.1060 → BP1.262.3.100, BP1.262.3.210, P2.5.HE.5966.1060, P2.L5.S.1360 |
| P2.5.HE.5966.1100 | Paint - Finish Coat / L5 / South / 5966 | 2025-12-22 → 2025-12-10 A (-12d) | 2025-12-23 → 2025-12-12 A (-11d) | 0% → 100% | 26d → none |  |
| P2.5.HE.5966.1130 | Doors & Hardware / L5 / South / 5966 | 2025-12-31 → 2025-12-18 A (-13d) | 2026-01-02 → 2025-12-24 A (-9d) | 0% → 100% | 26d → none |  |
| P2.5.HE.5966.1090 | Test & Terminate / L5 / South / 5966 | 2025-12-15 → 2026-03-05 (+80d) | 2025-12-19 → 2026-03-11 (+82d) |  | 26d → 29d |  |
| P2.5.HE.5966.1110 | Trim All MEPF Finishes / L5 / South / 5966 | 2025-12-24 → 2026-03-12 (+78d) | 2025-12-26 → 2026-03-13 (+77d) |  | 26d → 29d |  |
| P2.5.HE.5966.1120 | Flooring / L5 / South / 5966 | 2025-12-29 → 2026-03-16 (+77d) | 2025-12-30 → 2026-03-17 (+77d) |  | 26d → 29d |  |
| P2.5.HE.5966.1140 | Panels Ready to Energize - Lock Doors and Limit Access / L5 / South / 5966 | 2026-01-02 → 2026-03-17 (+74d) | 2026-01-02 → 2026-03-17 (+74d) |  | 26d → 29d |  |
| 3 | **FINISHES - Core & Support Spaces / Level 5** |  | 2026-10-28 → 2026-11-20 (+23d) |  |  |  |
| 7KSF1 | **HT Chief - Fellows/Students - Offices - Z2/Z3 (~4,300 sf) / Level 5** | 2026-03-04 → 2026-03-27 (+23d) | 2026-09-25 → 2026-10-20 (+25d) |  |  |  |
| 1 | **Finishes** | 2026-03-04 → 2026-03-27 (+23d) | 2026-09-25 → 2026-10-20 (+25d) |  |  |  |
| P2.L5.F.CS.2000 | Paint Prime & 1st Coat Walls / L5 / Perim Offices Z2,Z3 | 2026-03-04 → 2026-03-27 (+23d) | 2026-03-10 → 2026-04-02 (+23d) |  | 48d → 31d |  |
| P2.L5.F.CS.2020 | R/I - Ceiling Assemblies & Supports - All Trades (A/V, Oper Part, Glass Part, etc.) / L5 / Perim Offices Z2,Z3 | 2026-03-11 → 2026-04-03 (+23d) | 2026-03-17 → 2026-04-09 (+23d) |  | 101d → 84d |  |
| P2.L5.F.CS.2010 | T-Grid / L5 / Perim Offices Z2,Z3 | 2026-03-18 → 2026-04-10 (+23d) | 2026-03-24 → 2026-04-16 (+23d) |  | 101d → 84d |  |
| P2.L5.F.CS.2050 | Sprinkler Heads in T-Grid / L5 / Perim Offices Z2,Z3 | 2026-03-25 → 2026-04-17 (+23d) | 2026-03-31 → 2026-04-23 (+23d) |  | 101d → 84d |  |
| P2.L5.F.CS.2030 | Diffusers in T-Grid / L5 / Perim Offices Z2,Z3 | 2026-04-01 → 2026-04-24 (+23d) | 2026-04-07 → 2026-04-30 (+23d) |  | 101d → 84d |  |
| P2.L5.F.CS.2040 | Lights & Elec Devices in T-Grid / L5 / Perim Offices Z2,Z3 | 2026-04-08 → 2026-05-01 (+23d) | 2026-04-21 → 2026-05-14 (+23d) |  | 101d → 84d |  |
| P2.L5.F.CS.2070 | Fire Alarm in T-Grid / L5 / Perim Offices Z2,Z3 | 2026-04-22 → 2026-05-15 (+23d) | 2026-04-28 → 2026-05-21 (+23d) |  | 101d → 84d |  |
| P2.L5.F.CS.2060 | Low Voltage in T-Grid / L5 / Perim Offices Z2,Z3 | 2026-04-29 → 2026-05-22 (+23d) | 2026-05-05 → 2026-05-29 (+24d) |  | 101d → 84d |  |
| P2.L5.F.CS.2080 | OH Ceiling Signoff / L5 / Perim Offices Z2,Z3 | 2026-05-06 → 2026-06-01 (+26d) | 2026-05-12 → 2026-06-05 (+24d) |  | 101d → 84d |  |
| P2.L5.F.CS.2110 | Drop Ceiling Tile / L5 / Perim Offices Z2,Z3 | 2026-05-13 → 2026-06-08 (+26d) | 2026-05-19 → 2026-06-12 (+24d) |  | 101d → 84d |  |
| P2.L5.F.CS.2090 | Millwork / L5 / Perim Offices Z2,Z3 | 2026-05-20 → 2026-06-15 (+26d) | 2026-05-27 → 2026-06-19 (+23d) |  | 101d → 84d |  |
| P2.L5.F.CS.2100 | Plumbing Fixtures / L5 / Perim Offices Z2,Z3 | 2026-05-28 → 2026-06-22 (+25d) | 2026-06-03 → 2026-06-26 (+23d) |  | 101d → 84d |  |
| P2.L5.F.CS.2120 | Floor Prep / L5 / Perim Offices Z2,Z3 | 2026-06-04 → 2026-06-29 (+25d) | 2026-06-10 → 2026-07-06 (+26d) |  | 101d → 84d |  |
| P2.L5.F.CS.2130 | Floor Finishes / L5 / Perim Offices Z2,Z3 | 2026-06-11 → 2026-07-07 (+26d) | 2026-06-17 → 2026-07-13 (+26d) |  | 101d → 84d |  |
| P2.L5.F.CS.2140 | Doors & Hardware / L5 / Perim Offices Z2,Z3 | 2026-06-18 → 2026-07-14 (+26d) | 2026-06-24 → 2026-07-20 (+26d) |  | 101d → 84d |  |
| P2.L5.F.CS.2150 | Paint - Finish Coat / L5 / Perim Offices Z2,Z3 | 2026-06-25 → 2026-07-21 (+26d) | 2026-07-01 → 2026-07-27 (+26d) |  | 101d → 84d |  |
| P2.L5.F.CS.2200 | Floor Base / L5 / Perim Offices Z2,Z3 | 2026-07-02 → 2026-07-28 (+26d) | 2026-07-09 → 2026-08-03 (+25d) |  | 101d → 84d |  |
| P2.L5.F.CS.2170 | Trim T-Stats / L5 / Perim Offices Z2,Z3 | 2026-07-10 → 2026-08-04 (+25d) | 2026-07-16 → 2026-08-10 (+25d) |  | 101d → 84d |  |
| P2.L5.F.CS.2210 | Demountable Partitions / L5 / Perim Offices Z2,Z3 | 2026-07-10 → 2026-08-04 (+25d) | 2026-07-16 → 2026-08-10 (+25d) |  | 111d → 94d |  |
| P2.L5.F.CS.2160 | Set AV/IT Devices and Configure / L5 / Perim Offices Z2,Z3 | 2026-07-17 → 2026-08-11 (+25d) | 2026-07-23 → 2026-08-17 (+25d) |  | 101d → 84d |  |
| P2.L5.F.CS.2220 | Trim Electrical / L5 / Perim Offices Z2,Z3 | 2026-07-17 → 2026-08-11 (+25d) | 2026-07-23 → 2026-08-17 (+25d) |  | 111d → 94d |  |
| P2.L5.F.CS.2230 | Trim Telephone/ Data / L5 / Perim Offices Z2,Z3 | 2026-07-17 → 2026-08-11 (+25d) | 2026-07-23 → 2026-08-17 (+25d) |  | 111d → 94d |  |
| P2.L5.F.CS.2180 | Building Specialities / L5 / Perim Offices Z2,Z3 | 2026-07-24 → 2026-08-18 (+25d) | 2026-07-30 → 2026-08-24 (+25d) |  | 101d → 84d |  |
| P2.L5.F.CS.2190 | Interior Building Signage / L5 / Perim Offices Z2,Z3 | 2026-07-31 → 2026-08-25 (+25d) | 2026-08-06 → 2026-08-31 (+25d) |  | 101d → 84d |  |
| P2.L5.F.CS.2240 | Work Completion List - Finishes / L5 / Perim Offices Z2,Z3 | 2026-08-07 → 2026-09-01 (+25d) | 2026-08-13 → 2026-09-08 (+26d) |  | 101d → 84d |  |
| P2.L5.F.CS.2250 | Rough Clean / L5 / Perim Offices Z2,Z3 | 2026-08-14 → 2026-09-09 (+26d) | 2026-08-20 → 2026-09-15 (+26d) |  | 101d → 84d |  |
| P2.L5.F.CS.2260 | FF&E / L5 / Perim Offices Z2,Z3 | 2026-08-21 → 2026-09-16 (+26d) | 2026-08-27 → 2026-09-22 (+26d) |  | 101d → 84d |  |
| P2.L5.F.CS.2270 | Prepare Punchlist / L5 / Perim Offices Z2,Z3 | 2026-08-28 → 2026-09-23 (+26d) | 2026-09-03 → 2026-09-29 (+26d) |  | 101d → 84d |  |
| P2.L5.F.CS.2280 | Correct Punchlist / L5 / Perim Offices Z2,Z3 | 2026-09-04 → 2026-09-30 (+26d) | 2026-09-18 → 2026-10-13 (+25d) |  | 101d → 84d |  |
| P2.L5.F.CS.2290 | Final Clean / L5 / Perim Offices Z2,Z3 | 2026-09-21 → 2026-10-14 (+23d) | 2026-09-25 → 2026-10-20 (+25d) |  | 101d → 84d |  |
| 7KSF11 | **DLM Chief - Admin - Offices - Z1/Z2 (2,643 sf) / Level 5** | 2026-02-25 → 2026-03-20 (+23d) | 2026-09-18 → 2026-10-13 (+25d) |  |  |  |
| 1 | **Finishes** | 2026-02-25 → 2026-03-20 (+23d) | 2026-09-18 → 2026-10-13 (+25d) |  |  |  |
| P2.L5.F.CS.1000 | Paint Prime & 1st Coat Walls / L5 / DLM Offices Z1 | 2026-02-25 → 2026-03-20 (+23d) | 2026-03-03 → 2026-03-26 (+23d) |  | 48d → 31d |  |
| P2.L5.F.CS.1020 | R/I - Ceiling Assemblies & Supports - All Trades (A/V, Oper Part, Glass Part, etc.) / L5 / DLM Offices Z1 | 2026-03-04 → 2026-03-27 (+23d) | 2026-03-10 → 2026-04-02 (+23d) |  | 106d → 89d |  |
| P2.L5.F.CS.1010 | T-Grid / L5 / DLM Offices Z1 | 2026-03-11 → 2026-04-03 (+23d) | 2026-03-17 → 2026-04-09 (+23d) |  | 106d → 89d |  |
| P2.L5.F.CS.1050 | Sprinkler Heads in T-Grid / L5 / DLM Offices Z1 | 2026-03-18 → 2026-04-10 (+23d) | 2026-03-24 → 2026-04-16 (+23d) |  | 106d → 89d |  |
| P2.L5.F.CS.1030 | Diffusers in T-Grid / L5 / DLM Offices Z1 | 2026-03-25 → 2026-04-17 (+23d) | 2026-03-31 → 2026-04-23 (+23d) |  | 106d → 89d |  |
| P2.L5.F.CS.1040 | Lights & Elec Devices in T-Grid / L5 / DLM Offices Z1 | 2026-04-01 → 2026-04-24 (+23d) | 2026-04-14 → 2026-05-07 (+23d) |  | 106d → 89d |  |
| P2.L5.F.CS.1070 | Fire Alarm in T-Grid / L5 / DLM Offices Z1 | 2026-04-15 → 2026-05-08 (+23d) | 2026-04-21 → 2026-05-14 (+23d) |  | 106d → 89d |  |
| P2.L5.F.CS.1060 | Low Voltage in T-Grid / L5 / DLM Offices Z1 | 2026-04-22 → 2026-05-15 (+23d) | 2026-04-28 → 2026-05-21 (+23d) |  | 106d → 89d |  |
| P2.L5.F.CS.1080 | OH Ceiling Signoff / L5 / DLM Offices Z1 | 2026-04-29 → 2026-05-22 (+23d) | 2026-05-05 → 2026-05-29 (+24d) |  | 106d → 89d |  |
| P2.L5.F.CS.1110 | Drop Ceiling Tile / L5 / DLM Offices Z1 | 2026-05-06 → 2026-06-01 (+26d) | 2026-05-12 → 2026-06-05 (+24d) |  | 106d → 89d |  |
| P2.L5.F.CS.1090 | Millwork / L5 / DLM Offices Z1 | 2026-05-13 → 2026-06-08 (+26d) | 2026-05-19 → 2026-06-12 (+24d) |  | 106d → 89d |  |
| P2.L5.F.CS.1100 | Plumbing Fixtures / L5 / DLM Offices Z1 | 2026-05-20 → 2026-06-15 (+26d) | 2026-05-27 → 2026-06-19 (+23d) |  | 106d → 89d |  |
| P2.L5.F.CS.1120 | Floor Prep / L5 / DLM Offices Z1 | 2026-05-28 → 2026-06-22 (+25d) | 2026-06-03 → 2026-06-26 (+23d) |  | 106d → 89d |  |
| P2.L5.F.CS.1130 | Floor Finishes / L5 / DLM Offices Z1 | 2026-06-04 → 2026-06-29 (+25d) | 2026-06-10 → 2026-07-06 (+26d) |  | 106d → 89d |  |

| ID | Task | Start | Finish | Complete | Total float |
| --- | --- | --- | --- | --- | --- |
| P2.L5.F.CS.1140 | Doors & Hardware / L5 / DLM Offices Z1 | 2026-06-11 → 2026-07-07 (+26d) | 2026-06-17 → 2026-07-13 (+26d) |  | 106d → 89d |
| P2.L5.F.CS.1150 | Paint - Finish Coat / L5 / DLM Offices Z1 | 2026-06-18 → 2026-07-14 (+26d) | 2026-06-24 → 2026-07-20 (+26d) |  | 106d → 89d |
| P2.L5.F.CS.1200 | Floor Base / L5 / DLM Offices Z1 | 2026-06-25 → 2026-07-21 (+26d) | 2026-07-01 → 2026-07-27 (+26d) |  | 106d → 89d |
| P2.L5.F.CS.1170 | Trim T-Stats / L5 / DLM Offices Z1 | 2026-07-02 → 2026-07-28 (+26d) | 2026-07-09 → 2026-08-03 (+25d) |  | 106d → 89d |
| P2.L5.F.CS.1210 | Demountable Partitions / L5 / DLM Offices Z1 | 2026-07-02 → 2026-07-28 (+26d) | 2026-07-09 → 2026-08-03 (+25d) |  | 116d → 99d |
| P2.L5.F.CS.1160 | Set AV/IT Devices and Configure / L5 / DLM Offices Z1 | 2026-07-10 → 2026-08-04 (+25d) | 2026-07-16 → 2026-08-10 (+25d) |  | 106d → 89d |
| P2.L5.F.CS.1220 | Trim Electrical / L5 / DLM Offices Z1 | 2026-07-10 → 2026-08-04 (+25d) | 2026-07-16 → 2026-08-10 (+25d) |  | 116d → 99d |
| P2.L5.F.CS.1230 | Trim Telephone/ Data / L5 / DLM Offices Z1 | 2026-07-10 → 2026-08-04 (+25d) | 2026-07-16 → 2026-08-10 (+25d) |  | 116d → 99d |
| P2.L5.F.CS.1180 | Building Specialities / L5 / DLM Offices Z1 | 2026-07-17 → 2026-08-11 (+25d) | 2026-07-23 → 2026-08-17 (+25d) |  | 106d → 89d |
| P2.L5.F.CS.1190 | Interior Building Signage / L5 / DLM Offices Z1 | 2026-07-24 → 2026-08-18 (+25d) | 2026-07-30 → 2026-08-24 (+25d) |  | 106d → 89d |
| P2.L5.F.CS.1240 | Work Completion List - Finishes / L5 / DLM Offices Z1 | 2026-07-31 → 2026-08-25 (+25d) | 2026-08-06 → 2026-08-31 (+25d) |  | 106d → 89d |
| P2.L5.F.CS.1250 | Rough Clean / L5 / DLM Offices Z1 | 2026-08-07 → 2026-09-01 (+25d) | 2026-08-13 → 2026-09-08 (+26d) |  | 106d → 89d |
| P2.L5.F.CS.1260 | FF&E / L5 / DLM Offices Z1 | 2026-08-14 → 2026-09-09 (+26d) | 2026-08-20 → 2026-09-15 (+26d) |  | 106d → 89d |
| P2.L5.F.CS.1270 | Prepare Punchlist / L5 / DLM Offices Z1 | 2026-08-21 → 2026-09-16 (+26d) | 2026-08-27 → 2026-09-22 (+26d) |  | 106d → 89d |
| P2.L5.F.CS.1280 | Correct Punchlist / L5 / DLM Offices Z1 | 2026-08-28 → 2026-09-23 (+26d) | 2026-09-11 → 2026-10-06 (+25d) |  | 106d → 89d |
| P2.L5.F.CS.1290 | Final Clean / L5 / DLM Offices Z1 | 2026-09-14 → 2026-10-07 (+23d) | 2026-09-18 → 2026-10-13 (+25d) |  | 106d → 89d |
| 5 | **Bathrooms - Break Rooms - Locker Rooms / Level 5** |  | 2026-05-27 → 2026-06-15 (+19d) |  |  |
| 1 | **Toilets 5-2807 / 5-2809** |  | 2026-04-21 → 2026-05-08 (+17d) |  |  |
| P2.L5.BR.1020 | Plumbing - Test Pipe / L5 / Toilets 280X |  | 2025-12-22 → 2025-10-29 A (-54d) |  | 157d → none |
| P2.L5.BR.1050 | Duct Drops _ Hard Lids / L5 / Toilets 280X | 2025-12-29 → 2025-12-01 A (-28d) | 2025-12-30 → 2025-12-02 A (-28d) | 0% → 100% | 151d → none |
| P2.L5.BR.1070 | In Wall - Insulate Plumbing / L5 / Toilets 280X | 2025-12-31 → 2025-12-01 A (-30d) | 2026-01-02 → 2025-12-02 A (-31d) | 0% → 100% | 151d → none |
| P2.L5.BR.1010 | Framing & Blocking - Walls and Hard Lid Ceilings / L5 / Toilets 280X | 2025-12-22 → 2026-01-02 (+11d) | 2025-12-23 → 2026-01-05 (+13d) |  | 151d → 148d |
| P2.L5.BR.1040 | Trim Sprinkler Drops _ Hard Lids / L5 / Toilets 280X | 2025-12-24 → 2026-01-06 (+13d) | 2025-12-26 → 2026-01-07 (+12d) |  | 151d → 148d |
| P2.L5.BR.1030 | R/I - Electrical _ Hard Lids / L5 / Toilets 280X | 2026-01-05 → 2026-01-08 (+3d) | 2026-01-09 → 2026-01-14 (+5d) |  | 151d → 148d |
| P2.L5.BR.1060 | R/I - Fire Alarm _ Hard Lids / L5 / Toilets 280X | 2026-01-12 → 2026-01-15 (+3d) | 2026-01-16 → 2026-01-21 (+5d) |  | 151d → 148d |
| P2.L5.BR.1080 | Inspection - Close In - Walls and Hard Lid Ceilings / L5 / Toilets 280X | 2026-01-19 → 2026-01-22 (+3d) | 2026-01-21 → 2026-01-26 (+5d) |  | 151d → 148d |
| P2.L5.BR.1090 | Hang-Tape-Finish _ Walls and Hard Lids Ceilings / L5 / Toilets 280X | 2026-01-22 → 2026-01-27 (+5d) | 2026-01-28 → 2026-02-02 (+5d) |  | 151d → 148d |
| P2.L5.BR.1100 | Paint Prime & Final Coat _ Walls & Hard Lid Ceilings / L5 / Toilets 280X | 2026-01-29 → 2026-02-03 (+5d) | 2026-01-30 → 2026-02-04 (+5d) |  | 151d → 148d |
| P2.L5.BR.1140 | Trim - HVAC G/R/D's / L5 / Toilets 280X | 2026-02-02 → 2026-02-05 (+3d) | 2026-02-03 → 2026-02-06 (+3d) |  | 151d → 148d |
| P2.L5.BR.1120 | Pull Wire & Trim Devices - Electrical / L5 / Toilets 280X | 2026-02-04 → 2026-02-09 (+5d) | 2026-02-05 → 2026-02-10 (+5d) |  | 151d → 148d |
| P2.L5.BR.1130 | Lights - Set & Terminate / L5 / Toilets 280X | 2026-02-04 → 2026-02-09 (+5d) | 2026-02-05 → 2026-02-10 (+5d) |  | 156d → 153d |
| P2.L5.BR.1110 | Pull Wire & Trim Devices - Fire Alarm / L5 / Toilets 280X | 2026-02-06 → 2026-02-11 (+5d) | 2026-02-12 → 2026-02-17 (+5d) |  | 151d → 148d |
| P2.L5.BR.1150 | Wall Tile / L5 / Toilets 280X | 2026-02-13 → 2026-02-18 (+5d) | 2026-02-19 → 2026-02-24 (+5d) |  | 151d → 148d |
| P2.L5.BR.2310 | Flooring Prep - Epoxy Floors / L5 / Toilets 280X | 2026-04-02 → 2026-04-21 (+19d) | 2026-04-02 → 2026-04-21 (+19d) |  | 122d → 109d |
| P2.L5.BR.2320 | Flooring - Epoxy Floors / L5 / Toilets 280X | 2026-04-03 → 2026-04-22 (+19d) | 2026-04-06 → 2026-04-23 (+17d) |  | 203d → 190d |
| P2.L5.BR.1160 | Doors & Hardware / L5 / Toilets 280X | 2026-04-07 → 2026-04-24 (+17d) | 2026-04-08 → 2026-04-27 (+19d) |  | 203d → 190d |
| P2.L5.BR.1170 | Plumbing Fixtures / Sinks / Showers / L5 / Toilets 280X | 2026-04-09 → 2026-04-28 (+19d) | 2026-04-10 → 2026-04-29 (+19d) |  | 211d → 198d |
| P2.L5.BR.1180 | Bathroom Accessories / L5 / Toilets 280X | 2026-04-13 → 2026-04-30 (+17d) | 2026-04-14 → 2026-05-01 (+17d) |  | 211d → 198d |
| P2.L5.BR.1190 | Work Completion List - Finishes / L5 / Toilets 280X | 2026-04-15 → 2026-05-04 (+19d) | 2026-04-21 → 2026-05-08 (+17d) |  | 211d → 198d |
| 4 | **Lockers, Toilets, and Showers 5-3964 / 5-3962** |  | 2026-05-27 → 2026-06-15 (+19d) |  |  |
| P2.L5.BR.2080 | In Wall - Insulate Plumbing / L5 / Toilets 396X | 2025-12-22 → 2025-12-01 A (-21d) | 2025-12-29 → 2025-12-05 A (-24d) | 0% → 100% | 132d → none |
| P2.L5.BR.2070 | R/I - Fire Alarm _ Hard Lids / L5 / Toilets 396X | 2026-01-07 → 2025-12-15 A (-23d) | 2026-01-13 → 2025-12-19 A (-25d) | 0% → 100% | 122d → none |
| P2.L5.BR.2020 | Frame - Chase Walls and Hard Lid Ceilings / L5 / Toilets 396X | 2025-12-22 → 2026-01-02 (+11d) | 2025-12-29 → 2026-01-08 (+10d) |  | 122d → 120d |
| P2.L5.BR.2040 | R/I - Electrical _ Hard Lids / L5 / Toilets 396X | 2025-12-30 → 2026-01-09 (+10d) | 2026-01-06 → 2026-01-15 (+9d) |  | 122d → 120d |
| P2.L5.BR.2050 | Trim Sprinkler Drops _ Hard Lids / L5 / Toilets 396X | 2025-12-30 → 2026-01-09 (+10d) | 2026-01-06 → 2026-01-15 (+9d) |  | 127d → 120d |
| P2.L5.BR.2090 | Inspection - Close In - Chase Walls and Hard Lid Ceilings / L5 / Toilets 396X | 2026-01-14 → 2026-01-16 (+2d) | 2026-01-20 → 2026-01-22 (+2d) |  | 122d → 120d |
| P2.L5.BR.2100 | Hang-Tape-Finish _ Chase Walls and Hard Lids Ceilings / L5 / Toilets 396X | 2026-01-21 → 2026-01-23 (+2d) | 2026-01-27 → 2026-01-29 (+2d) |  | 122d → 120d |
| P2.L5.BR.2110 | Paint Prime & 1st Coat _ Walls & Hard Lid Ceilings / L5 / Toilets 396X | 2026-01-28 → 2026-01-30 (+2d) | 2026-02-03 → 2026-02-05 (+2d) |  | 122d → 120d |
| P2.L5.BR.2140 | Ceiling Grid / L5 / Toilets 396X | 2026-02-04 → 2026-02-06 (+2d) | 2026-02-10 → 2026-02-12 (+2d) |  | 122d → 120d |
| P2.L5.BR.2170 | Trim Sprinkler Drops _ Ceiling Tiles / L5 / Toilets 396X | 2026-02-11 → 2026-02-13 (+2d) | 2026-02-17 → 2026-02-19 (+2d) |  | 122d → 120d |
| P2.L5.BR.2160 | Trim - HVAC G/R/D's / L5 / Toilets 396X | 2026-02-18 → 2026-02-20 (+2d) | 2026-02-24 → 2026-02-26 (+2d) |  | 122d → 120d |
| P2.L5.BR.2130 | Pull Wire - Electrical / L5 / Toilets 396X | 2026-02-25 → 2026-02-27 (+2d) | 2026-03-03 → 2026-03-05 (+2d) |  | 122d → 120d |
| P2.L5.BR.2120 | Pull Wire - Fire Alarm / L5 / Toilets 396X | 2026-03-04 → 2026-03-06 (+2d) | 2026-03-10 → 2026-03-12 (+2d) |  | 209d → 207d |
| P2.L5.BR.2150 | Lights - Set & Terminate / L5 / Toilets 396X | 2026-03-04 → 2026-03-06 (+2d) | 2026-03-10 → 2026-03-12 (+2d) |  | 122d → 120d |
| P2.L5.BR.2180 | Inspection - Ceiling Close In - ACT Ceilings / L5 / Toilets 396X | 2026-03-11 → 2026-03-13 (+2d) | 2026-03-17 → 2026-03-19 (+2d) |  | 122d → 120d |
| P2.L5.BR.2190 | Ceiling Tiles / L5 / Toilets 396X | 2026-03-18 → 2026-03-20 (+2d) | 2026-03-24 → 2026-03-26 (+2d) |  | 122d → 120d |
| P2.L5.BR.2200 | Wall Tile / L5 / Toilets 396X | 2026-03-25 → 2026-03-27 (+2d) | 2026-03-31 → 2026-04-02 (+2d) |  | 122d → 120d |
| P2.L5.BR.2330 | Flooring Prep - Epoxy Floors / L5 / Toilets 396X | 2026-04-01 → 2026-04-20 (+19d) | 2026-04-01 → 2026-04-20 (+19d) |  | 122d → 109d |
| P2.L5.BR.2340 | Flooring - Epoxy Floors / L5 / Toilets 396X | 2026-04-02 → 2026-04-21 (+19d) | 2026-04-07 → 2026-04-24 (+17d) |  | 174d → 161d |
| P2.L5.BR.2210 | Paint - Finish Coat / L5 / Toilets 396X | 2026-04-08 → 2026-04-27 (+19d) | 2026-04-14 → 2026-05-01 (+17d) |  | 174d → 161d |
| P2.L5.BR.2220 | Countertops / L5 / Toilets 396X | 2026-04-15 → 2026-05-04 (+19d) | 2026-04-21 → 2026-05-08 (+17d) |  | 174d → 161d |
| P2.L5.BR.2260 | Lockers & Benches / L5 / Toilets 396X | 2026-04-22 → 2026-05-11 (+19d) | 2026-04-28 → 2026-05-15 (+17d) |  | 174d → 161d |
| P2.L5.BR.2270 | Plumbing Fixtures / Sinks / Showers / L5 / Toilets 396X | 2026-04-22 → 2026-05-11 (+19d) | 2026-04-28 → 2026-05-15 (+17d) |  | 191d → 178d |
| P2.L5.BR.2230 | Trim - Fire Alarm Devices / L5 / Toilets 396X | 2026-04-29 → 2026-05-18 (+19d) | 2026-05-05 → 2026-05-22 (+17d) |  | 174d → 161d |
| P2.L5.BR.2280 | Toilet Partitions / L5 / Toilets 396X | 2026-04-29 → 2026-05-18 (+19d) | 2026-05-05 → 2026-05-22 (+17d) |  | 191d → 178d |
| P2.L5.BR.2240 | Trim - Electrical Devices / L5 / Toilets 396X | 2026-05-06 → 2026-05-26 (+20d) | 2026-05-12 → 2026-06-01 (+20d) |  | 174d → 161d |
| P2.L5.BR.2290 | Bathroom Accessories / L5 / Toilets 396X | 2026-05-06 → 2026-05-26 (+20d) | 2026-05-12 → 2026-06-01 (+20d) |  | 191d → 178d |
| P2.L5.BR.2250 | Doors & Hardware / L5 / Toilets 396X | 2026-05-13 → 2026-06-02 (+20d) | 2026-05-19 → 2026-06-08 (+20d) |  | 174d → 161d |
| P2.L5.BR.2300 | Work Completion List - Finishes / L5 / Toilets 396X | 2026-05-20 → 2026-06-09 (+20d) | 2026-05-27 → 2026-06-15 (+19d) |  | 186d → 173d |
| 1 | **Corridors & Lobbies / Level 5** | 2026-03-11 → 2026-04-03 (+23d) | 2026-10-28 → 2026-11-20 (+23d) |  |  |

| ID | Task | Start | Finish | Complete | Total float | Predecessors |
| --- | --- | --- | --- | --- | --- | --- |
| P2.L5.CL.1000 | Paint Prime & 1st Coat Walls / L5 / Corr & Lobbies | 2026-03-11 → 2026-04-03 (+23d) | 2026-03-17 → 2026-04-09 (+23d) |  | 48d → 31d |  |
| P2.L5.CL.1010 | Framing - Hard Lid Ceilings / L5 / Corr & Lobbies | 2026-03-18 → 2026-04-10 (+23d) | 2026-03-31 → 2026-04-23 (+23d) |  | 48d → 31d |  |
| P2.L5.CL.1020 | T-Grid / L5 / Corr & Lobbies | 2026-03-18 → 2026-04-10 (+23d) | 2026-03-31 → 2026-04-23 (+23d) |  | 48d → 31d |  |
| P2.L5.CL.1040 | R/I - Trim Sprinkler Heads- All Ceilings / L5 / Corr & Lobbies | 2026-03-27 → 2026-04-21 (+25d) | 2026-04-02 → 2026-04-27 (+25d) |  | 48d → 31d |  |
| P2.L5.CL.1070 | Trim - Sprinkler Heads @ T-Grid / L5 / Corr & Lobbies | 2026-03-27 → 2026-04-21 (+25d) | 2026-04-02 → 2026-04-27 (+25d) |  | 141d → 124d |  |
| P2.L5.CL.1050 | R/I - HVAC- All Ceilings / L5 / Corr & Lobbies | 2026-04-03 → 2026-04-28 (+25d) | 2026-04-09 → 2026-05-04 (+25d) |  | 48d → 31d |  |
| P2.L5.CL.1030 | R/I - Electrical - All Ceilings / L5 / Corr & Lobbies | 2026-04-10 → 2026-05-05 (+25d) | 2026-04-30 → 2026-05-26 (+26d) |  | 48d → 31d |  |
| P2.L5.CL.1060 | R/I - All Remaining Low Voltage - All Ceilings / L5 / Corr & Lobbies | 2026-05-01 → 2026-05-27 (+26d) | 2026-05-07 → 2026-06-02 (+26d) |  | 48d → 31d |  |
| P2.L5.CL.1100 | Pull Wire - Electrical / L5 / Corr & Lobbies | 2026-05-01 → 2026-05-27 (+26d) | 2026-05-14 → 2026-06-09 (+26d) |  | 78d → 61d |  |
| P2.L5.CL.1080 | R/I - Fire Alarm/Life Safety - All Ceilings / L5 / Corr & Lobbies | 2026-05-08 → 2026-06-03 (+26d) | 2026-05-14 → 2026-06-09 (+26d) |  | 48d → 31d |  |
| P2.L5.CL.1090 | Inspections - Close In- All Ceilings / L5 / Corr & Lobbies | 2026-05-15 → 2026-06-10 (+26d) | 2026-05-21 → 2026-06-16 (+26d) |  | 48d → 31d |  |
| P2.L5.CL.1110 | Pull Wire - Fire Alarm / L5 / Corr & Lobbies | 2026-05-15 → 2026-06-10 (+26d) | 2026-05-21 → 2026-06-16 (+26d) |  | 83d → 66d |  |
| P2.L5.CL.1120 | Pull Wire - All Remianing Low Voltage Systems / L5 / Corr & Lobbies | 2026-05-22 → 2026-06-17 (+26d) | 2026-05-29 → 2026-06-23 (+25d) |  | 88d → 71d |  |
| P2.L5.CL.1130 | Hang/Tape/Finish- Hard Lid Ceilings / L5 / Corr & Lobbies | 2026-05-22 → 2026-06-17 (+26d) | 2026-06-05 → 2026-06-30 (+25d) |  | 48d → 31d |  |
| P2.L5.CL.1140 | Drop Ceiling Tiles @ T-Grid / L5 / Corr & Lobbies | 2026-06-01 → 2026-06-24 (+23d) | 2026-06-05 → 2026-06-30 (+25d) |  | 101d → 84d |  |
| P2.L5.CL.1190 | Paint - Hard Lid Ceilings / L5 / Corr & Lobbies | 2026-06-08 → 2026-07-01 (+23d) | 2026-06-12 → 2026-07-08 (+26d) |  | 48d → 31d |  |
| P2.L5.CL.1180 | Ceiling Mounted - HVAC GRD's / L5 / Corr & Lobbies | 2026-06-15 → 2026-07-09 (+24d) | 2026-07-06 → 2026-07-29 (+23d) |  | 48d → 31d |  |
| P2.L5.CL.1150 | Ceiling Mounted - Electrical Devices and Lights / L5 / Corr & Lobbies | 2026-06-29 → 2026-07-23 (+24d) | 2026-07-27 → 2026-08-19 (+23d) |  | 48d → 31d |  |
| P2.L5.CL.1160 | Ceiling Mounted - Fire Alarm/Life Saftey Devices / L5 / Corr & Lobbies | 2026-07-14 → 2026-08-06 (+23d) | 2026-08-03 → 2026-08-26 (+23d) |  | 48d → 31d |  |
| P2.L5.CL.1170 | Ceiling Mounted - All Low Voltage Devices / L5 / Corr & Lobbies | 2026-07-28 → 2026-08-20 (+23d) | 2026-08-17 → 2026-09-10 (+24d) |  | 48d → 31d |  |
| P2.L5.CL.1320 | Prep Flooring / L5 / Corr & Lobbies | 2026-08-18 → 2026-09-11 (+24d) | 2026-08-19 → 2026-09-14 (+26d) |  | 48d → 31d |  |
| P2.L5.CL.1200 | Flooring / L5 / Corr & Lobbies | 2026-08-20 → 2026-09-15 (+26d) | 2026-08-31 → 2026-09-24 (+24d) |  | 48d → 31d |  |
| P2.L5.CL.1210 | Final Paint / L5 / Corr & Lobbies | 2026-08-27 → 2026-09-22 (+26d) | 2026-09-02 → 2026-09-28 (+26d) |  | 78d → 61d |  |
| P2.L5.CL.1220 | Floor Base / L5 / Corr & Lobbies | 2026-09-03 → 2026-09-29 (+26d) | 2026-09-10 → 2026-10-05 (+25d) |  | 98d → 81d |  |
| P2.L5.CL.1250 | Trim - HVAC - Wall Mounted Devices / L5 / Corr & Lobbies | 2026-09-03 → 2026-09-29 (+26d) | 2026-09-10 → 2026-10-05 (+25d) |  | 78d → 61d |  |
| P2.L5.CL.1230 | Trim - All Electrical - Wall Mounted Devices / L5 / Corr & Lobbies | 2026-09-11 → 2026-10-06 (+25d) | 2026-09-17 → 2026-10-12 (+25d) |  | 78d → 61d |  |
| P2.L5.CL.1240 | Trim - Fire Alarm - Wall Mounted Devices / L5 / Corr & Lobbies | 2026-09-18 → 2026-10-13 (+25d) | 2026-09-24 → 2026-10-19 (+25d) |  | 78d → 61d |  |
| P2.L5.CL.1260 | Trim - All Remining Low Voltage Systems - Wall Mounted Devices / L5 / Corr & Lobbies | 2026-09-25 → 2026-10-20 (+25d) | 2026-10-01 → 2026-10-26 (+25d) |  | 78d → 61d |  |
| P2.L5.CL.1270 | Building Signage / L5 / Corr & Lobbies | 2026-10-02 → 2026-10-27 (+25d) | 2026-10-08 → 2026-11-02 (+25d) |  | 78d → 61d |  |
| P2.L5.CL.1280 | Work Completion List / L5 / Corr & Lobbies | 2026-10-09 → 2026-11-03 (+25d) | 2026-10-15 → 2026-11-09 (+25d) |  | 78d → 61d |  |
| P2.L5.CL.1290 | Rough Clean / L5 / Corr & Lobbies | 2026-10-16 → 2026-11-10 (+25d) | 2026-10-19 → 2026-11-11 (+23d) |  | 78d → 61d |  |
| P2.L5.CL.1300 | Punchlist / L5 / Corr & Lobbies | 2026-10-20 → 2026-11-12 (+23d) | 2026-10-26 → 2026-11-18 (+23d) |  | 78d → 61d |  |
| P2.L5.CL.1310 | Final Clean / L5 / Corr & Lobbies | 2026-10-27 → 2026-11-19 (+23d) | 2026-10-28 → 2026-11-20 (+23d) |  | 78d → 61d |  |
| 2 | **LAB & CLINICAL SPACES / LEVEL 5 (Below Interstitials)** |  | 2026-10-21 → 2026-10-30 (+9d) |  |  |  |
| 3 | **ROUGH IN - Lab & Clinical Spaces (Below Interstitials) / Level 5** |  | 2026-03-25 → 2026-04-03 (+9d) |  |  |  |
| P2.L5.LC.1230 | OH - Electrical - 208/120v Branch / L5 / Lab & Clinical |  | 2025-12-11 → 2026-02-04 (+55d) |  | 65d → 29d | P2.L5.LC.1190 → P2.L5.LC.1190, P2.L5.LC.1350 |
| P2.L5.LC.1300 | OH - Hang Duct - LP Branch (High) / L5 / Lab & Clinical |  | 2025-12-12 → 2025-10-20 A (-53d) | 50% → 100% | 74d → none |  |
| P2.L5.LC.1570 | OH - Hang Duct - LP Branch (Low) / L5 / Lab & Clinical |  | 2025-12-12 → 2025-10-20 A (-53d) | 50% → 100% | 74d → none |  |
| P2.L5.LC.1440 | In Wall - Electrical - Framing / L5 / Lab & Clinical |  | 2025-12-18 → 2025-12-19 A (+1d) | 50% → 100% | 65d → none |  |
| P2.L5.LC.1450 | In Wall - Backing/Blocking/Supports / L5 / Lab & Clinical |  | 2025-12-05 → 2025-12-12 A (+7d) | 50% → 100% | 74d → none |  |
| P2.L5.LC.1240 | OH - Plumbing - Test / L5 / Lab & Clinical |  | 2025-12-05 → 2025-11-10 A (-25d) | 50% → 100% | 69d → none |  |
| P2.L5.LC.1270 | OH - HVAC Piping - Test / L5 / Lab & Clinical |  | 2025-12-04 → 2025-11-05 A (-29d) | 20% → 100% | 70d → none |  |
| P2.L5.LC.1280 | OH - Insulate Plumbing / L5 / Lab & Clinical | 2025-12-08 → 2025-12-01 A (-7d) | 2025-12-19 → 2025-12-10 A (-9d) | 0% → 100% | 69d → none |  |
| P2.L5.LC.1390 | OH - Conduit - Low Volt - Telecom / L5 / Lab & Clinical | 2025-12-30 → 2025-12-15 A (-15d) | 2026-01-13 → 2026-02-05 (+23d) |  | 74d → 57d |  |
| P2.L5.LC.1340 | OH - Insulate HVAC Pipe / L5 / Lab & Clinical | 2025-12-05 → 2025-12-29 A (+24d) | 2025-12-18 → 2026-01-08 (+21d) | 0% → 50% | 70d → 57d |  |
| P2.L5.LC.1200 | Firestop - Thru Wall - Priority Walls / L5 / Lab & Clinical | 2025-12-01 → 2026-01-02 (+32d) | 2025-12-05 → 2026-01-08 (+34d) |  | 79d → 29d |  |
| P2.L5.LC.1250 | Pull Wire - Electrical - 480/277v Distribution / L5 / Lab & Clinical | 2025-12-01 → 2026-01-02 (+32d) | 2025-12-12 → 2026-01-15 (+34d) |  | 104d → 82d |  |
| P2.L5.LC.1310 | OH - Set & Connect Mech Equipment / L5 / Lab & Clinical | 2025-12-01 → 2026-01-02 (+32d) | 2025-12-12 → 2026-01-15 (+34d) |  | 74d → 33d |  |
| P2.L5.LC.1350 | OH - Insulate LP Duct / L5 / Lab & Clinical | 2025-12-15 → 2026-01-09 (+25d) | 2025-12-29 → 2026-01-22 (+24d) |  | 74d → 29d |  |
| P2.L5.LC.1400 | OH - Conduit - Low Volt - Security / L5 / Lab & Clinical | 2025-12-19 → 2026-01-09 (+21d) | 2026-01-05 → 2026-01-22 (+17d) |  | 80d → 67d |  |
| P2.L5.LC.1320 | OH - Electrical - Equip Tie In / L5 / Lab & Clinical | 2025-12-15 → 2026-01-16 (+32d) | 2025-12-29 → 2026-01-29 (+31d) |  | 74d → 33d |  |
| P2.L5.LC.1370 | OH - Conduit - Low Volt - BAS/Controls / L5 / Lab & Clinical | 2025-12-19 → 2026-01-16 (+28d) | 2026-01-05 → 2026-01-29 (+24d) |  | 70d → 52d |  |
| P2.L5.LC.1380 | OH - Conduit - Low Volt - Fire Alarm / L5 / Lab & Clinical | 2025-12-30 → 2026-01-23 (+24d) | 2026-01-13 → 2026-02-05 (+23d) |  | 74d → 57d |  |
| P2.L5.LC.1410 | OH - Conduit - Low Volt - Medical Services/Nurse Call (?) / L5 / Lab & Clinical | 2025-12-30 → 2026-01-23 (+24d) | 2026-01-13 → 2026-02-05 (+23d) |  | 74d → 57d |  |
| P2.L5.LC.1360 | Pull Wire - Electrical - 208/120v Branch & Equip / L5 / Lab & Clinical | 2025-12-30 → 2026-02-05 (+37d) | 2026-01-27 → 2026-03-04 (+36d) |  | 74d → 29d |  |
| P2.L5.LC.1330 | OH - HVAC Piping - Equip Tie In / L5 / Lab & Clinical | 2026-01-28 → 2026-02-20 (+23d) | 2026-02-17 → 2026-03-12 (+23d) |  | 59d → 42d |  |
| P2.L5.LC.1460 | AHJ Inspections - Wall Close In / L5 / Lab & Clinical | 2026-02-05 → 2026-02-23 (+18d) | 2026-02-11 → 2026-02-27 (+16d) |  | 33d → 21d |  |
| P2.L5.LC.1470 | Hang-Tape-Finish - Walls and Hard Lid Ceilings / L5 / Lab & Clinical | 2026-02-19 → 2026-03-02 (+11d) | 2026-03-04 → 2026-03-13 (+9d) |  | 28d → 21d |  |
| P2.L5.LC.1480 | Spray/Seal/Firestop - Head of Wall / L5 / Lab & Clinical | 2026-03-05 → 2026-03-16 (+11d) | 2026-03-18 → 2026-03-27 (+9d) |  | 38d → 31d |  |
| P2.L5.LC.1490 | Firestop - Thru Wall / L5 / Lab & Clinical | 2026-03-05 → 2026-03-16 (+11d) | 2026-03-18 → 2026-03-27 (+9d) |  | 38d → 31d |  |
| P2.L5.LC.1500 | Pull Wire - Low Volt - BAS/Controls / L5 / Lab & Clinical | 2026-03-05 → 2026-03-16 (+11d) | 2026-03-18 → 2026-03-27 (+9d) |  | 28d → 21d |  |
| P2.L5.LC.1510 | Pull Wire - Low Volt - Fire Alarm / L5 / Lab & Clinical | 2026-03-05 → 2026-03-16 (+11d) | 2026-03-18 → 2026-03-27 (+9d) |  | 38d → 31d |  |
| P2.L5.LC.1520 | Pull Wire - Low Volt - Telecom / L5 / Lab & Clinical | 2026-03-05 → 2026-03-16 (+11d) | 2026-03-18 → 2026-03-27 (+9d) |  | 38d → 31d |  |
| P2.L5.LC.1530 | Pull Wire - Low Volt - Security / L5 / Lab & Clinical | 2026-03-05 → 2026-03-16 (+11d) | 2026-03-18 → 2026-03-27 (+9d) |  | 38d → 31d |  |
| P2.L5.LC.1540 | Pull Wire - Low Volt - Medical Services/Nurse Call (?) / L5 / Lab & Clinical | 2026-03-05 → 2026-03-16 (+11d) | 2026-03-18 → 2026-03-27 (+9d) |  | 38d → 31d |  |
| P2.L5.LC.1550 | Trades Inspect & Verify R/I Work Completed to Specs / L5 / Lab & Clinical | 2026-03-19 → 2026-03-30 (+11d) | 2026-03-25 → 2026-04-03 (+9d) |  | 38d → 31d |  |
| 13 | **FINISHES - Lab & Clinical Spaces (Below Interstitials) / Level 5** | 2026-02-19 → 2026-02-10 (-9d) | 2026-10-21 → 2026-10-30 (+9d) |  |  |  |
| 2 | **Staff and Open Bench Suites - Room Blocks 5-39.. / Level 5** | 2026-03-05 → 2026-03-16 (+11d) | 2026-09-23 → 2026-10-02 (+9d) |  |  |  |
| P2.L5.F.LC.4270 | Casework (Before Flooring) / L5 / Staff, Open Bench | 2026-03-05 → 2026-03-16 (+11d) | 2026-03-06 → 2026-03-17 (+11d) |  | 186d → 179d |  |
| P2.L5.F.LC.4290 | Equipment / L5 / Staff, Open Bench | 2026-03-09 → 2026-03-18 (+9d) | 2026-03-20 → 2026-03-31 (+11d) |  | 203d → 196d |  |

| ID | Task | Start | Finish | Total float |
| --- | --- | --- | --- | --- |
| P2.L5.F.LC.1000 | Paint - Walls / L5 / Staff, Open Bench | 2026-03-26 → 2026-04-06 (+11d) | 2026-04-01 → 2026-04-10 (+9d) | 103d → 96d |
| P2.L5.F.LC.1010 | R/I - Ceiling Assemblies & Supports - Med Equip / L5 / Staff, Open Bench | 2026-04-02 → 2026-04-13 (+11d) | 2026-04-08 → 2026-04-17 (+9d) | 103d → 96d |
| P2.L5.F.LC.1210 | Wall Protection / L5 / Staff, Open Bench | 2026-04-02 → 2026-04-13 (+11d) | 2026-04-08 → 2026-04-17 (+9d) | 163d → 156d |
| P2.L5.F.LC.1020 | Framing - Hard Lid Ceilings / L5 / Staff, Open Bench | 2026-04-09 → 2026-04-20 (+11d) | 2026-04-15 → 2026-04-24 (+9d) | 103d → 96d |
| P2.L5.F.LC.1230 | Trim T-Stats / L5 / Staff, Open Bench | 2026-04-09 → 2026-04-20 (+11d) | 2026-04-15 → 2026-04-24 (+9d) | 163d → 156d |
| P2.L5.F.LC.1240 | Trim Electrical / L5 / Staff, Open Bench | 2026-04-09 → 2026-04-20 (+11d) | 2026-04-15 → 2026-04-24 (+9d) | 163d → 156d |
| P2.L5.F.LC.1250 | Trim Telephone/ Data / L5 / Staff, Open Bench | 2026-04-09 → 2026-04-20 (+11d) | 2026-04-15 → 2026-04-24 (+9d) | 163d → 156d |
| P2.L5.F.LC.1270 | Trim Med Gas / L5 / Staff, Open Bench | 2026-04-09 → 2026-04-20 (+11d) | 2026-04-15 → 2026-04-24 (+9d) | 163d → 156d |
| P2.L5.F.LC.1030 | R/I - Lights & Devices - Hard Lids Ceilings / L5 / Staff, Open Bench | 2026-04-16 → 2026-04-27 (+11d) | 2026-04-29 → 2026-05-08 (+9d) | 103d → 96d |
| P2.L5.F.LC.1040 | R/I - Diffusers - Hard Lid Ceilings / L5 / Staff, Open Bench | 2026-04-16 → 2026-04-27 (+11d) | 2026-04-22 → 2026-05-01 (+9d) | 108d → 101d |
| P2.L5.F.LC.1050 | R/I - Sprinkler Heads - Hard Lid Ceilings / L5 / Staff, Open Bench | 2026-04-16 → 2026-04-27 (+11d) | 2026-04-22 → 2026-05-01 (+9d) | 108d → 101d |
| P2.L5.F.LC.1060 | R/I - Fire Alarm - Hard Lid Ceilings / L5 / Staff, Open Bench | 2026-04-16 → 2026-04-27 (+11d) | 2026-04-22 → 2026-05-01 (+9d) | 108d → 101d |
| P2.L5.F.LC.1220 | Plumbing Fixtures & Drinking Fountains / L5 / Staff, Open Bench | 2026-04-15 → 2026-05-01 (+16d) | 2026-04-21 → 2026-05-07 (+16d) | 159d → 147d |
| P2.L5.F.LC.1070 | OH Ceiling Inspection & Signoff - Hard Lid Ceilings / L5 / Staff, Open Bench | 2026-04-30 → 2026-05-11 (+11d) | 2026-05-06 → 2026-05-15 (+9d) | 103d → 96d |
| P2.L5.F.LC.1080 | Hang-Tape-Finish _Hard Lid Ceilings / L5 / Staff, Open Bench | 2026-05-07 → 2026-05-18 (+11d) | 2026-05-13 → 2026-05-22 (+9d) | 103d → 96d |
| P2.L5.F.LC.1090 | Paint Ceilings / L5 / Staff, Open Bench | 2026-05-14 → 2026-05-26 (+12d) | 2026-05-20 → 2026-06-01 (+12d) | 103d → 96d |
| P2.L5.F.LC.1100 | Waterproof Ceramic Tile / L5 / Staff, Open Bench | 2026-05-21 → 2026-06-02 (+12d) | 2026-05-28 → 2026-06-08 (+11d) | 103d → 96d |
| P2.L5.F.LC.1110 | Ceramic Tile / L5 / Staff, Open Bench | 2026-05-29 → 2026-06-09 (+11d) | 2026-06-04 → 2026-06-15 (+11d) | 103d → 96d |
| P2.L5.F.LC.1120 | T-Grid / L5 / Staff, Open Bench | 2026-06-05 → 2026-06-16 (+11d) | 2026-06-11 → 2026-06-22 (+11d) | 103d → 96d |
| P2.L5.F.LC.1130 | Diffusers in T-Grid / L5 / Staff, Open Bench | 2026-06-12 → 2026-06-23 (+11d) | 2026-06-18 → 2026-06-29 (+11d) | 103d → 96d |
| P2.L5.F.LC.1140 | Lights & Devices / L5 / Staff, Open Bench | 2026-06-12 → 2026-06-23 (+11d) | 2026-06-18 → 2026-06-29 (+11d) | 103d → 96d |
| P2.L5.F.LC.1150 | Sprinkler Heads / L5 / Staff, Open Bench | 2026-06-12 → 2026-06-23 (+11d) | 2026-06-18 → 2026-06-29 (+11d) | 103d → 96d |
| P2.L5.F.LC.1160 | Trim Low Voltage / L5 / Staff, Open Bench | 2026-06-12 → 2026-06-23 (+11d) | 2026-06-18 → 2026-06-29 (+11d) | 103d → 96d |
| P2.L5.F.LC.1170 | Trim Fire Alarm / L5 / Staff, Open Bench | 2026-06-12 → 2026-06-23 (+11d) | 2026-06-18 → 2026-06-29 (+11d) | 103d → 96d |
| P2.L5.F.LC.4280 | Ceiling Service Panels / L5 / Staff, Open Bench | 2026-06-12 → 2026-06-23 (+11d) | 2026-06-12 → 2026-06-23 (+11d) | 107d → 100d |
| P2.L5.F.LC.1180 | OH Ceiling Signoff / L5 / Staff, Open Bench | 2026-06-19 → 2026-06-30 (+11d) | 2026-07-02 → 2026-07-14 (+12d) | 103d → 96d |
| P2.L5.F.LC.1200 | Drop Ceiling Tile / L5 / Staff, Open Bench | 2026-07-06 → 2026-07-15 (+9d) | 2026-07-10 → 2026-07-21 (+11d) | 103d → 96d |
| P2.L5.F.LC.1280 | Floor Prep / L5 / Staff, Open Bench | 2026-07-13 → 2026-07-22 (+9d) | 2026-07-17 → 2026-07-28 (+11d) | 103d → 96d |
| P2.L5.F.LC.1290 | Flooring / L5 / Staff, Open Bench | 2026-07-20 → 2026-07-29 (+9d) | 2026-07-24 → 2026-08-04 (+11d) | 103d → 96d |
| P2.L5.F.LC.1190 | Casework (After Flooring) / L5 / Staff, Open Bench | 2026-07-27 → 2026-08-05 (+9d) | 2026-07-27 → 2026-08-05 (+9d) | 112d → 105d |
| P2.L5.F.LC.1260 | Doors & Hardware / L5 / Staff, Open Bench | 2026-07-27 → 2026-08-05 (+9d) | 2026-07-31 → 2026-08-11 (+11d) | 123d → 116d |
| P2.L5.F.LC.1300 | Building Specialities / L5 / Staff, Open Bench | 2026-07-27 → 2026-08-05 (+9d) | 2026-07-31 → 2026-08-11 (+11d) | 103d → 96d |
| P2.L5.F.LC.1310 | Interior Building Signage / L5 / Staff, Open Bench | 2026-07-27 → 2026-08-05 (+9d) | 2026-07-31 → 2026-08-11 (+11d) | 103d → 96d |
| P2.L5.F.LC.1320 | Work Completion List - Finishes / L5 / Staff, Open Bench | 2026-08-03 → 2026-08-12 (+9d) | 2026-08-07 → 2026-08-18 (+11d) | 103d → 96d |
| P2.L5.F.LC.1330 | Remaining Equipment Post Flooring / L5 / Staff, Open Bench | 2026-08-10 → 2026-08-19 (+9d) | 2026-08-11 → 2026-08-20 (+9d) | 103d → 96d |
| P2.L5.F.LC.1340 | Remaining MEP Hook-Ups / L5 / Staff, Open Bench | 2026-08-12 → 2026-08-21 (+9d) | 2026-08-18 → 2026-08-27 (+9d) | 103d → 96d |
| P2.L5.F.LC.1350 | OFOI Furniture & Equipment / L5 / Staff, Open Bench | 2026-08-12 → 2026-08-21 (+9d) | 2026-08-18 → 2026-08-27 (+9d) | 113d → 106d |
| P2.L5.F.LC.1360 | Rough Clean / L5 / Staff, Open Bench | 2026-08-19 → 2026-08-28 (+9d) | 2026-08-25 → 2026-09-03 (+9d) | 103d → 96d |
| P2.L5.F.LC.1370 | Prepare Punchlist / L5 / Staff, Open Bench | 2026-08-26 → 2026-09-04 (+9d) | 2026-09-01 → 2026-09-11 (+10d) | 103d → 96d |
| P2.L5.F.LC.1380 | Correct Punchlist / L5 / Staff, Open Bench | 2026-09-02 → 2026-09-14 (+12d) | 2026-09-16 → 2026-09-25 (+9d) | 103d → 96d |
| P2.L5.F.LC.1390 | Final Clean / L5 / Staff, Open Bench | 2026-09-17 → 2026-09-28 (+11d) | 2026-09-23 → 2026-10-02 (+9d) | 103d → 96d |
| 3 | **Chem / Hema / Microbio Open Lab Suites - Room Blocks 5-28.. & 5-29.. / Level 5** | 2026-03-05 → 2026-03-16 (+11d) | 2026-10-21 → 2026-10-30 (+9d) |  |
| P2.L5.F.LC.4150 | Snorkel at Walls - Install / L5 / Chem, Hema, Micro | 2026-03-05 → 2026-03-16 (+11d) | 2026-03-05 → 2026-03-16 (+11d) | 203d → 196d |
| P2.L5.F.LC.4250 | Casework (Before Flooring) / L5 / Chem, Hema, Micro | 2026-03-05 → 2026-03-16 (+11d) | 2026-03-27 → 2026-04-07 (+11d) | 151d → 144d |
| P2.L5.F.LC.4160 | Snorkel at Wall MEP Connection / L5 / Chem, Hema, Micro | 2026-03-06 → 2026-03-17 (+11d) | 2026-03-06 → 2026-03-17 (+11d) | 203d → 196d |
| P2.L5.F.LC.2000 | Paint - Walls / L5 / Chem, Hema, Micro | 2026-03-26 → 2026-04-06 (+11d) | 2026-04-01 → 2026-04-10 (+9d) | 83d → 76d |
| P2.L5.F.LC.2400 | Fumehood Equipment Install / L5 / Chem, Hema, Micro | 2026-03-26 → 2026-04-06 (+11d) | 2026-03-27 → 2026-04-07 (+11d) | 166d → 159d |
| P2.L5.F.LC.2410 | Fumehood Equipment MEP Connection / L5 / Chem, Hema, Micro | 2026-03-30 → 2026-04-08 (+9d) | 2026-03-31 → 2026-04-09 (+9d) | 166d → 159d |
| P2.L5.F.LC.2010 | R/I - Ceiling Assemblies & Supports - Med Equip / L5 / Chem, Hema, Micro | 2026-04-02 → 2026-04-13 (+11d) | 2026-04-08 → 2026-04-17 (+9d) | 83d → 76d |
| P2.L5.F.LC.4300 | Cleanroom - Hang - Finish Walls and Cielings / L5 / Chem, Hema, Micro & Immunology | 2026-03-11 → 2026-04-13 (+33d) | 2026-03-31 → 2026-05-01 (+31d) | 149d → 126d |
| P2.L5.F.LC.2020 | Framing - Hard Lid Ceilings / L5 / Chem, Hema, Micro | 2026-04-09 → 2026-04-20 (+11d) | 2026-04-15 → 2026-04-24 (+9d) | 83d → 76d |
| P2.L5.F.LC.2030 | R/I - Lights & Devices - Hard Lids Ceilings / L5 / Chem, Hema, Micro | 2026-04-16 → 2026-04-27 (+11d) | 2026-04-29 → 2026-05-08 (+9d) | 83d → 76d |
| P2.L5.F.LC.2040 | R/I - Diffusers - Hard Lid Ceilings / L5 / Chem, Hema, Micro | 2026-04-16 → 2026-04-27 (+11d) | 2026-04-22 → 2026-05-01 (+9d) | 88d → 81d |
| P2.L5.F.LC.2050 | R/I - Sprinkler Heads - Hard Lid Ceilings / L5 / Chem, Hema, Micro | 2026-04-16 → 2026-04-27 (+11d) | 2026-04-22 → 2026-05-01 (+9d) | 88d → 81d |
| P2.L5.F.LC.2060 | R/I - Fire Alarm - Hard Lid Ceilings / L5 / Chem, Hema, Micro | 2026-04-16 → 2026-04-27 (+11d) | 2026-04-22 → 2026-05-01 (+9d) | 88d → 81d |
| P2.L5.F.LC.4310 | Cleanroom - Install Doors and Hardware / L5 / Chem, Hema, Micro & Immunology | 2026-04-01 → 2026-05-04 (+33d) | 2026-04-07 → 2026-05-08 (+31d) | 164d → 141d |
| P2.L5.F.LC.2070 | OH Ceiling Inspection & Signoff - Hard Lid Ceilings / L5 / Chem, Hema, Micro | 2026-04-30 → 2026-05-11 (+11d) | 2026-05-06 → 2026-05-15 (+9d) | 83d → 76d |
| P2.L5.F.LC.4320 | Cleanroom - Install Windows / L5 / Chem, Hema, Micro & Immunology | 2026-04-08 → 2026-05-11 (+33d) | 2026-04-09 → 2026-05-12 (+33d) | 164d → 141d |
| P2.L5.F.LC.2080 | Hang-Tape-Finish _Hard Lid Ceilings / L5 / Chem, Hema, Micro | 2026-05-07 → 2026-05-18 (+11d) | 2026-05-13 → 2026-05-22 (+9d) | 83d → 76d |
| P2.L5.F.LC.2090 | Paint Ceilings / L5 / Chem, Hema, Micro | 2026-05-14 → 2026-05-26 (+12d) | 2026-05-20 → 2026-06-01 (+12d) | 83d → 76d |
| P2.L5.F.LC.2100 | Waterproof Ceramic Tile / L5 / Chem, Hema, Micro | 2026-05-21 → 2026-06-02 (+12d) | 2026-05-28 → 2026-06-08 (+11d) | 83d → 76d |
| P2.L5.F.LC.2110 | Ceramic Tile / L5 / Chem, Hema, Micro | 2026-05-29 → 2026-06-09 (+11d) | 2026-06-04 → 2026-06-15 (+11d) | 83d → 76d |
| P2.L5.F.LC.2120 | T-Grid / L5 / Chem, Hema, Micro | 2026-06-05 → 2026-06-16 (+11d) | 2026-06-11 → 2026-06-22 (+11d) | 83d → 76d |
| P2.L5.F.LC.2130 | Diffusers in T-Grid / L5 / Chem, Hema, Micro | 2026-06-12 → 2026-06-23 (+11d) | 2026-06-18 → 2026-06-29 (+11d) | 83d → 76d |
| P2.L5.F.LC.2140 | Lights & Devices / L5 / Chem, Hema, Micro | 2026-06-12 → 2026-06-23 (+11d) | 2026-06-18 → 2026-06-29 (+11d) | 83d → 76d |
| P2.L5.F.LC.2150 | Sprinkler Heads / L5 / Chem, Hema, Micro | 2026-06-12 → 2026-06-23 (+11d) | 2026-06-18 → 2026-06-29 (+11d) | 83d → 76d |
| P2.L5.F.LC.2160 | Trim Low Voltage / L5 / Chem, Hema, Micro | 2026-06-12 → 2026-06-23 (+11d) | 2026-06-18 → 2026-06-29 (+11d) | 83d → 76d |
| P2.L5.F.LC.2170 | Trim Fire Alarm / L5 / Chem, Hema, Micro | 2026-06-12 → 2026-06-23 (+11d) | 2026-06-18 → 2026-06-29 (+11d) | 83d → 76d |
| P2.L5.F.LC.4220 | Snorkel at Cielings - Install / L5 / Chem, Hema, Micro | 2026-06-12 → 2026-06-23 (+11d) | 2026-06-12 → 2026-06-23 (+11d) | 133d → 126d |
| P2.L5.F.LC.4230 | Snorkel at Ceiling - MEP Connection / L5 / Chem, Hema, Micro | 2026-06-15 → 2026-06-24 (+9d) | 2026-06-15 → 2026-06-24 (+9d) | 133d → 126d |

| ID | Task | Start | Finish | Total float |
| --- | --- | --- | --- | --- |
| P2.L5.F.LC.2180 | OH Ceiling Signoff / L5 / Chem, Hema, Micro | 2026-06-19 → 2026-06-30 (+11d) | 2026-07-02 → 2026-07-14 (+12d) | 83d → 76d |
| P2.L5.F.LC.4060 | Floor Prep - Epoxy Floors / L5 / Autoclave, PAPR, & BSL3 | 2026-07-06 → 2026-07-15 (+9d) | 2026-07-08 → 2026-07-17 (+9d) | 83d → 76d |
| P2.L5.F.LC.4260 | Ceiling Service Panel / L5 / Chem, Hema, Micro | 2026-07-06 → 2026-07-15 (+9d) | 2026-07-09 → 2026-07-20 (+11d) | 96d → 89d |
| P2.L5.F.LC.4070 | Flooring - Epoxy Floors / L5 / Autoclave, PAPR, & BSL3 | 2026-07-09 → 2026-07-20 (+11d) | 2026-07-10 → 2026-07-21 (+11d) | 83d → 76d |
| P2.L5.F.LC.2200 | Drop Ceiling Tile / L5 / Chem, Hema, Micro | 2026-07-10 → 2026-07-21 (+11d) | 2026-07-16 → 2026-07-27 (+11d) | 96d → 89d |
| P2.L5.F.LC.2190 | Casework (After Flooring) / L5 / Chem, Hema, Micro | 2026-07-13 → 2026-07-22 (+9d) | 2026-07-21 → 2026-07-30 (+9d) | 83d → 76d |
| P2.L5.F.LC.2210 | Wall Protection / L5 / Chem, Hema, Micro | 2026-07-22 → 2026-07-31 (+9d) | 2026-07-28 → 2026-08-06 (+9d) | 83d → 76d |
| P2.L5.F.LC.2220 | Plumbing Fixtures & Drinking Fountains / L5 / Chem, Hema, Micro | 2026-07-22 → 2026-07-31 (+9d) | 2026-07-28 → 2026-08-06 (+9d) | 88d → 81d |
| P2.L5.F.LC.2260 | Doors & Hardware / L5 / Chem, Hema, Micro | 2026-07-22 → 2026-07-31 (+9d) | 2026-07-28 → 2026-08-06 (+9d) | 88d → 81d |
| P2.L5.F.LC.2230 | Trim T-Stats / L5 / Chem, Hema, Micro | 2026-07-29 → 2026-08-07 (+9d) | 2026-08-04 → 2026-08-13 (+9d) | 83d → 76d |
| P2.L5.F.LC.2240 | Trim Electrical / L5 / Chem, Hema, Micro | 2026-07-29 → 2026-08-07 (+9d) | 2026-08-04 → 2026-08-13 (+9d) | 83d → 76d |
| P2.L5.F.LC.2250 | Trim Telephone/ Data / L5 / Chem, Hema, Micro | 2026-07-29 → 2026-08-07 (+9d) | 2026-08-04 → 2026-08-13 (+9d) | 83d → 76d |
| P2.L5.F.LC.2270 | Trim Med Gas / L5 / Chem, Hema, Micro | 2026-07-29 → 2026-08-07 (+9d) | 2026-08-04 → 2026-08-13 (+9d) | 83d → 76d |
| P2.L5.F.LC.2280 | Floor Prep / L5 / Chem, Hema, Micro | 2026-08-05 → 2026-08-14 (+9d) | 2026-08-11 → 2026-08-20 (+9d) | 83d → 76d |
| P2.L5.F.LC.2290 | Flooring / L5 / Chem, Hema, Micro | 2026-08-12 → 2026-08-21 (+9d) | 2026-08-18 → 2026-08-27 (+9d) | 83d → 76d |
| P2.L5.F.LC.2300 | Building Specialities / L5 / Chem, Hema, Micro | 2026-08-19 → 2026-08-28 (+9d) | 2026-08-25 → 2026-09-03 (+9d) | 83d → 76d |
| P2.L5.F.LC.2310 | Interior Building Signage / L5 / Chem, Hema, Micro | 2026-08-19 → 2026-08-28 (+9d) | 2026-08-25 → 2026-09-03 (+9d) | 83d → 76d |
| P2.L5.F.LC.2320 | Work Completion List - Finishes / L5 / Chem, Hema, Micro | 2026-08-26 → 2026-09-04 (+9d) | 2026-09-01 → 2026-09-11 (+10d) | 83d → 76d |
| P2.L5.F.LC.2330 | Remaining Equipment Post Flooring / L5 / Chem, Hema, Micro | 2026-09-02 → 2026-09-14 (+12d) | 2026-09-09 → 2026-09-18 (+9d) | 83d → 76d |
| P2.L5.F.LC.2340 | Remaining MEP Hook-Ups / L5 / Chem, Hema, Micro | 2026-09-10 → 2026-09-21 (+11d) | 2026-09-16 → 2026-09-25 (+9d) | 83d → 76d |
| P2.L5.F.LC.2350 | OFOI Furniture & Equipment / L5 / Chem, Hema, Micro | 2026-09-10 → 2026-09-21 (+11d) | 2026-09-16 → 2026-09-25 (+9d) | 93d → 86d |
| P2.L5.F.LC.2360 | Rough Clean / L5 / Chem, Hema, Micro | 2026-09-17 → 2026-09-28 (+11d) | 2026-09-23 → 2026-10-02 (+9d) | 83d → 76d |
| P2.L5.F.LC.2370 | Prepare Punchlist / L5 / Chem, Hema, Micro | 2026-09-24 → 2026-10-05 (+11d) | 2026-09-30 → 2026-10-09 (+9d) | 83d → 76d |
| P2.L5.F.LC.2380 | Correct Punchlist / L5 / Chem, Hema, Micro | 2026-10-01 → 2026-10-12 (+11d) | 2026-10-14 → 2026-10-23 (+9d) | 83d → 76d |
| P2.L5.F.LC.2390 | Final Clean / L5 / Chem, Hema, Micro | 2026-10-15 → 2026-10-26 (+11d) | 2026-10-21 → 2026-10-30 (+9d) | 83d → 76d |
| 4 | **Immunology / Mass Spec/HPCL / Mycology Lab Suites - Room Blocks 5-28.. & 5-29.. / Level 5** | 2026-03-05 → 2026-03-16 (+11d) | 2026-09-23 → 2026-10-09 (+16d) |  |
| P2.L5.F.LC.4180 | Casework (Before Flooring) / L5 / Mass, Myc, Immuno | 2026-03-05 → 2026-03-16 (+11d) | 2026-03-26 → 2026-04-06 (+11d) | 126d → 119d |
| P2.L5.F.LC.4240 | Equipment (Before Flooring) / L5 / Mass, Myc, Immuno | 2026-03-05 → 2026-03-16 (+11d) | 2026-03-05 → 2026-03-16 (+11d) | 192d → 185d |
| P2.L5.F.LC.4080 | Fumehood Equipment Install / L5 / Mass, Myc, Immuno | 2026-03-26 → 2026-04-06 (+11d) | 2026-03-26 → 2026-04-06 (+11d) | 126d → 119d |
| P2.L5.F.LC.4090 | Fumehood Equipment MEP Connection / L5 / Mass, Myc, Immuno | 2026-03-27 → 2026-04-07 (+11d) | 2026-03-27 → 2026-04-07 (+11d) | 126d → 119d |
| P2.L5.F.LC.3000 | Paint - Walls / L5 / Mass, Myc, Immuno | 2026-03-26 → 2026-04-13 (+18d) | 2026-04-01 → 2026-04-17 (+16d) | 103d → 91d |
| P2.L5.F.LC.3010 | R/I - Ceiling Assemblies & Supports - Med Equip / L5 / Mass, Myc, Immuno | 2026-04-02 → 2026-04-20 (+18d) | 2026-04-08 → 2026-04-24 (+16d) | 103d → 91d |
| P2.L5.F.LC.3210 | Wall Protection / L5 / Mass, Myc, Immuno | 2026-04-02 → 2026-04-20 (+18d) | 2026-04-08 → 2026-04-24 (+16d) | 163d → 151d |
| P2.L5.F.LC.3020 | Framing - Hard Lid Ceilings / L5 / Mass, Myc, Immuno | 2026-04-09 → 2026-04-27 (+18d) | 2026-04-15 → 2026-05-01 (+16d) | 103d → 91d |
| P2.L5.F.LC.3230 | Trim T-Stats / L5 / Mass, Myc, Immuno | 2026-04-09 → 2026-04-27 (+18d) | 2026-04-15 → 2026-05-01 (+16d) | 163d → 151d |
| P2.L5.F.LC.3240 | Trim Electrical / L5 / Mass, Myc, Immuno | 2026-04-09 → 2026-04-27 (+18d) | 2026-04-15 → 2026-05-01 (+16d) | 163d → 151d |
| P2.L5.F.LC.3250 | Trim Telephone/ Data / L5 / Mass, Myc, Immuno | 2026-04-09 → 2026-04-27 (+18d) | 2026-04-15 → 2026-05-01 (+16d) | 163d → 151d |
| P2.L5.F.LC.3270 | Trim Med Gas / L5 / Mass, Myc, Immuno | 2026-04-09 → 2026-04-27 (+18d) | 2026-04-15 → 2026-05-01 (+16d) | 163d → 151d |
| P2.L5.F.LC.3220 | Plumbing Fixtures & Drinking Fountains / L5 / Mass, Myc, Immuno | 2026-04-15 → 2026-05-01 (+16d) | 2026-04-21 → 2026-05-07 (+16d) | 159d → 147d |
| P2.L5.F.LC.3030 | R/I - Lights & Devices - Hard Lids Ceilings / L5 / Mass, Myc, Immuno | 2026-04-16 → 2026-05-04 (+18d) | 2026-04-29 → 2026-05-15 (+16d) | 103d → 91d |
| P2.L5.F.LC.3040 | R/I - Diffusers - Hard Lid Ceilings / L5 / Mass, Myc, Immuno | 2026-04-16 → 2026-05-04 (+18d) | 2026-04-22 → 2026-05-08 (+16d) | 108d → 96d |
| P2.L5.F.LC.3050 | R/I - Sprinkler Heads - Hard Lid Ceilings / L5 / Mass, Myc, Immuno | 2026-04-16 → 2026-05-04 (+18d) | 2026-04-22 → 2026-05-08 (+16d) | 108d → 96d |
| P2.L5.F.LC.3060 | R/I - Fire Alarm - Hard Lid Ceilings / L5 / Mass, Myc, Immuno | 2026-04-16 → 2026-05-04 (+18d) | 2026-04-22 → 2026-05-08 (+16d) | 108d → 96d |
| P2.L5.F.LC.3070 | OH Ceiling Inspection & Signoff - Hard Lid Ceilings / L5 / Mass, Myc, Immuno | 2026-04-30 → 2026-05-18 (+18d) | 2026-05-06 → 2026-05-22 (+16d) | 103d → 91d |
| P2.L5.F.LC.3080 | Hang-Tape-Finish _Hard Lid Ceilings / L5 / Mass, Myc, Immuno | 2026-05-07 → 2026-05-26 (+19d) | 2026-05-13 → 2026-06-01 (+19d) | 103d → 91d |
| P2.L5.F.LC.3090 | Paint Ceilings / L5 / Mass, Myc, Immuno | 2026-05-14 → 2026-06-02 (+19d) | 2026-05-20 → 2026-06-08 (+19d) | 103d → 91d |
| P2.L5.F.LC.3100 | Waterproof Ceramic Tile / L5 / Mass, Myc, Immuno | 2026-05-21 → 2026-06-09 (+19d) | 2026-05-28 → 2026-06-15 (+18d) | 103d → 91d |
| P2.L5.F.LC.3110 | Ceramic Tile / L5 / Mass, Myc, Immuno | 2026-05-29 → 2026-06-16 (+18d) | 2026-06-04 → 2026-06-22 (+18d) | 103d → 91d |
| P2.L5.F.LC.3120 | T-Grid / L5 / Mass, Myc, Immuno | 2026-06-05 → 2026-06-23 (+18d) | 2026-06-11 → 2026-06-29 (+18d) | 103d → 91d |
| P2.L5.F.LC.3130 | Diffusers in T-Grid / L5 / Mass, Myc, Immuno | 2026-06-12 → 2026-06-30 (+18d) | 2026-06-18 → 2026-07-07 (+19d) | 103d → 91d |
| P2.L5.F.LC.3140 | Lights & Devices / L5 / Mass, Myc, Immuno | 2026-06-12 → 2026-06-30 (+18d) | 2026-06-18 → 2026-07-07 (+19d) | 103d → 91d |
| P2.L5.F.LC.3150 | Sprinkler Heads / L5 / Mass, Myc, Immuno | 2026-06-12 → 2026-06-30 (+18d) | 2026-06-18 → 2026-07-07 (+19d) | 103d → 91d |
| P2.L5.F.LC.3160 | Trim Low Voltage / L5 / Mass, Myc, Immuno | 2026-06-12 → 2026-06-30 (+18d) | 2026-06-18 → 2026-07-07 (+19d) | 103d → 91d |
| P2.L5.F.LC.3170 | Trim Fire Alarm / L5 / Mass, Myc, Immuno | 2026-06-12 → 2026-06-30 (+18d) | 2026-06-18 → 2026-07-07 (+19d) | 103d → 91d |
| P2.L5.F.LC.4100 | Snorkel at Cielings - Install / L5 / Mass, Myc, Immuno | 2026-06-12 → 2026-06-30 (+18d) | 2026-06-15 → 2026-07-01 (+16d) | 115d → 103d |
| P2.L5.F.LC.4190 | Ceiling Service Panels / L5 / Mass, Myc, Immuno | 2026-06-12 → 2026-06-30 (+18d) | 2026-06-12 → 2026-06-30 (+18d) | 117d → 105d |
| P2.L5.F.LC.4130 | Snorkel at Ceiling - MEP Connection / L5 / Mass, Myc, Immuno | 2026-06-16 → 2026-07-02 (+16d) | 2026-06-16 → 2026-07-02 (+16d) | 115d → 103d |
| P2.L5.F.LC.3180 | OH Ceiling Signoff / L5 / Mass, Myc, Immuno | 2026-06-19 → 2026-07-08 (+19d) | 2026-07-02 → 2026-07-21 (+19d) | 103d → 91d |
| P2.L5.F.LC.3200 | Drop Ceiling Tile / L5 / Mass, Myc, Immuno | 2026-07-06 → 2026-07-22 (+16d) | 2026-07-10 → 2026-07-28 (+18d) | 103d → 91d |
| P2.L5.F.LC.3280 | Floor Prep / L5 / Mass, Myc, Immuno | 2026-07-13 → 2026-07-29 (+16d) | 2026-07-17 → 2026-08-04 (+18d) | 103d → 91d |
| P2.L5.F.LC.3290 | Flooring / L5 / Mass, Myc, Immuno | 2026-07-20 → 2026-08-05 (+16d) | 2026-07-24 → 2026-08-11 (+18d) | 103d → 91d |
| P2.L5.F.LC.3190 | Casework (After Flooring) / L5 / Mass, Myc, Immuno | 2026-07-27 → 2026-08-12 (+16d) | 2026-07-30 → 2026-08-17 (+18d) | 119d → 107d |
| P2.L5.F.LC.3300 | Building Specialities / L5 / Mass, Myc, Immuno | 2026-07-27 → 2026-08-12 (+16d) | 2026-07-31 → 2026-08-18 (+18d) | 103d → 91d |
| P2.L5.F.LC.3310 | Interior Building Signage / L5 / Mass, Myc, Immuno | 2026-07-27 → 2026-08-12 (+16d) | 2026-07-31 → 2026-08-18 (+18d) | 103d → 91d |
| P2.L5.F.LC.3260 | Doors & Hardware / L5 / Mass, Myc, Immuno | 2026-07-31 → 2026-08-18 (+18d) | 2026-08-06 → 2026-08-24 (+18d) | 119d → 107d |
| P2.L5.F.LC.3320 | Work Completion List - Finishes / L5 / Mass, Myc, Immuno | 2026-08-03 → 2026-08-19 (+16d) | 2026-08-07 → 2026-08-25 (+18d) | 103d → 91d |
| P2.L5.F.LC.3330 | Remaining Equipment Post Flooring / L5 / Mass, Myc, Immuno | 2026-08-10 → 2026-08-26 (+16d) | 2026-08-11 → 2026-08-27 (+16d) | 103d → 91d |
| P2.L5.F.LC.3340 | Remaining MEP Hook-Ups / L5 / Mass, Myc, Immuno | 2026-08-12 → 2026-08-28 (+16d) | 2026-08-18 → 2026-09-03 (+16d) | 103d → 91d |
| P2.L5.F.LC.3350 | OFOI Furniture & Equipment / L5 / Mass, Myc, Immuno | 2026-08-12 → 2026-08-28 (+16d) | 2026-08-18 → 2026-09-03 (+16d) | 113d → 101d |
| P2.L5.F.LC.3360 | Rough Clean / L5 / Mass, Myc, Immuno | 2026-08-19 → 2026-09-04 (+16d) | 2026-08-25 → 2026-09-11 (+17d) | 103d → 91d |

| ID | Task | Start | Finish | Complete | Total float |
| --- | --- | --- | --- | --- | --- |
| P2.L5.F.LC.3370 | Prepare Punchlist / L5 / Mass, Myc, Immuno | 2026-08-26 → 2026-09-14 (+19d) | 2026-09-01 → 2026-09-18 (+17d) |  | 103d → 91d |
| P2.L5.F.LC.3380 | Correct Punchlist / L5 / Mass, Myc, Immuno | 2026-09-02 → 2026-09-21 (+19d) | 2026-09-16 → 2026-10-02 (+16d) |  | 103d → 91d |
| P2.L5.F.LC.3390 | Final Clean / L5 / Mass, Myc, Immuno | 2026-09-17 → 2026-10-05 (+18d) | 2026-09-23 → 2026-10-09 (+16d) |  | 103d → 91d |
| 1 | **Cold Rooms - 5-2931 & 5-2851** | 2026-02-19 → 2026-02-10 (-9d) | 2026-04-08 → 2026-03-30 (-9d) |  |  |
| P2.L5.F.LC.4000 | Cold Room Walls, Ceilings & Floors Build-Out / L5 / 5-2931 & 5-2851 | 2026-02-19 → 2026-02-10 (-9d) | 2026-03-04 → 2026-02-23 (-9d) |  | 13d → 20d |
| P2.L5.F.LC.4010 | Cold Room Set-Equipment / L5 / 5-2931 & 5-2851 | 2026-03-05 → 2026-02-24 (-9d) | 2026-03-11 → 2026-03-02 (-9d) |  | 13d → 20d |
| P2.L5.F.LC.4020 | Braze Lines, Pressure Test, Insulate / L5 / 5-2931 & 5-2851 | 2026-03-12 → 2026-03-03 (-9d) | 2026-03-18 → 2026-03-09 (-9d) |  | 13d → 20d |
| P2.L5.F.LC.4030 | Final Mechanical/Plumbing Tie-In / L5 / 5-2931 & 5-2851 | 2026-03-19 → 2026-03-10 (-9d) | 2026-03-25 → 2026-03-16 (-9d) |  | 13d → 20d |
| P2.L5.F.LC.4040 | Controls, Lights, LV, and Final Power / L5 / 5-2931 & 5-2851 | 2026-03-26 → 2026-03-17 (-9d) | 2026-04-01 → 2026-03-23 (-9d) |  | 13d → 20d |
| P2.L5.F.LC.4050 | Start-up / L5 / 5-2931 & 5-2851 | 2026-04-02 → 2026-03-24 (-9d) | 2026-04-08 → 2026-03-30 (-9d) |  | 13d → 20d |
| 1 | **MECHANICAL TOWERS / LEVEL 5** |  | 2026-03-31 → 2026-04-10 (+10d) |  |  |
| 4 | **South Mechanical Tower / Rough In & Finish / Level 5** |  | 2026-03-31 → 2026-04-10 (+10d) |  |  |
| P2.L5.SMT.1080 | Set & Connect - Elect Panels and Equipment / L5 - S. Mech Tower | 2025-12-01 A | 2025-12-05 A | 0% → 100% | 57d → none |
| P2.L5.SMT.1150 | Insulate HVAC / Plumbing Pipe / L5 - S. Mech Tower | 2026-02-25 → 2025-12-01 A (-86d) | 2026-03-17 → 2025-12-15 A (-92d) | 0% → 100% | 19d → none |
| P2.L5.SMT.1120 | BAS - Equip Tie In / L5 - S. Mech Tower | 2025-12-01 → 2025-12-15 A (+14d) | 2025-12-05 → 2025-12-19 A (+14d) | 0% → 100% | 89d → none |
| P2.L5.SMT.1200 | Flooring Prep - Epoxy Floors / L5 - S. Mech Tower | 2026-01-19 → 2026-02-09 (+21d) | 2026-01-21 → 2026-02-11 (+21d) |  | 29d → 14d |
| P2.L5.SMT.1250 | Flooring - Epoxy Floors / L5 - S. Mech Tower | 2026-01-22 → 2026-02-12 (+21d) | 2026-01-23 → 2026-02-13 (+21d) |  | 29d → 14d |
| P2.L5.SMT.1090 | Panelboards, Interconnect Wiring, and Remaining Room Buildout of All Elec/FA Systems / L5 - S. Mech Tower | 2026-01-26 → 2026-02-16 (+21d) | 2026-02-06 → 2026-02-27 (+21d) |  | 29d → 14d |
| P2.L5.SMT.1110 | HVAC Piping - Equip Tie In / L5 - S. Mech Tower | 2026-01-28 → 2026-02-20 (+23d) | 2026-02-24 → 2026-03-19 (+23d) |  | 19d → 17d |
| P2.L5.SMT.1140 | Pull Wire - In From Distribution Panels / Out to Branch Circuits / L5 - S. Mech Tower | 2026-02-09 → 2026-03-02 (+21d) | 2026-02-13 → 2026-03-06 (+21d) |  | 29d → 14d |
| P2.L5.SMT.1160 | Electrical Tie in to Equipment / L5 - S. Mech Tower | 2026-02-16 → 2026-03-09 (+21d) | 2026-02-20 → 2026-03-13 (+21d) |  | 46d → 31d |
| P2.L5.SMT.1170 | Test & Terminate / L5 - S. Mech Tower | 2026-02-16 → 2026-03-09 (+21d) | 2026-02-20 → 2026-03-13 (+21d) |  | 29d → 14d |
| P2.L5.SMT.1180 | Paint - Finish Coat / L5 - S. Mech Tower | 2026-02-23 → 2026-03-16 (+21d) | 2026-02-24 → 2026-03-17 (+21d) |  | 29d → 14d |
| P2.L5.SMT.1190 | Trim All MEPF Finishes / L5 - S. Mech Tower | 2026-02-25 → 2026-03-18 (+21d) | 2026-02-26 → 2026-03-19 (+21d) |  | 30d → 15d |
| P2.L5.SMT.1210 | Doors & Hardware / L5 - S. Mech Tower | 2026-02-27 → 2026-03-20 (+21d) | 2026-03-02 → 2026-03-23 (+21d) |  | 30d → 15d |
| P2.L5.SMT.1340 | Wall Protection / L5 - S. Mech Tower | 2026-02-25 → 2026-03-23 (+26d) | 2026-03-03 → 2026-03-27 (+24d) |  | 29d → 11d |
| P2.L5.SMT.1220 | Trades Inspect & Verify R/I Work Completed to Specs / L5 - S. Mech Tower | 2026-03-18 → 2026-03-30 (+12d) | 2026-03-24 → 2026-04-03 (+10d) |  | 19d → 11d |
| P2.L5.SMT.1240 | Energize Elec Panels - Lock Doors and Limit Access / L5 - S. Mech Tower | 2026-03-25 → 2026-04-06 (+12d) | 2026-03-31 → 2026-04-10 (+10d) |  | 19d → 11d |
| P2.L5.SMT.1230 | HVAC System Ready for Start Up / L5 - S. Mech Tower | 2026-03-31 → 2026-04-10 (+10d) | 2026-03-31 → 2026-04-10 (+10d) |  | 19d → 11d |
| 8 | **East Mechanical Tower / Rough In & Finish / Level 5** |  | 2026-03-31 → 2026-04-10 (+10d) |  |  |
| P2.L2.INT.N.2250 | Quench Vent / L5 - E. Mech Tower (From L1 Future) | 2025-12-30 → 2025-12-01 A (-29d) | 2026-01-15 → 2025-12-12 A (-34d) | 0% → 100% | 72d → none |
| P2.L2.INT.N.2260 | Quench Vent / L5 - E. Mech Tower (From B2 (2)) | 2025-12-01 A | 2025-12-29 → 2025-12-15 A (-14d) | 0% → 100% | 72d → none |
| P2.L5.EMT.1110 | HVAC Piping - Equip Tie In / L5 - E. Mech Tower | 2026-01-28 → 2025-12-01 A (-58d) | 2026-02-24 → 2025-12-15 A (-71d) | 0% → 100% | 19d → none |
| P2.L5.EMT.1230 | HVAC System Ready for Start Up / L5 - E. Mech Tower | 2026-03-31 → 2025-12-01 A (-120d) | 2026-03-31 → 2025-12-01 A (-120d) | 0% → 100% | 149d → none |
| P2.L5.EMT.1200 | Flooring Prep - Epoxy Floors / L5 - E. Mech Tower | 2025-12-19 → 2026-01-22 (+34d) | 2025-12-23 → 2026-01-26 (+34d) |  | 48d → 26d |
| P2.L5.EMT.1260 | Flooring - Epoxy Floors / L5 - E. Mech Tower | 2025-12-24 → 2026-01-27 (+34d) | 2025-12-26 → 2026-01-28 (+33d) |  | 48d → 26d |
| P2.L5.EMT.1090 | Panelboards, Interconnect Wiring, and Remaining Room Buildout of All Elec/FA Systems / L5 - E. Mech Tower | 2025-12-29 → 2026-01-29 (+31d) | 2026-01-12 → 2026-02-11 (+30d) |  | 48d → 26d |
| P2.L5.EMT.1140 | Pull Wire - In From Distribution Panels / Out to Branch Circuits / L5 - E. Mech Tower | 2026-01-13 → 2026-02-12 (+30d) | 2026-01-19 → 2026-02-18 (+30d) |  | 48d → 26d |
| P2.L5.EMT.1160 | Electrical Tie in to Equipment / L5 - E. Mech Tower | 2026-01-20 → 2026-02-19 (+30d) | 2026-01-26 → 2026-02-25 (+30d) |  | 195d → 173d |
| P2.L5.EMT.1170 | Test & Terminate / L5 - E. Mech Tower | 2026-01-20 → 2026-02-19 (+30d) | 2026-01-26 → 2026-02-25 (+30d) |  | 48d → 26d |
| P2.L5.EMT.1150 | Insulate HVAC / Plumbing Pipe / L5 - E. Mech Tower | 2026-02-25 → 2026-02-20 (-5d) | 2026-03-17 → 2026-03-12 (-5d) |  | 19d → 22d |
| P2.L5.EMT.1180 | Paint - Finish Coat / L5 - E. Mech Tower | 2026-01-27 → 2026-02-26 (+30d) | 2026-01-28 → 2026-02-27 (+30d) |  | 48d → 26d |
| P2.L5.EMT.1190 | Trim All MEPF Finishes / L5 - E. Mech Tower | 2026-01-29 → 2026-03-02 (+32d) | 2026-01-30 → 2026-03-03 (+32d) |  | 49d → 27d |
| P2.L5.EMT.1210 | Doors & Hardware / L5 - E. Mech Tower | 2026-02-02 → 2026-03-04 (+30d) | 2026-02-03 → 2026-03-05 (+30d) |  | 49d → 27d |
| P2.L5.EMT.1340 | Wall Protection / L5 - E. Mech Tower | 2026-02-19 → 2026-03-23 (+32d) | 2026-02-25 → 2026-03-27 (+30d) |  | 33d → 11d |
| P2.L5.EMT.1220 | Trades Inspect & Verify R/I Work Completed to Specs / L5 - E. Mech Tower | 2026-03-18 → 2026-03-30 (+12d) | 2026-03-24 → 2026-04-03 (+10d) |  | 19d → 11d |
| P2.L5.EMT.1240 | Energize Elec Panels - Lock Doors and Limit Access / L5 - E. Mech Tower | 2026-03-25 → 2026-04-06 (+12d) | 2026-03-31 → 2026-04-10 (+10d) |  | 19d → 11d |
| L6 | **L6 / BUILDOUT** |  | 2026-11-30 → 2026-12-16 (+16d) |  |  |
| L6 | **CORE & SUPPORT SPACES / LEVEL 6** |  | 2026-11-30 → 2026-12-16 (+16d) |  |  |
| 2 | **ROUGH IN - Core & Support Spaces / Level 6** |  | 2026-04-16 → 2026-05-04 (+18d) |  |  |
| Z112 | **South / Level 6** |  | 2026-03-10 → 2026-03-19 (+9d) |  |  |
| P2.L6.S.1300 | OH - Hang Duct - LP Branch / L6 / South |  | 2025-12-19 → 2026-01-22 (+34d) |  | 63d → 41d |
| P2.L6.S.1240 | OH - Plumbing - Test / L6 / South | 2025-12-01 A | 2025-12-12 A | 0% → 100% | 83d → none |
| P2.L6.S.1270 | OH - HVAC Piping - Test / L6 / South | 2025-12-30 → 2025-12-01 A (-29d) | 2026-01-20 → 2025-12-15 A (-36d) | 0% → 100% | 48d → none |
| P2.L6.S.1430 | In Wall - Plumbing - Framing / L6 / South | 2025-12-01 A | 2025-12-12 A | 0% → 100% | 13d → none |
| P2.L6.S.1440 | In Wall - Electrical - Framing / L6 / South | 2025-12-01 A | 2025-12-12 A | 0% → 100% | 13d → none |
| P2.L6.S.1450 | In Wall - Backing/Blocking/Supports / L6 / South | 2025-12-01 A | 2025-12-12 A | 0% → 100% | 13d → none |
| P2.L6.S.1560 | OH - HVAC Piping (Low) / L6 / South | 2025-12-01 A | 2025-12-29 → 2025-12-15 A (-14d) | 0% → 100% | 48d → none |
| P2.L6.S.1280 | OH - Insulate Plumbing / L6 / South | 2025-12-15 A | 2025-12-29 → 2025-12-26 A (-3d) | 0% → 100% | 83d → none |
| P2.L6.S.1390 | OH - Conduit - Low Volt - Telecom / L6 / South | 2026-01-14 → 2025-12-15 A (-30d) | 2026-01-27 → 2026-02-19 (+23d) | 0% → 50% | 63d → 46d |
| P2.L6.S.1200 | Firestop - Thru Wall - Priority Walls / L6 / South | 2025-12-01 → 2026-01-02 (+32d) | 2025-12-05 → 2026-01-08 (+34d) |  | 73d → 51d |
| P2.L6.S.1250 | Pull Wire - Electrical - 480/277v Distribution / L6 / South | 2025-12-01 → 2026-01-02 (+32d) | 2025-12-12 → 2026-01-15 (+34d) |  | 103d → 81d |
| P2.L6.S.1310 | OH - Set & Connect Mech Equipment / L6 / South | 2025-12-01 → 2026-01-02 (+32d) | 2025-12-12 → 2026-01-15 (+34d) |  | 73d → 48d |
| P2.L6.S.1340 | OH - Insulate HVAC Pipe / L6 / South | 2026-01-21 → 2026-01-02 (-19d) | 2026-02-03 → 2026-01-15 (-19d) |  | 48d → 61d |
| P2.L6.S.1460 | AHJ Inspections - Wall Close In / L6 / South | 2025-12-15 → 2026-01-02 (+18d) | 2025-12-19 → 2026-01-08 (+20d) |  | 13d → 6d |
| P2.L6.S.1320 | OH - Electrical - Equip Tie In / L6 / South | 2025-12-15 → 2026-01-16 (+32d) | 2025-12-29 → 2026-01-29 (+31d) |  | 73d → 48d |
| P2.L6.S.1370 | OH - Conduit - Low Volt - BAS/Controls / L6 / South | 2026-02-04 → 2026-01-16 (-19d) | 2026-02-17 → 2026-01-29 (-19d) |  | 48d → 61d |
| P2.L6.S.1400 | OH - Conduit - Low Volt - Security / L6 / South | 2026-02-04 → 2026-01-16 (-19d) | 2026-02-17 → 2026-01-29 (-19d) |  | 48d → 61d |
| P2.L6.S.1350 | OH - Insulate LP Duct / L6 / South | 2025-12-22 → 2026-01-23 (+32d) | 2026-01-13 → 2026-02-12 (+30d) |  | 63d → 41d |
| P2.L6.S.1360 | Pull Wire - Electrical - 208/120v Branch & Equip / L6 / South | 2025-12-30 → 2026-01-30 (+31d) | 2026-01-27 → 2026-02-26 (+30d) |  | 73d → 48d |

| ID | Task | Start | Finish | Complete | Total float | Predecessors |
| --- | --- | --- | --- | --- | --- | --- |
| P2.L6.S.1470 | Hang-Tape-Finish - Walls and Hard Lid Ceilings / L6 / South | 2025-12-30 → 2026-01-30 (+31d) | 2026-01-16 → 2026-02-17 (+32d) |  | 8d → -9d |  |
| P2.L6.S.1500 | Pull Wire - Low Volt - BAS/Controls / L6 / South | 2026-02-18 → 2026-01-30 (-19d) | 2026-03-03 → 2026-02-12 (-19d) |  | 48d → 61d | P2.L6.S.1470, P2.L6.S.1370 → P2.L6.S.1370 |
| P2.L6.S.1530 | Pull Wire - Low Volt - Security / L6 / South | 2026-02-18 → 2026-01-30 (-19d) | 2026-03-03 → 2026-02-12 (-19d) |  | 48d → 61d | P2.L6.S.1470, P2.L6.S.1400 → P2.L6.S.1400 |
| P2.L6.S.1380 | OH - Conduit - Low Volt - Fire Alarm / L6 / South | 2026-01-14 → 2026-02-13 (+30d) | 2026-01-27 → 2026-02-26 (+30d) |  | 63d → 41d |  |
| P2.L6.S.1410 | OH - Conduit - Low Volt - Medical Services/Nurse Call (?) / L6 / South | 2026-01-14 → 2026-02-13 (+30d) | 2026-01-27 → 2026-02-26 (+30d) |  | 63d → 41d |  |
| P2.L6.S.1480 | Spray/Seal/Firestop - Head of Wall / L6 / South | 2026-01-19 → 2026-02-18 (+30d) | 2026-01-30 → 2026-03-03 (+32d) |  | 70d → 48d |  |
| P2.L6.S.1490 | Firestop - Thru Wall / L6 / South | 2026-01-19 → 2026-02-18 (+30d) | 2026-01-30 → 2026-03-03 (+32d) |  | 70d → 48d |  |
| P2.L6.S.1330 | OH - HVAC Piping - Equip Tie In / L6 / South | 2026-01-28 → 2026-02-20 (+23d) | 2026-02-17 → 2026-03-12 (+23d) |  | 58d → 41d |  |
| P2.L6.S.1520 | Pull Wire - Low Volt - Telecom / L6 / South | 2026-01-28 → 2026-02-20 (+23d) | 2026-02-10 → 2026-03-05 (+23d) |  | 63d → 46d | P2.L6.S.1470, P2.L6.S.1390 → P2.L6.S.1390 |
| P2.L6.S.1510 | Pull Wire - Low Volt - Fire Alarm / L6 / South | 2026-01-28 → 2026-02-27 (+30d) | 2026-02-10 → 2026-03-12 (+30d) |  | 63d → 41d | P2.L6.S.1470, P2.L6.S.1380 → P2.L6.S.1380 |
| P2.L6.S.1540 | Pull Wire - Low Volt - Medical Services/Nurse Call (?) / L6 / South | 2026-01-28 → 2026-02-27 (+30d) | 2026-02-10 → 2026-03-12 (+30d) |  | 63d → 41d | P2.L6.S.1470, P2.L6.S.1410 → P2.L6.S.1410 |
| P2.L6.S.1550 | Trades Inspect & Verify R/I Work Completed to Specs / L6 / South | 2026-03-04 → 2026-03-13 (+9d) | 2026-03-10 → 2026-03-19 (+9d) |  | 48d → 41d |  |
| Z1121 | **North / Level 6** |  | 2026-04-01 → 2026-04-17 (+16d) |  |  |  |
| P2.L6.N.1300 | OH - Hang Duct - LP Branch / L6 / North |  | 2025-12-19 → 2026-01-22 (+34d) |  | 69d → 22d |  |
| P2.L6.N.1570 | OH - HVAC Piping (Low) / L6 / North |  | 2025-12-12 → 2025-11-20 A (-22d) | 50% → 100% | 59d → none |  |
| P2.L6.N.1290 | OH - Insulate HP Duct / L6 / North |  | 2025-12-10 → 2026-01-13 (+34d) |  | 76d → 54d |  |
| P2.L6.N.1240 | OH - Plumbing - Test / L6 / North | 2025-12-01 A | 2025-12-12 A | 0% → 100% | 84d → none |  |
| P2.L6.N.1270 | OH - HVAC Piping - Test / L6 / North | 2025-12-15 → 2025-12-01 A (-14d) | 2026-01-06 → 2025-12-15 A (-22d) | 0% → 100% | 59d → none |  |
| P2.L6.N.1280 | OH - Insulate Plumbing / L6 / North | 2025-12-15 A | 2025-12-29 → 2025-12-26 A (-3d) | 0% → 100% | 84d → none |  |
| P2.L6.N.1380 | OH - Conduit - Low Volt - Fire Alarm / L6 / North | 2026-01-07 → 2025-12-15 A (-23d) | 2026-01-20 → 2026-02-19 (+30d) |  | 69d → 47d |  |
| P2.L6.N.1390 | OH - Conduit - Low Volt - Telecom / L6 / North | 2026-01-07 → 2025-12-15 A (-23d) | 2026-01-20 → 2026-02-19 (+30d) |  | 69d → 47d |  |
| P2.L6.N.1200 | Firestop - Thru Wall - Priority Walls / L6 / North | 2025-12-01 → 2026-01-02 (+32d) | 2025-12-05 → 2026-01-08 (+34d) |  | 79d → 32d |  |
| P2.L6.N.1250 | Pull Wire - Electrical - 480/277v Distribution / L6 / North | 2025-12-01 → 2026-01-02 (+32d) | 2025-12-12 → 2026-01-15 (+34d) |  | 104d → 82d |  |
| P2.L6.N.1310 | OH - Set & Connect Mech Equipment / L6 / North | 2025-12-01 → 2026-01-02 (+32d) | 2025-12-19 → 2026-01-22 (+34d) |  | 69d → 47d |  |
| P2.L6.N.1450 | In Wall - Backing/Blocking/Supports / L6 / North | 2025-12-01 → 2026-01-02 (+32d) | 2025-12-12 → 2026-01-15 (+34d) |  | 79d → 57d |  |
| P2.L6.N.1340 | OH - Insulate HVAC Pipe / L6 / North | 2026-01-07 → 2026-01-14 (+7d) | 2026-01-20 → 2026-01-27 (+7d) |  | 59d → 54d |  |
| P2.L6.N.1320 | OH - Electrical - Equip Tie In / L6 / North | 2025-12-22 → 2026-01-23 (+32d) | 2026-01-06 → 2026-02-05 (+30d) |  | 69d → 47d |  |
| P2.L6.N.1350 | OH - Insulate LP Duct / L6 / North | 2025-12-22 → 2026-01-23 (+32d) | 2026-01-06 → 2026-02-05 (+30d) |  | 69d → 22d |  |
| P2.L6.N.1370 | OH - Conduit - Low Volt - BAS/Controls / L6 / North | 2026-01-21 → 2026-01-28 (+7d) | 2026-02-03 → 2026-02-10 (+7d) |  | 59d → 54d |  |
| P2.L6.N.1400 | OH - Conduit - Low Volt - Security / L6 / North | 2026-01-21 → 2026-01-28 (+7d) | 2026-02-03 → 2026-02-10 (+7d) |  | 59d → 54d |  |
| P2.L6.N.1230 | OH - Electrical - 208/120v Branch / L6 / North | 2025-12-01 → 2026-02-06 (+67d) | 2025-12-12 → 2026-02-19 (+69d) |  | 69d → 22d | P2.L6.N.1190 → P2.L6.N.1190, P2.L6.N.1350 |
| P2.L6.N.1410 | OH - Conduit - Low Volt - Medical Services/Nurse Call (?) / L6 / North | 2026-01-07 → 2026-02-06 (+30d) | 2026-01-20 → 2026-02-19 (+30d) |  | 69d → 47d |  |
| P2.L6.N.1330 | OH - HVAC Piping - Equip Tie In / L6 / North | 2026-01-28 → 2026-02-20 (+23d) | 2026-02-17 → 2026-03-12 (+23d) |  | 59d → 42d |  |
| P2.L6.N.1440 | In Wall - Electrical - Framing / L6 / North | 2025-12-15 → 2026-02-20 (+67d) | 2025-12-29 → 2026-03-05 (+66d) |  | 69d → 22d |  |
| P2.L6.N.1430 | In Wall - Plumbing - Framing / L6 / North | 2026-02-05 → 2026-02-23 (+18d) | 2026-02-18 → 2026-03-06 (+16d) |  | 33d → 21d |  |
| P2.L6.N.1360 | Pull Wire - Electrical - 208/120v Branch & Equip / L6 / North | 2026-01-07 → 2026-03-06 (+58d) | 2026-02-03 → 2026-04-02 (+58d) |  | 69d → 27d |  |
| P2.L6.N.1460 | AHJ Inspections - Wall Close In / L6 / North | 2026-02-19 → 2026-03-09 (+18d) | 2026-02-25 → 2026-03-13 (+16d) |  | 33d → 21d |  |
| P2.L6.N.1470 | Hang-Tape-Finish - Walls and Hard Lid Ceilings / L6 / North | 2026-02-26 → 2026-03-16 (+18d) | 2026-03-11 → 2026-03-27 (+16d) |  | 33d → 21d |  |
| P2.L6.N.1480 | Spray/Seal/Firestop - Head of Wall / L6 / North | 2026-03-12 → 2026-03-30 (+18d) | 2026-03-25 → 2026-04-10 (+16d) |  | 33d → 21d |  |
| P2.L6.N.1490 | Firestop - Thru Wall / L6 / North | 2026-03-12 → 2026-03-30 (+18d) | 2026-03-25 → 2026-04-10 (+16d) |  | 33d → 21d |  |
| P2.L6.N.1500 | Pull Wire - Low Volt - BAS/Controls / L6 / North | 2026-03-12 → 2026-03-30 (+18d) | 2026-03-25 → 2026-04-10 (+16d) |  | 33d → 21d |  |
| P2.L6.N.1510 | Pull Wire - Low Volt - Fire Alarm / L6 / North | 2026-03-12 → 2026-03-30 (+18d) | 2026-03-25 → 2026-04-10 (+16d) |  | 33d → 21d |  |
| P2.L6.N.1520 | Pull Wire - Low Volt - Telecom / L6 / North | 2026-03-12 → 2026-03-30 (+18d) | 2026-03-25 → 2026-04-10 (+16d) |  | 33d → 21d |  |
| P2.L6.N.1530 | Pull Wire - Low Volt - Security / L6 / North | 2026-03-12 → 2026-03-30 (+18d) | 2026-03-25 → 2026-04-10 (+16d) |  | 33d → 21d |  |
| P2.L6.N.1540 | Pull Wire - Low Volt - Medical Services/Nurse Call (?) / L6 / North | 2026-03-12 → 2026-03-30 (+18d) | 2026-03-25 → 2026-04-10 (+16d) |  | 33d → 21d |  |
| P2.L6.N.1550 | Trades Inspect & Verify R/I Work Completed to Specs / L6 / North | 2026-03-26 → 2026-04-13 (+18d) | 2026-04-01 → 2026-04-17 (+16d) |  | 33d → 21d |  |
| 1 | **House Electrical Rooms / Level 6** |  | 2026-01-02 → 2026-03-11 (+68d) |  |  |  |
| 9 | **House Electrical Room 6-5966** |  | 2026-01-02 → 2026-03-11 (+68d) |  |  |  |
| P2.6.HE.5966.1070 | Pull Wire - In From Distribution Panels / Out to Branch Circuits / L6 / South / 5966 |  |  |  |  | P2.6.HE.5966.1060 → P2.6.HE.5966.1060, P2.L6.INT.S.1190, P2.L6.S.1360, P2.6.HE.5966.1080 |
| P2.6.HE.5966.1080 | Panelboards, Interconnect Wiring, and Remaining Room Buildout of All Systems / L6 / South / 5966 | 2025-12-01 A | 2025-12-12 A | 0% → 100% | 26d → none |  |
| P2.6.HE.5966.1100 | Paint - Finish Coat / L6 / South / 5966 | 2025-12-22 → 2025-12-15 A (-7d) | 2025-12-23 → 2025-12-17 A (-6d) | 0% → 100% | 26d → none |  |
| P2.6.HE.5966.1130 | Doors & Hardware / L6 / South / 5966 | 2025-12-31 → 2025-12-18 A (-13d) | 2026-01-02 → 2025-12-24 A (-9d) | 0% → 100% | 26d → none |  |
| P2.6.HE.5966.1090 | Test & Terminate / L6 / South / 5966 | 2025-12-15 → 2026-02-27 (+74d) | 2025-12-19 → 2026-03-05 (+76d) |  | 26d → 48d |  |
| P2.6.HE.5966.1110 | Trim All MEPF Finishes / L6 / South / 5966 | 2025-12-24 → 2026-03-06 (+72d) | 2025-12-26 → 2026-03-09 (+73d) |  | 26d → 48d |  |
| P2.6.HE.5966.1120 | Flooring / L6 / South / 5966 | 2025-12-29 → 2026-03-10 (+71d) | 2025-12-30 → 2026-03-11 (+71d) |  | 26d → 48d |  |
| P2.6.HE.5966.1140 | Panels Ready to Energize - Lock Doors and Limit Access / L6 / South / 5966 | 2026-01-02 → 2026-03-11 (+68d) | 2026-01-02 → 2026-03-11 (+68d) |  | 26d → 48d |  |
| 8 | **House Electrical Room 6-2947** |  | 2026-01-02 → 2026-03-04 (+61d) |  |  |  |
| P2.6.HE.2947.1070 | Pull Wire - In From Distribution Panels / Out to Branch Circuits / L6 / North / 2947 |  |  |  |  | P2.6.HE.2947.1060 → P2.6.HE.2947.1060, P2.L6.INT.N.1190, P2.6.HE.2947.1080, P2.L6.N.1230 |
| P2.6.HE.2947.1080 | Panelboards, Interconnect Wiring, and Remaining Room Buildout of All Systems / L6 / North / 2947 | 2025-12-01 A | 2025-12-12 A | 0% → 100% | 26d → none |  |
| P2.6.HE.2947.1100 | Paint - Finish Coat / L6 / North / 2947 | 2025-12-22 → 2025-12-15 A (-7d) | 2025-12-23 → 2025-12-17 A (-6d) | 0% → 100% | 26d → none |  |
| P2.6.HE.2947.1130 | Doors & Hardware / L6 / North / 2947 | 2025-12-31 → 2025-12-18 A (-13d) | 2026-01-02 → 2025-12-24 A (-9d) | 0% → 100% | 26d → none |  |
| P2.6.HE.2947.1090 | Test & Terminate / L6 / North / 2947 | 2025-12-15 → 2026-02-20 (+67d) | 2025-12-19 → 2026-02-26 (+69d) |  | 26d → 53d |  |
| P2.6.HE.2947.1110 | Trim All MEPF Finishes / L6 / North / 2947 | 2025-12-24 → 2026-02-27 (+65d) | 2025-12-26 → 2026-03-02 (+66d) |  | 26d → 53d |  |
| P2.6.HE.2947.1120 | Flooring / L6 / North / 2947 | 2025-12-29 → 2026-03-03 (+64d) | 2025-12-30 → 2026-03-04 (+64d) |  | 26d → 53d |  |
| P2.6.HE.2947.1140 | Panels Ready to Energize - Lock Doors and Limit Access / L6 / North / 2947 | 2026-01-02 → 2026-03-04 (+61d) | 2026-01-02 → 2026-03-04 (+61d) |  | 26d → 53d |  |
| 7 | **House Electrical Room 6-2803** |  | 2026-01-02 → 2026-03-04 (+61d) |  |  |  |
| P2.6.HE.2803.1070 | Pull Wire - In From Distribution Panels / Out to Branch Circuits / L6 / North / 2803 |  |  |  |  | P2.6.HE.2803.1060 → P2.6.HE.2803.1060, P2.L6.INT.N.1190, P2.L6.N.1230 |
| P2.6.HE.2803.1080 | Panelboards, Interconnect Wiring, and Remaining Room Buildout of All Systems / L6 / North / 2803 | 2025-12-01 A | 2025-12-12 A | 0% → 100% | 26d → none |  |
| P2.6.HE.2803.1100 | Paint - Finish Coat / L6 / North / 2803 | 2025-12-22 → 2025-12-15 A (-7d) | 2025-12-23 → 2025-12-17 A (-6d) | 0% → 100% | 26d → none |  |
| P2.6.HE.2803.1130 | Doors & Hardware / L6 / North / 2803 | 2025-12-31 → 2025-12-18 A (-13d) | 2026-01-02 → 2025-12-24 A (-9d) | 0% → 100% | 26d → none |  |

| ID | Task | Start | Finish | Complete | Total float | Predecessors |
| --- | --- | --- | --- | --- | --- | --- |
| P2.6.HE.2803.1090 | Test & Terminate / L6 / North / 2803 | 2025-12-15 → 2026-02-20 (+67d) | 2025-12-19 → 2026-02-26 (+69d) |  | 26d → 53d |  |
| P2.6.HE.2803.1110 | Trim All MEPF Finishes / L6 / North / 2803 | 2025-12-24 → 2026-02-27 (+65d) | 2025-12-26 → 2026-03-02 (+66d) |  | 26d → 53d |  |
| P2.6.HE.2803.1120 | Flooring / L6 / North / 2803 | 2025-12-29 → 2026-03-03 (+64d) | 2025-12-30 → 2026-03-04 (+64d) |  | 26d → 53d |  |
| P2.6.HE.2803.1140 | Panels Ready to Energize - Lock Doors and Limit Access / L6 / North / 2803 | 2026-01-02 → 2026-03-04 (+61d) | 2026-01-02 → 2026-03-04 (+61d) |  | 26d → 53d |  |
| 6 | **House Electrical Room 6-5959** |  | 2026-01-02 → 2026-03-11 (+68d) |  |  |  |
| P2.6.HE.5959.1070 | Pull Wire - In From Distribution Panels / Out to Branch Circuits / L6 / South / 5959 |  |  |  |  | P2.6.HE.5959.1060 → P2.6.HE.5959.1060, P2.L6.INT.S.1190, P2.L6.S.1360 |
| P2.6.HE.5959.1080 | Panelboards, Interconnect Wiring, and Remaining Room Buildout of All Systems / L6 / South / 5959 | 2025-12-01 A | 2025-12-12 A | 0% → 100% | 26d → none |  |
| P2.6.HE.5959.1100 | Paint - Finish Coat / L6 / South / 5959 | 2025-12-22 → 2025-12-15 A (-7d) | 2025-12-23 → 2025-12-17 A (-6d) | 0% → 100% | 26d → none |  |
| P2.6.HE.5959.1130 | Doors & Hardware / L6 / South / 5959 | 2025-12-31 → 2025-12-18 A (-13d) | 2026-01-02 → 2025-12-24 A (-9d) | 0% → 100% | 26d → none |  |
| P2.6.HE.5959.1090 | Test & Terminate / L6 / South / 5959 | 2025-12-15 → 2026-02-27 (+74d) | 2025-12-19 → 2026-03-05 (+76d) |  | 26d → 48d |  |
| P2.6.HE.5959.1110 | Trim All MEPF Finishes / L6 / South / 5959 | 2025-12-24 → 2026-03-06 (+72d) | 2025-12-26 → 2026-03-09 (+73d) |  | 26d → 48d |  |
| P2.6.HE.5959.1120 | Flooring / L6 / South / 5959 | 2025-12-29 → 2026-03-10 (+71d) | 2025-12-30 → 2026-03-11 (+71d) |  | 26d → 48d |  |
| P2.6.HE.5959.1140 | Panels Ready to Energize - Lock Doors and Limit Access / L6 / South / 5959 | 2026-01-02 → 2026-03-11 (+68d) | 2026-01-02 → 2026-03-11 (+68d) |  | 26d → 48d |  |
| 2 | **L6 / IT Closets** |  | 2026-04-16 → 2026-05-04 (+18d) |  |  |  |
| 1 | **IT Closet 6-2818** |  | 2026-04-16 → 2026-05-04 (+18d) |  |  |  |
| P2.6.IT.2818.150 | Flooring / L6 / North / 2818 | 2025-12-10 → 2025-11-17 A (-23d) | 2025-12-16 → 2025-11-21 A (-25d) | 0% → 100% | 158d → none |  |
| P2.6.IT.2818.120 | Electrical Panels / Conduit Connections / Wire Terminations / L6 / North / 2818 | 2025-12-01 → 2025-12-08 A (+7d) | 2025-12-05 → 2025-12-11 A (+6d) | 0% → 100% | 158d → none |  |
| P2.6.IT.2818.230 | Doors & Hardware / L6 / North / 2818 | 2026-03-27 → 2025-12-18 A (-99d) | 2026-03-30 → 2025-12-24 A (-96d) | 0% → 100% | 132d → none |  |
| P2.6.IT.2818.140 | Trim all MEPF / L6 / North / 2818 | 2025-12-08 → 2026-02-20 (+74d) | 2025-12-09 → 2026-02-23 (+76d) |  | 158d → 111d |  |
| P2.6.IT.2818.170 | OH Cable Tray / L6 / North / 2818 | 2026-02-04 → 2026-02-20 (+16d) | 2026-02-10 → 2026-02-26 (+16d) |  | 122d → 110d |  |
| P2.6.IT.2818.180 | Grounding and Bonding / L6 / North / 2818 | 2025-12-17 → 2026-02-24 (+69d) | 2025-12-18 → 2026-02-25 (+69d) |  | 158d → 111d |  |
| P2.6.IT.2818.260 | Room Ready - CIT / L6 / North / 2818 | 2026-02-11 → 2026-02-27 (+16d) | 2026-02-17 → 2026-03-05 (+16d) |  | 122d → 110d |  |
| P2.6.IT.2818.160 | Equipment Racks and Ladders / L6 / North / 2818 | 2026-02-18 → 2026-03-06 (+16d) | 2026-02-24 → 2026-03-12 (+16d) |  | 122d → 110d |  |
| P2.6.IT.2818.190 | Pull Wire - Backbone Cabling Into Racks / L6 / North / 2818 | 2026-02-25 → 2026-03-13 (+16d) | 2026-03-03 → 2026-03-19 (+16d) |  | 137d → 125d |  |
| P2.6.IT.2818.200 | Pull Wire - Horizontal Cabling Out to Termination Points / L6 / North / 2818 | 2026-02-25 → 2026-03-13 (+16d) | 2026-03-24 → 2026-04-09 (+16d) |  | 122d → 110d |  |
| P2.6.IT.2818.210 | Paint - Finish Coat / L6 / North / 2818 | 2026-03-25 → 2026-04-10 (+16d) | 2026-03-26 → 2026-04-13 (+18d) |  | 122d → 110d |  |
| P2.6.IT.2818.220 | Terminations and Punch Downs - All Cabling / L6 / North / 2818 | 2026-03-27 → 2026-04-14 (+18d) | 2026-04-16 → 2026-05-04 (+18d) |  | 122d → 110d |  |
| P2.6.IT.2818.240 | Energize Elec Panels Serving Comms Racks / L6 / North / 2818 | 2026-03-31 → 2026-04-14 (+14d) | 2026-04-02 → 2026-04-16 (+14d) |  | 132d → 122d |  |
| P2.6.IT.2818.250 | Comms Racks In Service / L6 / North / 2818 | 2026-04-16 → 2026-05-04 (+18d) | 2026-04-16 → 2026-05-04 (+18d) |  | 122d → 110d |  |
| 2 | **IT Closet 6-2865** |  | 2026-03-26 → 2026-04-13 (+18d) |  |  |  |
| P2.6.IT.2865.150 | Flooring / L6 / South / 2865 | 2025-12-03 → 2025-11-17 A (-16d) | 2025-12-09 → 2025-11-21 A (-18d) | 0% → 100% | 178d → none |  |
| P2.6.IT.2865.230 | Doors & Hardware / L6 / South / 2865 | 2026-03-06 → 2025-12-18 A (-78d) | 2026-03-09 → 2025-12-24 A (-75d) | 0% → 100% | 147d → none |  |
| P2.6.IT.2865.140 | Trim all MEPF / L6 / South / 2865 | 2025-12-01 → 2026-02-20 (+81d) | 2025-12-02 → 2026-02-23 (+83d) |  | 178d → 126d |  |
| P2.6.IT.2865.170 | OH Cable Tray / L6 / South / 2865 | 2026-02-04 → 2026-02-20 (+16d) | 2026-02-10 → 2026-02-26 (+16d) |  | 137d → 125d |  |
| P2.6.IT.2865.180 | Grounding and Bonding / L6 / South / 2865 | 2025-12-10 → 2026-02-24 (+76d) | 2025-12-11 → 2026-02-25 (+76d) |  | 178d → 126d |  |
| P2.6.IT.2865.260 | Room Ready - CIT / L6 / South / 2865 | 2026-02-11 → 2026-02-27 (+16d) | 2026-02-17 → 2026-03-05 (+16d) |  | 137d → 125d |  |
| P2.6.IT.2865.160 | Equipment Racks and Ladders / L6 / South / 2865 | 2026-02-18 → 2026-03-06 (+16d) | 2026-02-24 → 2026-03-12 (+16d) |  | 137d → 125d |  |
| P2.6.IT.2865.190 | Pull Wire - Backbone Cabling Into Racks / L6 / South / 2865 | 2026-02-25 → 2026-03-13 (+16d) | 2026-03-03 → 2026-03-19 (+16d) |  | 137d → 125d |  |
| P2.6.IT.2865.200 | Pull Wire - Horizontal Cabling Out to Termination Points / L6 / South / 2865 | 2026-02-25 → 2026-03-13 (+16d) | 2026-03-03 → 2026-03-19 (+16d) |  | 137d → 125d |  |
| P2.6.IT.2865.210 | Paint - Finish Coat / L6 / South / 2865 | 2026-03-04 → 2026-03-20 (+16d) | 2026-03-05 → 2026-03-23 (+18d) |  | 137d → 125d |  |
| P2.6.IT.2865.220 | Terminations and Punch Downs - All Cabling / L6 / South / 2865 | 2026-03-06 → 2026-03-24 (+18d) | 2026-03-26 → 2026-04-13 (+18d) |  | 137d → 125d |  |
| P2.6.IT.2865.240 | Energize Elec Panels Serving Comms Racks / L6 / South / 2865 | 2026-03-10 → 2026-03-24 (+14d) | 2026-03-12 → 2026-03-26 (+14d) |  | 147d → 137d |  |
| P2.6.IT.2865.250 | Comms Racks In Service / L6 / South / 2865 | 2026-03-26 → 2026-04-13 (+18d) | 2026-03-26 → 2026-04-13 (+18d) |  | 137d → 125d |  |
| 3 | **IT Closet 6-3929** |  | 2026-03-26 → 2026-04-17 (+22d) |  |  |  |
| P2.6.IT.3929.150 | Flooring / L6 / South / 3929 | 2025-12-03 → 2025-11-17 A (-16d) | 2025-12-09 → 2025-11-21 A (-18d) | 0% → 100% | 178d → none |  |
| P2.6.IT.3929.230 | Doors & Hardware / L6 / South / 3929 | 2026-03-06 → 2025-12-18 A (-78d) | 2026-03-09 → 2025-12-24 A (-75d) | 0% → 100% | 147d → none |  |
| P2.6.IT.3929.170 | OH Cable Tray / L6 / South / 3929 | 2026-02-04 → 2026-02-20 (+16d) | 2026-02-10 → 2026-02-26 (+16d) |  | 137d → 125d |  |
| P2.6.IT.3929.140 | Trim all MEPF / L6 / South / 3929 | 2025-12-01 → 2026-02-27 (+88d) | 2025-12-02 → 2026-03-02 (+90d) |  | 178d → 121d |  |
| P2.6.IT.3929.180 | Grounding and Bonding / L6 / South / 3929 | 2025-12-10 → 2026-03-03 (+83d) | 2025-12-11 → 2026-03-04 (+83d) |  | 178d → 121d |  |
| P2.6.IT.3929.260 | Room Ready - CIT / L6 / South / 3929 | 2026-02-11 → 2026-03-05 (+22d) | 2026-02-17 → 2026-03-11 (+22d) |  | 137d → 121d |  |
| P2.6.IT.3929.160 | Equipment Racks and Ladders / L6 / South / 3929 | 2026-02-18 → 2026-03-12 (+22d) | 2026-02-24 → 2026-03-18 (+22d) |  | 137d → 121d |  |
| P2.6.IT.3929.190 | Pull Wire - Backbone Cabling Into Racks / L6 / South / 3929 | 2026-02-25 → 2026-03-19 (+22d) | 2026-03-03 → 2026-03-25 (+22d) |  | 137d → 121d |  |
| P2.6.IT.3929.200 | Pull Wire - Horizontal Cabling Out to Termination Points / L6 / South / 3929 | 2026-02-25 → 2026-03-19 (+22d) | 2026-03-03 → 2026-03-25 (+22d) |  | 137d → 121d |  |
| P2.6.IT.3929.210 | Paint - Finish Coat / L6 / South / 3929 | 2026-03-04 → 2026-03-26 (+22d) | 2026-03-05 → 2026-03-27 (+22d) |  | 137d → 121d |  |
| P2.6.IT.3929.220 | Terminations and Punch Downs - All Cabling / L6 / South / 3929 | 2026-03-06 → 2026-03-30 (+24d) | 2026-03-26 → 2026-04-17 (+22d) |  | 137d → 121d |  |
| P2.6.IT.3929.240 | Energize Elec Panels Serving Comms Racks / L6 / South / 3929 | 2026-03-10 → 2026-03-30 (+20d) | 2026-03-12 → 2026-04-01 (+20d) |  | 147d → 133d |  |
| P2.6.IT.3929.250 | Comms Racks In Service / L6 / South / 3929 | 2026-03-26 → 2026-04-17 (+22d) | 2026-03-26 → 2026-04-17 (+22d) |  | 137d → 121d |  |
| 4 | **FINISHES - CORE & SUPPORT SPACES / Level 6** |  | 2026-11-30 → 2026-12-16 (+16d) |  |  |  |
| 7KSF11 | **Chem Chief - MD Chief - Pre/Post Amp - Research - Z1/Z2 / Level 6** | 2026-03-11 → 2026-03-20 (+9d) | 2026-10-26 → 2026-11-04 (+9d) |  |  |  |
| 1 | **Finishes** | 2026-03-11 → 2026-03-20 (+9d) | 2026-10-26 → 2026-11-04 (+9d) |  |  |  |
| P2.L6.F.CS.1000 | Paint Prime & 1st Coat Walls / L6 / Chem, MD Chief Z1,Z2 | 2026-03-11 → 2026-03-20 (+9d) | 2026-03-17 → 2026-03-26 (+9d) |  | 48d → 41d |  |
| P2.L6.F.CS.1020 | R/I - Ceiling Assemblies & Supports - All Trades (A/V, Oper Part, Glass Part, etc.) / L6 / Chem, MD Chief Z1,Z2 | 2026-03-18 → 2026-03-27 (+9d) | 2026-03-24 → 2026-04-02 (+9d) |  | 80d → 73d |  |
| P2.L6.F.CS.1010 | T-Grid / L6 / Chem, MD Chief Z1,Z2 | 2026-03-25 → 2026-04-03 (+9d) | 2026-03-31 → 2026-04-09 (+9d) |  | 80d → 73d |  |
| P2.L6.F.CS.1050 | Sprinkler Heads in T-Grid / L6 / Chem, MD Chief Z1,Z2 | 2026-04-01 → 2026-04-10 (+9d) | 2026-04-07 → 2026-04-16 (+9d) |  | 80d → 73d |  |
| P2.L6.F.CS.1030 | Diffusers in T-Grid / L6 / Chem, MD Chief Z1,Z2 | 2026-04-08 → 2026-04-17 (+9d) | 2026-04-14 → 2026-04-23 (+9d) |  | 80d → 73d |  |
| P2.L6.F.CS.1040 | Lights & Elec Devices in T-Grid / L6 / Chem, MD Chief Z1,Z2 | 2026-04-15 → 2026-04-24 (+9d) | 2026-04-28 → 2026-05-07 (+9d) |  | 80d → 73d |  |
| P2.L6.F.CS.1070 | Fire Alarm in T-Grid / L6 / Chem, MD Chief Z1,Z2 | 2026-04-29 → 2026-05-08 (+9d) | 2026-05-05 → 2026-05-14 (+9d) |  | 80d → 73d |  |
| P2.L6.F.CS.1060 | Low Voltage in T-Grid / L6 / Chem, MD Chief Z1,Z2 | 2026-05-06 → 2026-05-15 (+9d) | 2026-05-12 → 2026-05-21 (+9d) |  | 80d → 73d |  |
| P2.L6.F.CS.2320 | Ceiling Service Panel / L6 / Chem, MD Chief Z1,Z2 | 2026-05-13 → 2026-05-22 (+9d) | 2026-05-13 → 2026-05-22 (+9d) |  | 80d → 73d |  |
| P2.L6.F.CS.1080 | OH Ceiling Signoff / L6 / Chem, MD Chief Z1,Z2 | 2026-05-14 → 2026-05-26 (+12d) | 2026-05-20 → 2026-06-01 (+12d) |  | 80d → 73d |  |

| ID | Task | Start | Finish | Complete | Total float |
| --- | --- | --- | --- | --- | --- |
| P2.L6.F.CS.2300 | Casework (Before Flooring) / L6 / Chem, MD Chief Z1,Z2 | 2026-05-21 → 2026-06-02 (+12d) | 2026-06-05 → 2026-06-16 (+11d) |  | 80d → 73d |
| P2.L6.F.CS.1300 | Fumehood Equipment Install / L6 / Chem, MD Chief Z1,Z2 | 2026-06-05 → 2026-06-16 (+11d) | 2026-06-05 → 2026-06-16 (+11d) |  | 80d → 73d |
| P2.L6.F.CS.1090 | Millwork / L6 / Chem, MD Chief Z1,Z2 | 2026-06-08 → 2026-06-17 (+9d) | 2026-06-12 → 2026-06-23 (+11d) |  | 81d → 74d |
| P2.L6.F.CS.1100 | Plumbing Fixtures / L6 / Chem, MD Chief Z1,Z2 | 2026-06-08 → 2026-06-17 (+9d) | 2026-06-12 → 2026-06-23 (+11d) |  | 139d → 132d |
| P2.L6.F.CS.1310 | Fumehood Equipment MEP Connection / L6 / Chem, MD Chief Z1,Z2 | 2026-06-08 → 2026-06-17 (+9d) | 2026-06-08 → 2026-06-17 (+9d) |  | 80d → 73d |
| P2.L6.F.CS.1110 | Drop Ceiling Tile / L6 / Chem, MD Chief Z1,Z2 | 2026-06-09 → 2026-06-18 (+9d) | 2026-06-15 → 2026-06-24 (+9d) |  | 80d → 73d |
| P2.L6.F.CS.1120 | Floor Prep / L6 / Chem, MD Chief Z1,Z2 | 2026-06-16 → 2026-06-25 (+9d) | 2026-06-22 → 2026-07-01 (+9d) |  | 80d → 73d |
| P2.L6.F.CS.1130 | Floor Finishes / L6 / Chem, MD Chief Z1,Z2 | 2026-06-23 → 2026-07-02 (+9d) | 2026-06-29 → 2026-07-09 (+10d) |  | 80d → 73d |
| P2.L6.F.CS.2310 | Casework (After Flooring) / L6 / Chem, MD Chief Z1,Z2 | 2026-06-30 → 2026-07-10 (+10d) | 2026-07-01 → 2026-07-13 (+12d) |  | 80d → 73d |
| P2.L6.F.CS.2340 | Interior Glazing / L6 / Chem, MD Chief Z1,Z2 | 2026-06-30 → 2026-07-10 (+10d) | 2026-07-07 → 2026-07-16 (+9d) |  | 83d → 76d |
| P2.L6.F.CS.2330 | Remaining Equipment Post Flooring / L6 / Chem, MD Chief Z1,Z2 | 2026-07-02 → 2026-07-14 (+12d) | 2026-07-02 → 2026-07-14 (+12d) |  | 80d → 73d |
| P2.L6.F.CS.1140 | Doors & Hardware / L6 / Chem, MD Chief Z1,Z2 | 2026-07-06 → 2026-07-15 (+9d) | 2026-07-10 → 2026-07-21 (+11d) |  | 80d → 73d |
| P2.L6.F.CS.1150 | Paint - Finish Coat / L6 / Chem, MD Chief Z1,Z2 | 2026-07-13 → 2026-07-22 (+9d) | 2026-07-17 → 2026-07-28 (+11d) |  | 80d → 73d |
| P2.L6.F.CS.1200 | Floor Base / L6 / Chem, MD Chief Z1,Z2 | 2026-07-20 → 2026-07-29 (+9d) | 2026-07-24 → 2026-08-04 (+11d) |  | 80d → 73d |
| P2.L6.F.CS.1180 | Building Specialities / L6 / Chem, MD Chief Z1,Z2 | 2026-07-27 → 2026-08-05 (+9d) | 2026-07-31 → 2026-08-11 (+11d) |  | 80d → 73d |
| P2.L6.F.CS.1210 | Demountable Partitions / L6 / Chem, MD Chief Z1,Z2 | 2026-07-27 → 2026-08-05 (+9d) | 2026-07-31 → 2026-08-11 (+11d) |  | 90d → 83d |
| P2.L6.F.CS.1330 | Wall Protection / L6 / Corr & Lobbies | 2026-07-27 → 2026-08-05 (+9d) | 2026-07-31 → 2026-08-11 (+11d) |  | 105d → 98d |
| P2.L6.F.CS.1170 | Trim T-Stats / L6 / Chem, MD Chief Z1,Z2 | 2026-08-03 → 2026-08-12 (+9d) | 2026-08-07 → 2026-08-18 (+11d) |  | 80d → 73d |
| P2.L6.F.CS.1160 | Set AV/IT Devices and Configure / L6 / Chem, MD Chief Z1,Z2 | 2026-08-10 → 2026-08-19 (+9d) | 2026-08-14 → 2026-08-25 (+11d) |  | 80d → 73d |
| P2.L6.F.CS.1220 | Trim Electrical / L6 / Chem, MD Chief Z1,Z2 | 2026-08-17 → 2026-08-26 (+9d) | 2026-08-21 → 2026-09-01 (+11d) |  | 80d → 73d |
| P2.L6.F.CS.1230 | Trim Telephone/ Data / L6 / Chem, MD Chief Z1,Z2 | 2026-08-24 → 2026-09-02 (+9d) | 2026-08-28 → 2026-09-09 (+12d) |  | 80d → 73d |
| P2.L6.F.CS.1190 | Interior Building Signage / L6 / Chem, MD Chief Z1,Z2 | 2026-08-31 → 2026-09-10 (+10d) | 2026-09-04 → 2026-09-16 (+12d) |  | 80d → 73d |
| P2.L6.F.CS.1240 | Work Completion List - Finishes / L6 / Chem, MD Chief Z1,Z2 | 2026-09-08 → 2026-09-17 (+9d) | 2026-09-14 → 2026-09-23 (+9d) |  | 80d → 73d |
| P2.L6.F.CS.1250 | Rough Clean / L6 / Chem, MD Chief Z1,Z2 | 2026-09-15 → 2026-09-24 (+9d) | 2026-09-21 → 2026-09-30 (+9d) |  | 80d → 73d |
| P2.L6.F.CS.1260 | FF&E / L6 / Chem, MD Chief Z1,Z2 | 2026-09-22 → 2026-10-01 (+9d) | 2026-09-28 → 2026-10-07 (+9d) |  | 80d → 73d |
| P2.L6.F.CS.1270 | Prepare Punchlist / L6 / Chem, MD Chief Z1,Z2 | 2026-09-29 → 2026-10-08 (+9d) | 2026-10-05 → 2026-10-14 (+9d) |  | 80d → 73d |
| P2.L6.F.CS.1280 | Correct Punchlist / L6 / Chem, MD Chief Z1,Z2 | 2026-10-06 → 2026-10-15 (+9d) | 2026-10-19 → 2026-10-28 (+9d) |  | 80d → 73d |
| P2.L6.F.CS.1290 | Final Clean / L6 / Chem, MD Chief Z1,Z2 | 2026-10-20 → 2026-10-29 (+9d) | 2026-10-26 → 2026-11-04 (+9d) |  | 80d → 73d |
| 7KSF1 | **L6 - Z2/Z3 - Chief Neuro / Offices - Z2/Z3 / Level 6** | 2026-04-02 → 2026-04-20 (+18d) | 2026-11-09 → 2026-11-25 (+16d) |  |  |
| 1 | **Finishes** | 2026-04-02 → 2026-04-20 (+18d) | 2026-11-09 → 2026-11-25 (+16d) |  |  |
| P2.L6.F.CS.2000 | Paint Prime & 1st Coat Walls / L6 / Neuro Chief Ofc Z2,Z3 | 2026-04-02 → 2026-04-20 (+18d) | 2026-04-08 → 2026-04-24 (+16d) |  | 37d → 25d |
| P2.L6.F.CS.2020 | R/I - Ceiling Assemblies & Supports - All Trades (A/V, Oper Part, Glass Part, etc.) / L6 / Neuro Chief Ofc Z2,Z3 | 2026-04-09 → 2026-04-27 (+18d) | 2026-04-15 → 2026-05-01 (+16d) |  | 70d → 58d |
| P2.L6.F.CS.2010 | T-Grid / L6 / Neuro Chief Ofc Z2,Z3 | 2026-04-16 → 2026-05-04 (+18d) | 2026-04-22 → 2026-05-08 (+16d) |  | 70d → 58d |
| P2.L6.F.CS.2050 | Sprinkler Heads in T-Grid / L6 / Neuro Chief Ofc Z2,Z3 | 2026-04-23 → 2026-05-11 (+18d) | 2026-04-29 → 2026-05-15 (+16d) |  | 70d → 58d |
| P2.L6.F.CS.2030 | Diffusers in T-Grid / L6 / Neuro Chief Ofc Z2,Z3 | 2026-04-30 → 2026-05-18 (+18d) | 2026-05-06 → 2026-05-22 (+16d) |  | 70d → 58d |
| P2.L6.F.CS.2040 | Lights & Elec Devices in T-Grid / L6 / Neuro Chief Ofc Z2,Z3 | 2026-05-07 → 2026-05-26 (+19d) | 2026-05-20 → 2026-06-08 (+19d) |  | 70d → 58d |
| P2.L6.F.CS.2070 | Fire Alarm in T-Grid / L6 / Neuro Chief Ofc Z2,Z3 | 2026-05-21 → 2026-06-09 (+19d) | 2026-05-28 → 2026-06-15 (+18d) |  | 70d → 58d |
| P2.L6.F.CS.2060 | Low Voltage in T-Grid / L6 / Neuro Chief Ofc Z2,Z3 | 2026-05-29 → 2026-06-16 (+18d) | 2026-06-04 → 2026-06-22 (+18d) |  | 70d → 58d |
| P2.L6.F.CS.2080 | OH Ceiling Signoff / L6 / Neuro Chief Ofc Z2,Z3 | 2026-06-05 → 2026-06-23 (+18d) | 2026-06-11 → 2026-06-29 (+18d) |  | 70d → 58d |
| P2.L6.F.CS.2110 | Drop Ceiling Tile / L6 / Neuro Chief Ofc Z2,Z3 | 2026-06-12 → 2026-06-30 (+18d) | 2026-06-18 → 2026-07-07 (+19d) |  | 70d → 58d |
| P2.L6.F.CS.2090 | Millwork / L6 / Neuro Chief Ofc Z2,Z3 | 2026-06-19 → 2026-07-08 (+19d) | 2026-06-25 → 2026-07-14 (+19d) |  | 70d → 58d |
| P2.L6.F.CS.2100 | Plumbing Fixtures / L6 / Neuro Chief Ofc Z2,Z3 | 2026-06-26 → 2026-07-15 (+19d) | 2026-07-02 → 2026-07-21 (+19d) |  | 70d → 58d |
| P2.L6.F.CS.2120 | Floor Prep / L6 / Neuro Chief Ofc Z2,Z3 | 2026-07-06 → 2026-07-22 (+16d) | 2026-07-10 → 2026-07-28 (+18d) |  | 70d → 58d |
| P2.L6.F.CS.2130 | Floor Finishes / L6 / Neuro Chief Ofc Z2,Z3 | 2026-07-13 → 2026-07-29 (+16d) | 2026-07-17 → 2026-08-04 (+18d) |  | 70d → 58d |
| P2.L6.F.CS.2140 | Doors & Hardware / L6 / Neuro Chief Ofc Z2,Z3 | 2026-07-20 → 2026-08-05 (+16d) | 2026-07-24 → 2026-08-11 (+18d) |  | 70d → 58d |
| P2.L6.F.CS.2350 | Interior Glazing / L6 / Neuro Chief Ofc Z2,Z3 | 2026-07-20 → 2026-08-05 (+16d) | 2026-07-21 → 2026-08-06 (+16d) |  | 73d → 61d |
| P2.L6.F.CS.2150 | Paint - Finish Coat / L6 / Neuro Chief Ofc Z2,Z3 | 2026-07-27 → 2026-08-12 (+16d) | 2026-07-31 → 2026-08-18 (+18d) |  | 70d → 58d |
| P2.L6.F.CS.2200 | Floor Base / L6 / Neuro Chief Ofc Z2,Z3 | 2026-08-03 → 2026-08-19 (+16d) | 2026-08-07 → 2026-08-25 (+18d) |  | 70d → 58d |
| P2.L6.F.CS.2170 | Trim T-Stats / L6 / Neuro Chief Ofc Z2,Z3 | 2026-08-10 → 2026-08-26 (+16d) | 2026-08-14 → 2026-09-01 (+18d) |  | 70d → 58d |
| P2.L6.F.CS.2210 | Demountable Partitions / L6 / Neuro Chief Ofc Z2,Z3 | 2026-08-10 → 2026-08-26 (+16d) | 2026-08-14 → 2026-09-01 (+18d) |  | 75d → 63d |
| P2.L6.F.CS.2160 | Set AV/IT Devices and Configure / L6 / Neuro Chief Ofc Z2,Z3 | 2026-08-17 → 2026-09-02 (+16d) | 2026-08-21 → 2026-09-09 (+19d) |  | 70d → 58d |
| P2.L6.F.CS.2220 | Trim Electrical / L6 / Neuro Chief Ofc Z2,Z3 | 2026-08-24 → 2026-09-10 (+17d) | 2026-08-28 → 2026-09-16 (+19d) |  | 70d → 58d |
| P2.L6.F.CS.2230 | Trim Telephone/ Data / L6 / Neuro Chief Ofc Z2,Z3 | 2026-08-31 → 2026-09-17 (+17d) | 2026-09-04 → 2026-09-23 (+19d) |  | 70d → 58d |
| P2.L6.F.CS.2180 | Building Specialities / L6 / Neuro Chief Ofc Z2,Z3 | 2026-09-08 → 2026-09-24 (+16d) | 2026-09-14 → 2026-09-30 (+16d) |  | 70d → 58d |
| P2.L6.F.CS.2190 | Interior Building Signage / L6 / Neuro Chief Ofc Z2,Z3 | 2026-09-15 → 2026-10-01 (+16d) | 2026-09-21 → 2026-10-07 (+16d) |  | 70d → 58d |
| P2.L6.F.CS.2240 | Work Completion List - Finishes / L6 / Neuro Chief Ofc Z2,Z3 | 2026-09-22 → 2026-10-08 (+16d) | 2026-09-28 → 2026-10-14 (+16d) |  | 70d → 58d |
| P2.L6.F.CS.2250 | Rough Clean / L6 / Neuro Chief Ofc Z2,Z3 | 2026-09-29 → 2026-10-15 (+16d) | 2026-10-05 → 2026-10-21 (+16d) |  | 70d → 58d |
| P2.L6.F.CS.2260 | FF&E / L6 / Neuro Chief Ofc Z2,Z3 | 2026-10-06 → 2026-10-22 (+16d) | 2026-10-12 → 2026-10-28 (+16d) |  | 70d → 58d |
| P2.L6.F.CS.2270 | Prepare Punchlist / L6 / Neuro Chief Ofc Z2,Z3 | 2026-10-13 → 2026-10-29 (+16d) | 2026-10-19 → 2026-11-04 (+16d) |  | 70d → 58d |
| P2.L6.F.CS.2280 | Correct Punchlist / L6 / Neuro Chief Ofc Z2,Z3 | 2026-10-20 → 2026-11-05 (+16d) | 2026-11-02 → 2026-11-18 (+16d) |  | 70d → 58d |
| P2.L6.F.CS.2290 | Final Clean / L6 / Neuro Chief Ofc Z2,Z3 | 2026-11-03 → 2026-11-19 (+16d) | 2026-11-09 → 2026-11-25 (+16d) |  | 70d → 58d |
| 5 | **Bathrooms - Break Rooms - Locker Rooms / Level 6** |  | 2026-06-17 → 2026-06-26 (+9d) |  |  |
| 4 | **Bathrooms 6-3952 / 6-3954** |  | 2026-06-17 → 2026-06-26 (+9d) |  |  |
| P2.L6.BR.1030 | Plumbing - Test Pipe @ Chase Walls / L6 / South / Restrooms 395X | 2025-12-22 → 2025-12-01 A (-21d) | 2025-12-29 → 2025-12-05 A (-24d) | 0% → 100% | 119d → none |
| P2.L6.BR.1080 | In Wall - Insulate Plumbing / L6 / South / Restrooms 395X | 2026-01-14 → 2025-12-01 A (-44d) | 2026-01-20 → 2025-12-05 A (-46d) | 0% → 100% | 109d → none |
| P2.L6.BR.1010 | Countertop Support Framing / L6 / South / Restrooms 395X | 2025-12-01 → 2026-01-02 (+32d) | 2025-12-05 → 2026-01-08 (+34d) |  | 119d → 102d |
| P2.L6.BR.1020 | Frame - Chase Walls and Hard Lid Ceilings / L6 / South / Restrooms 395X | 2025-12-22 → 2026-01-09 (+18d) | 2025-12-29 → 2026-01-15 (+17d) |  | 109d → 102d |
| P2.L6.BR.1050 | Trim Sprinkler Drops _ Hard Lids / L6 / South / Restrooms 395X | 2025-12-30 → 2026-01-16 (+17d) | 2026-01-06 → 2026-01-22 (+16d) |  | 109d → 102d |
| P2.L6.BR.1060 | Duct Drops _ Hard Lids / L6 / South / Restrooms 395X | 2026-01-07 → 2026-01-23 (+16d) | 2026-01-13 → 2026-01-29 (+16d) |  | 109d → 102d |
| P2.L6.BR.1040 | R/I - Electrical _ Hard Lids / L6 / South / Restrooms 395X | 2026-01-21 → 2026-01-30 (+9d) | 2026-01-27 → 2026-02-05 (+9d) |  | 109d → 102d |

| ID | Task | Start | Finish | Complete | Total float |
| --- | --- | --- | --- | --- | --- |
| P2.L6.BR.1070 | R/I - Fire Alarm _ Hard Lids / L6 / South / Restrooms 395X | 2026-01-28 → 2026-02-06 (+9d) | 2026-02-03 → 2026-02-12 (+9d) |  | 109d → 102d |
| P2.L6.BR.1090 | Inspection - Close In - Chase Walls and Hard Lid Ceilings / L6 / South / Restrooms 395X | 2026-02-04 → 2026-02-13 (+9d) | 2026-02-10 → 2026-02-19 (+9d) |  | 109d → 102d |
| P2.L6.BR.1100 | Hang-Tape-Finish _ Chase Walls and Hard Lids Ceilings / L6 / South / Restrooms 395X | 2026-02-11 → 2026-02-20 (+9d) | 2026-02-17 → 2026-02-26 (+9d) |  | 109d → 102d |
| P2.L6.BR.1110 | Paint Prime & 1st Coat _ Walls & Hard Lid Ceilings / L6 / South / Restrooms 395X | 2026-02-18 → 2026-02-27 (+9d) | 2026-02-24 → 2026-03-05 (+9d) |  | 109d → 102d |
| P2.L6.BR.1140 | Ceiling Grid / L6 / South / Restrooms 395X | 2026-02-25 → 2026-03-06 (+9d) | 2026-03-03 → 2026-03-12 (+9d) |  | 109d → 102d |
| P2.L6.BR.1170 | Trim Sprinkler Drops _ Ceiling Tiles / L6 / South / Restrooms 395X | 2026-03-04 → 2026-03-13 (+9d) | 2026-03-10 → 2026-03-19 (+9d) |  | 109d → 102d |
| P2.L6.BR.1160 | Trim - HVAC G/R/D's / L6 / South / Restrooms 395X | 2026-03-11 → 2026-03-20 (+9d) | 2026-03-17 → 2026-03-26 (+9d) |  | 109d → 102d |
| P2.L6.BR.1130 | Pull Wire - Electrical / L6 / South / Restrooms 395X | 2026-03-18 → 2026-03-27 (+9d) | 2026-03-24 → 2026-04-02 (+9d) |  | 109d → 102d |
| P2.L6.BR.1120 | Pull Wire - Fire Alarm / L6 / South / Restrooms 395X | 2026-03-25 → 2026-04-03 (+9d) | 2026-03-31 → 2026-04-09 (+9d) |  | 149d → 142d |
| P2.L6.BR.1150 | Lights - Set & Terminate / L6 / South / Restrooms 395X | 2026-03-25 → 2026-04-03 (+9d) | 2026-03-31 → 2026-04-09 (+9d) |  | 109d → 102d |
| P2.L6.BR.1180 | Inspection - Ceiling Close In - ACT Ceilings / L6 / South / Restrooms 395X | 2026-04-01 → 2026-04-10 (+9d) | 2026-04-07 → 2026-04-16 (+9d) |  | 109d → 102d |
| P2.L6.BR.1190 | Ceiling Tiles / L6 / South / Restrooms 395X | 2026-04-08 → 2026-04-17 (+9d) | 2026-04-14 → 2026-04-23 (+9d) |  | 109d → 102d |
| P2.L6.BR.1200 | Wall Tile / L6 / South / Restrooms 395X | 2026-04-15 → 2026-04-24 (+9d) | 2026-04-21 → 2026-04-30 (+9d) |  | 109d → 102d |
| P2.L6.BR.2200 | Flooring Prep - Epoxy Floors / L6 / South / Restrooms 395X | 2026-04-22 → 2026-05-01 (+9d) | 2026-04-22 → 2026-05-01 (+9d) |  | 109d → 102d |
| P2.L6.BR.2210 | Flooring - Epoxy Floors / L6 / South / Restrooms 395X | 2026-04-23 → 2026-05-04 (+11d) | 2026-04-28 → 2026-05-07 (+9d) |  | 109d → 102d |
| P2.L6.BR.1210 | Paint - Finish Coat / L6 / South / Restrooms 395X | 2026-04-29 → 2026-05-08 (+9d) | 2026-05-05 → 2026-05-14 (+9d) |  | 109d → 102d |
| P2.L6.BR.1220 | Countertops / L6 / South / Restrooms 395X | 2026-05-06 → 2026-05-15 (+9d) | 2026-05-12 → 2026-05-21 (+9d) |  | 109d → 102d |
| P2.L6.BR.1260 | Lockers & Benches / L6 / South / Restrooms 395X | 2026-05-13 → 2026-05-22 (+9d) | 2026-05-19 → 2026-05-29 (+10d) |  | 109d → 102d |
| P2.L6.BR.1270 | Plumbing Fixtures / Sinks / Showers / L6 / South / Restrooms 395X | 2026-05-13 → 2026-05-22 (+9d) | 2026-05-19 → 2026-05-29 (+10d) |  | 181d → 174d |
| P2.L6.BR.1240 | Trim - Electrical Devices / L6 / South / Restrooms 395X | 2026-05-20 → 2026-06-01 (+12d) | 2026-05-27 → 2026-06-05 (+9d) |  | 109d → 102d |
| P2.L6.BR.1280 | Toilet Partitions / L6 / South / Restrooms 395X | 2026-05-20 → 2026-06-01 (+12d) | 2026-05-27 → 2026-06-05 (+9d) |  | 181d → 174d |
| P2.L6.BR.1290 | Bathroom Accessories / L6 / South / Restrooms 395X | 2026-05-20 → 2026-06-01 (+12d) | 2026-05-27 → 2026-06-05 (+9d) |  | 181d → 174d |
| P2.L6.BR.1230 | Trim - Fire Alarm Devices / L6 / South / Restrooms 395X | 2026-05-28 → 2026-06-08 (+11d) | 2026-06-03 → 2026-06-12 (+9d) |  | 109d → 102d |
| P2.L6.BR.1250 | Doors & Hardware / L6 / South / Restrooms 395X | 2026-06-04 → 2026-06-15 (+11d) | 2026-06-10 → 2026-06-19 (+9d) |  | 109d → 102d |
| P2.L6.BR.1300 | Work Completion List - Finishes / L6 / South / Restrooms 395X | 2026-06-11 → 2026-06-22 (+11d) | 2026-06-17 → 2026-06-26 (+9d) |  | 171d → 164d |
| 1 | **Toilets 6-2937 / 6-2939** |  | 2026-05-12 → 2026-05-21 (+9d) |  |  |
| P2.L6.BR.2020 | Plumbing - Test Pipe / L6 / North / Restrooms 293X | 2025-12-22 → 2025-12-01 A (-21d) | 2025-12-23 → 2025-12-02 A (-21d) | 0% → 100% | 168d → none |
| P2.L6.BR.2010 | Framing & Blocking - Walls and Hard Lid Ceilings / L6 / North / Restrooms 293X | 2025-12-22 → 2026-01-02 (+11d) | 2025-12-23 → 2026-01-05 (+13d) |  | 164d → 157d |
| P2.L6.BR.2040 | Trim Sprinkler Drops _ Hard Lids / L6 / North / Restrooms 293X | 2025-12-24 → 2026-01-06 (+13d) | 2025-12-26 → 2026-01-07 (+12d) |  | 164d → 157d |
| P2.L6.BR.2050 | Duct Drops _ Hard Lids / L6 / North / Restrooms 293X | 2025-12-29 → 2026-01-08 (+10d) | 2025-12-30 → 2026-01-09 (+10d) |  | 164d → 157d |
| P2.L6.BR.2070 | In Wall - Insulate Plumbing / L6 / North / Restrooms 293X | 2025-12-31 → 2026-01-12 (+12d) | 2026-01-02 → 2026-01-13 (+11d) |  | 164d → 157d |
| P2.L6.BR.2030 | R/I - Electrical _ Hard Lids / L6 / North / Restrooms 293X | 2026-01-05 → 2026-01-14 (+9d) | 2026-01-09 → 2026-01-20 (+11d) |  | 164d → 157d |
| P2.L6.BR.2060 | R/I - Fire Alarm _ Hard Lids / L6 / North / Restrooms 293X | 2026-01-12 → 2026-01-21 (+9d) | 2026-01-16 → 2026-01-27 (+11d) |  | 164d → 157d |
| P2.L6.BR.2080 | Inspection - Close In - Walls and Hard Lid Ceilings / L6 / North / Restrooms 293X | 2026-01-19 → 2026-01-28 (+9d) | 2026-01-21 → 2026-01-30 (+9d) |  | 164d → 157d |
| P2.L6.BR.2090 | Hang-Tape-Finish _ Walls and Hard Lids Ceilings / L6 / North / Restrooms 293X | 2026-01-22 → 2026-02-02 (+11d) | 2026-01-28 → 2026-02-06 (+9d) |  | 164d → 157d |
| P2.L6.BR.2100 | Paint Prime & Final Coat _ Walls & Hard Lid Ceilings / L6 / North / Restrooms 293X | 2026-01-29 → 2026-02-09 (+11d) | 2026-01-30 → 2026-02-10 (+11d) |  | 164d → 157d |
| P2.L6.BR.2140 | Trim - HVAC G/R/D's / L6 / North / Restrooms 293X | 2026-02-02 → 2026-02-11 (+9d) | 2026-02-03 → 2026-02-12 (+9d) |  | 164d → 157d |
| P2.L6.BR.2120 | Pull Wire & Trim Devices - Electrical / L6 / North / Restrooms 293X | 2026-02-04 → 2026-02-13 (+9d) | 2026-02-05 → 2026-02-16 (+11d) |  | 164d → 157d |
| P2.L6.BR.2130 | Lights - Set & Terminate / L6 / North / Restrooms 293X | 2026-02-04 → 2026-02-13 (+9d) | 2026-02-05 → 2026-02-16 (+11d) |  | 169d → 162d |
| P2.L6.BR.2110 | Pull Wire & Trim Devices - Fire Alarm / L6 / North / Restrooms 293X | 2026-02-06 → 2026-02-17 (+11d) | 2026-02-12 → 2026-02-23 (+11d) |  | 164d → 157d |
| P2.L6.BR.2150 | Wall Tile / L6 / North / Restrooms 293X | 2026-02-13 → 2026-02-24 (+11d) | 2026-02-19 → 2026-03-02 (+11d) |  | 164d → 157d |
| P2.L6.BR.2220 | Flooring Prep - Epoxy Floors / L6 / North / Restrooms 293X | 2026-04-23 → 2026-05-04 (+11d) | 2026-04-23 → 2026-05-04 (+11d) |  | 120d → 113d |
| P2.L6.BR.2230 | Flooring - Epoxy Floors / L6 / North / Restrooms 293X | 2026-04-24 → 2026-05-05 (+11d) | 2026-04-27 → 2026-05-06 (+9d) |  | 138d → 131d |
| P2.L6.BR.2160 | Doors & Hardware / L6 / North / Restrooms 293X | 2026-04-28 → 2026-05-07 (+9d) | 2026-04-29 → 2026-05-08 (+9d) |  | 138d → 131d |
| P2.L6.BR.2170 | Plumbing Fixtures / Sinks / Showers / L6 / North / Restrooms 293X | 2026-04-30 → 2026-05-11 (+11d) | 2026-05-01 → 2026-05-12 (+11d) |  | 196d → 189d |
| P2.L6.BR.2180 | Bathroom Accessories / L6 / North / Restrooms 293X | 2026-05-04 → 2026-05-13 (+9d) | 2026-05-05 → 2026-05-14 (+9d) |  | 196d → 189d |
| P2.L6.BR.2190 | Work Completion List - Finishes / L6 / North / Restrooms 293X | 2026-05-06 → 2026-05-15 (+9d) | 2026-05-12 → 2026-05-21 (+9d) |  | 196d → 189d |
| 1 | **Corridors & Lobbies / Level 6** | 2026-04-09 → 2026-04-27 (+18d) | 2026-11-30 → 2026-12-16 (+16d) |  |  |
| P2.L6.CL.1000 | Paint Prime & 1st Coat Walls / L6 / Corr & Lobbies | 2026-04-09 → 2026-04-27 (+18d) | 2026-04-15 → 2026-05-01 (+16d) |  | 37d → 25d |
| P2.L6.CL.1010 | Framing - Hard Lid Ceilings / L6 / Corr & Lobbies | 2026-04-16 → 2026-05-04 (+18d) | 2026-04-29 → 2026-05-15 (+16d) |  | 37d → 25d |
| P2.L6.CL.1020 | T-Grid / L6 / Corr & Lobbies | 2026-04-16 → 2026-05-04 (+18d) | 2026-04-29 → 2026-05-15 (+16d) |  | 37d → 25d |
| P2.L6.CL.1040 | R/I - Trim Sprinkler Heads- All Ceilings / L6 / Corr & Lobbies | 2026-04-27 → 2026-05-13 (+16d) | 2026-05-01 → 2026-05-19 (+18d) |  | 37d → 25d |
| P2.L6.CL.1070 | Trim - Sprinkler Heads @ T-Grid / L6 / Corr & Lobbies | 2026-04-27 → 2026-05-13 (+16d) | 2026-05-01 → 2026-05-19 (+18d) |  | 130d → 118d |
| P2.L6.CL.1050 | R/I - HVAC- All Ceilings / L6 / Corr & Lobbies | 2026-05-04 → 2026-05-20 (+16d) | 2026-05-08 → 2026-05-27 (+19d) |  | 37d → 25d |
| P2.L6.CL.1030 | R/I - Electrical - All Ceilings / L6 / Corr & Lobbies | 2026-05-11 → 2026-05-28 (+17d) | 2026-06-01 → 2026-06-17 (+16d) |  | 37d → 25d |
| P2.L6.CL.1060 | R/I - All Remaining Low Voltage - All Ceilings / L6 / Corr & Lobbies | 2026-06-02 → 2026-06-18 (+16d) | 2026-06-08 → 2026-06-24 (+16d) |  | 37d → 25d |
| P2.L6.CL.1100 | Pull Wire - Electrical / L6 / Corr & Lobbies | 2026-06-02 → 2026-06-18 (+16d) | 2026-06-15 → 2026-07-01 (+16d) |  | 67d → 55d |
| P2.L6.CL.1080 | R/I - Fire Alarm/Life Safety - All Ceilings / L6 / Corr & Lobbies | 2026-06-09 → 2026-06-25 (+16d) | 2026-06-15 → 2026-07-01 (+16d) |  | 37d → 25d |
| P2.L6.CL.1090 | Inspections - Close In- All Ceilings / L6 / Corr & Lobbies | 2026-06-16 → 2026-07-02 (+16d) | 2026-06-22 → 2026-07-09 (+17d) |  | 37d → 25d |
| P2.L6.CL.1110 | Pull Wire - Fire Alarm / L6 / Corr & Lobbies | 2026-06-16 → 2026-07-02 (+16d) | 2026-06-22 → 2026-07-09 (+17d) |  | 72d → 60d |
| P2.L6.CL.1120 | Pull Wire - All Remianing Low Voltage Systems / L6 / Corr & Lobbies | 2026-06-23 → 2026-07-10 (+17d) | 2026-06-29 → 2026-07-16 (+17d) |  | 77d → 65d |
| P2.L6.CL.1130 | Hang/Tape/Finish- Hard Lid Ceilings / L6 / Corr & Lobbies | 2026-06-23 → 2026-07-10 (+17d) | 2026-07-07 → 2026-07-23 (+16d) |  | 37d → 25d |
| P2.L6.CL.1140 | Drop Ceiling Tiles @ T-Grid / L6 / Corr & Lobbies | 2026-06-30 → 2026-07-17 (+17d) | 2026-07-07 → 2026-07-23 (+16d) |  | 90d → 78d |
| P2.L6.CL.1190 | Paint - Hard Lid Ceilings / L6 / Corr & Lobbies | 2026-07-08 → 2026-07-24 (+16d) | 2026-07-14 → 2026-07-30 (+16d) |  | 37d → 25d |
| P2.L6.CL.1180 | Ceiling Mounted - HVAC GRD's / L6 / Corr & Lobbies | 2026-07-15 → 2026-07-31 (+16d) | 2026-08-04 → 2026-08-20 (+16d) |  | 37d → 25d |
| P2.L6.CL.1150 | Ceiling Mounted - Electrical Devices and Lights / L6 / Corr & Lobbies | 2026-07-29 → 2026-08-14 (+16d) | 2026-08-25 → 2026-09-11 (+17d) |  | 37d → 25d |
| P2.L6.CL.1160 | Ceiling Mounted - Fire Alarm/Life Saftey Devices / L6 / Corr & Lobbies | 2026-08-12 → 2026-08-28 (+16d) | 2026-09-01 → 2026-09-18 (+17d) |  | 37d → 25d |
| P2.L6.CL.1170 | Ceiling Mounted - All Low Voltage Devices / L6 / Corr & Lobbies | 2026-08-26 → 2026-09-14 (+19d) | 2026-09-16 → 2026-10-02 (+16d) |  | 37d → 25d |
| P2.L6.CL.1320 | Prep Flooring / L6 / Corr & Lobbies | 2026-09-17 → 2026-10-05 (+18d) | 2026-09-18 → 2026-10-06 (+18d) |  | 37d → 25d |
| P2.L6.CL.1200 | Flooring / L6 / Corr & Lobbies | 2026-09-21 → 2026-10-07 (+16d) | 2026-09-30 → 2026-10-16 (+16d) |  | 37d → 25d |

| ID | Task | Start | Finish | Complete | Total float | Predecessors |
| --- | --- | --- | --- | --- | --- | --- |
| P2.L6.CL.1210 | Final Paint / L6 / Corr & Lobbies | 2026-09-28 → 2026-10-14 (+16d) | 2026-10-02 → 2026-10-20 (+18d) |  | 57d → 45d |  |
| P2.L6.CL.1220 | Floor Base / L6 / Corr & Lobbies | 2026-10-05 → 2026-10-21 (+16d) | 2026-10-09 → 2026-10-27 (+18d) |  | 72d → 60d |  |
| P2.L6.CL.1250 | Trim - HVAC - Wall Mounted Devices / L6 / Corr & Lobbies | 2026-10-05 → 2026-10-21 (+16d) | 2026-10-09 → 2026-10-27 (+18d) |  | 57d → 45d |  |
| P2.L6.CL.1230 | Trim - All Electrical - Wall Mounted Devices / L6 / Corr & Lobbies | 2026-10-12 → 2026-10-28 (+16d) | 2026-10-16 → 2026-11-03 (+18d) |  | 57d → 45d |  |
| P2.L6.CL.1340 | Wall Protection / L6 / Corr & Lobbies | 2026-10-12 → 2026-10-28 (+16d) | 2026-10-16 → 2026-11-03 (+18d) |  | 72d → 60d |  |
| P2.L6.CL.1240 | Trim - Fire Alarm - Wall Mounted Devices / L6 / Corr & Lobbies | 2026-10-19 → 2026-11-04 (+16d) | 2026-10-23 → 2026-11-10 (+18d) |  | 57d → 45d |  |
| P2.L6.CL.1260 | Trim - All Remining Low Voltage Systems - Wall Mounted Devices / L6 / Corr & Lobbies | 2026-10-26 → 2026-11-11 (+16d) | 2026-10-30 → 2026-11-17 (+18d) |  | 57d → 45d |  |
| P2.L6.CL.1270 | Building Signage / L6 / Corr & Lobbies | 2026-11-02 → 2026-11-18 (+16d) | 2026-11-06 → 2026-11-24 (+18d) |  | 57d → 45d |  |
| P2.L6.CL.1280 | Work Completion List / L6 / Corr & Lobbies | 2026-11-09 → 2026-11-25 (+16d) | 2026-11-13 → 2026-12-03 (+20d) |  | 57d → 45d |  |
| P2.L6.CL.1290 | Rough Clean / L6 / Corr & Lobbies | 2026-11-16 → 2026-12-04 (+18d) | 2026-11-17 → 2026-12-07 (+20d) |  | 57d → 45d |  |
| P2.L6.CL.1300 | Punchlist / L6 / Corr & Lobbies | 2026-11-18 → 2026-12-08 (+20d) | 2026-11-24 → 2026-12-14 (+20d) |  | 57d → 45d |  |
| P2.L6.CL.1310 | Final Clean / L6 / Corr & Lobbies | 2026-11-25 → 2026-12-15 (+20d) | 2026-11-30 → 2026-12-16 (+16d) |  | 57d → 45d |  |
| INT | **INTERSTITIAL / LEVEL 6** |  | 2026-05-14 → 2026-06-09 (+26d) |  |  |  |
| 2 | **South Interstitials 6-3905 & 6-2855** |  | 2026-05-14 → 2026-06-09 (+26d) |  |  |  |
| Z1 | **Rough In - South Interstitials 6-3905 & 6-2855** |  | 2026-03-05 → 2026-03-30 (+25d) |  |  |  |
| P2.L6.INT.S.1190 | OH - Electrical - 208/120v Branch / L6 / South Int |  |  |  |  | P2.L6.INT.S.1160 → P2.L6.INT.S.1160, P2.L6.INT.S.1310 |
| P2.L6.INT.S.1240 | OH - Hang Duct - LP Branch / L6 / South Int |  | 2025-12-16 → 2026-01-05 (+20d) |  | 80d → 63d |  |
| P2.L6.INT.S.1230 | OH - Insulate HP Duct / L6 / South Int | 2025-12-15 → 2025-11-25 A (-20d) | 2025-12-29 A | 0% → 100% | 67d → none |  |
| P2.L6.INT.S.1210 | OH - DALT - HP Mains / L6 / South Int | 2025-12-01 A | 2025-12-12 A | 0% → 100% | 67d → none |  |
| P2.L6.INT.S.1250 | OH - HVAC Piping - Test / L6 / South Int | 2025-12-01 A | 2025-12-12 → 2025-12-16 A (+4d) | 0% → 100% | 77d → none |  |
| P2.L6.INT.S.1340 | OH - Conduit - Low Volt - Telecom / L6 / South Int |  | 2026-01-08 → 2026-01-26 (+18d) |  | 80d → 68d |  |
| P2.L6.INT.S.1260 | OH - Insulate Plumbing / L6 / South Int | 2025-12-01 → 2026-01-02 (+32d) | 2025-12-12 → 2026-01-15 (+34d) |  | 107d → 85d |  |
| P2.L6.INT.S.1280 | Pull Wire - Electrical - 480/277v Distribution / L6 / South Int | 2025-12-01 → 2026-01-02 (+32d) | 2025-12-12 → 2026-01-15 (+34d) |  | 107d → 85d |  |
| P2.L6.INT.S.1300 | OH - Insulate HVAC Pipe / L6 / South Int | 2025-12-30 → 2026-01-02 (+3d) | 2026-01-13 → 2026-01-15 (+2d) |  | 67d → 65d |  |
| P2.L6.INT.S.1310 | OH - Insulate LP Duct / L6 / South Int | 2025-12-17 → 2026-01-06 (+20d) | 2025-12-31 → 2026-01-19 (+19d) |  | 80d → 63d |  |
| P2.L6.INT.S.1320 | OH - Conduit - Low Volt - BAS/Controls / L6 / South Int | 2026-01-14 → 2026-01-16 (+2d) | 2026-01-27 → 2026-01-29 (+2d) |  | 67d → 65d |  |
| P2.L6.INT.S.1350 | OH - Conduit - Low Volt - Security / L6 / South Int | 2026-01-14 → 2026-01-16 (+2d) | 2026-01-27 → 2026-01-29 (+2d) |  | 67d → 65d |  |
| P2.L6.INT.S.1270 | Pull Wire - Electrical - 208/120v Branch & Equip / L6 / South Int | 2025-12-01 → 2026-01-20 (+50d) | 2025-12-29 → 2026-02-16 (+49d) |  | 97d → 63d |  |
| P2.L6.INT.S.1370 | Pull Wire - Low Volt - Fire Alarm / L6 / South Int | 2026-01-02 → 2026-01-20 (+18d) | 2026-01-15 → 2026-02-02 (+18d) |  | 85d → 73d |  |
| P2.L6.INT.S.1380 | Pull Wire - Low Volt - Telecom / L6 / South Int | 2026-01-09 → 2026-01-27 (+18d) | 2026-01-22 → 2026-02-09 (+18d) |  | 80d → 68d |  |
| P2.L6.INT.S.1110 | Firestop - Thru Wall / L6 / South Int | 2026-01-28 → 2026-01-30 (+2d) | 2026-02-03 → 2026-02-05 (+2d) |  | 72d → 70d |  |
| P2.L6.INT.S.1390 | Pull Wire - Low Volt - Security / L6 / South Int | 2026-01-28 → 2026-01-30 (+2d) | 2026-02-10 → 2026-02-12 (+2d) |  | 67d → 65d |  |
| P2.L6.INT.S.1290 | OH - HVAC Piping - Equip Tie In / L6 / South Int | 2026-01-28 → 2026-02-20 (+23d) | 2026-02-17 → 2026-03-12 (+23d) |  | 52d → 35d |  |
| P2.L6.INT.S.1360 | Pull Wire - Low Volt - BAS/Controls / L6 / South Int | 2026-02-18 → 2026-03-13 (+23d) | 2026-03-03 → 2026-03-26 (+23d) |  | 52d → 35d |  |
| P2.L6.INT.S.1400 | Trades Inspect & Verify R/I Work Completed to Specs / L6 / South Int | 2026-03-04 → 2026-03-27 (+23d) | 2026-03-05 → 2026-03-30 (+25d) |  | 52d → 35d |  |
| 2 | **Finishes - South Interstitial 6-2855 (12,408 sf)** | 2026-03-06 → 2026-03-31 (+25d) | 2026-05-14 → 2026-06-09 (+26d) |  |  |  |
| P2.L6.INT.S.2000 | Flooring Prep - Epoxy Floors / L6 / South Int | 2026-03-06 → 2026-03-31 (+25d) | 2026-03-16 → 2026-04-08 (+23d) |  | 157d → 140d |  |
| P2.L6.INT.S.2100 | Flooring - Epoxy Floors / L6 / South Int | 2026-03-17 → 2026-04-09 (+23d) | 2026-03-19 → 2026-04-13 (+25d) |  | 157d → 140d |  |
| P2.L6.INT.S.2010 | Paint - Finish Coat / L6 / South Int | 2026-03-20 → 2026-04-14 (+25d) | 2026-03-26 → 2026-04-20 (+25d) |  | 157d → 140d |  |
| P2.L6.INT.S.2020 | Doors & Hardware / L6 / South Int | 2026-03-27 → 2026-04-21 (+25d) | 2026-04-02 → 2026-04-27 (+25d) |  | 157d → 140d |  |
| P2.L6.INT.S.2040 | Building Signage / L6 / South Int | 2026-03-27 → 2026-04-21 (+25d) | 2026-04-02 → 2026-04-27 (+25d) |  | 199d → 182d |  |
| P2.L6.INT.S.2030 | Trim All MEP Finishes / L6 / South Int | 2026-04-03 → 2026-04-28 (+25d) | 2026-04-09 → 2026-05-04 (+25d) |  | 194d → 177d |  |
| P2.L6.INT.S.2050 | Rough Clean / L6 / South Int | 2026-04-10 → 2026-05-05 (+25d) | 2026-04-16 → 2026-05-11 (+25d) |  | 194d → 177d |  |
| P2.L6.INT.S.2060 | Prepare Punchlist / L6 / South Int | 2026-04-17 → 2026-05-12 (+25d) | 2026-04-23 → 2026-05-18 (+25d) |  | 194d → 177d |  |
| P2.L6.INT.S.2070 | Correct Punchlist / L6 / South Int | 2026-04-24 → 2026-05-19 (+25d) | 2026-05-07 → 2026-06-02 (+26d) |  | 194d → 177d |  |
| P2.L6.INT.S.2080 | Final Clean / L6 / South Int | 2026-05-08 → 2026-06-03 (+26d) | 2026-05-14 → 2026-06-09 (+26d) |  | 194d → 177d |  |
| 1 | **North Interstitial 6-2835** |  | 2026-05-14 → 2026-06-09 (+26d) |  |  |  |
| Z11 | **Rough In - North Interstitial 6-2835** |  | 2026-03-05 → 2026-03-30 (+25d) |  |  |  |
| P2.L6.INT.N.1140 | OH - Hang Duct - HP Mains / L6 / North Int |  | 2025-12-05 → 2025-11-06 A (-29d) | 75% → 100% | 62d → none |  |
| P2.L6.INT.N.1210 | OH - DALT - HP Mains / L6 / North Int | 2025-12-08 → 2025-11-05 A (-33d) | 2025-12-19 → 2025-12-31 A (+12d) | 0% → 100% | 62d → none |  |
| P2.L6.INT.N.2090 | OH - HVAC Piping (Low) / L6 / North Int |  | 2025-12-12 → 2025-12-31 A (+19d) | 50% → 100% | 72d → none |  |
| P2.L6.INT.N.1240 | OH - Hang Duct - LP Branch / L6 / North Int | 2025-12-22 → 2025-11-13 A (-39d) | 2026-01-06 → 2026-01-15 (+9d) |  | 62d → 55d |  |
| P2.L6.INT.N.1230 | OH - Insulate HP Duct / L6 / North Int | 2025-12-22 → 2025-11-25 A (-27d) | 2026-01-06 → 2026-01-15 (+9d) |  | 62d → 55d |  |
| P2.L6.INT.N.1220 | OH - Plumbing - Test / L6 / North Int | 2025-12-01 A | 2025-12-19 → 2025-12-15 A (-4d) | 0% → 100% | 92d → none |  |
| P2.L6.INT.N.1250 | OH - HVAC Piping - Test / L6 / North Int | 2025-12-08 → 2025-12-29 A (+21d) | 2025-12-19 → 2026-01-15 (+27d) |  | 72d → 55d |  |
| P2.L6.INT.N.1260 | OH - Insulate Plumbing / L6 / North Int | 2025-12-22 → 2026-01-02 (+11d) | 2026-01-06 → 2026-01-15 (+9d) |  | 92d → 85d |  |
| P2.L6.INT.N.1270 | Pull Wire - Electrical - 208/120v Branch & Equip / L6 / North Int | 2025-12-01 → 2026-01-02 (+32d) | 2025-12-29 → 2026-01-29 (+31d) |  | 97d → 75d |  |
| P2.L6.INT.N.1280 | Pull Wire - Electrical - 480/277v Distribution / L6 / North Int | 2025-12-01 → 2026-01-02 (+32d) | 2025-12-12 → 2026-01-15 (+34d) |  | 107d → 85d |  |
| P2.L6.INT.N.1300 | OH - Insulate HVAC Pipe / L6 / North Int | 2026-01-07 → 2026-01-16 (+9d) | 2026-01-20 → 2026-01-29 (+9d) |  | 62d → 55d |  |
| P2.L6.INT.N.1310 | OH - Insulate LP Duct / L6 / North Int | 2026-01-07 → 2026-01-16 (+9d) | 2026-01-20 → 2026-01-29 (+9d) |  | 62d → 55d |  |
| P2.L6.INT.N.1320 | OH - Conduit - Low Volt - BAS/Controls / L6 / North Int | 2026-01-21 → 2026-01-30 (+9d) | 2026-02-03 → 2026-02-12 (+9d) |  | 62d → 55d |  |
| P2.L6.INT.N.1340 | OH - Conduit - Low Volt - Telecom / L6 / North Int | 2026-01-21 → 2026-01-30 (+9d) | 2026-02-03 → 2026-02-12 (+9d) |  | 62d → 55d |  |
| P2.L6.INT.N.1350 | OH - Conduit - Low Volt - Security / L6 / North Int | 2026-01-21 → 2026-01-30 (+9d) | 2026-02-03 → 2026-02-12 (+9d) |  | 62d → 55d |  |
| P2.L6.INT.N.1370 | Pull Wire - Low Volt - Fire Alarm / L6 / North Int | 2026-01-21 → 2026-01-30 (+9d) | 2026-02-03 → 2026-02-12 (+9d) |  | 72d → 65d |  |
| P2.L6.INT.N.1110 | Firestop - Thru Wall / L6 / North Int | 2026-02-04 → 2026-02-13 (+9d) | 2026-02-10 → 2026-02-19 (+9d) |  | 67d → 60d |  |
| P2.L6.INT.N.1380 | Pull Wire - Low Volt - Telecom / L6 / North Int | 2026-02-04 → 2026-02-13 (+9d) | 2026-02-17 → 2026-02-26 (+9d) |  | 62d → 55d |  |
| P2.L6.INT.N.1390 | Pull Wire - Low Volt - Security / L6 / North Int | 2026-02-04 → 2026-02-13 (+9d) | 2026-02-17 → 2026-02-26 (+9d) |  | 62d → 55d |  |
| P2.L6.INT.N.1290 | OH - HVAC Piping - Equip Tie In / L6 / North Int | 2026-01-28 → 2026-02-20 (+23d) | 2026-02-17 → 2026-03-12 (+23d) |  | 52d → 35d |  |
| P2.L6.INT.N.1360 | Pull Wire - Low Volt - BAS/Controls / L6 / North Int | 2026-02-18 → 2026-03-13 (+23d) | 2026-03-03 → 2026-03-26 (+23d) |  | 52d → 35d |  |
| P2.L6.INT.N.1400 | Trades Inspect & Verify R/I Work Completed to Specs / L6 / North Int | 2026-03-04 → 2026-03-27 (+23d) | 2026-03-05 → 2026-03-30 (+25d) |  | 52d → 35d |  |

| ID | Task | Start | Finish | Complete | Total float |
| --- | --- | --- | --- | --- | --- |
| 1 | **Finishes - North Interstitial 6-2835 (6,848 sf)** | 2026-03-06 → 2026-03-31 (+25d) | 2026-05-14 → 2026-06-09 (+26d) |  |  |
| P2.L6.INT.N.2000 | Flooring Prep - Epoxy Floors / L6 / North Int | 2026-03-06 → 2026-03-31 (+25d) | 2026-03-16 → 2026-04-08 (+23d) |  | 157d → 140d |
| P2.L6.INT.N.2100 | Flooring - Epoxy Floors / L6 / North Int | 2026-03-17 → 2026-04-09 (+23d) | 2026-03-19 → 2026-04-13 (+25d) |  | 157d → 140d |
| P2.L6.INT.N.2010 | Paint - Finish Coat / L6 / North Int | 2026-03-20 → 2026-04-14 (+25d) | 2026-03-26 → 2026-04-20 (+25d) |  | 157d → 140d |
| P2.L6.INT.N.2020 | Doors & Hardware / L6 / North Int | 2026-03-27 → 2026-04-21 (+25d) | 2026-04-02 → 2026-04-27 (+25d) |  | 157d → 140d |
| P2.L6.INT.N.2040 | Building Signage / L6 / North Int | 2026-03-27 → 2026-04-21 (+25d) | 2026-04-02 → 2026-04-27 (+25d) |  | 199d → 182d |
| P2.L6.INT.N.2030 | Trim All MEP Finishes / L6 / North Int | 2026-04-03 → 2026-04-28 (+25d) | 2026-04-09 → 2026-05-04 (+25d) |  | 194d → 177d |
| P2.L6.INT.N.2050 | Rough Clean / L6 / North Int | 2026-04-10 → 2026-05-05 (+25d) | 2026-04-16 → 2026-05-11 (+25d) |  | 194d → 177d |
| P2.L6.INT.N.2060 | Prepare Punchlist / L6 / North Int | 2026-04-17 → 2026-05-12 (+25d) | 2026-04-23 → 2026-05-18 (+25d) |  | 194d → 177d |
| P2.L6.INT.N.2070 | Correct Punchlist / L6 / North Int | 2026-04-24 → 2026-05-19 (+25d) | 2026-05-07 → 2026-06-02 (+26d) |  | 194d → 177d |
| P2.L6.INT.N.2080 | Final Clean / L6 / North Int | 2026-05-08 → 2026-06-03 (+26d) | 2026-05-14 → 2026-06-09 (+26d) |  | 194d → 177d |
| 1 | **MECHANICAL TOWERS / LEVEL 6** |  | 2026-04-14 → 2026-05-07 (+23d) |  |  |
| 4 | **South Mechanical Tower / Rough In & Finish / Level 6** |  | 2026-04-14 → 2026-05-07 (+23d) |  |  |
| P2.L6.SMT.1120 | BAS - Equip Tie In / L6 - S. Mech Tower | 2025-12-01 A | 2025-12-05 A | 0% → 100% | 104d → none |
| FRG.P2.L6.SMT.1040 | AHU Piping Install / L6 - S. Mech Tower - FRAGNET | 2025-12-01 A → 2026-01-02 (+32d) | 2025-12-29 → 2026-01-29 (+31d) |  | 24d → 2d |
| P2.L6.SMT.1200 | Flooring Prep - Epoxy Floors / L6 - S. Mech Tower | 2026-01-26 → 2026-02-16 (+21d) | 2026-01-28 → 2026-02-18 (+21d) |  | 34d → 19d |
| P2.L6.SMT.1270 | Flooring - Epoxy Floors / L6 - S. Mech Tower | 2026-01-29 → 2026-02-19 (+21d) | 2026-01-30 → 2026-02-20 (+21d) |  | 34d → 19d |
| P2.L6.SMT.1110 | HVAC Piping - Equip Tie In (Chilled Water) / L6 - S. Mech Tower | 2026-01-28 → 2026-02-20 (+23d) | 2026-02-24 → 2026-03-19 (+23d) |  | 24d → 7d |
| P2.L6.SMT.1090 | Panelboards, Interconnect Wiring, and Remaining Room Buildout of All Elec/FA Systems / L6 - S. Mech Tower | 2026-02-02 → 2026-02-23 (+21d) | 2026-02-13 → 2026-03-06 (+21d) |  | 39d → 24d |
| P2.L6.SMT.1140 | Pull Wire - In From Distribution Panels / Out to Branch Circuits / L6 - S. Mech Tower | 2026-02-16 → 2026-03-09 (+21d) | 2026-02-20 → 2026-03-13 (+21d) |  | 39d → 24d |
| P2.L6.SMT.1160 | Electrical Tie in to Equipment / L6 - S. Mech Tower | 2026-02-23 → 2026-03-16 (+21d) | 2026-02-27 → 2026-03-20 (+21d) |  | 56d → 41d |
| P2.L6.SMT.1170 | Test & Terminate / L6 - S. Mech Tower | 2026-02-23 → 2026-03-16 (+21d) | 2026-02-27 → 2026-03-20 (+21d) |  | 39d → 24d |
| P2.L6.SMT.1260 | HVAC Piping - Equip Tie In (Reheat) / L6 - S. Mech Tower | 2026-02-25 → 2026-03-20 (+23d) | 2026-03-24 → 2026-04-16 (+23d) |  | 24d → 7d |
| P2.L6.SMT.1180 | Paint - Finish Coat / L6 - S. Mech Tower | 2026-03-02 → 2026-03-23 (+21d) | 2026-03-03 → 2026-03-24 (+21d) |  | 39d → 24d |
| P2.L6.SMT.1190 | Trim All MEPF Finishes / L6 - S. Mech Tower | 2026-03-04 → 2026-03-25 (+21d) | 2026-03-05 → 2026-03-26 (+21d) |  | 40d → 25d |
| P2.L6.SMT.1340 | Wall Protection / L6 - S. Mech Tower | 2026-03-04 → 2026-03-25 (+21d) | 2026-03-10 → 2026-03-31 (+21d) |  | 39d → 24d |
| P2.L6.SMT.1210 | Doors & Hardware / L6 - S. Mech Tower | 2026-03-06 → 2026-03-27 (+21d) | 2026-03-09 → 2026-03-30 (+21d) |  | 40d → 25d |
| P2.L6.SMT.1150 | Insulate HVAC / Plumbing Pipe / L6 - S. Mech Tower | 2026-03-25 → 2026-04-17 (+23d) | 2026-03-31 → 2026-04-23 (+23d) |  | 24d → 7d |
| P2.L6.SMT.1220 | Trades Inspect & Verify R/I Work Completed to Specs / L6 - S. Mech Tower | 2026-04-01 → 2026-04-24 (+23d) | 2026-04-07 → 2026-04-30 (+23d) |  | 24d → 7d |
| P2.L6.SMT.1240 | Energize Elec Panels - Lock Doors and Limit Access / L6 - S. Mech Tower | 2026-04-08 → 2026-05-01 (+23d) | 2026-04-14 → 2026-05-07 (+23d) |  | 24d → 7d |
| P2.L6.SMT.1230 | HVAC System Ready for Start Up / L6 - S. Mech Tower | 2026-04-14 → 2026-05-07 (+23d) | 2026-04-14 → 2026-05-07 (+23d) |  | 24d → 7d |
| 8 | **East Mechanical Tower / Rough In & Finish / Level 6** |  | 2026-03-31 → 2026-04-23 (+23d) |  |  |
| P2.L6.EMT.1100 | HVAC Piping Connections to Shaft Riser / L6 - E. Mech Tower | 2025-12-01 → 2026-01-02 (+32d) | 2025-12-29 → 2026-01-29 (+31d) |  | 59d → 37d |
| P2.L6.EMT.1250 | HVAC Duct Connections to Shaft Riser / L6 - E. Mech Tower | 2025-12-01 → 2026-01-02 (+32d) | 2025-12-05 → 2026-01-08 (+34d) |  | 74d → 52d |
| P2.L6.EMT.1200 | Flooring Prep - Epoxy Floors / L6 - E. Mech Tower | 2025-12-29 → 2026-01-29 (+31d) | 2025-12-31 → 2026-02-02 (+33d) |  | 53d → 31d |
| P2.L6.EMT.1130 | Test/Inspect Duct & Piping / L6 - E. Mech Tower | 2025-12-30 → 2026-01-30 (+31d) | 2026-01-20 → 2026-02-19 (+30d) |  | 59d → 37d |
| P2.L6.EMT.1260 | Flooring - Epoxy Floors / L6 - E. Mech Tower | 2026-01-02 → 2026-02-03 (+32d) | 2026-01-05 → 2026-02-04 (+30d) |  | 53d → 31d |
| P2.L6.EMT.1090 | Panelboards, Interconnect Wiring, and Remaining Room Buildout of All Elec/FA Systems / L6 - E. Mech Tower | 2026-01-06 → 2026-02-05 (+30d) | 2026-01-19 → 2026-02-18 (+30d) |  | 58d → 36d |
| P2.L6.EMT.1140 | Pull Wire - In From Distribution Panels / Out to Branch Circuits / L6 - E. Mech Tower | 2026-01-20 → 2026-02-19 (+30d) | 2026-01-26 → 2026-02-25 (+30d) |  | 58d → 36d |
| FRG.P2.L6.EMT.1040 | AHU Piping Install / L6 - E. Mech Tower - FRAGNET | 2026-01-21 → 2026-02-20 (+30d) | 2026-02-17 → 2026-03-19 (+30d) |  | 39d → 17d |
| P2.L6.EMT.1110 | HVAC Piping - Equip Tie In / L6 - E. Mech Tower | 2026-01-28 → 2026-02-20 (+23d) | 2026-02-24 → 2026-03-19 (+23d) |  | 34d → 17d |
| P2.L6.EMT.1160 | Electrical Tie in to Equipment / L6 - E. Mech Tower | 2026-01-27 → 2026-02-26 (+30d) | 2026-02-02 → 2026-03-04 (+30d) |  | 75d → 53d |
| P2.L6.EMT.1170 | Test & Terminate / L6 - E. Mech Tower | 2026-01-27 → 2026-02-26 (+30d) | 2026-02-02 → 2026-03-04 (+30d) |  | 58d → 36d |
| P2.L6.EMT.1230 | HVAC System Ready for Start Up / L6 - E. Mech Tower | 2026-02-02 → 2026-03-04 (+30d) | 2026-02-02 → 2026-03-04 (+30d) |  | 75d → 53d |
| P2.L6.EMT.1180 | Paint - Finish Coat / L6 - E. Mech Tower | 2026-02-03 → 2026-03-05 (+30d) | 2026-02-04 → 2026-03-06 (+30d) |  | 58d → 36d |
| P2.L6.EMT.1190 | Trim All MEPF Finishes / L6 - E. Mech Tower | 2026-02-05 → 2026-03-09 (+32d) | 2026-02-06 → 2026-03-10 (+32d) |  | 59d → 37d |
| P2.L6.EMT.1210 | Doors & Hardware / L6 - E. Mech Tower | 2026-02-09 → 2026-03-11 (+30d) | 2026-02-10 → 2026-03-12 (+30d) |  | 59d → 37d |
| P2.L6.EMT.1150 | Insulate HVAC / Plumbing Pipe / L6 - E. Mech Tower | 2026-02-25 → 2026-03-20 (+23d) | 2026-03-17 → 2026-04-09 (+23d) |  | 34d → 17d |
| P2.L6.EMT.1340 | Wall Protection / L6 - E. Mech Tower | 2026-02-19 → 2026-03-23 (+32d) | 2026-02-25 → 2026-03-27 (+30d) |  | 48d → 26d |
| P2.L6.EMT.1220 | Trades Inspect & Verify R/I Work Completed to Specs / L6 - E. Mech Tower | 2026-03-18 → 2026-04-10 (+23d) | 2026-03-24 → 2026-04-16 (+23d) |  | 34d → 17d |
| P2.L6.EMT.1240 | Energize Elec Panels - Lock Doors and Limit Access / L6 - E. Mech Tower | 2026-03-25 → 2026-04-17 (+23d) | 2026-03-31 → 2026-04-23 (+23d) |  | 34d → 17d |
| L7 | **L7 / BUILDOUT** |  | 2026-12-14 → 2026-12-31 (+17d) |  |  |
| L7 | **CORE & SUPPORT SPACES / LEVEL 7** |  | 2026-12-14 → 2026-12-31 (+17d) |  |  |
| 3 | **ROUGH IN - Core & Support Spaces / Level 7** |  | 2026-03-18 → 2026-04-17 (+30d) |  |  |
| Z112 | **South / Level 7** |  | 2026-03-18 → 2026-04-17 (+30d) |  |  |
| P2.L7.S.1230 | OH - Electrical - 208/120v Branch / L7 / South |  | 2025-12-11 → 2026-01-14 (+34d) |  | 30d → 23d |
| P2.L7.S.1260 | OH - DALT - HP Mains / L7 / South |  | 2025-12-11 → 2025-11-10 A (-31d) | 10% → 100% | 65d → none |
| P2.L7.S.1300 | OH - Hang Duct - LP Branch / L7 / South |  | 2025-12-19 → 2025-11-25 A (-24d) | 0% → 100% | 69d → none |
| P2.L7.S.1560 | OH - HVAC Piping (Low) / L7 / South |  | 2025-12-12 A | 50% → 100% | 64d → none |
| P2.L7.S.1440 | In Wall - Electrical - Framing / L7 / South |  | 2025-12-26 A | 0% → 100% | 30d → none |
| P2.L7.S.1240 | OH - Plumbing - Test / L7 / South | 2025-12-01 A | 2025-12-12 A | 0% → 100% | 84d → none |
| P2.L7.S.1450 | In Wall - Backing/Blocking/Supports / L7 / South | 2025-12-01 A | 2025-12-12 → 2025-12-19 A (+7d) | 0% → 100% | 39d → none |
| P2.L7.S.1390 | OH - Conduit - Low Volt - Telecom / L7 / South | 2026-01-07 → 2025-12-15 A (-23d) | 2026-01-20 → 2026-02-05 (+16d) |  | 69d → 57d |
| P2.L7.S.1200 | Firestop - Thru Wall - Priority Walls / L7 / South | 2025-12-01 → 2026-01-02 (+32d) | 2025-12-05 → 2026-01-08 (+34d) |  | 79d → 57d |
| P2.L7.S.1250 | Pull Wire - Electrical - 480/277v Distribution / L7 / South | 2025-12-01 → 2026-01-02 (+32d) | 2025-12-12 → 2026-01-15 (+34d) |  | 104d → 82d |
| P2.L7.S.1270 | OH - HVAC Piping - Test / L7 / South | 2025-12-15 → 2026-01-02 (+18d) | 2025-12-29 → 2026-01-15 (+17d) |  | 64d → 52d |
| P2.L7.S.1280 | OH - Insulate Plumbing / L7 / South | 2025-12-15 → 2026-01-02 (+18d) | 2025-12-29 → 2026-01-15 (+17d) |  | 84d → 72d |
| P2.L7.S.1290 | OH - Insulate HP Duct / L7 / South | 2025-12-12 → 2026-01-02 (+21d) | 2025-12-26 → 2026-01-15 (+20d) |  | 65d → 52d |
| P2.L7.S.1310 | OH - Set & Connect Mech Equipment / L7 / South | 2025-12-12 → 2026-01-02 (+21d) | 2025-12-26 → 2026-01-15 (+20d) |  | 65d → 48d |
| P2.L7.S.1350 | OH - Insulate LP Duct / L7 / South | 2025-12-22 → 2026-01-09 (+18d) | 2026-01-06 → 2026-01-22 (+16d) |  | 69d → 57d |

| ID | Task | Start | Finish | Complete | Total float | Predecessors |
| --- | --- | --- | --- | --- | --- | --- |
| P2.L7.S.1460 | AHJ Inspections - Wall Close In / L7 / South | 2025-12-29 → 2026-01-15 (+17d) | 2026-01-05 → 2026-01-21 (+16d) |  | 30d → 23d |  |
| P2.L7.S.1320 | OH - Electrical - Equip Tie In / L7 / South | 2025-12-29 → 2026-01-16 (+18d) | 2026-01-12 → 2026-01-29 (+17d) |  | 65d → 48d |  |
| P2.L7.S.1340 | OH - Insulate HVAC Pipe / L7 / South | 2025-12-30 → 2026-01-16 (+17d) | 2026-01-13 → 2026-01-29 (+16d) |  | 64d → 52d |  |
| P2.L7.S.1380 | OH - Conduit - Low Volt - Fire Alarm / L7 / South | 2026-01-07 → 2026-01-23 (+16d) | 2026-01-20 → 2026-02-05 (+16d) |  | 69d → 57d |  |
| P2.L7.S.1410 | OH - Conduit - Low Volt - Medical Services/Nurse Call (?) / L7 / South | 2026-01-07 → 2026-01-23 (+16d) | 2026-01-20 → 2026-02-05 (+16d) |  | 69d → 57d |  |
| P2.L7.S.1360 | Pull Wire - Electrical - 208/120v Branch & Equip / L7 / South | 2026-01-13 → 2026-01-30 (+17d) | 2026-02-09 → 2026-02-26 (+17d) |  | 65d → 48d |  |
| P2.L7.S.1370 | OH - Conduit - Low Volt - BAS/Controls / L7 / South | 2026-01-14 → 2026-01-30 (+16d) | 2026-01-27 → 2026-02-12 (+16d) |  | 64d → 52d |  |
| P2.L7.S.1400 | OH - Conduit - Low Volt - Security / L7 / South | 2026-01-14 → 2026-01-30 (+16d) | 2026-01-27 → 2026-02-12 (+16d) |  | 64d → 52d |  |
| P2.L7.S.1330 | OH - HVAC Piping - Equip Tie In / L7 / South | 2026-01-28 → 2026-02-20 (+23d) | 2026-02-24 → 2026-03-19 (+23d) |  | 54d → 37d |  |
| P2.L7.S.1470 | Hang-Tape-Finish - Walls and Hard Lid Ceilings / L7 / South | 2026-02-05 → 2026-03-09 (+32d) | 2026-02-25 → 2026-03-27 (+30d) |  | 8d → -9d |  |
| P2.L7.S.1480 | Spray/Seal/Firestop - Head of Wall / L7 / South | 2026-02-26 → 2026-03-30 (+32d) | 2026-03-11 → 2026-04-10 (+30d) |  | 43d → 21d |  |
| P2.L7.S.1490 | Firestop - Thru Wall / L7 / South | 2026-02-26 → 2026-03-30 (+32d) | 2026-03-11 → 2026-04-10 (+30d) |  | 43d → 21d |  |
| P2.L7.S.1500 | Pull Wire - Low Volt - BAS/Controls / L7 / South | 2026-02-26 → 2026-03-30 (+32d) | 2026-03-11 → 2026-04-10 (+30d) |  | 43d → 21d |  |
| P2.L7.S.1510 | Pull Wire - Low Volt - Fire Alarm / L7 / South | 2026-02-26 → 2026-03-30 (+32d) | 2026-03-11 → 2026-04-10 (+30d) |  | 43d → 21d |  |
| P2.L7.S.1520 | Pull Wire - Low Volt - Telecom / L7 / South | 2026-02-26 → 2026-03-30 (+32d) | 2026-03-11 → 2026-04-10 (+30d) |  | 43d → 21d |  |
| P2.L7.S.1530 | Pull Wire - Low Volt - Security / L7 / South | 2026-02-26 → 2026-03-30 (+32d) | 2026-03-11 → 2026-04-10 (+30d) |  | 43d → 21d |  |
| P2.L7.S.1540 | Pull Wire - Low Volt - Medical Services/Nurse Call (?) / L7 / South | 2026-02-26 → 2026-03-30 (+32d) | 2026-03-11 → 2026-04-10 (+30d) |  | 43d → 21d |  |
| P2.L7.S.1550 | Trades Inspect & Verify R/I Work Completed to Specs / L7 / South | 2026-03-12 → 2026-04-13 (+32d) | 2026-03-18 → 2026-04-17 (+30d) |  | 43d → 21d |  |
| Z1121 | **North / Level 7** |  | 2026-03-18 → 2026-04-17 (+30d) |  |  |  |
| P2.L7.N.1300 | OH - Hang Duct - LP Branch / L7 / North |  | 2025-12-29 → 2026-01-15 (+17d) |  | 74d → 62d |  |
| P2.L7.N.1560 | OH - HVAC Piping (Low) / L7 / North |  | 2025-12-12 → 2026-01-15 (+34d) |  | 54d → 32d |  |
| P2.L7.N.1570 | OH - Plumbing Piping (Low) / L7 / North |  | 2025-12-26 → 2025-11-20 A (-36d) | 5% → 100% | 55d → none |  |
| P2.L7.N.1230 | OH - Electrical - 208/120v Branch / L7 / North |  | 2025-12-12 → 2026-01-15 (+34d) |  | 29d → 22d |  |
| P2.L7.N.1260 | OH - DALT - HP Mains / L7 / North | 2025-12-01 A | 2025-12-12 A | 0% → 100% | 54d → none |  |
| P2.L7.N.1390 | OH - Conduit - Low Volt - Telecom / L7 / North | 2025-12-15 A | 2025-12-29 → 2026-01-22 (+24d) | 0% → 50% | 84d → 67d |  |
| P2.L7.N.1440 | In Wall - Electrical - Framing / L7 / North | 2025-12-15 A | 2025-12-29 A | 0% → 100% | 29d → none |  |
| P2.L7.N.1450 | In Wall - Backing/Blocking/Supports / L7 / North | 2025-12-01 → 2025-12-22 A (+21d) | 2025-12-12 → 2026-01-08 (+27d) | 0% → 50% | 39d → 27d |  |
| P2.L7.N.1200 | Firestop - Thru Wall - Priority Walls / L7 / North | 2025-12-01 → 2026-01-02 (+32d) | 2025-12-05 → 2026-01-08 (+34d) |  | 89d → 67d |  |
| P2.L7.N.1240 | OH - Plumbing - Test / L7 / North | 2025-12-29 → 2026-01-02 (+4d) | 2026-01-26 → 2026-01-29 (+3d) |  | 55d → 52d |  |
| P2.L7.N.1250 | Pull Wire - Electrical - 480/277v Distribution / L7 / North | 2025-12-01 → 2026-01-02 (+32d) | 2025-12-12 → 2026-01-15 (+34d) |  | 104d → 82d |  |
| P2.L7.N.1290 | OH - Insulate HP Duct / L7 / North | 2025-12-15 → 2026-01-02 (+18d) | 2025-12-29 → 2026-01-15 (+17d) |  | 54d → 42d |  |
| P2.L7.N.1310 | OH - Set & Connect Mech Equipment / L7 / North | 2025-12-15 → 2026-01-02 (+18d) | 2025-12-29 → 2026-01-15 (+17d) |  | 64d → 52d |  |
| P2.L7.N.1270 | OH - HVAC Piping - Test / L7 / North | 2025-12-15 → 2026-01-16 (+32d) | 2025-12-29 → 2026-01-29 (+31d) |  | 54d → 32d |  |
| P2.L7.N.1320 | OH - Electrical - Equip Tie In / L7 / North | 2025-12-30 → 2026-01-16 (+17d) | 2026-01-13 → 2026-01-29 (+16d) |  | 64d → 52d |  |
| P2.L7.N.1350 | OH - Insulate LP Duct / L7 / North | 2025-12-30 → 2026-01-16 (+17d) | 2026-01-13 → 2026-01-29 (+16d) |  | 74d → 62d |  |
| P2.L7.N.1380 | OH - Conduit - Low Volt - Fire Alarm / L7 / North | 2025-12-30 → 2026-01-16 (+17d) | 2026-01-13 → 2026-01-29 (+16d) |  | 74d → 62d |  |
| P2.L7.N.1460 | AHJ Inspections - Wall Close In / L7 / North | 2025-12-30 → 2026-01-16 (+17d) | 2026-01-06 → 2026-01-22 (+16d) |  | 29d → 22d |  |
| P2.L7.N.1520 | Pull Wire - Low Volt - Telecom / L7 / North | 2026-02-26 → 2026-01-23 (-34d) | 2026-03-11 → 2026-02-05 (-34d) |  | 43d → 67d | P2.L7.N.1470, P2.L7.N.1390 → P2.L7.N.1390 |
| P2.L7.N.1280 | OH - Insulate Plumbing / L7 / North | 2026-01-27 → 2026-01-30 (+3d) | 2026-02-09 → 2026-02-12 (+3d) |  | 55d → 52d |  |
| P2.L7.N.1340 | OH - Insulate HVAC Pipe / L7 / North | 2025-12-30 → 2026-01-30 (+31d) | 2026-01-13 → 2026-02-12 (+30d) |  | 54d → 32d |  |
| P2.L7.N.1360 | Pull Wire - Electrical - 208/120v Branch & Equip / L7 / North | 2026-01-14 → 2026-01-30 (+16d) | 2026-02-10 → 2026-02-26 (+16d) |  | 64d → 52d |  |
| P2.L7.N.1510 | Pull Wire - Low Volt - Fire Alarm / L7 / North | 2026-02-26 → 2026-01-30 (-27d) | 2026-03-11 → 2026-02-12 (-27d) |  | 43d → 62d | P2.L7.N.1470, P2.L7.N.1380 → P2.L7.N.1380 |
| P2.L7.N.1370 | OH - Conduit - Low Volt - BAS/Controls / L7 / North | 2026-01-14 → 2026-02-13 (+30d) | 2026-01-27 → 2026-02-26 (+30d) |  | 54d → 32d |  |
| P2.L7.N.1400 | OH - Conduit - Low Volt - Security / L7 / North | 2026-01-14 → 2026-02-13 (+30d) | 2026-01-27 → 2026-02-26 (+30d) |  | 64d → 42d |  |
| P2.L7.N.1330 | OH - HVAC Piping - Equip Tie In / L7 / North | 2026-01-28 → 2026-02-20 (+23d) | 2026-02-24 → 2026-03-19 (+23d) |  | 54d → 37d |  |
| P2.L7.N.1410 | OH - Conduit - Low Volt - Medical Services/Nurse Call (?) / L7 / North | 2026-01-28 → 2026-02-27 (+30d) | 2026-02-10 → 2026-03-12 (+30d) |  | 54d → 32d |  |
| P2.L7.N.1500 | Pull Wire - Low Volt - BAS/Controls / L7 / North | 2026-02-26 → 2026-02-27 (+1d) | 2026-03-11 → 2026-03-12 (+1d) |  | 43d → 42d | P2.L7.N.1470, P2.L7.N.1370 → P2.L7.N.1370 |
| P2.L7.N.1530 | Pull Wire - Low Volt - Security / L7 / North | 2026-02-26 → 2026-02-27 (+1d) | 2026-03-11 → 2026-03-12 (+1d) |  | 43d → 42d | P2.L7.N.1470, P2.L7.N.1400 → P2.L7.N.1400 |
| P2.L7.N.1470 | Hang-Tape-Finish - Walls and Hard Lid Ceilings / L7 / North | 2026-02-05 → 2026-03-09 (+32d) | 2026-02-25 → 2026-03-27 (+30d) |  | 8d → -9d |  |
| P2.L7.N.1540 | Pull Wire - Low Volt - Medical Services/Nurse Call (?) / L7 / North | 2026-02-26 → 2026-03-13 (+15d) | 2026-03-11 → 2026-03-26 (+15d) |  | 43d → 32d | P2.L7.N.1470, P2.L7.N.1410 → P2.L7.N.1410 |
| P2.L7.N.1480 | Spray/Seal/Firestop - Head of Wall / L7 / North | 2026-02-12 → 2026-03-16 (+32d) | 2026-02-25 → 2026-03-27 (+30d) |  | 53d → 31d |  |
| P2.L7.N.1490 | Firestop - Thru Wall / L7 / North | 2026-02-26 → 2026-03-30 (+32d) | 2026-03-11 → 2026-04-10 (+30d) |  | 43d → 21d |  |
| P2.L7.N.1550 | Trades Inspect & Verify R/I Work Completed to Specs / L7 / North | 2026-03-12 → 2026-04-13 (+32d) | 2026-03-18 → 2026-04-17 (+30d) |  | 43d → 21d |  |
| 1 | **House Electrical Rooms / Level 7** |  | 2026-01-02 → 2026-03-11 (+68d) |  |  |  |
| 9 | **House Electrical Room 7-2941** |  | 2026-01-02 → 2026-02-18 (+47d) |  |  |  |
| P2.7.HE.2941.1070 | Pull Wire - In From Distribution Panels / Out to Branch Circuits / L7 / North / 2941 |  |  |  |  | P2.7.HE.2941.1060 → P2.7.HE.2941.1060, P2.L7.LC.1230, P2.L7.N.1230 |
| P2.7.HE.2941.1080 | Panelboards, Interconnect Wiring, and Remaining Room Buildout of All Systems / L7 / North / 2941 | 2025-12-01 A | 2025-12-12 A | 0% → 100% | 26d → none |  |
| P2.7.HE.2941.1100 | Paint - Finish Coat / L7 / North / 2941 | 2025-12-22 → 2025-12-15 A (-7d) | 2025-12-23 → 2025-12-17 A (-6d) | 0% → 100% | 26d → none |  |
| P2.7.HE.2941.1130 | Doors & Hardware / L7 / North / 2941 | 2025-12-31 → 2025-12-18 A (-13d) | 2026-01-02 → 2025-12-24 A (-9d) | 0% → 100% | 26d → none |  |
| P2.7.HE.2941.1090 | Test & Terminate / L7 / North / 2941 | 2025-12-15 → 2026-02-06 (+53d) | 2025-12-19 → 2026-02-12 (+55d) |  | 26d → 63d |  |
| P2.7.HE.2941.1110 | Trim All MEPF Finishes / L7 / North / 2941 | 2025-12-24 → 2026-02-13 (+51d) | 2025-12-26 → 2026-02-16 (+52d) |  | 26d → 63d |  |
| P2.7.HE.2941.1120 | Flooring / L7 / North / 2941 | 2025-12-29 → 2026-02-17 (+50d) | 2025-12-30 → 2026-02-18 (+50d) |  | 26d → 63d |  |
| P2.7.HE.2941.1140 | Panels Ready to Energize - Lock Doors and Limit Access / L7 / North / 2941 | 2026-01-02 → 2026-02-18 (+47d) | 2026-01-02 → 2026-02-18 (+47d) |  | 26d → 63d |  |
| 8 | **House Electrical Room 7-2803** |  | 2026-01-02 → 2026-02-18 (+47d) |  |  |  |
| P2.7.HE.2803.1070 | Pull Wire - In From Distribution Panels / Out to Branch Circuits / L7 / North / 2803 |  |  |  |  | P2.7.HE.2803.1060 → P2.7.HE.2803.1060, P2.L7.LC.1230, P2.L7.N.1230 |
| P2.7.HE.2803.1080 | Panelboards, Interconnect Wiring, and Remaining Room Buildout of All Systems / L7 / North / 2803 | 2025-12-01 A | 2025-12-12 A | 0% → 100% | 26d → none |  |
| P2.7.HE.2803.1100 | Paint - Finish Coat / L7 / North / 2803 | 2025-12-22 → 2025-12-15 A (-7d) | 2025-12-23 → 2025-12-17 A (-6d) | 0% → 100% | 26d → none |  |
| P2.7.HE.2803.1130 | Doors & Hardware / L7 / North / 2803 | 2025-12-31 → 2025-12-18 A (-13d) | 2026-01-02 → 2025-12-24 A (-9d) | 0% → 100% | 26d → none |  |
| P2.7.HE.2803.1090 | Test & Terminate / L7 / North / 2803 | 2025-12-15 → 2026-02-06 (+53d) | 2025-12-19 → 2026-02-12 (+55d) |  | 26d → 63d |  |
| P2.7.HE.2803.1110 | Trim All MEPF Finishes / L7 / North / 2803 | 2025-12-24 → 2026-02-13 (+51d) | 2025-12-26 → 2026-02-16 (+52d) |  | 26d → 63d |  |

| ID | Task | Start | Finish | Complete | Total float | Predecessors |
| --- | --- | --- | --- | --- | --- | --- |
| P2.7.HE.2803.1120 | Flooring / L7 / North / 2803 | 2025-12-29 → 2026-02-17 (+50d) | 2025-12-30 → 2026-02-18 (+50d) |  | 26d → 63d |  |
| P2.7.HE.2803.1140 | Panels Ready to Energize - Lock Doors and Limit Access / L7 / North / 2803 | 2026-01-02 → 2026-02-18 (+47d) | 2026-01-02 → 2026-02-18 (+47d) |  | 26d → 63d |  |
| 7 | **House Electrical Room 7-5959** |  | 2026-01-02 → 2026-03-11 (+68d) |  |  |  |
| P2.7.HE.5959.1070 | Pull Wire - In From Distribution Panels / Out to Branch Circuits / L7 / South / 5959 |  |  |  |  | P2.7.HE.5959.1060 → P2.7.HE.5959.1060, P2.L7.LC.1230, P2.L7.S.1360 |
| P2.7.HE.5959.1080 | Panelboards, Interconnect Wiring, and Remaining Room Buildout of All Systems / L7 / South / 5959 | 2025-12-01 A | 2025-12-12 A | 0% → 100% | 26d → none |  |
| P2.7.HE.5959.1100 | Paint - Finish Coat / L7 / South / 5959 | 2025-12-22 → 2025-12-15 A (-7d) | 2025-12-23 → 2025-12-17 A (-6d) | 0% → 100% | 26d → none |  |
| P2.7.HE.5959.1130 | Doors & Hardware / L7 / South / 5959 | 2025-12-31 → 2025-12-18 A (-13d) | 2026-01-02 → 2025-12-24 A (-9d) | 0% → 100% | 26d → none |  |
| P2.7.HE.5959.1090 | Test & Terminate / L7 / South / 5959 | 2025-12-15 → 2026-02-27 (+74d) | 2025-12-19 → 2026-03-05 (+76d) |  | 26d → 48d |  |
| P2.7.HE.5959.1110 | Trim All MEPF Finishes / L7 / South / 5959 | 2025-12-24 → 2026-03-06 (+72d) | 2025-12-26 → 2026-03-09 (+73d) |  | 26d → 48d |  |
| P2.7.HE.5959.1120 | Flooring / L7 / South / 5959 | 2025-12-29 → 2026-03-10 (+71d) | 2025-12-30 → 2026-03-11 (+71d) |  | 26d → 48d |  |
| P2.7.HE.5959.1140 | Panels Ready to Energize - Lock Doors and Limit Access / L7 / South / 5959 | 2026-01-02 → 2026-03-11 (+68d) | 2026-01-02 → 2026-03-11 (+68d) |  | 26d → 48d |  |
| 1 | **FINISHES - Core & Support Spaces / Level 7** |  | 2026-12-14 → 2026-12-31 (+17d) |  |  |  |
| 5 | **Bathrooms - Break Rooms - Locker Rooms / Level 7** |  | 2026-09-21 → 2026-10-14 (+23d) |  |  |  |
| 4 | **Lockers, Toilets, and Showers 7-3910 / 7-3920** |  | 2026-09-21 → 2026-10-14 (+23d) |  |  |  |
| P2.L7.BR.1000 | Plumbing - Set Pipe Carriers / L7 / Toilets 39XX | 2026-03-19 → 2025-12-01 A (-108d) | 2026-03-25 → 2025-12-05 A (-110d) | 0% → 100% | 50d → none |  |
| P2.L7.BR.1030 | Plumbing - Test Pipe @ Chase Walls / L7 / Toilets 39XX | 2026-03-26 → 2025-12-01 A (-115d) | 2026-04-01 → 2025-12-05 A (-117d) | 0% → 100% | 66d → none |  |
| P2.L7.BR.1010 | Countertop Support Framing / L7 / Toilets 39XX | 2025-12-01 → 2026-01-02 (+32d) | 2025-12-05 → 2026-01-08 (+34d) |  | 132d → 110d |  |
| P2.L7.BR.1020 | Frame - Chase Walls and Hard Lid Ceilings / L7 / Toilets 39XX | 2026-03-26 → 2026-04-20 (+25d) | 2026-04-01 → 2026-04-24 (+23d) |  | 56d → 39d |  |
| P2.L7.BR.1050 | Trim Sprinkler Drops _ Hard Lids / L7 / Toilets 39XX | 2026-04-02 → 2026-04-27 (+25d) | 2026-04-08 → 2026-05-01 (+23d) |  | 56d → 39d |  |
| P2.L7.BR.1060 | Duct Drops _ Hard Lids / L7 / Toilets 39XX | 2026-04-09 → 2026-05-04 (+25d) | 2026-04-15 → 2026-05-08 (+23d) |  | 56d → 39d |  |
| P2.L7.BR.1080 | In Wall - Insulate Plumbing / L7 / Toilets 39XX | 2026-04-16 → 2026-05-11 (+25d) | 2026-04-22 → 2026-05-15 (+23d) |  | 56d → 39d |  |
| P2.L7.BR.1040 | R/I - Electrical _ Hard Lids / L7 / Toilets 39XX | 2026-04-23 → 2026-05-18 (+25d) | 2026-04-29 → 2026-05-22 (+23d) |  | 56d → 39d |  |
| P2.L7.BR.1070 | R/I - Fire Alarm _ Hard Lids / L7 / Toilets 39XX | 2026-04-30 → 2026-05-26 (+26d) | 2026-05-06 → 2026-06-01 (+26d) |  | 56d → 39d |  |
| P2.L7.BR.1090 | Inspection - Close In - Chase Walls and Hard Lid Ceilings / L7 / Toilets 39XX | 2026-05-07 → 2026-06-02 (+26d) | 2026-05-13 → 2026-06-08 (+26d) |  | 56d → 39d |  |
| P2.L7.BR.1100 | Hang-Tape-Finish _ Chase Walls and Hard Lids Ceilings / L7 / Toilets 39XX | 2026-05-14 → 2026-06-09 (+26d) | 2026-05-20 → 2026-06-15 (+26d) |  | 56d → 39d |  |
| P2.L7.BR.1110 | Paint Prime & 1st Coat _ Walls & Hard Lid Ceilings / L7 / Toilets 39XX | 2026-05-21 → 2026-06-16 (+26d) | 2026-05-28 → 2026-06-22 (+25d) |  | 56d → 39d |  |
| P2.L7.BR.1140 | Ceiling Grid / L7 / Toilets 39XX | 2026-05-29 → 2026-06-23 (+25d) | 2026-06-04 → 2026-06-29 (+25d) |  | 56d → 39d |  |
| P2.L7.BR.1170 | Trim Sprinkler Drops _ Ceiling Tiles / L7 / Toilets 39XX | 2026-06-05 → 2026-06-30 (+25d) | 2026-06-11 → 2026-07-07 (+26d) |  | 56d → 39d |  |
| P2.L7.BR.1160 | Trim - HVAC G/R/D's / L7 / Toilets 39XX | 2026-06-12 → 2026-07-08 (+26d) | 2026-06-18 → 2026-07-14 (+26d) |  | 56d → 39d |  |
| P2.L7.BR.1130 | Pull Wire - Electrical / L7 / Toilets 39XX | 2026-06-19 → 2026-07-15 (+26d) | 2026-06-25 → 2026-07-21 (+26d) |  | 56d → 39d |  |
| P2.L7.BR.1120 | Pull Wire - Fire Alarm / L7 / Toilets 39XX | 2026-06-26 → 2026-07-22 (+26d) | 2026-07-02 → 2026-07-28 (+26d) |  | 123d → 106d |  |
| P2.L7.BR.1150 | Lights - Set & Terminate / L7 / Toilets 39XX | 2026-06-26 → 2026-07-22 (+26d) | 2026-07-02 → 2026-07-28 (+26d) |  | 56d → 39d |  |
| P2.L7.BR.1180 | Inspection - Ceiling Close In - ACT Ceilings / L7 / Toilets 39XX | 2026-07-06 → 2026-07-29 (+23d) | 2026-07-10 → 2026-08-04 (+25d) |  | 56d → 39d |  |
| P2.L7.BR.1190 | Ceiling Tiles / L7 / Toilets 39XX | 2026-07-13 → 2026-08-05 (+23d) | 2026-07-17 → 2026-08-11 (+25d) |  | 56d → 39d |  |
| P2.L7.BR.1200 | Wall Tile / L7 / Toilets 39XX | 2026-07-20 → 2026-08-12 (+23d) | 2026-07-24 → 2026-08-18 (+25d) |  | 56d → 39d |  |
| P2.L7.BR.2200 | Flooring Prep - Epoxy Floors / L7 / Toilets 39XX | 2026-07-27 → 2026-08-19 (+23d) | 2026-07-27 → 2026-08-19 (+23d) |  | 56d → 39d |  |
| P2.L7.BR.2210 | Flooring - Epoxy Floors / L7 / Toilets 39XX | 2026-07-28 → 2026-08-20 (+23d) | 2026-07-31 → 2026-08-25 (+25d) |  | 83d → 66d |  |
| P2.L7.BR.1210 | Paint - Finish Coat / L7 / Toilets 39XX | 2026-08-03 → 2026-08-26 (+23d) | 2026-08-07 → 2026-09-01 (+25d) |  | 83d → 66d |  |
| P2.L7.BR.1220 | Countertops / L7 / Toilets 39XX | 2026-08-10 → 2026-09-02 (+23d) | 2026-08-14 → 2026-09-09 (+26d) |  | 83d → 66d |  |
| P2.L7.BR.1260 | Lockers & Benches / L7 / Toilets 39XX | 2026-08-17 → 2026-09-10 (+24d) | 2026-08-21 → 2026-09-16 (+26d) |  | 83d → 66d |  |
| P2.L7.BR.1270 | Plumbing Fixtures / Sinks / Showers / L7 / Toilets 39XX | 2026-08-17 → 2026-09-10 (+24d) | 2026-08-21 → 2026-09-16 (+26d) |  | 110d → 93d |  |
| P2.L7.BR.1240 | Trim - Electrical Devices / L7 / Toilets 39XX | 2026-08-24 → 2026-09-17 (+24d) | 2026-08-28 → 2026-09-23 (+26d) |  | 83d → 66d |  |
| P2.L7.BR.1280 | Toilet Partitions / L7 / Toilets 39XX | 2026-08-24 → 2026-09-17 (+24d) | 2026-08-28 → 2026-09-23 (+26d) |  | 110d → 93d |  |
| P2.L7.BR.1230 | Trim - Fire Alarm Devices / L7 / Toilets 39XX | 2026-08-31 → 2026-09-24 (+24d) | 2026-09-04 → 2026-09-30 (+26d) |  | 83d → 66d |  |
| P2.L7.BR.1290 | Bathroom Accessories / L7 / Toilets 39XX | 2026-08-31 → 2026-09-24 (+24d) | 2026-09-04 → 2026-09-30 (+26d) |  | 110d → 93d |  |
| P2.L7.BR.1250 | Doors & Hardware / L7 / Toilets 39XX | 2026-09-08 → 2026-10-01 (+23d) | 2026-09-14 → 2026-10-07 (+23d) |  | 83d → 66d |  |
| P2.L7.BR.1300 | Work Completion List - Finishes / L7 / Toilets 39XX | 2026-09-15 → 2026-10-08 (+23d) | 2026-09-21 → 2026-10-14 (+23d) |  | 105d → 88d |  |
| 1 | **Toilets 7-2805 & 7-2807** | 2026-03-26 → 2025-12-01 (-115d) | 2026-08-14 → 2026-09-09 (+26d) |  |  |  |
| P2.L7.BR.2000 | Plumbing - Set Pipe Carriers / L7 / Toilets 280X | 2026-03-26 → 2025-12-01 A (-115d) | 2026-03-30 → 2025-12-03 A (-117d) | 0% → 100% | 50d → none |  |
| P2.L7.BR.2020 | Plumbing - Test Pipe / L7 / Toilets 280X | 2026-03-31 → 2025-12-01 A (-120d) | 2026-04-01 → 2025-12-02 A (-120d) | 0% → 100% | 101d → none |  |
| P2.L7.BR.2010 | Framing & Blocking - Walls and Hard Lid Ceilings / L7 / Toilets 280X | 2026-03-31 → 2026-04-20 (+20d) | 2026-04-01 → 2026-04-21 (+20d) |  | 97d → 83d |  |
| P2.L7.BR.2040 | Trim Sprinkler Drops _ Hard Lids / L7 / Toilets 280X | 2026-04-02 → 2026-04-22 (+20d) | 2026-04-03 → 2026-04-23 (+20d) |  | 97d → 83d |  |
| P2.L7.BR.2050 | Duct Drops _ Hard Lids / L7 / Toilets 280X | 2026-04-06 → 2026-04-24 (+18d) | 2026-04-07 → 2026-04-27 (+20d) |  | 97d → 83d |  |
| P2.L7.BR.2070 | In Wall - Insulate Plumbing / L7 / Toilets 280X | 2026-04-08 → 2026-04-28 (+20d) | 2026-04-09 → 2026-04-29 (+20d) |  | 97d → 83d |  |
| P2.L7.BR.2030 | R/I - Electrical _ Hard Lids / L7 / Toilets 280X | 2026-04-10 → 2026-04-30 (+20d) | 2026-04-16 → 2026-05-06 (+20d) |  | 97d → 83d |  |
| P2.L7.BR.2060 | R/I - Fire Alarm _ Hard Lids / L7 / Toilets 280X | 2026-04-17 → 2026-05-07 (+20d) | 2026-04-23 → 2026-05-13 (+20d) |  | 97d → 83d |  |
| P2.L7.BR.2080 | Inspection - Close In - Walls and Hard Lid Ceilings / L7 / Toilets 280X | 2026-04-24 → 2026-05-14 (+20d) | 2026-04-28 → 2026-05-18 (+20d) |  | 97d → 83d |  |
| P2.L7.BR.2090 | Hang-Tape-Finish _ Walls and Hard Lids Ceilings / L7 / Toilets 280X | 2026-04-29 → 2026-05-19 (+20d) | 2026-05-05 → 2026-05-26 (+21d) |  | 97d → 83d |  |
| P2.L7.BR.2100 | Paint Prime & Final Coat _ Walls & Hard Lid Ceilings / L7 / Toilets 280X | 2026-05-06 → 2026-05-27 (+21d) | 2026-05-07 → 2026-05-28 (+21d) |  | 97d → 83d |  |
| P2.L7.BR.2140 | Trim - HVAC G/R/D's / L7 / Toilets 280X | 2026-05-08 → 2026-05-29 (+21d) | 2026-05-11 → 2026-06-01 (+21d) |  | 97d → 83d |  |
| P2.L7.BR.2120 | Pull Wire & Trim Devices - Electrical / L7 / Toilets 280X | 2026-05-12 → 2026-06-02 (+21d) | 2026-05-13 → 2026-06-03 (+21d) |  | 97d → 83d |  |
| P2.L7.BR.2130 | Lights - Set & Terminate / L7 / Toilets 280X | 2026-05-12 → 2026-06-02 (+21d) | 2026-05-13 → 2026-06-03 (+21d) |  | 102d → 88d |  |
| P2.L7.BR.2110 | Pull Wire & Trim Devices - Fire Alarm / L7 / Toilets 280X | 2026-05-14 → 2026-06-04 (+21d) | 2026-05-20 → 2026-06-10 (+21d) |  | 97d → 83d |  |
| P2.L7.BR.2150 | Wall Tile / L7 / Toilets 280X | 2026-05-21 → 2026-06-11 (+21d) | 2026-05-28 → 2026-06-17 (+20d) |  | 97d → 83d |  |
| P2.L7.BR.2220 | Flooring Prep - Epoxy Floors / L7 / Toilets 280X | 2026-07-28 → 2026-08-20 (+23d) | 2026-07-28 → 2026-08-20 (+23d) |  | 56d → 39d |  |
| P2.L7.BR.2230 | Flooring - Epoxy Floors / L7 / Toilets 280X | 2026-07-29 → 2026-08-21 (+23d) | 2026-07-30 → 2026-08-24 (+25d) |  | 112d → 95d |  |
| P2.L7.BR.2160 | Doors & Hardware / L7 / Toilets 280X | 2026-07-31 → 2026-08-25 (+25d) | 2026-08-03 → 2026-08-26 (+23d) |  | 112d → 95d |  |
| P2.L7.BR.2170 | Plumbing Fixtures / Sinks / Showers / L7 / Toilets 280X | 2026-08-04 → 2026-08-27 (+23d) | 2026-08-05 → 2026-08-28 (+23d) |  | 130d → 113d |  |
| P2.L7.BR.2180 | Bathroom Accessories / L7 / Toilets 280X | 2026-08-06 → 2026-08-31 (+25d) | 2026-08-07 → 2026-09-01 (+25d) |  | 130d → 113d |  |
| P2.L7.BR.2190 | Work Completion List - Finishes / L7 / Toilets 280X | 2026-08-10 → 2026-09-02 (+23d) | 2026-08-14 → 2026-09-09 (+26d) |  | 130d → 113d |  |

| ID | Task | Start | Finish | Complete | Total float | Predecessors |
| --- | --- | --- | --- | --- | --- | --- |
| 1 | **Corridors & Lobbies / Level 7** | 2026-03-12 → 2026-04-13 (+32d) | 2026-12-14 → 2026-12-31 (+17d) |  |  |  |
| P2.L7.CL.1000 | Paint Prime & 1st Coat Walls / L7 / Corr & Lobbies | 2026-03-12 → 2026-04-13 (+32d) | 2026-03-18 → 2026-04-17 (+30d) |  | 67d → 45d |  |
| P2.L7.CL.1010 | Framing - Hard Lid Ceilings / L7 / Corr & Lobbies | 2026-03-19 → 2026-04-20 (+32d) | 2026-04-01 → 2026-05-01 (+30d) |  | 67d → 45d |  |
| P2.L7.CL.1020 | T-Grid / L7 / Corr & Lobbies | 2026-03-19 → 2026-04-20 (+32d) | 2026-04-01 → 2026-05-01 (+30d) |  | 67d → 45d |  |
| P2.L7.CL.1040 | R/I - Trim Sprinkler Heads- All Ceilings / L7 / Corr & Lobbies | 2026-03-30 → 2026-04-29 (+30d) | 2026-04-03 → 2026-05-05 (+32d) |  | 67d → 45d |  |
| P2.L7.CL.1070 | Trim - Sprinkler Heads @ T-Grid / L7 / Corr & Lobbies | 2026-03-30 → 2026-04-29 (+30d) | 2026-04-03 → 2026-05-05 (+32d) |  | 160d → 138d |  |
| P2.L7.CL.1050 | R/I - HVAC- All Ceilings / L7 / Corr & Lobbies | 2026-04-06 → 2026-05-06 (+30d) | 2026-04-10 → 2026-05-12 (+32d) |  | 67d → 45d |  |
| P2.L7.CL.1030 | R/I - Electrical - All Ceilings / L7 / Corr & Lobbies | 2026-04-13 → 2026-05-13 (+30d) | 2026-05-01 → 2026-06-03 (+33d) |  | 67d → 45d |  |
| P2.L7.CL.1060 | R/I - All Remaining Low Voltage - All Ceilings / L7 / Corr & Lobbies | 2026-05-04 → 2026-06-04 (+31d) | 2026-05-08 → 2026-06-10 (+33d) |  | 67d → 45d |  |
| P2.L7.CL.1100 | Pull Wire - Electrical / L7 / Corr & Lobbies | 2026-05-04 → 2026-06-04 (+31d) | 2026-05-15 → 2026-06-17 (+33d) |  | 97d → 75d |  |
| P2.L7.CL.1080 | R/I - Fire Alarm/Life Safety - All Ceilings / L7 / Corr & Lobbies | 2026-05-11 → 2026-06-11 (+31d) | 2026-05-15 → 2026-06-17 (+33d) |  | 67d → 45d |  |
| P2.L7.CL.1090 | Inspections - Close In- All Ceilings / L7 / Corr & Lobbies | 2026-05-18 → 2026-06-18 (+31d) | 2026-05-22 → 2026-06-24 (+33d) |  | 67d → 45d |  |
| P2.L7.CL.1110 | Pull Wire - Fire Alarm / L7 / Corr & Lobbies | 2026-05-18 → 2026-06-18 (+31d) | 2026-05-22 → 2026-06-24 (+33d) |  | 102d → 80d |  |
| P2.L7.CL.1120 | Pull Wire - All Remianing Low Voltage Systems / L7 / Corr & Lobbies | 2026-05-26 → 2026-06-25 (+30d) | 2026-06-01 → 2026-07-01 (+30d) |  | 107d → 85d |  |
| P2.L7.CL.1130 | Hang/Tape/Finish- Hard Lid Ceilings / L7 / Corr & Lobbies | 2026-05-26 → 2026-06-25 (+30d) | 2026-06-08 → 2026-07-09 (+31d) |  | 67d → 45d |  |
| P2.L7.CL.1140 | Drop Ceiling Tiles @ T-Grid / L7 / Corr & Lobbies | 2026-06-02 → 2026-07-02 (+30d) | 2026-06-08 → 2026-07-09 (+31d) |  | 120d → 98d |  |
| P2.L7.CL.1190 | Paint - Hard Lid Ceilings / L7 / Corr & Lobbies | 2026-06-09 → 2026-07-10 (+31d) | 2026-06-15 → 2026-07-16 (+31d) |  | 67d → 45d |  |
| P2.L7.CL.1180 | Ceiling Mounted - HVAC GRD's / L7 / Corr & Lobbies | 2026-06-16 → 2026-07-17 (+31d) | 2026-07-07 → 2026-08-06 (+30d) |  | 67d → 45d |  |
| P2.L7.CL.1150 | Ceiling Mounted - Electrical Devices and Lights / L7 / Corr & Lobbies | 2026-06-30 → 2026-07-31 (+31d) | 2026-07-28 → 2026-08-27 (+30d) |  | 67d → 45d |  |
| P2.L7.CL.1160 | Ceiling Mounted - Fire Alarm/Life Saftey Devices / L7 / Corr & Lobbies | 2026-07-15 → 2026-08-14 (+30d) | 2026-08-04 → 2026-09-03 (+30d) |  | 67d → 45d |  |
| P2.L7.CL.1170 | Ceiling Mounted - All Low Voltage Devices / L7 / Corr & Lobbies | 2026-07-29 → 2026-08-28 (+30d) | 2026-08-18 → 2026-09-18 (+31d) |  | 67d → 45d |  |
| P2.L7.CL.1320 | Prep Flooring / L7 / Corr & Lobbies | 2026-10-01 → 2026-10-19 (+18d) | 2026-10-02 → 2026-10-20 (+18d) |  | 37d → 25d |  |
| P2.L7.CL.1200 | Flooring / L7 / Corr & Lobbies | 2026-10-05 → 2026-10-21 (+16d) | 2026-10-14 → 2026-10-30 (+16d) |  | 37d → 25d |  |
| P2.L7.CL.1210 | Final Paint / L7 / Corr & Lobbies | 2026-10-12 → 2026-10-28 (+16d) | 2026-10-16 → 2026-11-03 (+18d) |  | 47d → 35d |  |
| P2.L7.CL.1220 | Floor Base / L7 / Corr & Lobbies | 2026-10-19 → 2026-11-04 (+16d) | 2026-10-23 → 2026-11-10 (+18d) |  | 67d → 55d |  |
| P2.L7.CL.1250 | Trim - HVAC - Wall Mounted Devices / L7 / Corr & Lobbies | 2026-10-19 → 2026-11-04 (+16d) | 2026-10-23 → 2026-11-10 (+18d) |  | 47d → 35d |  |
| P2.L7.CL.1230 | Trim - All Electrical - Wall Mounted Devices / L7 / Corr & Lobbies | 2026-10-26 → 2026-11-11 (+16d) | 2026-10-30 → 2026-11-17 (+18d) |  | 47d → 35d |  |
| P2.L7.CL.1240 | Trim - Fire Alarm - Wall Mounted Devices / L7 / Corr & Lobbies | 2026-11-02 → 2026-11-18 (+16d) | 2026-11-06 → 2026-11-24 (+18d) |  | 47d → 35d |  |
| P2.L7.CL.1260 | Trim - All Remining Low Voltage Systems - Wall Mounted Devices / L7 / Corr & Lobbies | 2026-11-09 → 2026-11-25 (+16d) | 2026-11-13 → 2026-12-03 (+20d) |  | 47d → 35d |  |
| P2.L7.CL.1270 | Building Signage / L7 / Corr & Lobbies | 2026-11-16 → 2026-12-04 (+18d) | 2026-11-20 → 2026-12-10 (+20d) |  | 47d → 35d |  |
| P2.L7.CL.1280 | Work Completion List / L7 / Corr & Lobbies | 2026-11-23 → 2026-12-11 (+18d) | 2026-12-01 → 2026-12-17 (+16d) |  | 47d → 35d |  |
| P2.L7.CL.1290 | Rough Clean / L7 / Corr & Lobbies | 2026-12-02 → 2026-12-18 (+16d) | 2026-12-03 → 2026-12-21 (+18d) |  | 47d → 35d |  |
| P2.L7.CL.1300 | Punchlist / L7 / Corr & Lobbies | 2026-12-04 → 2026-12-22 (+18d) | 2026-12-10 → 2026-12-29 (+19d) |  | 47d → 35d |  |
| P2.L7.CL.1310 | Final Clean / L7 / Corr & Lobbies | 2026-12-11 → 2026-12-30 (+19d) | 2026-12-14 → 2026-12-31 (+17d) |  | 47d → 35d |  |
| 1 | **LAB & CLINICAL SPACES / LEVEL 7 (Below Interstitials)** |  | 2026-12-09 → 2026-12-10 (+1d) |  |  |  |
| 2 | **ROUGH IN - Lab & Clinical Spaces (Below Interstitials) / Level 7** |  | 2026-05-18 → 2026-05-19 (+1d) |  |  |  |
| P2.L7.LC.1570 | OH - Plumbing Piping (Low) / L7 / Lab & Clinical |  | 2025-12-19 → 2026-01-22 (+34d) |  | 69d → 47d |  |
| P2.L7.LC.1210 | OH - Hang Duct - HP Mains / L7 / Lab & Clinical |  | 2025-12-05 → 2025-12-29 A (+24d) | 75% → 100% | 44d → none |  |
| P2.L7.LC.1300 | OH - Hang Duct - LP Branch (High) / L7 / Lab & Clinical |  | 2025-12-12 → 2025-12-05 A (-7d) | 50% → 100% | 44d → none |  |
| P2.L7.LC.1560 | OH - HVAC Piping (Low) / L7 / Lab & Clinical |  | 2025-12-05 → 2026-01-08 (+34d) |  | 64d → 42d |  |
| P2.L7.LC.1230 | OH - Electrical - 208/120v Branch / L7 / Lab & Clinical |  | 2025-12-12 → 2026-02-05 (+55d) |  | 69d → 32d | P2.L7.LC.1190 → P2.L7.LC.1190, P2.L7.LC.1350 |
| P2.L7.LC.1440 | In Wall - Electrical - Framing / L7 / Lab & Clinical |  | 2025-12-29 → 2026-02-19 (+52d) |  | 69d → 32d |  |
| P2.L7.LC.1580 | OH - Hang Duct - LP Branch (Low) / L7 / Lab & Clinical |  | 2026-01-13 → 2025-11-27 A (-47d) | 0% → 100% | 44d → none |  |
| P2.L7.LC.1260 | OH - DALT - HP Mains / L7 / Lab & Clinical | 2025-12-08 → 2025-12-01 A (-7d) | 2025-12-19 → 2025-12-10 A (-9d) | 0% → 100% | 59d → none |  |
| P2.L7.LC.1200 | Firestop - Thru Wall - Priority Walls / L7 / Lab & Clinical | 2025-12-01 → 2026-01-02 (+32d) | 2025-12-05 → 2026-01-08 (+34d) |  | 174d → 32d |  |
| P2.L7.LC.1250 | Pull Wire - Electrical - 480/277v Distribution / L7 / Lab & Clinical | 2025-12-01 → 2026-01-02 (+32d) | 2025-12-12 → 2026-01-15 (+34d) |  | 104d → 82d |  |
| P2.L7.LC.1290 | OH - Insulate HP Duct / L7 / Lab & Clinical | 2025-12-22 → 2026-01-02 (+11d) | 2026-01-06 → 2026-01-15 (+9d) |  | 59d → 52d |  |
| P2.L7.LC.1310 | OH - Set & Connect Mech Equipment / L7 / Lab & Clinical | 2026-01-14 → 2026-01-02 (-12d) | 2026-01-27 → 2026-01-15 (-12d) |  | 44d → 52d |  |
| P2.L7.LC.1270 | OH - HVAC Piping - Test / L7 / Lab & Clinical | 2025-12-08 → 2026-01-09 (+32d) | 2025-12-29 → 2026-01-29 (+31d) |  | 64d → 42d |  |
| P2.L7.LC.1350 | OH - Insulate LP Duct / L7 / Lab & Clinical | 2026-01-14 → 2026-01-09 (-5d) | 2026-01-27 → 2026-01-22 (-5d) |  | 149d → 32d |  |
| P2.L7.LC.1320 | OH - Electrical - Equip Tie In / L7 / Lab & Clinical | 2026-01-28 → 2026-01-16 (-12d) | 2026-02-10 → 2026-01-29 (-12d) |  | 44d → 52d |  |
| P2.L7.LC.1380 | OH - Conduit - Low Volt - Fire Alarm / L7 / Lab & Clinical | 2026-01-28 → 2026-01-16 (-12d) | 2026-02-10 → 2026-01-29 (-12d) |  | 54d → 62d |  |
| P2.L7.LC.1390 | OH - Conduit - Low Volt - Telecom / L7 / Lab & Clinical | 2026-01-28 → 2026-01-16 (-12d) | 2026-02-10 → 2026-01-29 (-12d) |  | 54d → 62d |  |
| P2.L7.LC.1410 | OH - Conduit - Low Volt - Medical Services/Nurse Call (?) / L7 / Lab & Clinical | 2026-01-28 → 2026-01-16 (-12d) | 2026-02-10 → 2026-01-29 (-12d) |  | 54d → 62d |  |
| P2.L7.LC.1240 | OH - Plumbing - Test / L7 / Lab & Clinical | 2025-12-22 → 2026-01-23 (+32d) | 2026-01-06 → 2026-02-05 (+30d) |  | 69d → 47d |  |
| P2.L7.LC.1340 | OH - Insulate HVAC Pipe / L7 / Lab & Clinical | 2026-01-07 → 2026-01-30 (+23d) | 2026-01-20 → 2026-02-12 (+23d) |  | 59d → 42d |  |
| P2.L7.LC.1280 | OH - Insulate Plumbing / L7 / Lab & Clinical | 2026-01-07 → 2026-02-06 (+30d) | 2026-01-20 → 2026-02-19 (+30d) |  | 69d → 47d |  |
| P2.L7.LC.1370 | OH - Conduit - Low Volt - BAS/Controls / L7 / Lab & Clinical | 2026-01-28 → 2026-02-13 (+16d) | 2026-02-10 → 2026-02-26 (+16d) |  | 54d → 42d |  |
| P2.L7.LC.1400 | OH - Conduit - Low Volt - Security / L7 / Lab & Clinical | 2026-01-21 → 2026-02-13 (+23d) | 2026-02-03 → 2026-02-26 (+23d) |  | 59d → 42d |  |
| P2.L7.LC.1330 | OH - HVAC Piping - Equip Tie In / L7 / Lab & Clinical | 2026-01-28 → 2026-02-20 (+23d) | 2026-02-24 → 2026-03-19 (+23d) |  | 54d → 37d |  |
| P2.L7.LC.1360 | Pull Wire - Electrical - 208/120v Branch & Equip / L7 / Lab & Clinical | 2026-02-11 → 2026-02-20 (+9d) | 2026-03-10 → 2026-03-19 (+9d) |  | 44d → 37d |  |
| P2.L7.LC.1430 | In Wall - Plumbing - Framing / L7 / Lab & Clinical | 2026-03-24 → 2026-03-25 (+1d) | 2026-04-06 → 2026-04-07 (+1d) |  | 0d → -1d |  |
| P2.L7.LC.1450 | In Wall - Backing/Blocking/Supports / L7 / Lab & Clinical | 2026-03-24 → 2026-03-25 (+1d) | 2026-04-06 → 2026-04-07 (+1d) |  | 0d → -1d |  |
| P2.L7.LC.1460 | AHJ Inspections - Wall Close In / L7 / Lab & Clinical | 2026-04-07 → 2026-04-08 (+1d) | 2026-04-13 → 2026-04-14 (+1d) |  | 0d → -1d |  |
| P2.L7.LC.1470 | Hang-Tape-Finish - Walls and Hard Lid Ceilings / L7 / Lab & Clinical | 2026-04-14 → 2026-04-15 (+1d) | 2026-04-27 → 2026-04-28 (+1d) |  | 0d → -1d |  |
| P2.L7.LC.1480 | Spray/Seal/Firestop - Head of Wall / L7 / Lab & Clinical | 2026-04-28 → 2026-04-29 (+1d) | 2026-05-11 → 2026-05-12 (+1d) |  | 0d → -1d |  |
| P2.L7.LC.1490 | Firestop - Thru Wall / L7 / Lab & Clinical | 2026-04-28 → 2026-04-29 (+1d) | 2026-05-11 → 2026-05-12 (+1d) |  | 0d → -1d |  |
| P2.L7.LC.1500 | Pull Wire - Low Volt - BAS/Controls / L7 / Lab & Clinical | 2026-04-28 → 2026-04-29 (+1d) | 2026-05-11 → 2026-05-12 (+1d) |  | 0d → -1d |  |
| P2.L7.LC.1510 | Pull Wire - Low Volt - Fire Alarm / L7 / Lab & Clinical | 2026-04-28 → 2026-04-29 (+1d) | 2026-05-11 → 2026-05-12 (+1d) |  | 0d → -1d |  |
| P2.L7.LC.1520 | Pull Wire - Low Volt - Telecom / L7 / Lab & Clinical | 2026-04-28 → 2026-04-29 (+1d) | 2026-05-11 → 2026-05-12 (+1d) |  | 0d → -1d |  |

| ID | Task | Start | Finish | Total float |
| --- | --- | --- | --- | --- |
| P2.L7.LC.1530 | Pull Wire - Low Volt - Security / L7 / Lab & Clinical | 2026-04-28 → 2026-04-29 (+1d) | 2026-05-11 → 2026-05-12 (+1d) | 0d → -1d |
| P2.L7.LC.1540 | Pull Wire - Low Volt - Medical Services/Nurse Call (?) / L7 / Lab & Clinical | 2026-04-28 → 2026-04-29 (+1d) | 2026-05-11 → 2026-05-12 (+1d) | 0d → -1d |
| P2.L7.LC.1550 | Trades Inspect & Verify R/I Work Completed to Specs / L7 / Lab & Clinical | 2026-05-12 → 2026-05-13 (+1d) | 2026-05-18 → 2026-05-19 (+1d) | 0d → -1d |
| 13 | **FINISHES - Lab & Clinical Spaces (Below Interstitials) / Level 7** | 2026-03-31 → 2026-04-01 (+1d) | 2026-12-09 → 2026-12-10 (+1d) |  |
| 1 | **L7 - F - Freezers / QC Lab / Support Spaces (3,610 sf)** | 2026-04-28 → 2026-04-29 (+1d) | 2026-11-19 → 2026-11-20 (+1d) |  |
| P2.L7.F.LC.1190 | Casework (Before Flooring) / L7 / Freezer, QC | 2026-04-28 → 2026-04-29 (+1d) | 2026-05-04 → 2026-05-05 (+1d) | 142d → 141d |
| P2.L7.F.LC.1220 | Plumbing Fixtures & Drinking Fountains / L7 / Freezer, QC | 2026-05-05 → 2026-05-06 (+1d) | 2026-05-11 → 2026-05-12 (+1d) | 142d → 141d |
| P2.L7.F.LC.5090 | Equipment / L7 / Freezer, QC | 2026-05-05 → 2026-05-06 (+1d) | 2026-05-18 → 2026-05-19 (+1d) | 157d → 156d |
| P2.L7.F.LC.1000 | Paint - Walls / L7 / Freezer, QC | 2026-05-19 → 2026-05-20 (+1d) | 2026-05-26 → 2026-05-27 (+1d) | 62d → 61d |
| P2.L7.F.LC.1010 | R/I - Ceiling Assemblies & Supports - Med Equip / L7 / Freezer, QC | 2026-05-27 → 2026-05-28 (+1d) | 2026-06-02 → 2026-06-03 (+1d) | 62d → 61d |
| P2.L7.F.LC.1210 | Wall Protection / L7 / Freezer, QC | 2026-05-27 → 2026-05-28 (+1d) | 2026-06-02 → 2026-06-03 (+1d) | 122d → 121d |
| P2.L7.F.LC.1400 | Fumehood Equipment Install / L7 / Freezer, QC | 2026-06-02 → 2026-06-03 (+1d) | 2026-06-03 → 2026-06-04 (+1d) | 149d → 148d |
| P2.L7.F.LC.1020 | Framing - Hard Lid Ceilings / L7 / Freezer, QC | 2026-06-03 → 2026-06-04 (+1d) | 2026-06-09 → 2026-06-10 (+1d) | 62d → 61d |
| P2.L7.F.LC.1230 | Trim T-Stats / L7 / Freezer, QC | 2026-06-03 → 2026-06-04 (+1d) | 2026-06-09 → 2026-06-10 (+1d) | 122d → 121d |
| P2.L7.F.LC.1240 | Trim Electrical / L7 / Freezer, QC | 2026-06-03 → 2026-06-04 (+1d) | 2026-06-09 → 2026-06-10 (+1d) | 122d → 121d |
| P2.L7.F.LC.1250 | Trim Telephone/ Data / L7 / Freezer, QC | 2026-06-03 → 2026-06-04 (+1d) | 2026-06-09 → 2026-06-10 (+1d) | 122d → 121d |
| P2.L7.F.LC.1270 | Trim Med Gas / L7 / Freezer, QC | 2026-06-03 → 2026-06-04 (+1d) | 2026-06-09 → 2026-06-10 (+1d) | 122d → 121d |
| P2.L7.F.LC.1410 | Fumehood Equipment MEP Connection / L7 / Freezer, QC | 2026-06-04 → 2026-06-05 (+1d) | 2026-06-05 → 2026-06-08 (+3d) | 149d → 148d |
| P2.L7.F.LC.1030 | R/I - Lights & Devices - Hard Lids Ceilings / L7 / Freezer, QC | 2026-06-10 → 2026-06-11 (+1d) | 2026-06-23 → 2026-06-24 (+1d) | 62d → 61d |
| P2.L7.F.LC.1040 | R/I - Diffusers - Hard Lid Ceilings / L7 / Freezer, QC | 2026-06-10 → 2026-06-11 (+1d) | 2026-06-16 → 2026-06-17 (+1d) | 67d → 66d |
| P2.L7.F.LC.1050 | R/I - Sprinkler Heads - Hard Lid Ceilings / L7 / Freezer, QC | 2026-06-10 → 2026-06-11 (+1d) | 2026-06-16 → 2026-06-17 (+1d) | 67d → 66d |
| P2.L7.F.LC.1060 | R/I - Fire Alarm - Hard Lid Ceilings / L7 / Freezer, QC | 2026-06-10 → 2026-06-11 (+1d) | 2026-06-16 → 2026-06-17 (+1d) | 67d → 66d |
| P2.L7.F.LC.1070 | OH Ceiling Inspection & Signoff - Hard Lid Ceilings / L7 / Freezer, QC | 2026-06-24 → 2026-06-25 (+1d) | 2026-06-30 → 2026-07-01 (+1d) | 62d → 61d |
| P2.L7.F.LC.1080 | Hang-Tape-Finish _Hard Lid Ceilings / L7 / Freezer, QC | 2026-07-01 → 2026-07-02 (+1d) | 2026-07-08 → 2026-07-09 (+1d) | 62d → 61d |
| P2.L7.F.LC.1090 | Paint Ceilings / L7 / Freezer, QC | 2026-07-09 → 2026-07-10 (+1d) | 2026-07-15 → 2026-07-16 (+1d) | 62d → 61d |
| P2.L7.F.LC.1100 | Waterproof Ceramic Tile / L7 / Freezer, QC | 2026-07-16 → 2026-07-17 (+1d) | 2026-07-22 → 2026-07-23 (+1d) | 62d → 61d |
| P2.L7.F.LC.1110 | Ceramic Tile / L7 / Freezer, QC | 2026-07-23 → 2026-07-24 (+1d) | 2026-07-29 → 2026-07-30 (+1d) | 62d → 61d |
| P2.L7.F.LC.1120 | T-Grid / L7 / Freezer, QC | 2026-07-30 → 2026-07-31 (+1d) | 2026-08-05 → 2026-08-06 (+1d) | 62d → 61d |
| P2.L7.F.LC.1130 | Diffusers in T-Grid / L7 / Freezer, QC | 2026-08-06 → 2026-08-07 (+1d) | 2026-08-12 → 2026-08-13 (+1d) | 62d → 61d |
| P2.L7.F.LC.1140 | Lights & Devices / L7 / Freezer, QC | 2026-08-06 → 2026-08-07 (+1d) | 2026-08-12 → 2026-08-13 (+1d) | 62d → 61d |
| P2.L7.F.LC.1150 | Sprinkler Heads / L7 / Freezer, QC | 2026-08-06 → 2026-08-07 (+1d) | 2026-08-12 → 2026-08-13 (+1d) | 62d → 61d |
| P2.L7.F.LC.1160 | Trim Low Voltage / L7 / Freezer, QC | 2026-08-06 → 2026-08-07 (+1d) | 2026-08-12 → 2026-08-13 (+1d) | 62d → 61d |
| P2.L7.F.LC.1170 | Trim Fire Alarm / L7 / Freezer, QC | 2026-08-06 → 2026-08-07 (+1d) | 2026-08-12 → 2026-08-13 (+1d) | 62d → 61d |
| P2.L7.F.LC.1180 | OH Ceiling Signoff / L7 / Freezer, QC | 2026-08-13 → 2026-08-14 (+1d) | 2026-08-26 → 2026-08-27 (+1d) | 62d → 61d |
| P2.L7.F.LC.1200 | Drop Ceiling Tile / L7 / Freezer, QC | 2026-08-27 → 2026-08-28 (+1d) | 2026-09-02 → 2026-09-03 (+1d) | 62d → 61d |
| P2.L7.F.LC.5060 | Floor Prep - Epoxy Floors / L7 / Autoclave 7-3915 | 2026-08-27 → 2026-08-28 (+1d) | 2026-08-28 → 2026-08-31 (+3d) | 87d → 86d |
| P2.L7.F.LC.5070 | Flooring - Epoxy Floors / L7 / Autoclave 7-3915 | 2026-08-31 → 2026-09-01 (+1d) | 2026-08-31 → 2026-09-01 (+1d) | 87d → 86d |
| P2.L7.F.LC.1260 | Doors & Hardware / L7 / Freezer, QC | 2026-09-01 → 2026-09-02 (+1d) | 2026-09-08 → 2026-09-09 (+1d) | 87d → 86d |
| P2.L7.F.LC.5080 | Casework (After Flooring) / L7 / Freezer, QC | 2026-09-01 → 2026-09-02 (+1d) | 2026-09-01 → 2026-09-02 (+1d) | 88d → 87d |
| P2.L7.F.LC.1280 | Floor Prep / L7 / Freezer, QC | 2026-09-03 → 2026-09-04 (+1d) | 2026-09-10 → 2026-09-11 (+1d) | 62d → 61d |
| P2.L7.F.LC.1290 | Flooring / L7 / Freezer, QC | 2026-09-11 → 2026-09-14 (+3d) | 2026-09-17 → 2026-09-18 (+1d) | 62d → 61d |
| P2.L7.F.LC.1300 | Building Specialities / L7 / Freezer, QC | 2026-09-18 → 2026-09-21 (+3d) | 2026-09-24 → 2026-09-25 (+1d) | 62d → 61d |
| P2.L7.F.LC.1310 | Interior Building Signage / L7 / Freezer, QC | 2026-09-18 → 2026-09-21 (+3d) | 2026-09-24 → 2026-09-25 (+1d) | 62d → 61d |
| P2.L7.F.LC.1320 | Work Completion List - Finishes / L7 / Freezer, QC | 2026-09-25 → 2026-09-28 (+3d) | 2026-10-01 → 2026-10-02 (+1d) | 62d → 61d |
| P2.L7.F.LC.1330 | Remaining Equipment Post Flooring / L7 / Freezer, QC | 2026-10-02 → 2026-10-05 (+3d) | 2026-10-08 → 2026-10-09 (+1d) | 62d → 61d |
| P2.L7.F.LC.1340 | Remaining MEP Hook-Ups / L7 / Freezer, QC | 2026-10-09 → 2026-10-12 (+3d) | 2026-10-15 → 2026-10-16 (+1d) | 62d → 61d |
| P2.L7.F.LC.1350 | OFOI Furniture & Equipment / L7 / Freezer, QC | 2026-10-09 → 2026-10-12 (+3d) | 2026-10-15 → 2026-10-16 (+1d) | 72d → 71d |
| P2.L7.F.LC.1360 | Rough Clean / L7 / Freezer, QC | 2026-10-16 → 2026-10-19 (+3d) | 2026-10-22 → 2026-10-23 (+1d) | 62d → 61d |
| P2.L7.F.LC.1370 | Prepare Punchlist / L7 / Freezer, QC | 2026-10-23 → 2026-10-26 (+3d) | 2026-10-29 → 2026-10-30 (+1d) | 62d → 61d |
| P2.L7.F.LC.1380 | Correct Punchlist / L7 / Freezer, QC | 2026-10-30 → 2026-11-02 (+3d) | 2026-11-12 → 2026-11-13 (+1d) | 62d → 61d |
| P2.L7.F.LC.1390 | Final Clean / L7 / Freezer, QC | 2026-11-13 → 2026-11-16 (+3d) | 2026-11-19 → 2026-11-20 (+1d) | 62d → 61d |
| 2 | **Wet Lab - Z1 (11,243 sf) / Level 7** | 2026-04-28 → 2026-04-29 (+1d) | 2026-11-30 → 2026-12-01 (+1d) |  |
| P2.L7.F.LC.2190 | Casework (Before Flooring) / L7 / Wet Lab Z1 | 2026-04-28 → 2026-04-29 (+1d) | 2026-05-18 → 2026-05-19 (+1d) | 57d → 56d |
| P2.L7.F.LC.2220 | Plumbing Fixtures & Drinking Fountains / L7 / Wet Lab Z1 | 2026-05-19 → 2026-05-20 (+1d) | 2026-05-26 → 2026-05-27 (+1d) | 132d → 131d |
| P2.L7.F.LC.5190 | Interior Glazing / L7 / Wet Lab Z1 | 2026-05-19 → 2026-05-20 (+1d) | 2026-05-26 → 2026-05-27 (+1d) | 57d → 56d |
| P2.L7.F.LC.2000 | Paint - Walls / L7 / Wet Lab Z1 | 2026-05-27 → 2026-05-28 (+1d) | 2026-06-02 → 2026-06-03 (+1d) | 57d → 56d |
| P2.L7.F.LC.2400 | Fumehood Equipment Install / L7 / Wet Lab Z1 | 2026-06-02 → 2026-06-03 (+1d) | 2026-06-02 → 2026-06-03 (+1d) | 151d → 150d |
| P2.L7.F.LC.2010 | R/I - Ceiling Assemblies & Supports - Med Equip / L7 / Wet Lab Z1 | 2026-06-03 → 2026-06-04 (+1d) | 2026-06-09 → 2026-06-10 (+1d) | 57d → 56d |
| P2.L7.F.LC.2210 | Wall Protection / L7 / Wet Lab Z1 | 2026-06-03 → 2026-06-04 (+1d) | 2026-06-09 → 2026-06-10 (+1d) | 117d → 116d |
| P2.L7.F.LC.2410 | Fumehood Equipment MEP Connection / L7 / Wet Lab Z1 | 2026-06-03 → 2026-06-04 (+1d) | 2026-06-03 → 2026-06-04 (+1d) | 151d → 150d |
| P2.L7.F.LC.2020 | Framing - Hard Lid Ceilings / L7 / Wet Lab Z1 | 2026-06-10 → 2026-06-11 (+1d) | 2026-06-16 → 2026-06-17 (+1d) | 57d → 56d |
| P2.L7.F.LC.2230 | Trim T-Stats / L7 / Wet Lab Z1 | 2026-06-10 → 2026-06-11 (+1d) | 2026-06-16 → 2026-06-17 (+1d) | 117d → 116d |
| P2.L7.F.LC.2240 | Trim Electrical / L7 / Wet Lab Z1 | 2026-06-10 → 2026-06-11 (+1d) | 2026-06-16 → 2026-06-17 (+1d) | 117d → 116d |
| P2.L7.F.LC.2250 | Trim Telephone/ Data / L7 / Wet Lab Z1 | 2026-06-10 → 2026-06-11 (+1d) | 2026-06-16 → 2026-06-17 (+1d) | 117d → 116d |
| P2.L7.F.LC.2270 | Trim Med Gas / L7 / Wet Lab Z1 | 2026-06-10 → 2026-06-11 (+1d) | 2026-06-16 → 2026-06-17 (+1d) | 117d → 116d |
| P2.L7.F.LC.2030 | R/I - Lights & Devices - Hard Lids Ceilings / L7 / Wet Lab Z1 | 2026-06-17 → 2026-06-18 (+1d) | 2026-06-30 → 2026-07-01 (+1d) | 57d → 56d |
| P2.L7.F.LC.2040 | R/I - Diffusers - Hard Lid Ceilings / L7 / Wet Lab Z1 | 2026-06-17 → 2026-06-18 (+1d) | 2026-06-23 → 2026-06-24 (+1d) | 62d → 61d |
| P2.L7.F.LC.2050 | R/I - Sprinkler Heads - Hard Lid Ceilings / L7 / Wet Lab Z1 | 2026-06-17 → 2026-06-18 (+1d) | 2026-06-23 → 2026-06-24 (+1d) | 62d → 61d |
| P2.L7.F.LC.2060 | R/I - Fire Alarm - Hard Lid Ceilings / L7 / Wet Lab Z1 | 2026-06-17 → 2026-06-18 (+1d) | 2026-06-23 → 2026-06-24 (+1d) | 62d → 61d |
| P2.L7.F.LC.5120 | Equipment / L7 / Wet Lab Z1 | 2026-06-17 → 2026-06-18 (+1d) | 2026-06-30 → 2026-07-01 (+1d) | 107d → 106d |

| ID | Task | Start | Finish | Total float |
| --- | --- | --- | --- | --- |
| P2.L7.F.LC.2070 | OH Ceiling Inspection & Signoff - Hard Lid Ceilings / L7 / Wet Lab Z1 | 2026-07-01 → 2026-07-02 (+1d) | 2026-07-08 → 2026-07-09 (+1d) | 57d → 56d |
| P2.L7.F.LC.2080 | Hang-Tape-Finish _Hard Lid Ceilings / L7 / Wet Lab Z1 | 2026-07-09 → 2026-07-10 (+1d) | 2026-07-15 → 2026-07-16 (+1d) | 57d → 56d |
| P2.L7.F.LC.2090 | Paint Ceilings / L7 / Wet Lab Z1 | 2026-07-16 → 2026-07-17 (+1d) | 2026-07-22 → 2026-07-23 (+1d) | 57d → 56d |
| P2.L7.F.LC.2100 | Waterproof Ceramic Tile / L7 / Wet Lab Z1 | 2026-07-23 → 2026-07-24 (+1d) | 2026-07-29 → 2026-07-30 (+1d) | 57d → 56d |
| P2.L7.F.LC.2110 | Ceramic Tile / L7 / Wet Lab Z1 | 2026-07-30 → 2026-07-31 (+1d) | 2026-08-05 → 2026-08-06 (+1d) | 57d → 56d |
| P2.L7.F.LC.2120 | T-Grid / L7 / Wet Lab Z1 | 2026-08-06 → 2026-08-07 (+1d) | 2026-08-12 → 2026-08-13 (+1d) | 57d → 56d |
| P2.L7.F.LC.2130 | Diffusers in T-Grid / L7 / Wet Lab Z1 | 2026-08-13 → 2026-08-14 (+1d) | 2026-08-19 → 2026-08-20 (+1d) | 57d → 56d |
| P2.L7.F.LC.2140 | Lights & Devices / L7 / Wet Lab Z1 | 2026-08-13 → 2026-08-14 (+1d) | 2026-08-19 → 2026-08-20 (+1d) | 57d → 56d |
| P2.L7.F.LC.2150 | Sprinkler Heads / L7 / Wet Lab Z1 | 2026-08-13 → 2026-08-14 (+1d) | 2026-08-19 → 2026-08-20 (+1d) | 57d → 56d |
| P2.L7.F.LC.2160 | Trim Low Voltage / L7 / Wet Lab Z1 | 2026-08-13 → 2026-08-14 (+1d) | 2026-08-19 → 2026-08-20 (+1d) | 57d → 56d |
| P2.L7.F.LC.2170 | Trim Fire Alarm / L7 / Wet Lab Z1 | 2026-08-13 → 2026-08-14 (+1d) | 2026-08-19 → 2026-08-20 (+1d) | 57d → 56d |
| P2.L7.F.LC.5110 | Ceiling Service Panel / L7 / Wet Lab Z1 | 2026-08-13 → 2026-08-14 (+1d) | 2026-08-14 → 2026-08-17 (+3d) | 60d → 59d |
| P2.L7.F.LC.2180 | OH Ceiling Signoff / L7 / Wet Lab Z1 | 2026-08-20 → 2026-08-21 (+1d) | 2026-09-02 → 2026-09-03 (+1d) | 57d → 56d |
| P2.L7.F.LC.2200 | Drop Ceiling Tile / L7 / Wet Lab Z1 | 2026-09-03 → 2026-09-04 (+1d) | 2026-09-10 → 2026-09-11 (+1d) | 57d → 56d |
| P2.L7.F.LC.2280 | Floor Prep / L7 / Wet Lab Z1 | 2026-09-11 → 2026-09-14 (+3d) | 2026-09-17 → 2026-09-18 (+1d) | 57d → 56d |
| P2.L7.F.LC.2290 | Flooring / L7 / Wet Lab Z1 | 2026-09-18 → 2026-09-21 (+3d) | 2026-09-24 → 2026-09-25 (+1d) | 57d → 56d |
| P2.L7.F.LC.2260 | Doors & Hardware / L7 / Wet Lab Z1 | 2026-09-25 → 2026-09-28 (+3d) | 2026-10-01 → 2026-10-02 (+1d) | 70d → 69d |
| P2.L7.F.LC.2300 | Building Specialities / L7 / Wet Lab Z1 | 2026-09-25 → 2026-09-28 (+3d) | 2026-10-01 → 2026-10-02 (+1d) | 57d → 56d |
| P2.L7.F.LC.2310 | Interior Building Signage / L7 / Wet Lab Z1 | 2026-09-25 → 2026-09-28 (+3d) | 2026-10-01 → 2026-10-02 (+1d) | 57d → 56d |
| P2.L7.F.LC.5100 | Casework (After Flooring) / L7 / Wet Lab Z1 | 2026-09-25 → 2026-09-28 (+3d) | 2026-09-29 → 2026-09-30 (+1d) | 64d → 63d |
| P2.L7.F.LC.2320 | Work Completion List - Finishes / L7 / Wet Lab Z1 | 2026-10-02 → 2026-10-05 (+3d) | 2026-10-08 → 2026-10-09 (+1d) | 57d → 56d |
| P2.L7.F.LC.2330 | Remaining Equipment Post Flooring / L7 / Wet Lab Z1 | 2026-10-09 → 2026-10-12 (+3d) | 2026-10-15 → 2026-10-16 (+1d) | 57d → 56d |
| P2.L7.F.LC.2340 | Remaining MEP Hook-Ups / L7 / Wet Lab Z1 | 2026-10-16 → 2026-10-19 (+3d) | 2026-10-22 → 2026-10-23 (+1d) | 57d → 56d |
| P2.L7.F.LC.2350 | OFOI Furniture & Equipment / L7 / Wet Lab Z1 | 2026-10-16 → 2026-10-19 (+3d) | 2026-10-22 → 2026-10-23 (+1d) | 67d → 66d |
| P2.L7.F.LC.2360 | Rough Clean / L7 / Wet Lab Z1 | 2026-10-23 → 2026-10-26 (+3d) | 2026-10-29 → 2026-10-30 (+1d) | 57d → 56d |
| P2.L7.F.LC.2370 | Prepare Punchlist / L7 / Wet Lab Z1 | 2026-10-30 → 2026-11-02 (+3d) | 2026-11-05 → 2026-11-06 (+1d) | 57d → 56d |
| P2.L7.F.LC.2380 | Correct Punchlist / L7 / Wet Lab Z1 | 2026-11-06 → 2026-11-09 (+3d) | 2026-11-19 → 2026-11-20 (+1d) | 57d → 56d |
| P2.L7.F.LC.2390 | Final Clean / L7 / Wet Lab Z1 | 2026-11-20 → 2026-11-23 (+3d) | 2026-11-30 → 2026-12-01 (+1d) | 57d → 56d |
| 3 | **Wet Lab - Z2 (10,831 sf) / Level 7** | 2026-04-28 → 2026-04-29 (+1d) | 2026-12-01 → 2026-12-02 (+1d) |  |
| P2.L7.F.LC.3190 | Casework (Before Flooring) / L7 / Wet Lab Z2 | 2026-04-28 → 2026-04-29 (+1d) | 2026-05-14 → 2026-05-15 (+1d) | 56d → 55d |
| P2.L7.F.LC.3220 | Plumbing Fixtures & Drinking Fountains / L7 / Wet Lab Z2 | 2026-05-15 → 2026-05-18 (+3d) | 2026-05-21 → 2026-05-22 (+1d) | 134d → 133d |
| P2.L7.F.LC.5150 | Equipment / L7 / Wet Lab Z2 | 2026-05-15 → 2026-05-18 (+3d) | 2026-05-29 → 2026-06-01 (+3d) | 149d → 148d |
| P2.L7.F.LC.5200 | Interior Glazing / L7 / Wet Lab Z2 | 2026-05-15 → 2026-05-18 (+3d) | 2026-05-19 → 2026-05-20 (+1d) | 56d → 55d |
| P2.L7.F.LC.3000 | Paint - Walls / L7 / Wet Lab Z2 | 2026-05-20 → 2026-05-21 (+1d) | 2026-05-27 → 2026-05-28 (+1d) | 56d → 55d |
| P2.L7.F.LC.3010 | R/I - Ceiling Assemblies & Supports - Med Equip / L7 / Wet Lab Z2 | 2026-05-28 → 2026-05-29 (+1d) | 2026-06-03 → 2026-06-04 (+1d) | 56d → 55d |
| P2.L7.F.LC.3400 | Fumehood Equipment Install / L7 / Wet Lab Z2 | 2026-06-02 → 2026-06-03 (+1d) | 2026-06-02 → 2026-06-03 (+1d) | 156d → 155d |
| P2.L7.F.LC.3410 | Fumehood Equipment MEP Connection / L7 / Wet Lab Z2 | 2026-06-03 → 2026-06-04 (+1d) | 2026-06-03 → 2026-06-04 (+1d) | 156d → 155d |
| P2.L7.F.LC.3020 | Framing - Hard Lid Ceilings / L7 / Wet Lab Z2 | 2026-06-04 → 2026-06-05 (+1d) | 2026-06-10 → 2026-06-11 (+1d) | 56d → 55d |
| P2.L7.F.LC.3030 | R/I - Lights & Devices - Hard Lids Ceilings / L7 / Wet Lab Z2 | 2026-06-11 → 2026-06-12 (+1d) | 2026-06-24 → 2026-06-25 (+1d) | 56d → 55d |
| P2.L7.F.LC.3040 | R/I - Diffusers - Hard Lid Ceilings / L7 / Wet Lab Z2 | 2026-06-11 → 2026-06-12 (+1d) | 2026-06-17 → 2026-06-18 (+1d) | 61d → 60d |
| P2.L7.F.LC.3050 | R/I - Sprinkler Heads - Hard Lid Ceilings / L7 / Wet Lab Z2 | 2026-06-11 → 2026-06-12 (+1d) | 2026-06-17 → 2026-06-18 (+1d) | 61d → 60d |
| P2.L7.F.LC.3060 | R/I - Fire Alarm - Hard Lid Ceilings / L7 / Wet Lab Z2 | 2026-06-11 → 2026-06-12 (+1d) | 2026-06-17 → 2026-06-18 (+1d) | 61d → 60d |
| P2.L7.F.LC.3070 | OH Ceiling Inspection & Signoff - Hard Lid Ceilings / L7 / Wet Lab Z2 | 2026-06-25 → 2026-06-26 (+1d) | 2026-07-01 → 2026-07-02 (+1d) | 56d → 55d |
| P2.L7.F.LC.3080 | Hang-Tape-Finish _Hard Lid Ceilings / L7 / Wet Lab Z2 | 2026-07-02 → 2026-07-06 (+4d) | 2026-07-09 → 2026-07-10 (+1d) | 56d → 55d |
| P2.L7.F.LC.3090 | Paint Ceilings / L7 / Wet Lab Z2 | 2026-07-10 → 2026-07-13 (+3d) | 2026-07-16 → 2026-07-17 (+1d) | 56d → 55d |
| P2.L7.F.LC.3100 | Waterproof Ceramic Tile / L7 / Wet Lab Z2 | 2026-07-17 → 2026-07-20 (+3d) | 2026-07-23 → 2026-07-24 (+1d) | 56d → 55d |
| P2.L7.F.LC.3110 | Ceramic Tile / L7 / Wet Lab Z2 | 2026-07-24 → 2026-07-27 (+3d) | 2026-07-30 → 2026-07-31 (+1d) | 56d → 55d |
| P2.L7.F.LC.3120 | T-Grid / L7 / Wet Lab Z2 | 2026-07-31 → 2026-08-03 (+3d) | 2026-08-06 → 2026-08-07 (+1d) | 56d → 55d |
| P2.L7.F.LC.3130 | Diffusers in T-Grid / L7 / Wet Lab Z2 | 2026-08-07 → 2026-08-10 (+3d) | 2026-08-13 → 2026-08-14 (+1d) | 56d → 55d |
| P2.L7.F.LC.3140 | Lights & Devices / L7 / Wet Lab Z2 | 2026-08-07 → 2026-08-10 (+3d) | 2026-08-13 → 2026-08-14 (+1d) | 56d → 55d |
| P2.L7.F.LC.3150 | Sprinkler Heads / L7 / Wet Lab Z2 | 2026-08-07 → 2026-08-10 (+3d) | 2026-08-13 → 2026-08-14 (+1d) | 56d → 55d |
| P2.L7.F.LC.3160 | Trim Low Voltage / L7 / Wet Lab Z2 | 2026-08-07 → 2026-08-10 (+3d) | 2026-08-13 → 2026-08-14 (+1d) | 56d → 55d |
| P2.L7.F.LC.3170 | Trim Fire Alarm / L7 / Wet Lab Z2 | 2026-08-07 → 2026-08-10 (+3d) | 2026-08-13 → 2026-08-14 (+1d) | 56d → 55d |
| P2.L7.F.LC.5140 | Ceiling Service Panel / L7 / Wet Lab Z2 | 2026-08-07 → 2026-08-10 (+3d) | 2026-08-10 → 2026-08-11 (+1d) | 74d → 73d |
| P2.L7.F.LC.3180 | OH Ceiling Signoff / L7 / Wet Lab Z2 | 2026-08-14 → 2026-08-17 (+3d) | 2026-08-27 → 2026-08-28 (+1d) | 56d → 55d |
| P2.L7.F.LC.3200 | Drop Ceiling Tile / L7 / Wet Lab Z2 | 2026-08-28 → 2026-08-31 (+3d) | 2026-09-03 → 2026-09-04 (+1d) | 61d → 60d |
| P2.L7.F.LC.3210 | Wall Protection / L7 / Wet Lab Z2 | 2026-08-28 → 2026-08-31 (+3d) | 2026-09-03 → 2026-09-04 (+1d) | 56d → 55d |
| P2.L7.F.LC.3230 | Trim T-Stats / L7 / Wet Lab Z2 | 2026-09-04 → 2026-09-08 (+4d) | 2026-09-11 → 2026-09-14 (+3d) | 56d → 55d |
| P2.L7.F.LC.3240 | Trim Electrical / L7 / Wet Lab Z2 | 2026-09-04 → 2026-09-08 (+4d) | 2026-09-11 → 2026-09-14 (+3d) | 56d → 55d |
| P2.L7.F.LC.3250 | Trim Telephone/ Data / L7 / Wet Lab Z2 | 2026-09-04 → 2026-09-08 (+4d) | 2026-09-11 → 2026-09-14 (+3d) | 56d → 55d |
| P2.L7.F.LC.3270 | Trim Med Gas / L7 / Wet Lab Z2 | 2026-09-04 → 2026-09-08 (+4d) | 2026-09-11 → 2026-09-14 (+3d) | 56d → 55d |
| P2.L7.F.LC.3280 | Floor Prep / L7 / Wet Lab Z2 | 2026-09-14 → 2026-09-15 (+1d) | 2026-09-18 → 2026-09-21 (+3d) | 56d → 55d |
| P2.L7.F.LC.3290 | Flooring / L7 / Wet Lab Z2 | 2026-09-21 → 2026-09-22 (+1d) | 2026-09-25 → 2026-09-28 (+3d) | 56d → 55d |
| P2.L7.F.LC.3260 | Doors & Hardware / L7 / Wet Lab Z2 | 2026-09-28 → 2026-09-29 (+1d) | 2026-10-02 → 2026-10-05 (+3d) | 69d → 68d |
| P2.L7.F.LC.3300 | Building Specialities / L7 / Wet Lab Z2 | 2026-09-28 → 2026-09-29 (+1d) | 2026-10-02 → 2026-10-05 (+3d) | 56d → 55d |
| P2.L7.F.LC.3310 | Interior Building Signage / L7 / Wet Lab Z2 | 2026-09-28 → 2026-09-29 (+1d) | 2026-10-02 → 2026-10-05 (+3d) | 56d → 55d |
| P2.L7.F.LC.5130 | Casework (After Flooring) / L7 / Wet Lab Z2 | 2026-09-28 → 2026-09-29 (+1d) | 2026-10-01 → 2026-10-02 (+1d) | 62d → 61d |
| P2.L7.F.LC.3320 | Work Completion List - Finishes / L7 / Wet Lab Z2 | 2026-10-05 → 2026-10-06 (+1d) | 2026-10-09 → 2026-10-12 (+3d) | 56d → 55d |
| P2.L7.F.LC.3330 | Remaining Equipment Post Flooring / L7 / Wet Lab Z2 | 2026-10-12 → 2026-10-13 (+1d) | 2026-10-16 → 2026-10-19 (+3d) | 56d → 55d |
| P2.L7.F.LC.3340 | Remaining MEP Hook-Ups / L7 / Wet Lab Z2 | 2026-10-19 → 2026-10-20 (+1d) | 2026-10-23 → 2026-10-26 (+3d) | 56d → 55d |

| ID | Task | Start | Finish | Complete | Total float |
| --- | --- | --- | --- | --- | --- |
| P2.L7.F.LC.3350 | OFOI Furniture & Equipment / L7 / Wet Lab Z2 | 2026-10-19 → 2026-10-20 (+1d) | 2026-10-23 → 2026-10-26 (+3d) |  | 66d → 65d |
| P2.L7.F.LC.3360 | Rough Clean / L7 / Wet Lab Z2 | 2026-10-26 → 2026-10-27 (+1d) | 2026-10-30 → 2026-11-02 (+3d) |  | 56d → 55d |
| P2.L7.F.LC.3370 | Prepare Punchlist / L7 / Wet Lab Z2 | 2026-11-02 → 2026-11-03 (+1d) | 2026-11-06 → 2026-11-09 (+3d) |  | 56d → 55d |
| P2.L7.F.LC.3380 | Correct Punchlist / L7 / Wet Lab Z2 | 2026-11-09 → 2026-11-10 (+1d) | 2026-11-20 → 2026-11-23 (+3d) |  | 56d → 55d |
| P2.L7.F.LC.3390 | Final Clean / L7 / Wet Lab Z2 | 2026-11-23 → 2026-11-24 (+1d) | 2026-12-01 → 2026-12-02 (+1d) |  | 56d → 55d |
| 4 | **Wet Lab - Z3 (10,271 sf) / Level 7** | 2026-04-01 → 2026-04-29 (+28d) | 2026-12-09 → 2026-12-10 (+1d) |  |  |
| P2.L7.F.LC.4190 | Casework (Before Flooring) / L7 / Wet Lab Z3 | 2026-04-28 → 2026-04-29 (+1d) | 2026-05-13 → 2026-05-14 (+1d) |  | 50d → 49d |
| P2.L7.F.LC.5180 | Equipment (Before Flooring) / L7 / Wet Lab Z3 | 2026-04-28 → 2026-04-29 (+1d) | 2026-04-28 → 2026-04-29 (+1d) |  | 151d → 150d |
| P2.L7.F.LC.5220 | Cleanroom - Hang - Finish Walls and Cielings / L7 / Wet Lab Z3 | 2026-04-01 → 2026-05-04 (+33d) | 2026-04-21 → 2026-05-22 (+31d) |  | 149d → 126d |
| P2.L7.F.LC.4220 | Plumbing Fixtures & Drinking Fountains / L7 / Wet Lab Z3 | 2026-05-14 → 2026-05-15 (+1d) | 2026-05-20 → 2026-05-21 (+1d) |  | 135d → 134d |
| P2.L7.F.LC.5210 | Interior Glazing / L7 / Wet Lab Z3 | 2026-05-14 → 2026-05-15 (+1d) | 2026-05-20 → 2026-05-21 (+1d) |  | 50d → 49d |
| P2.L7.F.LC.4000 | Paint - Walls / L7 / Wet Lab Z3 | 2026-05-21 → 2026-05-22 (+1d) | 2026-05-28 → 2026-05-29 (+1d) |  | 50d → 49d |
| P2.L7.F.LC.5230 | Cleanroom - Install Doors and Hardware / L7 / Wet Lab Z3 | 2026-04-22 → 2026-05-26 (+34d) | 2026-04-28 → 2026-06-01 (+34d) |  | 149d → 126d |
| P2.L7.F.LC.4010 | R/I - Ceiling Assemblies & Supports - Med Equip / L7 / Wet Lab Z3 | 2026-05-29 → 2026-06-01 (+3d) | 2026-06-04 → 2026-06-05 (+1d) |  | 50d → 49d |
| P2.L7.F.LC.5240 | Cleanroom - Install Windows / L7 / Wet Lab Z3 | 2026-04-29 → 2026-06-02 (+34d) | 2026-04-30 → 2026-06-03 (+34d) |  | 149d → 126d |
| P2.L7.F.LC.4020 | Framing - Hard Lid Ceilings / L7 / Wet Lab Z3 | 2026-06-05 → 2026-06-08 (+3d) | 2026-06-11 → 2026-06-12 (+1d) |  | 50d → 49d |
| P2.L7.F.LC.4030 | R/I - Lights & Devices - Hard Lids Ceilings / L7 / Wet Lab Z3 | 2026-06-12 → 2026-06-15 (+3d) | 2026-06-25 → 2026-06-26 (+1d) |  | 50d → 49d |
| P2.L7.F.LC.4040 | R/I - Diffusers - Hard Lid Ceilings / L7 / Wet Lab Z3 | 2026-06-12 → 2026-06-15 (+3d) | 2026-06-18 → 2026-06-19 (+1d) |  | 55d → 54d |
| P2.L7.F.LC.4050 | R/I - Sprinkler Heads - Hard Lid Ceilings / L7 / Wet Lab Z3 | 2026-06-12 → 2026-06-15 (+3d) | 2026-06-18 → 2026-06-19 (+1d) |  | 55d → 54d |
| P2.L7.F.LC.4060 | R/I - Fire Alarm - Hard Lid Ceilings / L7 / Wet Lab Z3 | 2026-06-12 → 2026-06-15 (+3d) | 2026-06-18 → 2026-06-19 (+1d) |  | 55d → 54d |
| P2.L7.F.LC.4070 | OH Ceiling Inspection & Signoff - Hard Lid Ceilings / L7 / Wet Lab Z3 | 2026-06-26 → 2026-06-29 (+3d) | 2026-07-02 → 2026-07-06 (+4d) |  | 50d → 49d |
| P2.L7.F.LC.4080 | Hang-Tape-Finish _Hard Lid Ceilings / L7 / Wet Lab Z3 | 2026-07-06 → 2026-07-07 (+1d) | 2026-07-10 → 2026-07-13 (+3d) |  | 50d → 49d |
| P2.L7.F.LC.4090 | Paint Ceilings / L7 / Wet Lab Z3 | 2026-07-13 → 2026-07-14 (+1d) | 2026-07-17 → 2026-07-20 (+3d) |  | 50d → 49d |
| P2.L7.F.LC.4100 | Waterproof Ceramic Tile / L7 / Wet Lab Z3 | 2026-07-20 → 2026-07-21 (+1d) | 2026-07-24 → 2026-07-27 (+3d) |  | 50d → 49d |
| P2.L7.F.LC.4110 | Ceramic Tile / L7 / Wet Lab Z3 | 2026-07-27 → 2026-07-28 (+1d) | 2026-07-31 → 2026-08-03 (+3d) |  | 50d → 49d |
| P2.L7.F.LC.4120 | T-Grid / L7 / Wet Lab Z3 | 2026-08-03 → 2026-08-04 (+1d) | 2026-08-07 → 2026-08-10 (+3d) |  | 50d → 49d |
| P2.L7.F.LC.4130 | Diffusers in T-Grid / L7 / Wet Lab Z3 | 2026-08-10 → 2026-08-11 (+1d) | 2026-08-14 → 2026-08-17 (+3d) |  | 55d → 54d |
| P2.L7.F.LC.4140 | Lights & Devices / L7 / Wet Lab Z3 | 2026-08-10 → 2026-08-11 (+1d) | 2026-08-21 → 2026-08-24 (+3d) |  | 50d → 49d |
| P2.L7.F.LC.4150 | Sprinkler Heads / L7 / Wet Lab Z3 | 2026-08-10 → 2026-08-11 (+1d) | 2026-08-14 → 2026-08-17 (+3d) |  | 55d → 54d |
| P2.L7.F.LC.4160 | Trim Low Voltage / L7 / Wet Lab Z3 | 2026-08-10 → 2026-08-11 (+1d) | 2026-08-14 → 2026-08-17 (+3d) |  | 55d → 54d |
| P2.L7.F.LC.4170 | Trim Fire Alarm / L7 / Wet Lab Z3 | 2026-08-10 → 2026-08-11 (+1d) | 2026-08-14 → 2026-08-17 (+3d) |  | 55d → 54d |
| P2.L7.F.LC.5170 | Ceiling Service Panel / L7 / Wet Lab Z3 | 2026-08-10 → 2026-08-11 (+1d) | 2026-08-11 → 2026-08-12 (+1d) |  | 73d → 72d |
| P2.L7.F.LC.4180 | OH Ceiling Signoff / L7 / Wet Lab Z3 | 2026-08-24 → 2026-08-25 (+1d) | 2026-09-04 → 2026-09-08 (+4d) |  | 50d → 49d |
| P2.L7.F.LC.4200 | Drop Ceiling Tile / L7 / Wet Lab Z3 | 2026-09-08 → 2026-09-09 (+1d) | 2026-09-14 → 2026-09-15 (+1d) |  | 55d → 54d |
| P2.L7.F.LC.4210 | Wall Protection / L7 / Wet Lab Z3 | 2026-09-08 → 2026-09-09 (+1d) | 2026-09-14 → 2026-09-15 (+1d) |  | 50d → 49d |
| P2.L7.F.LC.4230 | Trim T-Stats / L7 / Wet Lab Z3 | 2026-09-15 → 2026-09-16 (+1d) | 2026-09-21 → 2026-09-22 (+1d) |  | 50d → 49d |
| P2.L7.F.LC.4240 | Trim Electrical / L7 / Wet Lab Z3 | 2026-09-15 → 2026-09-16 (+1d) | 2026-09-21 → 2026-09-22 (+1d) |  | 50d → 49d |
| P2.L7.F.LC.4250 | Trim Telephone/ Data / L7 / Wet Lab Z3 | 2026-09-15 → 2026-09-16 (+1d) | 2026-09-21 → 2026-09-22 (+1d) |  | 50d → 49d |
| P2.L7.F.LC.4270 | Trim Med Gas / L7 / Wet Lab Z3 | 2026-09-15 → 2026-09-16 (+1d) | 2026-09-21 → 2026-09-22 (+1d) |  | 50d → 49d |
| P2.L7.F.LC.4280 | Floor Prep / L7 / Wet Lab Z3 | 2026-09-22 → 2026-09-23 (+1d) | 2026-09-28 → 2026-09-29 (+1d) |  | 50d → 49d |
| P2.L7.F.LC.4290 | Flooring / L7 / Wet Lab Z3 | 2026-09-29 → 2026-09-30 (+1d) | 2026-10-05 → 2026-10-06 (+1d) |  | 50d → 49d |
| P2.L7.F.LC.4260 | Doors & Hardware / L7 / Wet Lab Z3 | 2026-10-06 → 2026-10-07 (+1d) | 2026-10-12 → 2026-10-13 (+1d) |  | 63d → 62d |
| P2.L7.F.LC.4300 | Building Specialities / L7 / Wet Lab Z3 | 2026-10-06 → 2026-10-07 (+1d) | 2026-10-12 → 2026-10-13 (+1d) |  | 50d → 49d |
| P2.L7.F.LC.4310 | Interior Building Signage / L7 / Wet Lab Z3 | 2026-10-06 → 2026-10-07 (+1d) | 2026-10-12 → 2026-10-13 (+1d) |  | 50d → 49d |
| P2.L7.F.LC.5160 | Casework (After Flooring) / L7 / Wet Lab Z3 / L7 / Wet Lab Z3 | 2026-10-06 → 2026-10-07 (+1d) | 2026-10-08 → 2026-10-09 (+1d) |  | 57d → 56d |
| P2.L7.F.LC.4320 | Work Completion List - Finishes / L7 / Wet Lab Z3 | 2026-10-13 → 2026-10-14 (+1d) | 2026-10-19 → 2026-10-20 (+1d) |  | 50d → 49d |
| P2.L7.F.LC.4330 | Remaining Equipment Post Flooring / L7 / Wet Lab Z3 | 2026-10-20 → 2026-10-21 (+1d) | 2026-10-26 → 2026-10-27 (+1d) |  | 50d → 49d |
| P2.L7.F.LC.4340 | Remaining MEP Hook-Ups / L7 / Wet Lab Z3 | 2026-10-27 → 2026-10-28 (+1d) | 2026-11-02 → 2026-11-03 (+1d) |  | 50d → 49d |
| P2.L7.F.LC.4350 | OFOI Furniture & Equipment / L7 / Wet Lab Z3 | 2026-10-27 → 2026-10-28 (+1d) | 2026-11-02 → 2026-11-03 (+1d) |  | 60d → 59d |
| P2.L7.F.LC.4360 | Rough Clean / L7 / Wet Lab Z3 | 2026-11-03 → 2026-11-04 (+1d) | 2026-11-09 → 2026-11-10 (+1d) |  | 50d → 49d |
| P2.L7.F.LC.4370 | Prepare Punchlist / L7 / Wet Lab Z3 | 2026-11-10 → 2026-11-11 (+1d) | 2026-11-16 → 2026-11-17 (+1d) |  | 50d → 49d |
| P2.L7.F.LC.4380 | Correct Punchlist / L7 / Wet Lab Z3 | 2026-11-17 → 2026-11-18 (+1d) | 2026-12-02 → 2026-12-03 (+1d) |  | 50d → 49d |
| P2.L7.F.LC.4390 | Final Clean / L7 / Wet Lab Z3 | 2026-12-03 → 2026-12-04 (+1d) | 2026-12-09 → 2026-12-10 (+1d) |  | 50d → 49d |
| 5 | **Cold Rooms - 7-3942A, 7-3935A, 7-2949, 7-2905A, & 7-2855A** | 2026-03-31 → 2026-04-01 (+1d) | 2026-09-10 → 2026-09-11 (+1d) |  |  |
| P2.L7.F.LC.5000 | Cold Room Walls, Ceilings & Floors Build-Out / L7 / 7-3942A, 7-3935A, 7-2949, 7-2905A, & 7-2855A | 2026-03-31 → 2026-04-01 (+1d) | 2026-04-27 → 2026-04-28 (+1d) |  | 95d → 94d |
| P2.L7.F.LC.5010 | Cold Room Set-Equipment / L7 / 7-3942A, 7-3935A, 7-2949, 7-2905A, & 7-2855A | 2026-04-28 → 2026-04-29 (+1d) | 2026-05-04 → 2026-05-05 (+1d) |  | 95d → 94d |
| P2.L7.F.LC.5020 | Braze Lines, Pressure Test, Insulate / L7 / 7-3942A, 7-3935A, 7-2949, 7-2905A, & 7-2855A | 2026-05-05 → 2026-05-06 (+1d) | 2026-05-11 → 2026-05-12 (+1d) |  | 95d → 94d |
| P2.L7.F.LC.5030 | Final Mechanical/Plumbing Tie-In / L7 / 7-3942A, 7-3935A, 7-2949, 7-2905A, & 7-2855A | 2026-05-12 → 2026-05-13 (+1d) | 2026-05-18 → 2026-05-19 (+1d) |  | 95d → 94d |
| P2.L7.F.LC.5040 | Controls, Lights, LV, and Final Power / L7 / 7-3942A, 7-3935A, 7-2949, 7-2905A, & 7-2855A | 2026-05-19 → 2026-05-20 (+1d) | 2026-05-26 → 2026-05-27 (+1d) |  | 95d → 94d |
| P2.L7.F.LC.5050 | Start-up / L7 / 7-3942A, 7-3935A, 7-2949, 7-2905A, & 7-2855A | 2026-09-03 → 2026-09-04 (+1d) | 2026-09-10 → 2026-09-11 (+1d) |  | 25d → 24d |
| 2 | **MECHANICAL TOWERS / LEVEL 7** |  | 2026-04-14 → 2026-05-14 (+30d) |  |  |
| 4 | **South Mechanical Tower / Rough In & Finish / Level 7** |  | 2026-04-14 → 2026-05-14 (+30d) |  |  |
| P2.L7.SMT.1120 | BAS - Equip Tie In / L7 - S. Mech Tower | 2025-12-01 A | 2025-12-05 A | 0% → 100% | 104d → none |
| FRG.P2.L7.SMT.1050 | AHU Piping Install / L7 - S. Mech Tower - FRAGNET | 2025-12-30 → 2026-01-30 (+31d) | 2026-01-27 → 2026-02-26 (+30d) |  | 24d → 2d |
| P2.L7.SMT.1200 | Flooring Prep - Epoxy Floors / L7 - S. Mech Tower | 2026-02-02 → 2026-02-23 (+21d) | 2026-02-04 → 2026-02-25 (+21d) |  | 34d → 19d |
| P2.L7.SMT.1270 | Flooring - Epoxy Floors / L7 - S. Mech Tower | 2026-02-05 → 2026-02-26 (+21d) | 2026-02-06 → 2026-02-27 (+21d) |  | 34d → 19d |
| P2.L7.SMT.1110 | HVAC Piping - Equip Tie In (Chilled Water) / L7 - S. Mech Tower | 2026-01-28 → 2026-02-27 (+30d) | 2026-02-24 → 2026-03-26 (+30d) |  | 24d → 2d |
| P2.L7.SMT.1090 | Panelboards, Interconnect Wiring, and Remaining Room Buildout of All Elec/FA Systems / L7 - S. Mech Tower | 2026-02-09 → 2026-03-02 (+21d) | 2026-02-20 → 2026-03-13 (+21d) |  | 34d → 19d |
| P2.L7.SMT.1140 | Pull Wire - In From Distribution Panels / Out to Branch Circuits / L7 - S. Mech Tower | 2026-02-23 → 2026-03-16 (+21d) | 2026-02-27 → 2026-03-20 (+21d) |  | 34d → 19d |
| P2.L7.SMT.1160 | Electrical Tie in to Equipment / L7 - S. Mech Tower | 2026-03-02 → 2026-03-23 (+21d) | 2026-03-06 → 2026-03-27 (+21d) |  | 51d → 36d |

| ID | Task | Start | Finish | Complete | Total float |
| --- | --- | --- | --- | --- | --- |
| P2.L7.SMT.1170 | Test & Terminate / L7 - S. Mech Tower | 2026-03-02 → 2026-03-23 (+21d) | 2026-03-06 → 2026-03-27 (+21d) |  | 34d → 19d |
| P2.L7.SMT.1260 | HVAC Piping - Equip Tie In (Reheat) / L7 - S. Mech Tower | 2026-02-25 → 2026-03-27 (+30d) | 2026-03-24 → 2026-04-23 (+30d) |  | 24d → 2d |
| P2.L7.SMT.1180 | Paint - Finish Coat / L7 - S. Mech Tower | 2026-03-09 → 2026-03-30 (+21d) | 2026-03-10 → 2026-03-31 (+21d) |  | 34d → 19d |
| P2.L7.SMT.1190 | Trim All MEPF Finishes / L7 - S. Mech Tower | 2026-03-11 → 2026-04-01 (+21d) | 2026-03-12 → 2026-04-02 (+21d) |  | 35d → 20d |
| P2.L7.SMT.1340 | Wall Protection / L7 - S. Mech Tower | 2026-03-11 → 2026-04-01 (+21d) | 2026-03-17 → 2026-04-07 (+21d) |  | 34d → 19d |
| P2.L7.SMT.1210 | Doors & Hardware / L7 - S. Mech Tower | 2026-03-13 → 2026-04-03 (+21d) | 2026-03-16 → 2026-04-06 (+21d) |  | 35d → 20d |
| P2.L7.SMT.1150 | Insulate HVAC / Plumbing Pipe / L7 - S. Mech Tower | 2026-03-25 → 2026-04-24 (+30d) | 2026-03-31 → 2026-04-30 (+30d) |  | 24d → 2d |
| P2.L7.SMT.1220 | Trades Inspect & Verify R/I Work Completed to Specs / L7 - S. Mech Tower | 2026-04-01 → 2026-05-01 (+30d) | 2026-04-07 → 2026-05-07 (+30d) |  | 24d → 2d |
| P2.L7.SMT.1240 | Energize Elec Panels - Lock Doors and Limit Access / L7 - S. Mech Tower | 2026-04-08 → 2026-05-08 (+30d) | 2026-04-14 → 2026-05-14 (+30d) |  | 24d → 2d |
| P2.L7.SMT.1230 | HVAC System Ready for Start Up / L7 - S. Mech Tower | 2026-04-14 → 2026-05-14 (+30d) | 2026-04-14 → 2026-05-14 (+30d) |  | 24d → 2d |
| 8 | **East Mechanical Tower / Rough In & Finish / Level 7** |  | 2026-03-24 → 2026-04-23 (+30d) |  |  |
| P2.L7.EMT.1080 | Set & Connect - Elect Panels and Equipment / L7 - E. Mech Tower | 2025-12-01 → 2025-11-15 A (-16d) | 2025-12-05 → 2025-11-17 A (-18d) | 0% → 100% | 72d → none |
| P2.L7.EMT.1200 | Flooring Prep - Epoxy Floors / L7 - E. Mech Tower | 2026-01-06 → 2026-02-05 (+30d) | 2026-01-08 → 2026-02-09 (+32d) |  | 53d → 31d |
| P2.L7.EMT.1250 | Flooring - Epoxy Floors / L7 - E. Mech Tower | 2026-01-09 → 2026-02-10 (+32d) | 2026-01-12 → 2026-02-11 (+30d) |  | 53d → 31d |
| P2.L7.EMT.1090 | Panelboards, Interconnect Wiring, and Remaining Room Buildout of All Elec/FA Systems / L7 - E. Mech Tower | 2026-01-13 → 2026-02-12 (+30d) | 2026-01-26 → 2026-02-25 (+30d) |  | 53d → 31d |
| P2.L7.EMT.1110 | HVAC Piping - Equip Tie In / L7 - E. Mech Tower | 2026-01-28 → 2026-02-20 (+23d) | 2026-02-24 → 2026-03-19 (+23d) |  | 44d → 27d |
| P2.L7.EMT.1140 | Pull Wire - In From Distribution Panels / Out to Branch Circuits / L7 - E. Mech Tower | 2026-01-27 → 2026-02-26 (+30d) | 2026-02-02 → 2026-03-04 (+30d) |  | 53d → 31d |
| P2.L7.EMT.1160 | Electrical Tie in to Equipment / L7 - E. Mech Tower | 2026-02-03 → 2026-03-05 (+30d) | 2026-02-09 → 2026-03-11 (+30d) |  | 70d → 48d |
| P2.L7.EMT.1170 | Test & Terminate / L7 - E. Mech Tower | 2026-02-03 → 2026-03-05 (+30d) | 2026-02-09 → 2026-03-11 (+30d) |  | 53d → 31d |
| P2.L7.EMT.1180 | Paint - Finish Coat / L7 - E. Mech Tower | 2026-02-10 → 2026-03-12 (+30d) | 2026-02-11 → 2026-03-13 (+30d) |  | 53d → 31d |
| P2.L7.EMT.1190 | Trim All MEPF Finishes / L7 - E. Mech Tower | 2026-02-12 → 2026-03-16 (+32d) | 2026-02-13 → 2026-03-17 (+32d) |  | 54d → 32d |
| P2.L7.EMT.1210 | Doors & Hardware / L7 - E. Mech Tower | 2026-02-16 → 2026-03-18 (+30d) | 2026-02-17 → 2026-03-19 (+30d) |  | 54d → 32d |
| FRG.P2.L7.EMT.1050 | AHU Piping Install / L7 - E. Mech Tower - FRAGNET | 2026-02-18 → 2026-03-20 (+30d) | 2026-03-17 → 2026-04-16 (+30d) |  | 39d → 17d |
| P2.L7.EMT.1150 | Insulate HVAC / Plumbing Pipe / L7 - E. Mech Tower | 2026-02-25 → 2026-03-20 (+23d) | 2026-03-03 → 2026-03-26 (+23d) |  | 44d → 27d |
| P2.L7.EMT.1340 | Wall Protection / L7 - E. Mech Tower | 2026-02-19 → 2026-03-23 (+32d) | 2026-02-25 → 2026-03-27 (+30d) |  | 48d → 26d |
| P2.L7.EMT.1220 | Trades Inspect & Verify R/I Work Completed to Specs / L7 - E. Mech Tower | 2026-03-04 → 2026-03-30 (+26d) | 2026-03-10 → 2026-04-03 (+24d) |  | 44d → 26d |
| P2.L7.EMT.1240 | Energize Elec Panels - Lock Doors and Limit Access / L7 - E. Mech Tower | 2026-03-18 → 2026-04-17 (+30d) | 2026-03-24 → 2026-04-23 (+30d) |  | 39d → 17d |
| P2.L7.EMT.1230 | HVAC System Ready for Start Up / L7 - E. Mech Tower | 2026-03-24 → 2026-04-23 (+30d) | 2026-03-24 → 2026-04-23 (+30d) |  | 39d → 17d |
| L8 | **L8 / BUILDOUT** |  | 2026-12-29 → 2027-01-15 (+17d) |  |  |
| L8 | **CORE & SUPPORT SPACES / LEVEL 8** |  | 2026-12-29 → 2027-01-15 (+17d) |  |  |
| 2 | **ROUGH IN - Core & Support Spaces / Level 8** |  | 2026-05-14 → 2026-06-16 (+33d) |  |  |
| Z112 | **South / Level 8** |  | 2026-02-25 → 2026-03-27 (+30d) |  |  |
| P2.L8.S.1180 | OH - Plumbing Piping / L8 / South |  | 2025-12-12 → 2026-01-15 (+34d) |  | 67d → 45d |
| P2.L8.S.1230 | OH - Electrical - 208/120v Branch / L8 / South |  | 2025-12-12 → 2026-01-15 (+34d) |  | 16d → 4d |
| P2.L8.S.1220 | OH - HVAC Piping (High) / L8 / South |  | 2025-12-29 → 2026-01-29 (+31d) |  | 41d → 19d |
| P2.L8.S.1240 | OH - Plumbing - Test / L8 / South | 2025-12-15 → 2025-12-01 A (-14d) | 2025-12-29 → 2025-12-10 A (-19d) | 0% → 100% | 74d → none |
| P2.L8.S.1260 | OH - DALT - HP Mains / L8 / South | 2025-12-01 A | 2025-12-05 A | 0% → 100% | 69d → none |
| P2.L8.S.1560 | OH - HVAC Piping (Low) / L8 / South |  | 2025-12-29 → 2026-01-29 (+31d) |  | 51d → 29d |
| FRG.P2.L8.S.1650 | HVAC Piping Delivery Copper / L8 / South - FRAGNET | 2025-12-01 A | 2025-12-01 A | 0% → 100% | 51d → none |
| P2.L8.S.1440 | In Wall - Electrical - Framing / L8 / South | 2025-12-15 → 2025-12-22 A (+7d) | 2025-12-29 → 2026-01-22 (+24d) | 0% → 50% | 16d → 4d |
| P2.L8.S.1450 | In Wall - Backing/Blocking/Supports / L8 / South | 2025-12-01 → 2025-12-22 A (+21d) | 2025-12-12 → 2026-01-15 (+34d) |  | 26d → 9d |
| P2.L8.S.1200 | Firestop - Thru Wall - Priority Walls / L8 / South | 2025-12-01 → 2026-01-02 (+32d) | 2025-12-05 → 2026-01-08 (+34d) |  | 79d → 57d |
| P2.L8.S.1250 | Pull Wire - Electrical - 480/277v Distribution / L8 / South | 2025-12-01 → 2026-01-02 (+32d) | 2025-12-12 → 2026-01-15 (+34d) |  | 104d → 82d |
| P2.L8.S.1290 | OH - Insulate HP Duct / L8 / South | 2025-12-08 → 2026-01-02 (+25d) | 2025-12-19 → 2026-01-15 (+27d) |  | 109d → 92d |
| P2.L8.S.1300 | OH - Hang Duct - LP Branch / L8 / South | 2025-12-01 → 2026-01-02 (+32d) | 2025-12-19 → 2026-01-22 (+34d) |  | 69d → 47d |
| P2.L8.S.1310 | OH - Set & Connect Mech Equipment / L8 / South | 2025-12-08 → 2026-01-02 (+25d) | 2025-12-19 → 2026-01-15 (+27d) |  | 69d → 52d |
| P2.L8.S.1280 | OH - Insulate Plumbing / L8 / South | 2025-12-30 → 2026-01-16 (+17d) | 2026-01-13 → 2026-01-29 (+16d) |  | 74d → 62d |
| P2.L8.S.1320 | OH - Electrical - Equip Tie In / L8 / South | 2025-12-22 → 2026-01-16 (+25d) | 2026-01-06 → 2026-01-29 (+23d) |  | 69d → 52d |
| P2.L8.S.1370 | OH - Conduit - Low Volt - BAS/Controls / L8 / South | 2025-12-22 → 2026-01-16 (+25d) | 2026-01-06 → 2026-01-29 (+23d) |  | 79d → 62d |
| P2.L8.S.1400 | OH - Conduit - Low Volt - Security / L8 / South | 2025-12-22 → 2026-01-16 (+25d) | 2026-01-06 → 2026-01-29 (+23d) |  | 79d → 62d |
| P2.L8.S.1350 | OH - Insulate LP Duct / L8 / South | 2025-12-22 → 2026-01-23 (+32d) | 2026-01-06 → 2026-02-05 (+30d) |  | 69d → 47d |
| P2.L8.S.1460 | AHJ Inspections - Wall Close In / L8 / South | 2025-12-30 → 2026-01-23 (+24d) | 2026-01-06 → 2026-01-29 (+23d) |  | 16d → 4d |
| P2.L8.S.1270 | OH - HVAC Piping - Test / L8 / South | 2025-12-30 → 2026-01-30 (+31d) | 2026-01-20 → 2026-02-19 (+30d) |  | 69d → 47d |
| P2.L8.S.1360 | Pull Wire - Electrical - 208/120v Branch & Equip / L8 / South | 2026-01-07 → 2026-01-30 (+23d) | 2026-02-03 → 2026-02-26 (+23d) |  | 69d → 52d |
| P2.L8.S.1380 | OH - Conduit - Low Volt - Fire Alarm / L8 / South | 2026-01-07 → 2026-02-06 (+30d) | 2026-01-20 → 2026-02-19 (+30d) |  | 69d → 47d |
| P2.L8.S.1390 | OH - Conduit - Low Volt - Telecom / L8 / South | 2026-01-07 → 2026-02-06 (+30d) | 2026-01-20 → 2026-02-19 (+30d) |  | 69d → 47d |
| P2.L8.S.1470 | Hang-Tape-Finish - Walls and Hard Lid Ceilings / L8 / South | 2026-01-19 → 2026-02-18 (+30d) | 2026-02-04 → 2026-03-06 (+30d) |  | 8d → -9d |
| P2.L8.S.1330 | OH - HVAC Piping - Equip Tie In / L8 / South | 2026-01-28 → 2026-02-20 (+23d) | 2026-02-10 → 2026-03-05 (+23d) |  | 64d → 47d |
| P2.L8.S.1340 | OH - Insulate HVAC Pipe / L8 / South | 2026-01-21 → 2026-02-20 (+30d) | 2026-02-10 → 2026-03-12 (+30d) |  | 89d → 67d |
| P2.L8.S.1480 | Spray/Seal/Firestop - Head of Wall / L8 / South | 2026-02-05 → 2026-03-09 (+32d) | 2026-02-18 → 2026-03-20 (+30d) |  | 58d → 36d |
| P2.L8.S.1490 | Firestop - Thru Wall / L8 / South | 2026-02-05 → 2026-03-09 (+32d) | 2026-02-18 → 2026-03-20 (+30d) |  | 58d → 36d |
| P2.L8.S.1500 | Pull Wire - Low Volt - BAS/Controls / L8 / South | 2026-02-05 → 2026-03-09 (+32d) | 2026-02-18 → 2026-03-20 (+30d) |  | 58d → 36d |
| P2.L8.S.1510 | Pull Wire - Low Volt - Fire Alarm / L8 / South | 2026-02-05 → 2026-03-09 (+32d) | 2026-02-18 → 2026-03-20 (+30d) |  | 58d → 36d |
| P2.L8.S.1520 | Pull Wire - Low Volt - Telecom / L8 / South | 2026-02-05 → 2026-03-09 (+32d) | 2026-02-18 → 2026-03-20 (+30d) |  | 58d → 36d |
| P2.L8.S.1530 | Pull Wire - Low Volt - Security / L8 / South | 2026-02-05 → 2026-03-09 (+32d) | 2026-02-18 → 2026-03-20 (+30d) |  | 58d → 36d |
| P2.L8.S.1550 | Trades Inspect & Verify R/I Work Completed to Specs / L8 / South | 2026-02-19 → 2026-03-23 (+32d) | 2026-02-25 → 2026-03-27 (+30d) |  | 58d → 36d |
| Z1121 | **North / Level 8** |  | 2026-03-20 → 2026-04-21 (+32d) |  |  |
| P2.L8.N.1180 | OH - Plumbing Piping / L8 / North |  | 2025-12-12 → 2026-01-15 (+34d) |  | 67d → 45d |
| P2.L8.N.1230 | OH - Electrical - 208/120v Branch / L8 / North |  | 2025-12-12 → 2026-01-15 (+34d) |  | 16d → -1d |
| P2.L8.N.1210 | OH - Hang Duct - HP Mains / L8 / North |  | 2025-12-12 → 2025-11-27 A (-15d) | 0% → 100% | 54d → none |

| ID | Task | Start | Finish | Complete | Total float | Predecessors |
| --- | --- | --- | --- | --- | --- | --- |
| P2.L8.N.1220 | OH - HVAC Piping (High) / L8 / North |  | 2026-01-13 → 2026-02-12 (+30d) |  | 41d → 19d |  |
| P2.L8.N.1260 | OH - DALT - HP Mains / L8 / North |  | 2025-12-19 → 2026-01-08 (+20d) |  | 54d → 42d |  |
| P2.L8.N.1300 | OH - Hang Duct - LP Branch (High) / L8 / North |  | 2025-12-29 → 2026-01-15 (+17d) |  | 54d → 42d |  |
| P2.L8.N.1310 | OH - Set & Connect Mech Equipment / L8 / North |  | 2026-01-13 → 2026-01-29 (+16d) |  | 54d → 42d |  |
| P2.L8.N.1430 | In Wall - Plumbing - Framing / L8 / North |  | 2025-12-12 → 2026-01-15 (+34d) |  | 26d → 9d |  |
| P2.L8.N.1570 | OH - Hang Duct - LP Branch (Low) / L8 / North |  | 2026-01-13 → 2026-01-29 (+16d) |  | 54d → 42d |  |
| P2.L8.N.1200 | Firestop - Thru Wall - Priority Walls / L8 / North | 2025-12-01 → 2026-01-02 (+32d) | 2025-12-05 → 2026-01-08 (+34d) |  | 79d → 57d |  |
| P2.L8.N.1250 | Pull Wire - Electrical - 480/277v Distribution / L8 / North | 2025-12-01 → 2026-01-02 (+32d) | 2025-12-12 → 2026-01-15 (+34d) |  | 104d → 82d |  |
| P2.L8.N.1450 | In Wall - Backing/Blocking/Supports / L8 / North | 2025-12-01 → 2026-01-02 (+32d) | 2025-12-12 → 2026-01-15 (+34d) |  | 26d → 9d |  |
| P2.L8.N.1290 | OH - Insulate HP Duct / L8 / North | 2025-12-22 → 2026-01-09 (+18d) | 2026-01-06 → 2026-01-22 (+16d) |  | 104d → 92d |  |
| P2.L8.N.1240 | OH - Plumbing - Test / L8 / North | 2025-12-15 → 2026-01-16 (+32d) | 2026-01-06 → 2026-02-05 (+30d) |  | 69d → 47d |  |
| P2.L8.N.1440 | In Wall - Electrical - Framing / L8 / North | 2025-12-15 → 2026-01-16 (+32d) | 2025-12-29 → 2026-01-29 (+31d) |  | 16d → -1d |  |
| P2.L8.N.1320 | OH - Electrical - Equip Tie In / L8 / North | 2026-01-14 → 2026-01-30 (+16d) | 2026-01-27 → 2026-02-12 (+16d) |  | 54d → 42d |  |
| P2.L8.N.1350 | OH - Insulate LP Duct / L8 / North | 2026-01-14 → 2026-01-30 (+16d) | 2026-01-27 → 2026-02-12 (+16d) |  | 54d → 42d |  |
| P2.L8.N.1370 | OH - Conduit - Low Volt - BAS/Controls / L8 / North | 2026-01-14 → 2026-01-30 (+16d) | 2026-01-27 → 2026-02-12 (+16d) |  | 64d → 52d |  |
| P2.L8.N.1400 | OH - Conduit - Low Volt - Security / L8 / North | 2026-01-14 → 2026-01-30 (+16d) | 2026-01-27 → 2026-02-12 (+16d) |  | 64d → 52d |  |
| P2.L8.N.1460 | AHJ Inspections - Wall Close In / L8 / North | 2025-12-30 → 2026-01-30 (+31d) | 2026-01-06 → 2026-02-05 (+30d) |  | 16d → -1d |  |
| P2.L8.N.1280 | OH - Insulate Plumbing / L8 / North | 2026-01-07 → 2026-02-06 (+30d) | 2026-01-20 → 2026-02-19 (+30d) |  | 69d → 47d |  |
| P2.L8.N.1360 | Pull Wire - Electrical - 208/120v Branch & Equip / L8 / North | 2026-01-28 → 2026-02-13 (+16d) | 2026-02-24 → 2026-03-12 (+16d) |  | 54d → 42d |  |
| P2.L8.N.1380 | OH - Conduit - Low Volt - Fire Alarm / L8 / North | 2026-01-28 → 2026-02-13 (+16d) | 2026-02-10 → 2026-02-26 (+16d) |  | 54d → 42d |  |
| P2.L8.N.1390 | OH - Conduit - Low Volt - Telecom / L8 / North | 2026-01-28 → 2026-02-13 (+16d) | 2026-02-10 → 2026-02-26 (+16d) |  | 54d → 42d |  |
| P2.L8.N.1500 | Pull Wire - Low Volt - BAS/Controls / L8 / North | 2026-02-05 → 2026-02-13 (+8d) | 2026-02-18 → 2026-02-26 (+8d) |  | 58d → 52d | P2.L8.N.1470, P2.L8.N.1370 → P2.L8.N.1370 |
| P2.L8.N.1530 | Pull Wire - Low Volt - Security / L8 / North | 2026-02-05 → 2026-02-13 (+8d) | 2026-02-18 → 2026-02-26 (+8d) |  | 58d → 52d | P2.L8.N.1470, P2.L8.N.1400 → P2.L8.N.1400 |
| P2.L8.N.1560 | OH - HVAC Piping (Low) / L8 / North | 2026-01-14 → 2026-02-13 (+30d) | 2026-01-30 → 2026-03-03 (+32d) |  | 41d → 19d |  |
| P2.L8.N.1470 | Hang-Tape-Finish - Walls and Hard Lid Ceilings / L8 / North | 2026-01-19 → 2026-02-18 (+30d) | 2026-02-04 → 2026-03-06 (+30d) |  | 8d → -9d |  |
| P2.L8.N.1510 | Pull Wire - Low Volt - Fire Alarm / L8 / North | 2026-02-11 → 2026-02-27 (+16d) | 2026-02-24 → 2026-03-12 (+16d) |  | 54d → 42d | P2.L8.N.1470, P2.L8.N.1380 → P2.L8.N.1380 |
| P2.L8.N.1520 | Pull Wire - Low Volt - Telecom / L8 / North | 2026-02-11 → 2026-02-27 (+16d) | 2026-02-24 → 2026-03-12 (+16d) |  | 54d → 42d | P2.L8.N.1470, P2.L8.N.1390 → P2.L8.N.1390 |
| P2.L8.N.1270 | OH - HVAC Piping - Test / L8 / North | 2026-02-02 → 2026-03-04 (+30d) | 2026-02-20 → 2026-03-24 (+32d) |  | 41d → 19d |  |
| P2.L8.N.1480 | Spray/Seal/Firestop - Head of Wall / L8 / North | 2026-02-05 → 2026-03-09 (+32d) | 2026-02-18 → 2026-03-20 (+30d) |  | 58d → 36d |  |
| P2.L8.N.1490 | Firestop - Thru Wall / L8 / North | 2026-02-05 → 2026-03-09 (+32d) | 2026-02-18 → 2026-03-20 (+30d) |  | 58d → 36d |  |
| P2.L8.N.1330 | OH - HVAC Piping - Equip Tie In / L8 / North | 2026-02-23 → 2026-03-25 (+30d) | 2026-03-13 → 2026-04-14 (+32d) |  | 41d → 19d |  |
| P2.L8.N.1340 | OH - Insulate HVAC Pipe / L8 / North | 2026-02-23 → 2026-03-25 (+30d) | 2026-03-06 → 2026-04-07 (+32d) |  | 71d → 49d |  |
| P2.L8.N.1550 | Trades Inspect & Verify R/I Work Completed to Specs / L8 / North | 2026-03-16 → 2026-04-15 (+30d) | 2026-03-20 → 2026-04-21 (+32d) |  | 41d → 19d |  |
| 1 | **House Electrical Rooms / Level 8** |  | 2026-01-02 → 2026-04-03 (+91d) |  |  |  |
| 9 | **House Electrical Room 8-5959** |  | 2026-01-02 → 2026-03-27 (+84d) |  |  |  |
| P2.8.HE.5959.1130 | Doors & Hardware / L8 / South / 5959 | 2025-12-31 → 2025-12-18 A (-13d) | 2026-01-02 → 2025-12-24 A (-9d) | 0% → 100% | 26d → none |  |
| P2.8.HE.5959.1080 | Panelboards, Interconnect Wiring, and Remaining Room Buildout of All Systems / L8 / South / 5959 | 2025-12-01 → 2026-01-02 (+32d) | 2025-12-12 → 2026-01-15 (+34d) |  | 26d → 136d |  |
| P2.8.HE.5959.1070 | Pull Wire - In From Distribution Panels / Out to Branch Circuits / L8 / South / 5959 | 2025-12-01 → 2026-03-06 (+95d) | 2025-12-05 → 2026-03-12 (+97d) |  | 31d → 96d | P2.8.HE.5959.1060 → P2.8.HE.5959.1060, P2.L8.INT.S.1270, P2.L8.S.1360 |
| P2.8.HE.5959.1090 | Test & Terminate / L8 / South / 5959 | 2025-12-15 → 2026-03-13 (+88d) | 2025-12-19 → 2026-03-19 (+90d) |  | 26d → 96d |  |
| P2.8.HE.5959.1100 | Paint - Finish Coat / L8 / South / 5959 | 2025-12-22 → 2026-03-20 (+88d) | 2025-12-23 → 2026-03-23 (+90d) |  | 26d → 96d |  |
| P2.8.HE.5959.1110 | Trim All MEPF Finishes / L8 / South / 5959 | 2025-12-24 → 2026-03-24 (+90d) | 2025-12-26 → 2026-03-25 (+89d) |  | 26d → 96d |  |
| P2.8.HE.5959.1120 | Flooring / L8 / South / 5959 | 2025-12-29 → 2026-03-26 (+87d) | 2025-12-30 → 2026-03-27 (+87d) |  | 26d → 96d |  |
| P2.8.HE.5959.1140 | Panels Ready to Energize - Lock Doors and Limit Access / L8 / South / 5959 | 2026-01-02 → 2026-03-27 (+84d) | 2026-01-02 → 2026-03-27 (+84d) |  | 26d → 96d |  |
| 8 | **House Electrical Room 8-2803** |  | 2026-01-02 → 2026-04-03 (+91d) |  |  |  |
| P2.8.HE.2803.1130 | Doors & Hardware / L8 / North / 2803 | 2025-12-31 → 2025-12-18 A (-13d) | 2026-01-02 → 2025-12-24 A (-9d) | 0% → 100% | 26d → none |  |
| P2.8.HE.2803.1080 | Panelboards, Interconnect Wiring, and Remaining Room Buildout of All Systems / L8 / North / 2803 | 2025-12-01 → 2026-01-02 (+32d) | 2025-12-12 → 2026-01-15 (+34d) |  | 26d → 136d |  |
| P2.8.HE.2803.1070 | Pull Wire - In From Distribution Panels / Out to Branch Circuits / L8 / North / 2803 | 2025-12-01 → 2026-03-13 (+102d) | 2025-12-05 → 2026-03-19 (+104d) |  | 31d → 91d | P2.8.HE.2803.1060 → P2.8.HE.2803.1060, P2.L8.N.1360, P2.L8.INT.S.1270 |
| P2.8.HE.2803.1090 | Test & Terminate / L8 / North / 2803 | 2025-12-15 → 2026-03-20 (+95d) | 2025-12-19 → 2026-03-26 (+97d) |  | 26d → 91d |  |
| P2.8.HE.2803.1100 | Paint - Finish Coat / L8 / North / 2803 | 2025-12-22 → 2026-03-27 (+95d) | 2025-12-23 → 2026-03-30 (+97d) |  | 26d → 91d |  |
| P2.8.HE.2803.1110 | Trim All MEPF Finishes / L8 / North / 2803 | 2025-12-24 → 2026-03-31 (+97d) | 2025-12-26 → 2026-04-01 (+96d) |  | 26d → 91d |  |
| P2.8.HE.2803.1120 | Flooring / L8 / North / 2803 | 2025-12-29 → 2026-04-02 (+94d) | 2025-12-30 → 2026-04-03 (+94d) |  | 26d → 91d |  |
| P2.8.HE.2803.1140 | Panels Ready to Energize - Lock Doors and Limit Access / L8 / North / 2803 | 2026-01-02 → 2026-04-03 (+91d) | 2026-01-02 → 2026-04-03 (+91d) |  | 26d → 91d |  |
| 2 | **L8 / IT Closets** |  | 2026-05-14 → 2026-06-16 (+33d) |  |  |  |
| 1 | **IT Closet 8-2822** |  | 2026-05-07 → 2026-06-09 (+33d) |  |  |  |
| P2.8.IT.2822.150 | Flooring / L8 / North / 2822 | 2026-01-09 → 2025-11-21 A (-49d) | 2026-01-15 → 2025-11-26 A (-50d) | 0% → 100% | 143d → none |  |
| P2.8.IT.2822.130 | HVAC Equipment / L8 / North / 2822 | 2025-12-30 → 2026-01-16 (+17d) | 2026-01-06 → 2026-01-22 (+16d) |  | 143d → 136d |  |
| P2.8.IT.2822.140 | Trim all MEPF / L8 / North / 2822 | 2026-01-07 → 2026-03-20 (+72d) | 2026-01-08 → 2026-03-23 (+74d) |  | 143d → 96d |  |
| P2.8.IT.2822.180 | Grounding and Bonding / L8 / North / 2822 | 2026-01-16 → 2026-03-24 (+67d) | 2026-01-19 → 2026-03-25 (+65d) |  | 143d → 96d |  |
| P2.8.IT.2822.170 | OH Cable Tray / L8 / North / 2822 | 2026-03-18 → 2026-04-17 (+30d) | 2026-03-24 → 2026-04-23 (+30d) |  | 97d → 75d |  |
| P2.8.IT.2822.260 | Room Ready - CIT / L8 / North / 2822 | 2026-03-25 → 2026-04-24 (+30d) | 2026-03-31 → 2026-04-30 (+30d) |  | 97d → 75d |  |
| P2.8.IT.2822.160 | Equipment Racks and Ladders / L8 / North / 2822 | 2026-04-01 → 2026-05-01 (+30d) | 2026-04-07 → 2026-05-07 (+30d) |  | 97d → 75d |  |
| P2.8.IT.2822.190 | Pull Wire - Backbone Cabling Into Racks / L8 / North / 2822 | 2026-04-08 → 2026-05-08 (+30d) | 2026-04-14 → 2026-05-14 (+30d) |  | 97d → 75d |  |
| P2.8.IT.2822.200 | Pull Wire - Horizontal Cabling Out to Termination Points / L8 / North / 2822 | 2026-04-08 → 2026-05-08 (+30d) | 2026-04-14 → 2026-05-14 (+30d) |  | 97d → 75d |  |
| P2.8.IT.2822.210 | Paint - Finish Coat / L8 / North / 2822 | 2026-04-15 → 2026-05-15 (+30d) | 2026-04-16 → 2026-05-18 (+32d) |  | 97d → 75d |  |
| P2.8.IT.2822.220 | Terminations and Punch Downs - All Cabling / L8 / North / 2822 | 2026-04-17 → 2026-05-19 (+32d) | 2026-05-07 → 2026-06-09 (+33d) |  | 97d → 75d |  |
| P2.8.IT.2822.230 | Doors & Hardware / L8 / North / 2822 | 2026-04-17 → 2026-05-19 (+32d) | 2026-04-20 → 2026-05-20 (+30d) |  | 107d → 85d |  |
| P2.8.IT.2822.240 | Energize Elec Panels Serving Comms Racks / L8 / North / 2822 | 2026-04-21 → 2026-05-21 (+30d) | 2026-04-23 → 2026-05-26 (+33d) |  | 107d → 85d |  |
| P2.8.IT.2822.250 | Comms Racks In Service / L8 / North / 2822 | 2026-05-07 → 2026-06-09 (+33d) | 2026-05-07 → 2026-06-09 (+33d) |  | 97d → 75d |  |
| 2 | **IT Closet 8-3903** |  | 2026-05-14 → 2026-06-16 (+33d) |  |  |  |
| P2.8.IT.3903.150 | Flooring / L8 / South / 3903 | 2025-12-10 → 2025-11-21 A (-19d) | 2025-12-16 → 2025-11-26 A (-20d) | 0% → 100% | 158d → none |  |

| ID | Task | Start | Finish | Complete | Total float |
| --- | --- | --- | --- | --- | --- |
| P2.8.IT.3903.140 | Trim all MEPF / L8 / South / 3903 | 2025-12-08 → 2026-03-13 (+95d) | 2025-12-09 → 2026-03-16 (+97d) |  | 158d → 96d |
| P2.8.IT.3903.180 | Grounding and Bonding / L8 / South / 3903 | 2025-12-17 → 2026-03-17 (+90d) | 2025-12-18 → 2026-03-18 (+90d) |  | 158d → 96d |
| P2.8.IT.3903.170 | OH Cable Tray / L8 / South / 3903 | 2026-03-18 → 2026-04-17 (+30d) | 2026-03-24 → 2026-04-23 (+30d) |  | 92d → 70d |
| P2.8.IT.3903.260 | Room Ready - CIT / L8 / South / 3903 | 2026-03-25 → 2026-04-24 (+30d) | 2026-03-31 → 2026-04-30 (+30d) |  | 92d → 70d |
| P2.8.IT.3903.160 | Equipment Racks and Ladders / L8 / South / 3903 | 2026-04-01 → 2026-05-01 (+30d) | 2026-04-07 → 2026-05-07 (+30d) |  | 92d → 70d |
| P2.8.IT.3903.190 | Pull Wire - Backbone Cabling Into Racks / L8 / South / 3903 | 2026-04-08 → 2026-05-08 (+30d) | 2026-04-14 → 2026-05-14 (+30d) |  | 92d → 70d |
| P2.8.IT.3903.200 | Pull Wire - Horizontal Cabling Out to Termination Points / L8 / South / 3903 | 2026-04-08 → 2026-05-08 (+30d) | 2026-04-14 → 2026-05-14 (+30d) |  | 92d → 70d |
| P2.8.IT.3903.210 | Paint - Finish Coat / L8 / South / 3903 | 2026-04-15 → 2026-05-15 (+30d) | 2026-04-16 → 2026-05-18 (+32d) |  | 92d → 70d |
| P2.8.IT.3903.220 | Terminations and Punch Downs - All Cabling / L8 / South / 3903 | 2026-04-17 → 2026-05-19 (+32d) | 2026-05-14 → 2026-06-16 (+33d) |  | 92d → 70d |
| P2.8.IT.3903.230 | Doors & Hardware / L8 / South / 3903 | 2026-04-17 → 2026-05-19 (+32d) | 2026-04-20 → 2026-05-20 (+30d) |  | 107d → 85d |
| P2.8.IT.3903.240 | Energize Elec Panels Serving Comms Racks / L8 / South / 3903 | 2026-04-21 → 2026-05-21 (+30d) | 2026-04-23 → 2026-05-26 (+33d) |  | 107d → 85d |
| P2.8.IT.3903.250 | Comms Racks In Service / L8 / South / 3903 | 2026-05-14 → 2026-06-16 (+33d) | 2026-05-14 → 2026-06-16 (+33d) |  | 92d → 70d |
| 4 | **IT Closet 8-3948** |  | 2026-05-07 → 2026-06-09 (+33d) |  |  |
| P2.8.IT.3948.150 | Flooring / L8 / South / 3948 | 2025-12-10 → 2025-11-21 A (-19d) | 2025-12-16 → 2025-11-26 A (-20d) | 0% → 100% | 163d → none |
| P2.8.IT.3948.140 | Trim all MEPF / L8 / South / 3948 | 2025-12-08 → 2026-03-13 (+95d) | 2025-12-09 → 2026-03-16 (+97d) |  | 163d → 101d |
| P2.8.IT.3948.180 | Grounding and Bonding / L8 / South / 3948 | 2025-12-17 → 2026-03-17 (+90d) | 2025-12-18 → 2026-03-18 (+90d) |  | 163d → 101d |
| P2.8.IT.3948.170 | OH Cable Tray / L8 / South / 3948 | 2026-03-18 → 2026-04-17 (+30d) | 2026-03-24 → 2026-04-23 (+30d) |  | 97d → 75d |
| P2.8.IT.3948.260 | Room Ready - CIT / L8 / South / 3948 | 2026-03-25 → 2026-04-24 (+30d) | 2026-03-31 → 2026-04-30 (+30d) |  | 97d → 75d |
| P2.8.IT.3948.160 | Equipment Racks and Ladders / L8 / South / 3948 | 2026-04-01 → 2026-05-01 (+30d) | 2026-04-07 → 2026-05-07 (+30d) |  | 97d → 75d |
| P2.8.IT.3948.190 | Pull Wire - Backbone Cabling Into Racks / L8 / South / 3948 | 2026-04-08 → 2026-05-08 (+30d) | 2026-04-14 → 2026-05-14 (+30d) |  | 97d → 75d |
| P2.8.IT.3948.200 | Pull Wire - Horizontal Cabling Out to Termination Points / L8 / South / 3948 | 2026-04-08 → 2026-05-08 (+30d) | 2026-04-14 → 2026-05-14 (+30d) |  | 97d → 75d |
| P2.8.IT.3948.210 | Paint - Finish Coat / L8 / South / 3948 | 2026-04-15 → 2026-05-15 (+30d) | 2026-04-16 → 2026-05-18 (+32d) |  | 97d → 75d |
| P2.8.IT.3948.220 | Terminations and Punch Downs - All Cabling / L8 / South / 3948 | 2026-04-17 → 2026-05-19 (+32d) | 2026-05-07 → 2026-06-09 (+33d) |  | 97d → 75d |
| P2.8.IT.3948.230 | Doors & Hardware / L8 / South / 3948 | 2026-04-17 → 2026-05-19 (+32d) | 2026-04-20 → 2026-05-20 (+30d) |  | 107d → 85d |
| P2.8.IT.3948.240 | Energize Elec Panels Serving Comms Racks / L8 / South / 3948 | 2026-04-21 → 2026-05-21 (+30d) | 2026-04-23 → 2026-05-26 (+33d) |  | 107d → 85d |
| P2.8.IT.3948.250 | Comms Racks In Service / L8 / South / 3948 | 2026-05-07 → 2026-06-09 (+33d) | 2026-05-07 → 2026-06-09 (+33d) |  | 97d → 75d |
| 7 | **FINISHES - CORE & SUPPORT SPACES / Level 8** |  | 2026-12-29 → 2027-01-15 (+17d) |  |  |
| 7KSF12 | **Offices - Z1/Z2 (~7,300 sf) / Level 8** | 2026-02-26 → 2026-03-30 (+32d) | 2026-09-28 → 2026-10-28 (+30d) |  |  |
| 1 | **Finishes** | 2026-02-26 → 2026-03-30 (+32d) | 2026-09-28 → 2026-10-28 (+30d) |  |  |
| P2.L8.F.CS.1000 | Paint Prime & 1st Coat Walls / L8 / Offices Z1/Z2 | 2026-02-26 → 2026-03-30 (+32d) | 2026-03-04 → 2026-04-03 (+30d) |  | 82d → 60d |
| P2.L8.F.CS.1020 | R/I - Ceiling Assemblies & Supports - All Trades (A/V, Oper Part, Glass Part, etc.) / L8 / Offices Z1/Z2 | 2026-03-05 → 2026-04-06 (+32d) | 2026-03-11 → 2026-04-10 (+30d) |  | 93d → 71d |
| P2.L8.F.CS.1010 | T-Grid / L8 / Offices Z1/Z2 | 2026-03-12 → 2026-04-13 (+32d) | 2026-03-18 → 2026-04-17 (+30d) |  | 93d → 71d |
| P2.L8.F.CS.1050 | Sprinkler Heads in T-Grid / L8 / Offices Z1/Z2 | 2026-03-19 → 2026-04-20 (+32d) | 2026-03-25 → 2026-04-24 (+30d) |  | 93d → 71d |
| P2.L8.F.CS.1030 | Diffusers in T-Grid / L8 / Offices Z1/Z2 | 2026-03-26 → 2026-04-27 (+32d) | 2026-04-01 → 2026-05-01 (+30d) |  | 93d → 71d |
| P2.L8.F.CS.1040 | Lights & Elec Devices in T-Grid / L8 / Offices Z1/Z2 | 2026-04-02 → 2026-05-04 (+32d) | 2026-04-15 → 2026-05-15 (+30d) |  | 93d → 71d |
| P2.L8.F.CS.1070 | Fire Alarm in T-Grid / L8 / Offices Z1/Z2 | 2026-04-16 → 2026-05-18 (+32d) | 2026-04-22 → 2026-05-22 (+30d) |  | 93d → 71d |
| P2.L8.F.CS.1060 | Low Voltage in T-Grid / L8 / Offices Z1/Z2 | 2026-04-23 → 2026-05-26 (+33d) | 2026-04-29 → 2026-06-01 (+33d) |  | 93d → 71d |
| P2.L8.F.CS.1080 | OH Ceiling Signoff / L8 / Offices Z1/Z2 | 2026-04-30 → 2026-06-02 (+33d) | 2026-05-06 → 2026-06-08 (+33d) |  | 93d → 71d |
| P2.L8.F.CS.1110 | Drop Ceiling Tile / L8 / Offices Z1/Z2 | 2026-05-07 → 2026-06-09 (+33d) | 2026-05-13 → 2026-06-15 (+33d) |  | 93d → 71d |
| P2.L8.F.CS.1090 | Millwork / L8 / Offices Z1/Z2 | 2026-05-14 → 2026-06-16 (+33d) | 2026-05-20 → 2026-06-22 (+33d) |  | 93d → 71d |
| P2.L8.F.CS.1100 | Plumbing Fixtures / L8 / Offices Z1/Z2 | 2026-05-21 → 2026-06-23 (+33d) | 2026-05-28 → 2026-06-29 (+32d) |  | 93d → 71d |
| P2.L8.F.CS.1120 | Floor Prep / L8 / Offices Z1/Z2 | 2026-05-29 → 2026-06-30 (+32d) | 2026-06-04 → 2026-07-07 (+33d) |  | 93d → 71d |
| P2.L8.F.CS.1130 | Floor Finishes / L8 / Offices Z1/Z2 | 2026-06-05 → 2026-07-08 (+33d) | 2026-06-11 → 2026-07-14 (+33d) |  | 93d → 71d |
| P2.L8.F.CS.1140 | Doors & Hardware / L8 / Offices Z1/Z2 | 2026-06-12 → 2026-07-15 (+33d) | 2026-06-18 → 2026-07-21 (+33d) |  | 93d → 71d |
| P2.L8.F.CS.2300 | Interior Glazing / L8 / Offices Z1/Z2 | 2026-06-12 → 2026-07-15 (+33d) | 2026-06-18 → 2026-07-21 (+33d) |  | 100d → 78d |
| P2.L8.F.CS.1150 | Paint - Finish Coat / L8 / Offices Z1/Z2 | 2026-06-19 → 2026-07-22 (+33d) | 2026-06-25 → 2026-07-28 (+33d) |  | 100d → 78d |
| P2.L8.F.CS.1190 | Interior Building Signage / L8 / Offices Z1/Z2 | 2026-06-26 → 2026-07-29 (+33d) | 2026-07-02 → 2026-08-04 (+33d) |  | 125d → 103d |
| P2.L8.F.CS.1200 | Floor Base / L8 / Offices Z1/Z2 | 2026-06-26 → 2026-07-29 (+33d) | 2026-07-02 → 2026-08-04 (+33d) |  | 100d → 78d |
| P2.L8.F.CS.1180 | Building Specialities / L8 / Offices Z1/Z2 | 2026-07-06 → 2026-08-05 (+30d) | 2026-07-10 → 2026-08-11 (+32d) |  | 100d → 78d |
| P2.L8.F.CS.1210 | Demountable Partitions / L8 / Offices Z1/Z2 | 2026-07-06 → 2026-08-05 (+30d) | 2026-07-10 → 2026-08-11 (+32d) |  | 110d → 88d |
| P2.L8.F.CS.1170 | Trim T-Stats / L8 / Offices Z1/Z2 | 2026-07-13 → 2026-08-12 (+30d) | 2026-07-17 → 2026-08-18 (+32d) |  | 100d → 78d |
| P2.L8.F.CS.1160 | Set AV/IT Devices and Configure / L8 / Offices Z1/Z2 | 2026-07-20 → 2026-08-19 (+30d) | 2026-07-24 → 2026-08-25 (+32d) |  | 100d → 78d |
| P2.L8.F.CS.1220 | Trim Electrical / L8 / Offices Z1/Z2 | 2026-07-27 → 2026-08-26 (+30d) | 2026-07-31 → 2026-09-01 (+32d) |  | 100d → 78d |
| P2.L8.F.CS.1230 | Trim Telephone/ Data / L8 / Offices Z1/Z2 | 2026-08-03 → 2026-09-02 (+30d) | 2026-08-07 → 2026-09-09 (+33d) |  | 100d → 78d |
| P2.L8.F.CS.1240 | Work Completion List - Finishes / L8 / Offices Z1/Z2 | 2026-08-10 → 2026-09-10 (+31d) | 2026-08-14 → 2026-09-16 (+33d) |  | 100d → 78d |
| P2.L8.F.CS.1250 | Rough Clean / L8 / Offices Z1/Z2 | 2026-08-17 → 2026-09-17 (+31d) | 2026-08-21 → 2026-09-23 (+33d) |  | 100d → 78d |
| P2.L8.F.CS.1260 | FF&E / L8 / Offices Z1/Z2 | 2026-08-24 → 2026-09-24 (+31d) | 2026-08-28 → 2026-09-30 (+33d) |  | 100d → 78d |
| P2.L8.F.CS.1270 | Prepare Punchlist / L8 / Offices Z1/Z2 | 2026-08-31 → 2026-10-01 (+31d) | 2026-09-04 → 2026-10-07 (+33d) |  | 100d → 78d |
| P2.L8.F.CS.1280 | Correct Punchlist / L8 / Offices Z1/Z2 | 2026-09-08 → 2026-10-08 (+30d) | 2026-09-21 → 2026-10-21 (+30d) |  | 100d → 78d |
| P2.L8.F.CS.1290 | Final Clean / L8 / Offices Z1/Z2 | 2026-09-22 → 2026-10-22 (+30d) | 2026-09-28 → 2026-10-28 (+30d) |  | 100d → 78d |
| 7KSF1 | **Offices - Z2/Z3 (~7,500 sf) / Level 8** | 2026-03-23 → 2026-04-22 (+30d) | 2026-10-21 → 2026-11-20 (+30d) |  |  |
| 1 | **Finishes** | 2026-03-23 → 2026-04-22 (+30d) | 2026-10-21 → 2026-11-20 (+30d) |  |  |
| P2.L8.F.CS.2000 | Paint Prime & 1st Coat Walls / L8 / Offices Z2/Z3 | 2026-03-23 → 2026-04-22 (+30d) | 2026-03-27 → 2026-04-28 (+32d) |  | 70d → 48d |
| P2.L8.F.CS.2020 | R/I - Ceiling Assemblies & Supports - All Trades (A/V, Oper Part, Glass Part, etc.) / L8 / Offices Z2/Z3 | 2026-03-30 → 2026-04-29 (+30d) | 2026-04-03 → 2026-05-05 (+32d) |  | 76d → 54d |
| P2.L8.F.CS.2010 | T-Grid / L8 / Offices Z2/Z3 | 2026-04-06 → 2026-05-06 (+30d) | 2026-04-10 → 2026-05-12 (+32d) |  | 76d → 54d |
| P2.L8.F.CS.2050 | Sprinkler Heads in T-Grid / L8 / Offices Z2/Z3 | 2026-04-13 → 2026-05-13 (+30d) | 2026-04-17 → 2026-05-19 (+32d) |  | 76d → 54d |
| P2.L8.F.CS.2030 | Diffusers in T-Grid / L8 / Offices Z2/Z3 | 2026-04-20 → 2026-05-20 (+30d) | 2026-04-24 → 2026-05-27 (+33d) |  | 76d → 54d |
| P2.L8.F.CS.2040 | Lights & Elec Devices in T-Grid / L8 / Offices Z2/Z3 | 2026-04-27 → 2026-05-28 (+31d) | 2026-05-08 → 2026-06-10 (+33d) |  | 76d → 54d |
| P2.L8.F.CS.2070 | Fire Alarm in T-Grid / L8 / Offices Z2/Z3 | 2026-05-11 → 2026-06-11 (+31d) | 2026-05-15 → 2026-06-17 (+33d) |  | 76d → 54d |
| P2.L8.F.CS.2060 | Low Voltage in T-Grid / L8 / Offices Z2/Z3 | 2026-05-18 → 2026-06-18 (+31d) | 2026-05-22 → 2026-06-24 (+33d) |  | 76d → 54d |

| ID | Task | Start | Finish | Complete | Total float |
| --- | --- | --- | --- | --- | --- |
| P2.L8.F.CS.2080 | OH Ceiling Signoff / L8 / Offices Z2/Z3 | 2026-05-26 → 2026-06-25 (+30d) | 2026-06-01 → 2026-07-01 (+30d) |  | 76d → 54d |
| P2.L8.F.CS.2110 | Drop Ceiling Tile / L8 / Offices Z2/Z3 | 2026-06-02 → 2026-07-02 (+30d) | 2026-06-08 → 2026-07-09 (+31d) |  | 76d → 54d |
| P2.L8.F.CS.2090 | Millwork / L8 / Offices Z2/Z3 | 2026-06-09 → 2026-07-10 (+31d) | 2026-06-15 → 2026-07-16 (+31d) |  | 76d → 54d |
| P2.L8.F.CS.2100 | Plumbing Fixtures / L8 / Offices Z2/Z3 | 2026-06-16 → 2026-07-17 (+31d) | 2026-06-22 → 2026-07-23 (+31d) |  | 76d → 54d |
| P2.L8.F.CS.2120 | Floor Prep / L8 / Offices Z2/Z3 | 2026-06-23 → 2026-07-24 (+31d) | 2026-06-29 → 2026-07-30 (+31d) |  | 76d → 54d |
| P2.L8.F.CS.2130 | Floor Finishes / L8 / Offices Z2/Z3 | 2026-06-30 → 2026-07-31 (+31d) | 2026-07-07 → 2026-08-06 (+30d) |  | 76d → 54d |
| P2.L8.F.CS.2140 | Doors & Hardware / L8 / Offices Z2/Z3 | 2026-07-08 → 2026-08-07 (+30d) | 2026-07-14 → 2026-08-13 (+30d) |  | 76d → 54d |
| P2.L8.F.CS.2310 | Interior Glazing / L8 / Offices Z1/Z2 | 2026-07-08 → 2026-08-07 (+30d) | 2026-07-14 → 2026-08-13 (+30d) |  | 83d → 61d |
| P2.L8.F.CS.2150 | Paint - Finish Coat / L8 / Offices Z2/Z3 | 2026-07-15 → 2026-08-14 (+30d) | 2026-07-21 → 2026-08-20 (+30d) |  | 83d → 61d |
| P2.L8.F.CS.2190 | Interior Building Signage / L8 / Offices Z2/Z3 | 2026-07-22 → 2026-08-21 (+30d) | 2026-07-28 → 2026-08-27 (+30d) |  | 108d → 86d |
| P2.L8.F.CS.2200 | Floor Base / L8 / Offices Z2/Z3 | 2026-07-22 → 2026-08-21 (+30d) | 2026-07-28 → 2026-08-27 (+30d) |  | 83d → 61d |
| P2.L8.F.CS.2180 | Building Specialities / L8 / Offices Z2/Z3 | 2026-07-29 → 2026-08-28 (+30d) | 2026-08-04 → 2026-09-03 (+30d) |  | 83d → 61d |
| P2.L8.F.CS.2210 | Demountable Partitions / L8 / Offices Z2/Z3 | 2026-07-29 → 2026-08-28 (+30d) | 2026-08-04 → 2026-09-03 (+30d) |  | 93d → 71d |
| P2.L8.F.CS.2170 | Trim T-Stats / L8 / Offices Z2/Z3 | 2026-08-05 → 2026-09-04 (+30d) | 2026-08-11 → 2026-09-11 (+31d) |  | 83d → 61d |
| P2.L8.F.CS.2160 | Set AV/IT Devices and Configure / L8 / Offices Z2/Z3 | 2026-08-12 → 2026-09-14 (+33d) | 2026-08-18 → 2026-09-18 (+31d) |  | 83d → 61d |
| P2.L8.F.CS.2220 | Trim Electrical / L8 / Offices Z2/Z3 | 2026-08-19 → 2026-09-21 (+33d) | 2026-08-25 → 2026-09-25 (+31d) |  | 83d → 61d |
| P2.L8.F.CS.2230 | Trim Telephone/ Data / L8 / Offices Z2/Z3 | 2026-08-26 → 2026-09-28 (+33d) | 2026-09-01 → 2026-10-02 (+31d) |  | 83d → 61d |
| P2.L8.F.CS.2240 | Work Completion List - Finishes / L8 / Offices Z2/Z3 | 2026-09-02 → 2026-10-05 (+33d) | 2026-09-09 → 2026-10-09 (+30d) |  | 83d → 61d |
| P2.L8.F.CS.2250 | Rough Clean / L8 / Offices Z2/Z3 | 2026-09-10 → 2026-10-12 (+32d) | 2026-09-16 → 2026-10-16 (+30d) |  | 83d → 61d |
| P2.L8.F.CS.2260 | FF&E / L8 / Offices Z2/Z3 | 2026-09-17 → 2026-10-19 (+32d) | 2026-09-23 → 2026-10-23 (+30d) |  | 83d → 61d |
| P2.L8.F.CS.2270 | Prepare Punchlist / L8 / Offices Z2/Z3 | 2026-09-24 → 2026-10-26 (+32d) | 2026-09-30 → 2026-10-30 (+30d) |  | 83d → 61d |
| P2.L8.F.CS.2280 | Correct Punchlist / L8 / Offices Z2/Z3 | 2026-10-01 → 2026-11-02 (+32d) | 2026-10-14 → 2026-11-13 (+30d) |  | 83d → 61d |
| P2.L8.F.CS.2290 | Final Clean / L8 / Offices Z2/Z3 | 2026-10-15 → 2026-11-16 (+32d) | 2026-10-21 → 2026-11-20 (+30d) |  | 83d → 61d |
| 5 | **Bathrooms - Break Rooms - Locker Rooms / Level 8** |  | 2026-10-01 → 2026-10-16 (+15d) |  |  |
| 4 | **Bathrooms 8-3952 / 8-3954** |  | 2026-10-01 → 2026-10-16 (+15d) |  |  |
| P2.L8.BR.1000 | Plumbing - Set Pipe Carriers / L8 / Toilets 395X | 2026-03-31 → 2025-12-01 A (-120d) | 2026-04-06 → 2025-12-05 A (-122d) | 0% → 100% | 50d → none |
| P2.L8.BR.1030 | Plumbing - Test Pipe @ Chase Walls / L8 / Toilets 395X | 2026-04-07 → 2025-12-01 A (-127d) | 2026-04-13 → 2025-12-05 A (-129d) | 0% → 100% | 60d → none |
| P2.L8.BR.1010 | Countertop Support Framing / L8 / Toilets 395X | 2025-12-01 → 2026-01-02 (+32d) | 2025-12-05 → 2026-01-08 (+34d) |  | 134d → 112d |
| P2.L8.BR.1020 | Frame - Chase Walls and Hard Lid Ceilings / L8 / Toilets 395X | 2026-04-07 → 2026-04-20 (+13d) | 2026-04-13 → 2026-04-24 (+11d) |  | 50d → 41d |
| P2.L8.BR.1050 | Trim Sprinkler Drops _ Hard Lids / L8 / Toilets 395X | 2026-04-14 → 2026-04-27 (+13d) | 2026-04-20 → 2026-05-01 (+11d) |  | 50d → 41d |
| P2.L8.BR.1060 | Duct Drops _ Hard Lids / L8 / Toilets 395X | 2026-04-21 → 2026-05-04 (+13d) | 2026-04-27 → 2026-05-08 (+11d) |  | 50d → 41d |
| P2.L8.BR.1080 | In Wall - Insulate Plumbing / L8 / Toilets 395X | 2026-04-28 → 2026-05-11 (+13d) | 2026-05-04 → 2026-05-15 (+11d) |  | 50d → 41d |
| P2.L8.BR.1040 | R/I - Electrical _ Hard Lids / L8 / Toilets 395X | 2026-05-05 → 2026-05-18 (+13d) | 2026-05-11 → 2026-05-22 (+11d) |  | 50d → 41d |
| P2.L8.BR.1070 | R/I - Fire Alarm _ Hard Lids / L8 / Toilets 395X | 2026-05-12 → 2026-05-26 (+14d) | 2026-05-18 → 2026-06-01 (+14d) |  | 50d → 41d |
| P2.L8.BR.1090 | Inspection - Close In - Chase Walls and Hard Lid Ceilings / L8 / Toilets 395X | 2026-05-19 → 2026-06-02 (+14d) | 2026-05-26 → 2026-06-08 (+13d) |  | 50d → 41d |
| P2.L8.BR.1100 | Hang-Tape-Finish _ Chase Walls and Hard Lids Ceilings / L8 / Toilets 395X | 2026-05-27 → 2026-06-09 (+13d) | 2026-06-02 → 2026-06-15 (+13d) |  | 50d → 41d |
| P2.L8.BR.1110 | Paint Prime & 1st Coat _ Walls & Hard Lid Ceilings / L8 / Toilets 395X | 2026-06-03 → 2026-06-16 (+13d) | 2026-06-09 → 2026-06-22 (+13d) |  | 50d → 41d |
| P2.L8.BR.1140 | Ceiling Grid / L8 / Toilets 395X | 2026-06-10 → 2026-06-23 (+13d) | 2026-06-16 → 2026-06-29 (+13d) |  | 50d → 41d |
| P2.L8.BR.1170 | Trim Sprinkler Drops _ Ceiling Tiles / L8 / Toilets 395X | 2026-06-17 → 2026-06-30 (+13d) | 2026-06-23 → 2026-07-07 (+14d) |  | 50d → 41d |
| P2.L8.BR.1160 | Trim - HVAC G/R/D's / L8 / Toilets 395X | 2026-06-24 → 2026-07-08 (+14d) | 2026-06-30 → 2026-07-14 (+14d) |  | 50d → 41d |
| P2.L8.BR.1130 | Pull Wire - Electrical / L8 / Toilets 395X | 2026-07-01 → 2026-07-15 (+14d) | 2026-07-08 → 2026-07-21 (+13d) |  | 50d → 41d |
| P2.L8.BR.1120 | Pull Wire - Fire Alarm / L8 / Toilets 395X | 2026-07-09 → 2026-07-22 (+13d) | 2026-07-15 → 2026-07-28 (+13d) |  | 142d → 133d |
| P2.L8.BR.1150 | Lights - Set & Terminate / L8 / Toilets 395X | 2026-07-09 → 2026-07-22 (+13d) | 2026-07-15 → 2026-07-28 (+13d) |  | 50d → 41d |
| P2.L8.BR.1180 | Inspection - Ceiling Close In - ACT Ceilings / L8 / Toilets 395X | 2026-07-16 → 2026-07-29 (+13d) | 2026-07-22 → 2026-08-04 (+13d) |  | 50d → 41d |
| P2.L8.BR.1190 | Ceiling Tiles / L8 / Toilets 395X | 2026-07-23 → 2026-08-05 (+13d) | 2026-07-29 → 2026-08-11 (+13d) |  | 50d → 41d |
| P2.L8.BR.1200 | Wall Tile / L8 / Toilets 395X | 2026-07-30 → 2026-08-12 (+13d) | 2026-08-05 → 2026-08-18 (+13d) |  | 50d → 41d |
| P2.L8.BR.1310 | Flooring Prep - Epoxy Floors / L8 / Toilets 395X | 2026-08-06 → 2026-08-21 (+15d) | 2026-08-06 → 2026-08-21 (+15d) |  | 50d → 39d |
| P2.L8.BR.1320 | Flooring - Epoxy Floors / L8 / Toilets 395X | 2026-08-07 → 2026-08-24 (+17d) | 2026-08-12 → 2026-08-27 (+15d) |  | 50d → 39d |
| P2.L8.BR.1250 | Doors & Hardware / L8 / Toilets 395X | 2026-08-13 → 2026-08-28 (+15d) | 2026-08-19 → 2026-09-03 (+15d) |  | 50d → 39d |
| P2.L8.BR.1210 | Paint - Finish Coat / L8 / Toilets 395X | 2026-08-20 → 2026-09-04 (+15d) | 2026-08-26 → 2026-09-11 (+16d) |  | 97d → 86d |
| P2.L8.BR.1220 | Countertops / L8 / Toilets 395X | 2026-08-27 → 2026-09-14 (+18d) | 2026-09-02 → 2026-09-18 (+16d) |  | 97d → 86d |
| P2.L8.BR.1260 | Lockers & Benches / L8 / Toilets 395X | 2026-09-03 → 2026-09-21 (+18d) | 2026-09-10 → 2026-09-25 (+15d) |  | 97d → 86d |
| P2.L8.BR.1270 | Plumbing Fixtures / Sinks / Showers / L8 / Toilets 395X | 2026-09-03 → 2026-09-21 (+18d) | 2026-09-10 → 2026-09-25 (+15d) |  | 102d → 91d |
| P2.L8.BR.1240 | Trim - Electrical Devices / L8 / Toilets 395X | 2026-09-11 → 2026-09-28 (+17d) | 2026-09-17 → 2026-10-02 (+15d) |  | 97d → 86d |
| P2.L8.BR.1280 | Toilet Partitions / L8 / Toilets 395X | 2026-09-11 → 2026-09-28 (+17d) | 2026-09-17 → 2026-10-02 (+15d) |  | 102d → 91d |
| P2.L8.BR.1290 | Bathroom Accessories / L8 / Toilets 395X | 2026-09-11 → 2026-09-28 (+17d) | 2026-09-17 → 2026-10-02 (+15d) |  | 102d → 91d |
| P2.L8.BR.1230 | Trim - Fire Alarm Devices / L8 / Toilets 395X | 2026-09-18 → 2026-10-05 (+17d) | 2026-09-24 → 2026-10-09 (+15d) |  | 97d → 86d |
| P2.L8.BR.1300 | Work Completion List - Finishes / L8 / Toilets 395X | 2026-09-25 → 2026-10-12 (+17d) | 2026-10-01 → 2026-10-16 (+15d) |  | 97d → 86d |
| 1 | **Corridors & Lobbies / Level 8** | 2026-03-30 → 2026-04-29 (+30d) | 2026-12-29 → 2027-01-15 (+17d) |  |  |
| P2.L8.CL.1000 | Paint Prime & 1st Coat Walls / L8 / Corr & Lobbies | 2026-03-30 → 2026-04-29 (+30d) | 2026-04-03 → 2026-05-05 (+32d) |  | 70d → 48d |
| P2.L8.CL.1010 | Framing - Hard Lid Ceilings / L8 / Corr & Lobbies | 2026-04-06 → 2026-05-06 (+30d) | 2026-04-17 → 2026-05-19 (+32d) |  | 75d → 53d |
| P2.L8.CL.1020 | T-Grid / L8 / Corr & Lobbies | 2026-04-06 → 2026-05-06 (+30d) | 2026-04-17 → 2026-05-19 (+32d) |  | 70d → 48d |
| P2.L8.CL.1070 | Trim - Sprinkler Heads @ T-Grid / L8 / Corr & Lobbies | 2026-04-15 → 2026-05-15 (+30d) | 2026-04-21 → 2026-05-21 (+30d) |  | 70d → 48d |
| P2.L8.CL.1040 | R/I - Trim Sprinkler Heads- All Ceilings / L8 / Corr & Lobbies | 2026-04-22 → 2026-05-22 (+30d) | 2026-04-28 → 2026-05-29 (+31d) |  | 70d → 48d |
| P2.L8.CL.1050 | R/I - HVAC- All Ceilings / L8 / Corr & Lobbies | 2026-04-29 → 2026-06-01 (+33d) | 2026-05-05 → 2026-06-05 (+31d) |  | 70d → 48d |
| P2.L8.CL.1030 | R/I - Electrical - All Ceilings / L8 / Corr & Lobbies | 2026-05-06 → 2026-06-08 (+33d) | 2026-05-12 → 2026-06-12 (+31d) |  | 70d → 48d |
| P2.L8.CL.1060 | R/I - All Remaining Low Voltage - All Ceilings / L8 / Corr & Lobbies | 2026-05-13 → 2026-06-15 (+33d) | 2026-05-19 → 2026-06-19 (+31d) |  | 70d → 48d |
| P2.L8.CL.1100 | Pull Wire - Electrical / L8 / Corr & Lobbies | 2026-05-13 → 2026-06-15 (+33d) | 2026-05-27 → 2026-06-26 (+30d) |  | 100d → 78d |
| P2.L8.CL.1080 | R/I - Fire Alarm/Life Safety - All Ceilings / L8 / Corr & Lobbies | 2026-05-20 → 2026-06-22 (+33d) | 2026-05-27 → 2026-06-26 (+30d) |  | 70d → 48d |
| P2.L8.CL.1090 | Inspections - Close In- All Ceilings / L8 / Corr & Lobbies | 2026-05-28 → 2026-06-29 (+32d) | 2026-06-03 → 2026-07-06 (+33d) |  | 70d → 48d |

| ID | Task | Start | Finish | Complete | Total float | Predecessors |
| --- | --- | --- | --- | --- | --- | --- |
| P2.L8.CL.1110 | Pull Wire - Fire Alarm / L8 / Corr & Lobbies | 2026-05-28 → 2026-06-29 (+32d) | 2026-06-03 → 2026-07-06 (+33d) |  | 105d → 83d |  |
| P2.L8.CL.1120 | Pull Wire - All Remianing Low Voltage Systems / L8 / Corr & Lobbies | 2026-06-04 → 2026-07-07 (+33d) | 2026-06-10 → 2026-07-13 (+33d) |  | 110d → 88d |  |
| P2.L8.CL.1130 | Hang/Tape/Finish- Hard Lid Ceilings / L8 / Corr & Lobbies | 2026-06-04 → 2026-07-07 (+33d) | 2026-06-17 → 2026-07-20 (+33d) |  | 70d → 48d |  |
| P2.L8.CL.1330 | Interior Glazing / L8 / Corr & Lobbies | 2026-06-04 → 2026-07-07 (+33d) | 2026-06-10 → 2026-07-13 (+33d) |  | 132d → 110d |  |
| P2.L8.CL.1140 | Drop Ceiling Tiles @ T-Grid / L8 / Corr & Lobbies | 2026-06-11 → 2026-07-14 (+33d) | 2026-06-17 → 2026-07-20 (+33d) |  | 123d → 101d |  |
| P2.L8.CL.1190 | Paint - Hard Lid Ceilings / L8 / Corr & Lobbies | 2026-06-18 → 2026-07-21 (+33d) | 2026-06-24 → 2026-07-27 (+33d) |  | 70d → 48d |  |
| P2.L8.CL.1180 | Ceiling Mounted - HVAC GRD's / L8 / Corr & Lobbies | 2026-06-25 → 2026-07-28 (+33d) | 2026-07-16 → 2026-08-17 (+32d) |  | 70d → 48d |  |
| P2.L8.CL.1150 | Ceiling Mounted - Electrical Devices and Lights / L8 / Corr & Lobbies | 2026-07-10 → 2026-08-11 (+32d) | 2026-08-06 → 2026-09-08 (+33d) |  | 70d → 48d |  |
| P2.L8.CL.1160 | Ceiling Mounted - Fire Alarm/Life Saftey Devices / L8 / Corr & Lobbies | 2026-07-24 → 2026-08-25 (+32d) | 2026-08-13 → 2026-09-15 (+33d) |  | 70d → 48d |  |
| P2.L8.CL.1170 | Ceiling Mounted - All Low Voltage Devices / L8 / Corr & Lobbies | 2026-08-07 → 2026-09-09 (+33d) | 2026-08-27 → 2026-09-29 (+33d) |  | 70d → 48d |  |
| P2.L8.CL.1320 | Prep Flooring / L8 / Corr & Lobbies | 2026-10-15 → 2026-11-02 (+18d) | 2026-10-16 → 2026-11-03 (+18d) |  | 37d → 25d |  |
| P2.L8.CL.1200 | Flooring / L8 / Corr & Lobbies | 2026-10-19 → 2026-11-04 (+16d) | 2026-10-28 → 2026-11-13 (+16d) |  | 37d → 25d |  |
| P2.L8.CL.1210 | Final Paint / L8 / Corr & Lobbies | 2026-10-26 → 2026-11-11 (+16d) | 2026-10-30 → 2026-11-17 (+18d) |  | 37d → 25d |  |
| P2.L8.CL.1220 | Floor Base / L8 / Corr & Lobbies | 2026-11-02 → 2026-11-18 (+16d) | 2026-11-06 → 2026-11-24 (+18d) |  | 52d → 40d |  |
| P2.L8.CL.1250 | Trim - HVAC - Wall Mounted Devices / L8 / Corr & Lobbies | 2026-11-02 → 2026-11-18 (+16d) | 2026-11-06 → 2026-11-24 (+18d) |  | 37d → 25d |  |
| P2.L8.CL.1230 | Trim - All Electrical - Wall Mounted Devices / L8 / Corr & Lobbies | 2026-11-09 → 2026-11-25 (+16d) | 2026-11-13 → 2026-12-03 (+20d) |  | 37d → 25d |  |
| P2.L8.CL.1340 | Wall Protection / L8 / Corr & Lobbies | 2026-11-09 → 2026-11-25 (+16d) | 2026-11-13 → 2026-12-03 (+20d) |  | 52d → 40d |  |
| P2.L8.CL.1240 | Trim - Fire Alarm - Wall Mounted Devices / L8 / Corr & Lobbies | 2026-11-16 → 2026-12-04 (+18d) | 2026-11-20 → 2026-12-10 (+20d) |  | 37d → 25d |  |
| P2.L8.CL.1260 | Trim - All Remining Low Voltage Systems - Wall Mounted Devices / L8 / Corr & Lobbies | 2026-11-23 → 2026-12-11 (+18d) | 2026-12-01 → 2026-12-17 (+16d) |  | 37d → 25d |  |
| P2.L8.CL.1270 | Building Signage / L8 / Corr & Lobbies | 2026-12-02 → 2026-12-18 (+16d) | 2026-12-08 → 2026-12-24 (+16d) |  | 37d → 25d |  |
| P2.L8.CL.1280 | Work Completion List / L8 / Corr & Lobbies | 2026-12-09 → 2026-12-28 (+19d) | 2026-12-15 → 2027-01-04 (+20d) |  | 37d → 25d |  |
| P2.L8.CL.1290 | Rough Clean / L8 / Corr & Lobbies | 2026-12-16 → 2027-01-05 (+20d) | 2026-12-17 → 2027-01-06 (+20d) |  | 37d → 25d |  |
| P2.L8.CL.1300 | Punchlist / L8 / Corr & Lobbies | 2026-12-18 → 2027-01-07 (+20d) | 2026-12-24 → 2027-01-13 (+20d) |  | 37d → 25d |  |
| P2.L8.CL.1310 | Final Clean / L8 / Corr & Lobbies | 2026-12-28 → 2027-01-14 (+17d) | 2026-12-29 → 2027-01-15 (+17d) |  | 37d → 25d |  |
| INT | **L8 / INTERSTITIAL** |  | 2026-06-12 → 2026-07-22 (+40d) |  |  |  |
| 6 | **South Interstitial 8-3905** |  | 2026-06-05 → 2026-06-30 (+25d) |  |  |  |
| Z1 | **Rough In - South Interstitial 8-3905** |  | 2026-03-26 → 2026-04-20 (+25d) |  |  |  |
| P2.L8.INT.S.1190 | OH - Electrical - 208/120v Branch / L8 / South Int |  |  |  |  | P2.L8.INT.S.1160 → P2.L8.INT.S.1160, P2.L8.INT.S.1310 |
| P2.L8.INT.S.1210 | OH - DALT - HP Mains / L8 / South Int | 2025-12-01 → 2025-10-10 A (-52d) | 2025-12-12 A | 0% → 100% | 62d → none |  |
| FRG.P2.L8.INT.S.1710 | HVAC Piping - Hanging Steel Racks (East) / L8 / South Int - FRAGNET |  | 2025-12-29 → 2026-01-29 (+31d) |  | 37d → 20d |  |
| P2.L8.INT.S.1200 | OH - Electrical - Equip Tie In / L8 / South Int | 2025-12-22 → 2025-11-15 A (-37d) | 2026-01-06 → 2025-12-30 A (-7d) | 0% → 100% | 72d → none |  |
| P2.L8.INT.S.1330 | OH - Conduit - Low Volt - Fire Alarm / L8 / South Int | 2026-01-21 → 2025-12-01 A (-51d) | 2026-02-03 → 2025-12-30 A (-35d) | 0% → 100% | 62d → none |  |
| P2.L8.INT.S.1180 | OH - HVAC Piping / L8 / South Int | 2025-12-30 → 2025-12-10 A (-20d) | 2026-01-27 → 2026-02-19 (+23d) | 0% → 25% | 37d → 20d |  |
| P2.L8.INT.S.1170 | Set & Connect - Mech Equipment / L8 / South Int | 2025-12-01 → 2026-01-02 (+32d) | 2025-12-19 → 2026-01-22 (+34d) |  | 72d → 55d |  |
| P2.L8.INT.S.1230 | OH - Insulate HP Duct / L8 / South Int | 2025-12-15 → 2026-01-02 (+18d) | 2025-12-29 → 2026-01-15 (+17d) |  | 67d → 55d |  |
| P2.L8.INT.S.1240 | OH - Hang Duct - LP Branch / L8 / South Int | 2025-12-15 → 2026-01-02 (+18d) | 2026-01-06 → 2026-01-22 (+16d) |  | 62d → 50d |  |
| P2.L8.INT.S.1280 | Pull Wire - Electrical - 480/277v Distribution / L8 / South Int | 2026-01-07 → 2026-01-23 (+16d) | 2026-01-20 → 2026-02-05 (+16d) |  | 82d → 70d |  |
| P2.L8.INT.S.1310 | OH - Insulate LP Duct / L8 / South Int | 2026-01-07 → 2026-01-23 (+16d) | 2026-01-20 → 2026-02-05 (+16d) |  | 62d → 50d |  |
| P2.L8.INT.S.1270 | Pull Wire - Electrical - 208/120v Branch & Equip / L8 / South Int | 2026-01-07 → 2026-02-06 (+30d) | 2026-02-03 → 2026-03-05 (+30d) |  | 72d → 50d |  |
| P2.L8.INT.S.1340 | OH - Conduit - Low Volt - Telecom / L8 / South Int | 2026-01-21 → 2026-02-06 (+16d) | 2026-02-03 → 2026-02-19 (+16d) |  | 62d → 50d |  |
| P2.L8.INT.S.1370 | Pull Wire - Low Volt - Fire Alarm / L8 / South Int | 2026-02-04 → 2026-02-06 (+2d) | 2026-02-17 → 2026-02-19 (+2d) |  | 62d → 60d |  |
| P2.L8.INT.S.1250 | OH - HVAC Piping - Test / L8 / South Int | 2026-01-28 → 2026-02-20 (+23d) | 2026-02-10 → 2026-03-05 (+23d) |  | 37d → 20d |  |
| P2.L8.INT.S.1380 | Pull Wire - Low Volt - Telecom / L8 / South Int | 2026-02-04 → 2026-02-20 (+16d) | 2026-02-17 → 2026-03-05 (+16d) |  | 62d → 50d |  |
| P2.L8.INT.S.1290 | OH - HVAC Piping - Equip Tie In / L8 / South Int | 2026-02-11 → 2026-03-06 (+23d) | 2026-03-03 → 2026-03-26 (+23d) |  | 42d → 25d |  |
| P2.L8.INT.S.1300 | OH - Insulate HVAC Pipe / L8 / South Int | 2026-02-11 → 2026-03-06 (+23d) | 2026-02-24 → 2026-03-19 (+23d) |  | 37d → 20d |  |
| P2.L8.INT.S.1320 | OH - Conduit - Low Volt - BAS/Controls / L8 / South Int | 2026-02-25 → 2026-03-20 (+23d) | 2026-03-10 → 2026-04-02 (+23d) |  | 37d → 20d |  |
| P2.L8.INT.S.1350 | OH - Conduit - Low Volt - Security / L8 / South Int | 2026-02-25 → 2026-03-20 (+23d) | 2026-03-10 → 2026-04-02 (+23d) |  | 37d → 20d |  |
| P2.L8.INT.S.1110 | Firestop - Thru Wall / L8 / South Int | 2026-03-11 → 2026-04-03 (+23d) | 2026-03-17 → 2026-04-09 (+23d) |  | 42d → 25d |  |
| P2.L8.INT.S.1360 | Pull Wire - Low Volt - BAS/Controls / L8 / South Int | 2026-03-11 → 2026-04-03 (+23d) | 2026-03-24 → 2026-04-16 (+23d) |  | 37d → 20d |  |
| P2.L8.INT.S.1390 | Pull Wire - Low Volt - Security / L8 / South Int | 2026-03-11 → 2026-04-03 (+23d) | 2026-03-24 → 2026-04-16 (+23d) |  | 37d → 20d |  |
| P2.L8.INT.S.1400 | Trades Inspect & Verify R/I Work Completed to Specs / L8 / South Int | 2026-03-25 → 2026-04-17 (+23d) | 2026-03-26 → 2026-04-20 (+25d) |  | 37d → 20d |  |
| 2 | **Finishes - South Interstitial 8-3905 (4,786 sf)** | 2026-03-27 → 2026-04-21 (+25d) | 2026-06-05 → 2026-06-30 (+25d) |  |  |  |
| P2.L8.INT.S.2000 | Flooring Prep - Epoxy Floors / L8 / South Int | 2026-03-27 → 2026-04-21 (+25d) | 2026-04-06 → 2026-04-29 (+23d) |  | 132d → 115d |  |
| P2.L8.INT.S.2090 | Flooring - Epoxy Floors / L8 / South Int | 2026-04-07 → 2026-04-30 (+23d) | 2026-04-09 → 2026-05-04 (+25d) |  | 132d → 115d |  |
| P2.L8.INT.S.2010 | Paint - Finish Coat / L8 / South Int | 2026-04-10 → 2026-05-05 (+25d) | 2026-04-16 → 2026-05-11 (+25d) |  | 132d → 115d |  |
| P2.L8.INT.S.2020 | Doors & Hardware / L8 / South Int | 2026-04-17 → 2026-05-12 (+25d) | 2026-04-23 → 2026-05-18 (+25d) |  | 132d → 115d |  |
| P2.L8.INT.S.2040 | Building Signage / L8 / South Int | 2026-04-17 → 2026-05-12 (+25d) | 2026-04-23 → 2026-05-18 (+25d) |  | 184d → 167d |  |
| P2.L8.INT.S.2030 | Trim All MEP Finishes / L8 / South Int | 2026-04-24 → 2026-05-19 (+25d) | 2026-04-30 → 2026-05-26 (+26d) |  | 179d → 162d |  |
| P2.L8.INT.S.2050 | Rough Clean / L8 / South Int | 2026-05-01 → 2026-05-27 (+26d) | 2026-05-07 → 2026-06-02 (+26d) |  | 179d → 162d |  |
| P2.L8.INT.S.2060 | Prepare Punchlist / L8 / South Int | 2026-05-08 → 2026-06-03 (+26d) | 2026-05-14 → 2026-06-09 (+26d) |  | 179d → 162d |  |
| P2.L8.INT.S.2070 | Correct Punchlist / L8 / South Int | 2026-05-15 → 2026-06-10 (+26d) | 2026-05-29 → 2026-06-23 (+25d) |  | 179d → 162d |  |
| P2.L8.INT.S.2080 | Final Clean / L8 / South Int | 2026-06-01 → 2026-06-24 (+23d) | 2026-06-05 → 2026-06-30 (+25d) |  | 179d → 162d |  |
| 1 | **North Interstitial 8-2855** |  | 2026-06-12 → 2026-07-22 (+40d) |  |  |  |
| Z11 | **Rough In - North Interstitial 8-2855** |  | 2026-04-02 → 2026-05-11 (+39d) |  |  |  |
| P2.L8.INT.N.1190 | OH - Electrical - 208/120v Branch / L8 / North Int |  | 2025-12-05 → 2026-04-09 (+125d) |  | 92d → 5d | P2.L8.INT.N.1160 → P2.L8.INT.N.1160, P2.L8.INT.N.1310 |
| P2.L8.INT.N.1200 | OH - Electrical - Equip Tie In / L8 / North Int |  | 2025-12-29 → 2026-01-29 (+31d) |  | 77d → 55d |  |
| P2.L8.INT.N.1180 | OH - HVAC Piping (High-Steel) / L8 / North Int | 2025-12-30 → 2025-12-01 A (-29d) | 2026-01-13 → 2026-02-05 (+23d) | 0% → 50% | 43d → 26d |  |
| P2.L8.INT.N.1210 | OH - DALT - HP Mains / L8 / North Int |  | 2026-01-06 → 2026-02-05 (+30d) |  | 32d → 5d |  |
| P2.L8.INT.N.1330 | OH - Conduit - Low Volt - Fire Alarm / L8 / North Int | 2026-03-04 → 2025-12-01 A (-93d) | 2026-03-17 → 2025-12-30 A (-77d) | 0% → 100% | 32d → none |  |
| P2.L8.INT.N.2090 | OH - Hang Duct - HP Mains (Low) / L8 / North Int |  | 2025-12-12 → 2026-01-15 (+34d) |  | 32d → 5d |  |

| ID | Task | Start | Finish | Complete | Total float |
| --- | --- | --- | --- | --- | --- |
| P2.L8.INT.N.1170 | Set & Connect - Mech Equipment / L8 / North Int | 2025-12-01 → 2026-01-02 (+32d) | 2025-12-19 → 2026-01-22 (+34d) |  | 77d → 55d |
| P2.L8.INT.N.1220 | OH - Plumbing - Test / L8 / North Int | 2025-12-15 → 2026-01-16 (+32d) | 2026-01-13 → 2026-02-12 (+30d) |  | 67d → 45d |
| P2.L8.INT.N.1280 | Pull Wire - Electrical - 480/277v Distribution / L8 / North Int | 2025-12-30 → 2026-01-30 (+31d) | 2026-01-13 → 2026-02-12 (+30d) |  | 87d → 65d |
| P2.L8.INT.N.1230 | OH - Insulate HP Duct / L8 / North Int | 2026-01-07 → 2026-02-06 (+30d) | 2026-01-20 → 2026-02-19 (+30d) |  | 52d → 30d |
| P2.L8.INT.N.1240 | OH - Hang Duct - LP Branch (High) / L8 / North Int | 2026-01-07 → 2026-02-06 (+30d) | 2026-02-03 → 2026-03-05 (+30d) |  | 32d → 5d |
| P2.L8.INT.N.2100 | OH - HVAC Piping (Low) / L8 / North Int | 2026-01-14 → 2026-02-06 (+23d) | 2026-01-27 → 2026-02-19 (+23d) |  | 43d → 26d |
| P2.L8.INT.N.1250 | OH - HVAC Piping - Test / L8 / North Int | 2026-01-20 → 2026-02-12 (+23d) | 2026-02-02 → 2026-02-25 (+23d) |  | 43d → 26d |
| P2.L8.INT.N.1260 | OH - Insulate Plumbing / L8 / North Int | 2026-01-14 → 2026-02-13 (+30d) | 2026-02-10 → 2026-03-12 (+30d) |  | 67d → 45d |
| P2.L8.INT.N.1290 | OH - HVAC Piping - Equip Tie In / L8 / North Int | 2026-02-03 → 2026-02-26 (+23d) | 2026-02-23 → 2026-03-18 (+23d) |  | 48d → 31d |
| P2.L8.INT.N.1300 | OH - Insulate HVAC Pipe / L8 / North Int | 2026-02-03 → 2026-02-26 (+23d) | 2026-02-16 → 2026-03-11 (+23d) |  | 43d → 26d |
| P2.L8.INT.N.2110 | OH - Hang Duct - LP Branch (Low) / L8 / North Int | 2026-02-04 → 2026-03-06 (+30d) | 2026-02-17 → 2026-03-19 (+30d) |  | 32d → 5d |
| P2.L8.INT.N.1320 | OH - Conduit - Low Volt - BAS/Controls / L8 / North Int | 2026-02-17 → 2026-03-12 (+23d) | 2026-03-02 → 2026-03-25 (+23d) |  | 43d → 26d |
| P2.L8.INT.N.1350 | OH - Conduit - Low Volt - Security / L8 / North Int | 2026-02-17 → 2026-03-12 (+23d) | 2026-03-02 → 2026-03-25 (+23d) |  | 43d → 26d |
| P2.L8.INT.N.1310 | OH - Insulate LP Duct / L8 / North Int | 2026-02-18 → 2026-03-20 (+30d) | 2026-03-03 → 2026-04-02 (+30d) |  | 32d → 5d |
| P2.L8.INT.N.1360 | Pull Wire - Low Volt - BAS/Controls / L8 / North Int | 2026-03-03 → 2026-03-26 (+23d) | 2026-03-16 → 2026-04-08 (+23d) |  | 43d → 26d |
| P2.L8.INT.N.1390 | Pull Wire - Low Volt - Security / L8 / North Int | 2026-03-03 → 2026-03-26 (+23d) | 2026-03-16 → 2026-04-08 (+23d) |  | 43d → 26d |
| P2.L8.INT.N.1340 | OH - Conduit - Low Volt - Telecom / L8 / North Int | 2026-03-04 → 2026-04-03 (+30d) | 2026-03-17 → 2026-04-16 (+30d) |  | 32d → 10d |
| P2.L8.INT.N.1370 | Pull Wire - Low Volt - Fire Alarm / L8 / North Int | 2026-03-18 → 2026-04-03 (+16d) | 2026-03-31 → 2026-04-16 (+16d) |  | 32d → 20d |
| P2.L8.INT.N.1270 | Pull Wire - Electrical - 208/120v Branch & Equip / L8 / North Int | 2025-12-30 → 2026-04-10 (+101d) | 2026-01-27 → 2026-05-07 (+100d) |  | 77d → 5d |
| P2.L8.INT.N.1110 | Firestop - Thru Wall / L8 / North Int | 2026-03-18 → 2026-04-17 (+30d) | 2026-03-24 → 2026-04-23 (+30d) |  | 37d → 15d |
| P2.L8.INT.N.1380 | Pull Wire - Low Volt - Telecom / L8 / North Int | 2026-03-18 → 2026-04-17 (+30d) | 2026-03-31 → 2026-04-30 (+30d) |  | 32d → 10d |
| P2.L8.INT.N.1400 | Trades Inspect & Verify R/I Work Completed to Specs / L8 / North Int | 2026-04-01 → 2026-05-08 (+37d) | 2026-04-02 → 2026-05-11 (+39d) |  | 32d → 5d |
| 1 | **Finishes - North Interstitial 8-2855 (12,785 sf)** | 2026-04-03 → 2026-05-12 (+39d) | 2026-06-12 → 2026-07-22 (+40d) |  |  |
| P2.L8.INT.N.2000 | Flooring Prep - Epoxy Floors / L8 / North Int | 2026-04-03 → 2026-05-12 (+39d) | 2026-04-13 → 2026-05-20 (+37d) |  | 127d → 100d |
| P2.L8.INT.N.2120 | Flooring - Epoxy Floors / L8 / North Int | 2026-04-14 → 2026-05-21 (+37d) | 2026-04-16 → 2026-05-26 (+40d) |  | 127d → 100d |
| P2.L8.INT.N.2010 | Paint - Finish Coat / L8 / North Int | 2026-04-17 → 2026-05-27 (+40d) | 2026-04-23 → 2026-06-02 (+40d) |  | 127d → 100d |
| P2.L8.INT.N.2020 | Doors & Hardware / L8 / North Int | 2026-04-24 → 2026-06-03 (+40d) | 2026-04-30 → 2026-06-09 (+40d) |  | 127d → 100d |
| P2.L8.INT.N.2040 | Building Signage / L8 / North Int | 2026-04-24 → 2026-06-03 (+40d) | 2026-04-30 → 2026-06-09 (+40d) |  | 179d → 152d |
| P2.L8.INT.N.2030 | Trim All MEP Finishes / L8 / North Int | 2026-05-01 → 2026-06-10 (+40d) | 2026-05-07 → 2026-06-16 (+40d) |  | 174d → 147d |
| P2.L8.INT.N.2050 | Rough Clean / L8 / North Int | 2026-05-08 → 2026-06-17 (+40d) | 2026-05-14 → 2026-06-23 (+40d) |  | 174d → 147d |
| P2.L8.INT.N.2060 | Prepare Punchlist / L8 / North Int | 2026-05-15 → 2026-06-24 (+40d) | 2026-05-21 → 2026-06-30 (+40d) |  | 174d → 147d |
| P2.L8.INT.N.2070 | Correct Punchlist / L8 / North Int | 2026-05-22 → 2026-07-01 (+40d) | 2026-06-05 → 2026-07-15 (+40d) |  | 174d → 147d |
| P2.L8.INT.N.2080 | Final Clean / L8 / North Int | 2026-06-08 → 2026-07-16 (+38d) | 2026-06-12 → 2026-07-22 (+40d) |  | 174d → 147d |
| 1 | **MECHANICAL TOWERS / LEVEL 8** |  | 2026-05-19 → 2026-06-12 (+24d) |  |  |
| 4 | **South Mechanical Tower / Rough In & Finish / Level 8** |  | 2026-04-07 → 2026-04-24 (+17d) |  |  |
| P2.L8.SMT.1080 | Set & Connect - Elect Panels and Equipment / L8 - S. Mech Tower |  | 2025-12-02 → 2026-01-05 (+34d) |  | 135d → 115d |
| P2.L8.SMT.1120 | BAS - Equip Tie In / L8 - S. Mech Tower |  | 2025-12-02 A | 60% → 100% | 147d → none |
| P2.L8.SMT.1130 | Test/Inspect Duct & Piping / L8 - S. Mech Tower | 2025-12-01 A | 2025-12-12 A | 0% → 100% | 154d → none |
| P2.L8.SMT.1180 | Paint - Finish Coat / L8 - S. Mech Tower | 2026-03-16 → 2025-12-03 A (-103d) | 2026-03-17 → 2025-12-09 A (-98d) | 0% → 100% | 89d → none |
| P2.L8.SMT.1110 | HVAC Piping - Equip Tie In / L8 - S. Mech Tower | 2026-01-28 → 2026-02-20 (+23d) | 2026-02-24 → 2026-03-19 (+23d) |  | 104d → 87d |
| P2.L8.SMT.1200 | Flooring Prep - Epoxy Floors / L8 - S. Mech Tower | 2026-02-09 → 2026-03-02 (+21d) | 2026-02-11 → 2026-03-04 (+21d) |  | 89d → 76d |
| P2.L8.SMT.1250 | Flooring - Epoxy Floors / L8 - S. Mech Tower | 2026-02-12 → 2026-03-05 (+21d) | 2026-02-13 → 2026-03-06 (+21d) |  | 89d → 76d |
| P2.L8.SMT.1090 | Panelboards, Interconnect Wiring, and Remaining Room Buildout of All Elec/FA Systems / L8 - S. Mech Tower | 2026-02-16 → 2026-03-09 (+21d) | 2026-02-27 → 2026-03-20 (+21d) |  | 89d → 76d |
| P2.L8.SMT.1150 | Insulate HVAC / Plumbing Pipe / L8 - S. Mech Tower | 2026-02-25 → 2026-03-20 (+23d) | 2026-03-03 → 2026-03-26 (+23d) |  | 104d → 87d |
| P2.L8.SMT.1140 | Pull Wire - In From Distribution Panels / Out to Branch Circuits / L8 - S. Mech Tower | 2026-03-02 → 2026-03-23 (+21d) | 2026-03-06 → 2026-03-27 (+21d) |  | 89d → 76d |
| P2.L8.SMT.1160 | Electrical Tie in to Equipment / L8 - S. Mech Tower | 2026-03-09 → 2026-03-30 (+21d) | 2026-03-13 → 2026-04-03 (+21d) |  | 106d → 91d |
| P2.L8.SMT.1170 | Test & Terminate / L8 - S. Mech Tower | 2026-03-09 → 2026-03-30 (+21d) | 2026-03-13 → 2026-04-03 (+21d) |  | 89d → 76d |
| P2.L8.SMT.1190 | Trim All MEPF Finishes / L8 - S. Mech Tower | 2026-03-18 → 2026-04-06 (+19d) | 2026-03-19 → 2026-04-07 (+19d) |  | 90d → 77d |
| P2.L8.SMT.1340 | Wall Protection / L8 - S. Mech Tower | 2026-03-18 → 2026-04-06 (+19d) | 2026-03-24 → 2026-04-10 (+17d) |  | 89d → 76d |
| P2.L8.SMT.1210 | Doors & Hardware / L8 - S. Mech Tower | 2026-03-20 → 2026-04-08 (+19d) | 2026-03-23 → 2026-04-09 (+17d) |  | 90d → 77d |
| P2.L8.SMT.1220 | Trades Inspect & Verify R/I Work Completed to Specs / L8 - S. Mech Tower | 2026-03-25 → 2026-04-13 (+19d) | 2026-03-31 → 2026-04-17 (+17d) |  | 89d → 76d |
| P2.L8.SMT.1240 | Energize Elec Panels - Lock Doors and Limit Access / L8 - S. Mech Tower | 2026-04-01 → 2026-04-20 (+19d) | 2026-04-07 → 2026-04-24 (+17d) |  | 89d → 76d |
| P2.L8.SMT.1230 | HVAC System Ready for Start Up / L8 - S. Mech Tower | 2026-04-07 → 2026-04-24 (+17d) | 2026-04-07 → 2026-04-24 (+17d) |  | 89d → 76d |
| 8 | **East Mechanical Tower / Rough In & Finish / Level 8** |  | 2026-05-19 → 2026-06-12 (+24d) |  |  |
| P2.L8.EMT.1080 | Set & Connect - Elect Panels and Equipment / L8 - E. Mech Tower | 2025-12-01 A | 2025-12-05 A | 0% → 100% | 132d → none |
| P2.L8.EMT.1105 | HVAC Duct Connections to Shaft Riser / L8 - E. Mech Tower | 2025-12-01 → 2026-01-02 (+32d) | 2025-12-29 → 2026-01-29 (+31d) |  | 134d → 112d |
| P2.L8.EMT.1120 | BAS - Equip Tie In / L8 - E. Mech Tower | 2025-12-01 → 2026-01-02 (+32d) | 2025-12-05 → 2026-01-08 (+34d) |  | 144d → 122d |
| P2.L8.EMT.1130 | Test/Inspect Duct & Piping / L8 - E. Mech Tower | 2025-12-30 → 2026-01-30 (+31d) | 2026-01-13 → 2026-02-12 (+30d) |  | 134d → 112d |
| P2.L8.EMT.1200 | Flooring Prep - Epoxy Floors / L8 - E. Mech Tower | 2026-01-13 → 2026-02-12 (+30d) | 2026-01-15 → 2026-02-16 (+32d) |  | 108d → 86d |
| P2.L8.EMT.1150 | Insulate HVAC / Plumbing Pipe / L8 - E. Mech Tower | 2026-01-14 → 2026-02-13 (+30d) | 2026-01-20 → 2026-02-19 (+30d) |  | 134d → 112d |
| P2.L8.EMT.1280 | Flooring - Epoxy Floors / L8 - E. Mech Tower | 2026-01-16 → 2026-02-17 (+32d) | 2026-01-19 → 2026-02-18 (+30d) |  | 108d → 86d |
| P2.L8.EMT.1090 | Panelboards, Interconnect Wiring, and Remaining Room Buildout of All Elec/FA Systems / L8 - E. Mech Tower | 2026-01-20 → 2026-02-19 (+30d) | 2026-02-02 → 2026-03-04 (+30d) |  | 108d → 86d |
| P2.L8.EMT.1110 | HVAC Piping - Equip Tie In (Chilled Water) / L8 - E. Mech Tower | 2026-01-28 → 2026-02-20 (+23d) | 2026-02-24 → 2026-03-19 (+23d) |  | 69d → 52d |
| P2.L8.EMT.1140 | Pull Wire - In From Distribution Panels / Out to Branch Circuits / L8 - E. Mech Tower | 2026-02-03 → 2026-03-05 (+30d) | 2026-02-09 → 2026-03-11 (+30d) |  | 108d → 86d |
| P2.L8.EMT.1160 | Electrical Tie in to Equipment / L8 - E. Mech Tower | 2026-02-10 → 2026-03-12 (+30d) | 2026-02-16 → 2026-03-18 (+30d) |  | 125d → 103d |
| P2.L8.EMT.1170 | Test & Terminate / L8 - E. Mech Tower | 2026-02-10 → 2026-03-12 (+30d) | 2026-02-16 → 2026-03-18 (+30d) |  | 108d → 86d |
| P2.L8.EMT.1180 | Paint - Finish Coat / L8 - E. Mech Tower | 2026-02-17 → 2026-03-19 (+30d) | 2026-02-18 → 2026-03-20 (+30d) |  | 108d → 86d |
| P2.L8.EMT.1250 | HVAC Piping - Equip Tie In (Reheat) / L8 - E. Mech Tower | 2026-02-25 → 2026-03-20 (+23d) | 2026-03-24 → 2026-04-16 (+23d) |  | 69d → 52d |
| P2.L8.EMT.1190 | Trim All MEPF Finishes / L8 - E. Mech Tower | 2026-02-19 → 2026-03-23 (+32d) | 2026-02-20 → 2026-03-24 (+32d) |  | 109d → 87d |
| P2.L8.EMT.1340 | Wall Protection / L8 - E. Mech Tower | 2026-02-19 → 2026-03-23 (+32d) | 2026-02-25 → 2026-03-27 (+30d) |  | 108d → 86d |

| ID | Task | Start | Finish | Complete | Total float | Predecessors |
| --- | --- | --- | --- | --- | --- | --- |
| P2.L8.EMT.1210 | Doors & Hardware / L8 - E. Mech Tower | 2026-02-23 → 2026-03-25 (+30d) | 2026-02-24 → 2026-03-26 (+30d) |  | 109d → 87d |  |
| P2.L8.EMT.1220 | Trades Inspect & Verify R/I Work Completed to Specs / L8 - E. Mech Tower | 2026-02-26 → 2026-03-30 (+32d) | 2026-03-04 → 2026-04-03 (+30d) |  | 108d → 86d |  |
| FRG.P2.L8.EMT.1050 | AHU Piping Install / L8 - E. Mech Tower - FRAGNET | 2026-03-18 → 2026-04-17 (+30d) | 2026-04-14 → 2026-05-14 (+30d) |  | 79d → 57d |  |
| P2.L8.EMT.1260 | HVAC Piping - Equip Tie In (Steam) / L8 - E. Mech Tower | 2026-03-25 → 2026-04-17 (+23d) | 2026-04-21 → 2026-05-14 (+23d) |  | 69d → 52d |  |
| P2.L8.EMT.1240 | Energize Elec Panels - Lock Doors and Limit Access / L8 - E. Mech Tower | 2026-04-15 → 2026-05-15 (+30d) | 2026-04-21 → 2026-05-21 (+30d) |  | 79d → 57d |  |
| P2.L8.EMT.1270 | HVAC Piping - Equip Tie In (Humidification) / L8 - E. Mech Tower | 2026-04-22 → 2026-05-15 (+23d) | 2026-05-19 → 2026-06-12 (+24d) |  | 69d → 52d |  |
| P2.L8.EMT.1230 | HVAC System Ready for Start Up / L8 - E. Mech Tower | 2026-04-21 → 2026-05-21 (+30d) | 2026-04-21 → 2026-05-21 (+30d) |  | 79d → 57d |  |
| L9 | **L9 PENTHOUSE / BUILDOUT** |  | 2026-08-21 → 2026-09-23 (+33d) |  |  |  |
| 1 | **CORE & SUPPORT SPACES / LEVEL 9 - Penthouse** |  | 2026-08-21 → 2026-09-23 (+33d) |  |  |  |
| L81 | **ROUGH IN - Core & Support Spaces / Level 9 - Penthouse** |  | 2026-05-22 → 2026-06-24 (+33d) |  |  |  |
| Z112 | **South / Level 9 - Penthouse** |  | 2026-05-22 → 2026-06-24 (+33d) |  |  |  |
| P2.PH.S.1220 | OH - HVAC Piping (West) / L9 PH / South |  | 2026-01-26 → 2026-02-25 (+30d) |  | 50d → 28d |  |
| P2.PH.S.1230 | OH - Electrical - 208/120v Branch / L9 PH / South |  | 2025-12-02 → 2026-02-17 (+77d) |  | 85d → 32d | P2.PH.S.1190, P2.BIM.MRPH.40.140 → P2.PH.S.1190, P2.BIM.MRPH.40.140, P2.PH.S.1350 |
| P2.PH.S.1210 | OH - Hang Duct - HP Mains / L9 PH / South |  | 2025-12-01 → 2025-12-19 A (+18d) | 95% → 100% | 54d → none |  |
| P2.PH.S.1400 | OH - Conduit - Low Volt - Security / L9 PH / South |  | 2025-12-10 → 2026-01-13 (+34d) |  | 89d → 67d |  |
| P2.PH.S.1300 | OH - Hang Duct - LP Branch / L9 PH / South |  | 2026-01-02 → 2026-01-30 (+28d) |  | 54d → 32d |  |
| FRG.P2.PH.S.1660 | HVAC Piping - Hanging Steel Racks (West) / L9 PH / South - FRAGNET |  | 2025-12-16 → 2026-01-19 (+34d) |  | 50d → 28d |  |
| P2.PH.S.1260 | OH - DALT - HP Mains / L9 PH / South | 2025-12-02 → 2025-12-01 A (-1d) | 2025-12-22 → 2026-01-21 (+30d) | 0% → 7% | 54d → 32d |  |
| P2.PH.S.1380 | OH - Conduit - Low Volt - Fire Alarm / L9 PH / South | 2026-01-19 → 2025-12-01 A (-49d) | 2026-01-30 → 2026-02-26 (+27d) | 0% → 10% | 54d → 35d |  |
| P2.PH.S.1250 | Pull Wire - Electrical - 480/277v Distribution / L9 PH / South | 2025-12-01 → 2026-01-02 (+32d) | 2025-12-12 → 2026-01-15 (+34d) |  | 97d → 75d |  |
| P2.PH.S.1320 | OH - Electrical - Equip Tie In / L9 PH / South | 2025-12-01 → 2026-01-02 (+32d) | 2025-12-12 → 2026-01-15 (+34d) |  | 77d → 55d |  |
| P2.PH.S.1610 | Panels Ready to Energize - Lock Doors and Limit Access (Elevator Group 1 & 3) / L9 PH / South | 2025-12-01 → 2026-01-02 (+32d) | 2025-12-01 → 2026-01-02 (+32d) |  | 256d → 244d |  |
| FRG.P2.PH.S.1670 | HVAC Piping - Hanging Steel Racks (East) / L9 PH / South - FRAGNET | 2025-12-17 → 2026-01-20 (+34d) | 2026-01-08 → 2026-02-09 (+32d) |  | 50d → 28d |  |
| P2.PH.S.1290 | OH - Insulate HP Duct / L9 PH / South | 2025-12-23 → 2026-01-22 (+30d) | 2026-01-07 → 2026-02-04 (+28d) |  | 191d → 171d |  |
| P2.PH.S.1350 | OH - Insulate LP Duct / L9 PH / South | 2026-01-05 → 2026-02-02 (+28d) | 2026-01-16 → 2026-02-13 (+28d) |  | 54d → 32d |  |
| P2.PH.S.1390 | OH - Conduit - Low Volt - Telecom / L9 PH / South | 2026-01-19 → 2026-02-16 (+28d) | 2026-01-30 → 2026-02-27 (+28d) |  | 54d → 34d |  |
| P2.PH.S.1360 | Pull Wire - Electrical - 208/120v Branch & Equip / L9 PH / South | 2025-12-15 → 2026-02-18 (+65d) | 2026-01-13 → 2026-03-17 (+63d) |  | 77d → 32d |  |
| P2.PH.S.1560 | OH - HVAC Piping (East) / L9 PH / South | 2026-01-27 → 2026-02-26 (+30d) | 2026-02-16 → 2026-03-18 (+30d) |  | 50d → 28d |  |
| P2.PH.S.1480 | Spray/Seal/Firestop - Head of Wall / L9 PH / South | 2026-02-02 → 2026-03-02 (+28d) | 2026-02-13 → 2026-03-13 (+28d) |  | 54d → 34d |  |
| P2.PH.S.1490 | Firestop - Thru Wall / L9 PH / South | 2026-02-02 → 2026-03-02 (+28d) | 2026-02-13 → 2026-03-13 (+28d) |  | 54d → 34d |  |
| P2.PH.S.1500 | Pull Wire - Low Volt - BAS/Controls / L9 PH / South | 2026-02-02 → 2026-03-02 (+28d) | 2026-02-13 → 2026-03-13 (+28d) |  | 54d → 34d |  |
| P2.PH.S.1510 | Pull Wire - Low Volt - Fire Alarm / L9 PH / South | 2026-02-02 → 2026-03-02 (+28d) | 2026-02-13 → 2026-03-13 (+28d) |  | 54d → 34d |  |
| P2.PH.S.1520 | Pull Wire - Low Volt - Telecom / L9 PH / South | 2026-02-02 → 2026-03-02 (+28d) | 2026-02-13 → 2026-03-13 (+28d) |  | 54d → 34d |  |
| P2.PH.S.1530 | Pull Wire - Low Volt - Security / L9 PH / South | 2026-02-02 → 2026-03-02 (+28d) | 2026-02-13 → 2026-03-13 (+28d) |  | 54d → 34d |  |
| P2.PH.S.1550 | Trades Inspect & Verify R/I Work Completed to Specs / L9 PH / South | 2026-02-16 → 2026-03-18 (+30d) | 2026-02-20 → 2026-03-24 (+32d) |  | 54d → 32d |  |
| P2.PH.S.1270 | OH - HVAC Piping - Test / L9 PH / South | 2026-02-17 → 2026-03-19 (+30d) | 2026-03-09 → 2026-04-08 (+30d) |  | 50d → 28d |  |
| P2.PH.S.1330 | OH - HVAC Piping - Equip Tie In / L9 PH / South | 2026-03-10 → 2026-04-09 (+30d) | 2026-04-06 → 2026-05-06 (+30d) |  | 50d → 28d |  |
| P2.PH.S.1340 | OH - Insulate HVAC Pipe / L9 PH / South | 2026-03-10 → 2026-04-09 (+30d) | 2026-03-23 → 2026-04-22 (+30d) |  | 148d → 126d |  |
| P2.PH.S.1600 | Install - High Purity Water Equipment - Lab | 2026-05-11 → 2026-06-11 (+31d) | 2026-05-22 → 2026-06-24 (+33d) |  | 81d → 59d |  |
| Z1121 | **North / Level 9 - Penthouse** |  | 2026-04-27 → 2026-05-28 (+31d) |  |  |  |
| P2.PH.N.1230 | OH - Electrical - 208/120v Branch / L9 PH / North |  | 2025-12-03 → 2026-02-12 (+71d) |  | 76d → 27d | P2.PH.N.1190, P2.BIM.MRPH.40.140 → P2.PH.N.1190, P2.BIM.MRPH.40.140, P2.PH.N.1350 |
| P2.PH.N.1400 | OH - Conduit - Low Volt - Security / L9 PH / North |  | 2025-12-15 → 2026-02-24 (+71d) |  | 76d → 27d |  |
| P2.PH.N.1300 | OH - Hang Duct - LP Branch / L9 PH / North |  | 2025-12-24 → 2026-01-26 (+33d) |  | 59d → 27d |  |
| P2.PH.N.1210 | OH - Hang Duct - HP Mains / L9 PH / North |  | 2025-12-15 → 2026-01-15 (+31d) |  | 59d → 27d |  |
| P2.PH.N.1380 | OH - Conduit - Low Volt - Fire Alarm / L9 PH / North | 2025-12-26 → 2025-12-01 A (-25d) | 2026-01-09 → 2026-02-05 (+27d) | 0% → 20% | 59d → 40d |  |
| FRG.P2.PH.N.1620 | HVAC Piping - Staging & Layout / L9 PH / North - FRAGNET | 2025-12-01 → 2026-01-02 (+32d) | 2025-12-12 → 2026-01-15 (+34d) |  | 52d → 30d |  |
| P2.PH.N.1250 | Pull Wire - Electrical - 480/277v Distribution / L9 PH / North | 2025-12-01 → 2026-01-02 (+32d) | 2025-12-12 → 2026-01-15 (+34d) |  | 141d → 119d |  |
| P2.PH.N.1660 | Panelboards, Interconnect Wiring, and Remaining Room Buildout of All Systems (Elevator Group 2) / L9 PH / North | 2025-12-01 → 2026-01-02 (+32d) | 2025-12-05 → 2026-01-08 (+34d) |  | 211d → 189d |  |
| P2.PH.N.1650 | Panels Ready to Energize - Lock Doors and Limit Access (Elevator Group 2) / L9 PH / North | 2025-12-12 → 2026-01-15 (+34d) | 2025-12-12 → 2026-01-15 (+34d) |  | 206d → 184d |  |
| FRG.P2.PH.N.1630 | HVAC Piping - Hanging Steel Racks (West) / L9 PH / North - FRAGNET | 2025-12-15 → 2026-01-16 (+32d) | 2025-12-31 → 2026-02-02 (+33d) |  | 52d → 30d |  |
| P2.PH.N.1260 | OH - DALT - HP Mains / L9 PH / North | 2025-12-16 → 2026-01-16 (+31d) | 2025-12-22 → 2026-01-22 (+31d) |  | 59d → 27d |  |
| P2.PH.N.1290 | OH - Insulate HP Duct / L9 PH / North | 2025-12-23 → 2026-01-23 (+31d) | 2026-01-07 → 2026-02-05 (+29d) |  | 115d → 94d |  |
| P2.PH.N.1350 | OH - Insulate LP Duct / L9 PH / North | 2025-12-26 → 2026-01-27 (+32d) | 2026-01-09 → 2026-02-09 (+31d) |  | 123d → 27d |  |
| P2.PH.N.1390 | OH - Conduit - Low Volt - Telecom / L9 PH / North | 2025-12-26 → 2026-01-27 (+32d) | 2026-01-09 → 2026-02-09 (+31d) |  | 59d → 38d |  |
| FRG.P2.PH.N.1680 | HVAC Piping - Hanging Steel Racks (East) / L9 PH / North - FRAGNET | 2026-01-02 → 2026-02-03 (+32d) | 2026-01-19 → 2026-02-18 (+30d) |  | 52d → 30d |  |
| P2.PH.N.1220 | OH - HVAC Piping (West) / L9 PH / North | 2026-01-20 → 2026-02-19 (+30d) | 2026-02-16 → 2026-03-18 (+30d) |  | 52d → 30d |  |
| P2.PH.N.1330 | OH - HVAC Piping - Equip Tie In / L9 PH / North | 2026-01-28 → 2026-02-20 (+23d) | 2026-02-24 → 2026-03-19 (+23d) |  | 61d → 44d |  |
| P2.PH.N.1460 | AHJ Inspections - Wall Close In / L9 PH / North | 2026-01-12 → 2026-02-25 (+44d) | 2026-01-16 → 2026-03-03 (+46d) |  | 59d → 27d |  |
| P2.PH.N.1470 | Hang-Tape-Finish / L9 PH / North | 2026-01-19 → 2026-03-04 (+44d) | 2026-01-30 → 2026-03-17 (+46d) |  | 59d → 27d |  |
| P2.PH.N.1490 | Firestop - Thru Wall / L9 PH / North | 2026-02-02 → 2026-03-18 (+44d) | 2026-02-13 → 2026-03-31 (+46d) |  | 98d → 66d |  |
| P2.PH.N.1500 | Pull Wire - Low Volt - BAS/Controls / L9 PH / North | 2026-02-02 → 2026-03-18 (+44d) | 2026-02-13 → 2026-03-31 (+46d) |  | 59d → 27d |  |
| P2.PH.N.1510 | Pull Wire - Low Volt - Fire Alarm / L9 PH / North | 2026-02-02 → 2026-03-18 (+44d) | 2026-02-13 → 2026-03-31 (+46d) |  | 98d → 66d |  |
| P2.PH.N.1520 | Pull Wire - Low Volt - Telecom / L9 PH / North | 2026-02-02 → 2026-03-18 (+44d) | 2026-02-13 → 2026-03-31 (+46d) |  | 98d → 66d |  |
| P2.PH.N.1530 | Pull Wire - Low Volt - Security / L9 PH / North | 2026-02-02 → 2026-03-18 (+44d) | 2026-02-13 → 2026-03-31 (+46d) |  | 98d → 66d |  |
| P2.PH.N.1560 | OH - HVAC Piping (East) / L9 PH / North | 2026-02-17 → 2026-03-19 (+30d) | 2026-03-16 → 2026-04-15 (+30d) |  | 52d → 30d |  |
| P2.PH.N.1320 | OH - Electrical - Equip Tie In / L9 PH / North | 2026-02-25 → 2026-03-20 (+23d) | 2026-03-10 → 2026-04-02 (+23d) |  | 61d → 44d |  |
| P2.PH.N.1360 | Pull Wire - Electrical - 208/120v Branch & Equip / L9 PH / North | 2026-03-11 → 2026-04-03 (+23d) | 2026-04-07 → 2026-04-30 (+23d) |  | 61d → 44d |  |
| P2.PH.N.1270 | OH - HVAC Piping - Test / L9 PH / North | 2026-03-17 → 2026-04-16 (+30d) | 2026-04-06 → 2026-05-06 (+30d) |  | 52d → 30d |  |
| P2.PH.N.1340 | OH - Insulate HVAC Pipe / L9 PH / North | 2026-04-07 → 2026-05-07 (+30d) | 2026-04-20 → 2026-05-20 (+30d) |  | 52d → 30d |  |
| P2.PH.N.1550 | Trades Inspect & Verify R/I Work Completed to Specs / L9 PH / North | 2026-04-21 → 2026-05-21 (+30d) | 2026-04-27 → 2026-05-28 (+31d) |  | 52d → 30d |  |

| ID | Task | Start | Finish | Complete | Total float |
| --- | --- | --- | --- | --- | --- |
| 1 | **ROUGH IN & FINISHES / Misc. Spaces 5959, 5930, 5940 (Elevator Group 1) / Level 9 - Penthouse** |  | 2026-01-06 → 2026-02-02 (+27d) |  |  |
| P2.PH.EMR.1.1040 | Paint Prime & 1st Coat / L9 / EMR.1 | 2025-12-01 A | 2025-12-03 → 2025-12-05 A (+2d) | 0% → 100% | 196d → none |
| P2.PH.EMR.1.1100 | Paint - Finish Coat / L9 / EMR.1 | 2025-12-04 → 2026-01-02 (+29d) | 2025-12-08 → 2026-01-06 (+29d) |  | 196d → 177d |
| P2.PH.EMR.1.1260 | OH - Insulate HVAC Pipe / L9 / EMR.1 | 2025-12-04 → 2026-01-02 (+29d) | 2025-12-08 → 2026-01-06 (+29d) |  | 196d → 177d |
| P2.PH.EMR.1.1270 | Pull Wire - Electrical / L9 / EMR.1 | 2025-12-09 → 2026-01-07 (+29d) | 2025-12-11 → 2026-01-09 (+29d) |  | 196d → 177d |
| P2.PH.EMR.1.1110 | Trim All MEPF Finishes / L9 / EMR.1 | 2025-12-12 → 2026-01-12 (+31d) | 2025-12-18 → 2026-01-16 (+29d) |  | 196d → 177d |
| P2.PH.EMR.1.1120 | Flooring / L9 / EMR.1 | 2025-12-19 → 2026-01-19 (+31d) | 2025-12-23 → 2026-01-21 (+29d) |  | 196d → 177d |
| P2.PH.EMR.1.1130 | Doors & Hardware / L9 / EMR.1 | 2025-12-24 → 2026-01-22 (+29d) | 2025-12-29 → 2026-01-26 (+28d) |  | 196d → 177d |
| P2.PH.EMR.1.1280 | Trades Inspect & Verify Work Completed to Specs / L9 / EMR.1 | 2025-12-30 → 2026-01-27 (+28d) | 2026-01-06 → 2026-02-02 (+27d) |  | 196d → 177d |
| 3 | **ROUGH IN & FINISHES / Elevator Machine Room (Elevator Group 2) 2803 / Level 9 - Penthouse** |  | 2026-01-09 → 2026-02-10 (+32d) |  |  |
| P2.PH.EMR.2.1070 | OH - HVAC Piping / L9 / EMR.2 | 2025-12-01 → 2026-01-02 (+32d) | 2025-12-03 → 2026-01-06 (+34d) |  | 193d → 171d |
| P2.PH.EMR.2.1080 | OH - HVAC Piping - Test / L9 / EMR.2 | 2025-12-04 → 2026-01-07 (+34d) | 2025-12-08 → 2026-01-09 (+32d) |  | 193d → 171d |
| P2.PH.EMR.2.1140 | OH - Insulate HVAC Pipe / L9 / EMR.2 | 2025-12-09 → 2026-01-12 (+34d) | 2025-12-11 → 2026-01-14 (+34d) |  | 193d → 171d |
| P2.PH.EMR.2.1150 | Paint - Finish Coat / L9 / EMR.2 | 2025-12-09 → 2026-01-12 (+34d) | 2025-12-11 → 2026-01-14 (+34d) |  | 193d → 171d |
| P2.PH.EMR.2.1160 | Pull Wire - Electrical / L9 / EMR.2 | 2025-12-12 → 2026-01-15 (+34d) | 2025-12-16 → 2026-01-19 (+34d) |  | 193d → 171d |
| P2.PH.EMR.2.1170 | Trim All MEPF Finishes / L9 / EMR.2 | 2025-12-17 → 2026-01-20 (+34d) | 2025-12-23 → 2026-01-26 (+34d) |  | 193d → 171d |
| P2.PH.EMR.2.1180 | Flooring / L9 / EMR.2 | 2025-12-24 → 2026-01-27 (+34d) | 2025-12-29 → 2026-01-29 (+31d) |  | 193d → 171d |
| P2.PH.EMR.2.1190 | Doors & Hardware / L9 / EMR.2 | 2025-12-30 → 2026-01-30 (+31d) | 2026-01-02 → 2026-02-03 (+32d) |  | 193d → 171d |
| P2.PH.EMR.2.1200 | Trades Inspect & Verify Work Completed to Specs / L9 / EMR.2 | 2026-01-05 → 2026-02-04 (+30d) | 2026-01-09 → 2026-02-10 (+32d) |  | 193d → 171d |
| 2 | **ROUGH IN & FINISHES / Elevator Lobby 3850 (Elevator Group 3) / Level 9 - Penthouse** |  | 2026-01-30 → 2026-02-26 (+27d) |  |  |
| P2.PH.EL.3.1050 | OH - Electrical Conduit / L9 / Elevator Lobby (Group 3) | 2025-12-01 A | 2025-12-03 → 2025-12-05 A (+2d) | 0% → 100% | 178d → none |
| P2.PH.EL.3.1060 | OH - HVAC Piping / L9 / Elevator Lobby (Group 3) | 2025-12-04 → 2026-01-02 (+29d) | 2025-12-08 → 2026-01-06 (+29d) |  | 178d → 159d |
| P2.PH.EL.3.1070 | OH - HVAC Piping - Test / L9 / Elevator Lobby (Group 3) | 2025-12-09 → 2026-01-07 (+29d) | 2025-12-11 → 2026-01-09 (+29d) |  | 178d → 159d |
| P2.PH.EL.3.1090 | In Wall Rough In / L9 / Elevator Lobby (Group 3) | 2025-12-12 → 2026-01-12 (+31d) | 2025-12-16 → 2026-01-14 (+29d) |  | 178d → 159d |
| P2.PH.EL.3.1100 | In Wall - Blocking / L9 / Elevator Lobby (Group 3) | 2025-12-17 → 2026-01-15 (+29d) | 2025-12-19 → 2026-01-19 (+31d) |  | 178d → 159d |
| P2.PH.EL.3.1110 | Inspections - Wall Close In / L9 / Elevator Lobby (Group 3) | 2025-12-22 → 2026-01-20 (+29d) | 2025-12-24 → 2026-01-22 (+29d) |  | 178d → 159d |
| P2.PH.EL.3.1120 | Hang-Tape-Finish / L9 / Elevator Lobby (Group 3) | 2025-12-26 → 2026-01-23 (+28d) | 2026-01-02 → 2026-01-29 (+27d) |  | 178d → 159d |
| P2.PH.EL.3.1130 | Paint Prime & 1st Coat / L9 / Elevator Lobby (Group 3) | 2026-01-05 → 2026-01-30 (+25d) | 2026-01-07 → 2026-02-03 (+27d) |  | 178d → 159d |
| P2.PH.EL.3.1140 | Paint - Finish Coat / L9 / Elevator Lobby (Group 3) | 2026-01-08 → 2026-02-04 (+27d) | 2026-01-12 → 2026-02-06 (+25d) |  | 178d → 159d |
| P2.PH.EL.3.1150 | Trim All MEPF Finishes / L9 / Elevator Lobby (Group 3) | 2026-01-13 → 2026-02-09 (+27d) | 2026-01-15 → 2026-02-11 (+27d) |  | 178d → 159d |
| P2.PH.EL.3.1160 | Flooring / L9 / Elevator Lobby (Group 3) | 2026-01-16 → 2026-02-12 (+27d) | 2026-01-20 → 2026-02-16 (+27d) |  | 178d → 159d |
| P2.PH.EL.3.1170 | Doors & Hardware / L9 / Elevator Lobby (Group 3) | 2026-01-21 → 2026-02-17 (+27d) | 2026-01-23 → 2026-02-19 (+27d) |  | 178d → 159d |
| P2.PH.EL.3.1180 | Trades Inspect & Verify Work Completed to Specs / L9 / EMR.2 | 2026-01-26 → 2026-02-20 (+25d) | 2026-01-30 → 2026-02-26 (+27d) |  | 178d → 159d |
| PHF | **FINISHES - Penthouse / Level 9** | 2026-02-16 → 2026-03-09 (+21d) | 2026-08-21 → 2026-09-23 (+33d) |  |  |
| Z1 | **Mechanical 9-3925 / 9-2855 / Level 9 - Penthouse** | 2026-02-16 → 2026-03-09 (+21d) | 2026-08-21 → 2026-09-23 (+33d) |  |  |
| P2.L9.F.1200 | Floor Prep - Epoxy Floors / L9 PH | 2026-02-16 → 2026-03-09 (+21d) | 2026-02-24 → 2026-03-17 (+21d) |  | 148d → 133d |
| P2.L9.F.1210 | Flooring - Epoxy Floors / L9 PH | 2026-02-25 → 2026-03-18 (+21d) | 2026-02-27 → 2026-03-20 (+21d) |  | 148d → 133d |
| P2.L9.F.1230 | Floor Base / L9 PH | 2026-03-02 → 2026-03-23 (+21d) | 2026-03-03 → 2026-03-24 (+21d) |  | 148d → 133d |
| P2.L9.F.1250 | Remaining Equipment Post Flooring / L9 PH | 2026-03-04 → 2026-03-25 (+21d) | 2026-03-06 → 2026-03-27 (+21d) |  | 213d → 198d |
| P2.L9.F.1260 | Remaining MEP Hook-Ups / L9 PH | 2026-03-09 → 2026-03-30 (+21d) | 2026-03-13 → 2026-04-03 (+21d) |  | 213d → 198d |
| P2.L9.F.1280 | Rough Clean / L9 PH | 2026-03-16 → 2026-04-06 (+21d) | 2026-03-20 → 2026-04-10 (+21d) |  | 213d → 198d |
| P2.L9.F.1000 | Paint Walls / L9 PH | 2026-04-28 → 2026-05-29 (+31d) | 2026-04-30 → 2026-06-02 (+33d) |  | 109d → 87d |
| P2.L9.F.1010 | Waterproof Ceramic Tile / L9 PH | 2026-05-01 → 2026-06-03 (+33d) | 2026-05-07 → 2026-06-09 (+33d) |  | 157d → 135d |
| P2.L9.F.1020 | T-Grid / L9 PH | 2026-05-01 → 2026-06-03 (+33d) | 2026-05-14 → 2026-06-16 (+33d) |  | 110d → 88d |
| P2.L9.F.1030 | Ceramic Tile / L9 PH | 2026-05-08 → 2026-06-10 (+33d) | 2026-05-14 → 2026-06-16 (+33d) |  | 157d → 135d |
| P2.L9.F.1040 | Diffusers in T-Grid / L9 PH | 2026-05-15 → 2026-06-17 (+33d) | 2026-05-21 → 2026-06-23 (+33d) |  | 110d → 88d |
| P2.L9.F.1050 | Lights & Devices / L9 PH | 2026-05-22 → 2026-06-24 (+33d) | 2026-06-05 → 2026-07-08 (+33d) |  | 110d → 88d |
| P2.L9.F.1060 | Sprinkler Heads / L9 PH | 2026-06-08 → 2026-07-09 (+31d) | 2026-06-11 → 2026-07-14 (+33d) |  | 118d → 96d |
| P2.L9.F.1070 | Trim Fire Alarm / L9 PH | 2026-06-08 → 2026-07-09 (+31d) | 2026-06-09 → 2026-07-10 (+31d) |  | 110d → 88d |
| P2.L9.F.1080 | Trim Security/ LV / L9 PH | 2026-06-10 → 2026-07-13 (+33d) | 2026-06-11 → 2026-07-14 (+33d) |  | 126d → 104d |
| P2.L9.F.1090 | Doors & Hardware / L9 PH | 2026-06-10 → 2026-07-13 (+33d) | 2026-06-23 → 2026-07-24 (+31d) |  | 110d → 88d |
| P2.L9.F.1110 | OH Ceiling Signoff / L9 PH | 2026-06-12 → 2026-07-15 (+33d) | 2026-07-01 → 2026-08-03 (+33d) |  | 126d → 104d |
| P2.L9.F.1100 | Casework/ Equipment / L9 PH | 2026-06-24 → 2026-07-27 (+33d) | 2026-06-30 → 2026-07-31 (+31d) |  | 110d → 88d |
| P2.L9.F.1130 | Plumbing Fixtures & Drinking Fountains / L9 PH | 2026-07-01 → 2026-08-03 (+33d) | 2026-07-10 → 2026-08-11 (+32d) |  | 125d → 103d |
| P2.L9.F.1140 | Trim T-Stats / L9 PH | 2026-07-01 → 2026-08-03 (+33d) | 2026-07-02 → 2026-08-04 (+33d) |  | 136d → 114d |
| P2.L9.F.1150 | Trim Electrical / L9 PH | 2026-07-01 → 2026-08-03 (+33d) | 2026-07-08 → 2026-08-07 (+30d) |  | 136d → 114d |
| P2.L9.F.1160 | Trim Telephone/ Data / L9 PH | 2026-07-01 → 2026-08-03 (+33d) | 2026-07-06 → 2026-08-05 (+30d) |  | 136d → 114d |
| P2.L9.F.1170 | Trim Med Gas / L9 PH | 2026-07-01 → 2026-08-03 (+33d) | 2026-07-08 → 2026-08-07 (+30d) |  | 110d → 88d |
| P2.L9.F.1190 | Drop Ceiling Tile / L9 PH | 2026-07-02 → 2026-08-04 (+33d) | 2026-07-09 → 2026-08-10 (+32d) |  | 126d → 104d |
| P2.L9.F.1180 | Building Specialities / L9 PH | 2026-07-07 → 2026-08-06 (+30d) | 2026-07-09 → 2026-08-10 (+32d) |  | 136d → 114d |
| P2.L9.F.1220 | Work Completion List - Finishes / L9 PH | 2026-07-13 → 2026-08-12 (+30d) | 2026-07-21 → 2026-08-20 (+30d) |  | 125d → 103d |
| P2.L9.F.1240 | Interior Building Signage / L9 PH | 2026-07-22 → 2026-08-21 (+30d) | 2026-07-24 → 2026-08-25 (+32d) |  | 125d → 103d |
| P2.L9.F.1290 | Prepare Punchlist / L9 PH | 2026-07-27 → 2026-08-26 (+30d) | 2026-07-29 → 2026-08-28 (+30d) |  | 125d → 103d |
| P2.L9.F.1300 | Correct Punchlist / L9 PH | 2026-07-30 → 2026-08-31 (+32d) | 2026-08-18 → 2026-09-18 (+31d) |  | 125d → 103d |
| P2.L9.F.1310 | Final Clean / L9 PH | 2026-08-19 → 2026-09-21 (+33d) | 2026-08-21 → 2026-09-23 (+33d) |  | 125d → 103d |
| L10 | **L10 PENTHOUSE ROOF - ROUGH IN & FINISHES** |  | 2026-01-27 → 2026-02-26 (+30d) |  |  |
| 1 | **ROUGH IN & FINISHES / Level 10 - Vestibule & Storage** |  | 2026-01-27 → 2026-02-26 (+30d) |  |  |
| P2.10.VES.1.1050 | OH - Electrical Conduit / L10 / Vestibule (Elevator Group 1) | 2025-12-01 → 2026-01-02 (+32d) | 2025-12-03 → 2026-01-06 (+34d) |  | 181d → 159d |
| P2.10.VES.1.1060 | OH - HVAC Piping / L10 / Vestibule (Elevator Group 1) | 2025-12-04 → 2026-01-07 (+34d) | 2025-12-08 → 2026-01-09 (+32d) |  | 181d → 159d |
| P2.10.VES.1.1070 | OH - HVAC Piping - Test / L10 / Vestibule (Elevator Group 1) | 2025-12-09 → 2026-01-12 (+34d) | 2025-12-11 → 2026-01-14 (+34d) |  | 184d → 162d |

| ID | Task | Start | Finish | Complete | Total float |
| --- | --- | --- | --- | --- | --- |
| P2.10.VES.1.1090 | In Wall Rough In / L10 / Vestibule (Elevator Group 1) | 2025-12-09 → 2026-01-12 (+34d) | 2025-12-11 → 2026-01-14 (+34d) |  | 181d → 159d |
| P2.10.VES.1.1100 | In Wall - Blocking / L10 / Vestibule (Elevator Group 1) | 2025-12-12 → 2026-01-15 (+34d) | 2025-12-16 → 2026-01-19 (+34d) |  | 181d → 159d |
| P2.10.VES.1.1110 | Inspections - Wall Close In / L10 / Vestibule (Elevator Group 1) | 2025-12-17 → 2026-01-20 (+34d) | 2025-12-19 → 2026-01-22 (+34d) |  | 181d → 159d |
| P2.10.VES.1.1120 | Hang-Tape-Finish / L10 / Vestibule (Elevator Group 1) | 2025-12-22 → 2026-01-23 (+32d) | 2025-12-29 → 2026-01-29 (+31d) |  | 181d → 159d |
| P2.10.VES.1.1130 | Paint Prime & 1st Coat / L10 / Vestibule (Elevator Group 1) | 2025-12-30 → 2026-01-30 (+31d) | 2026-01-02 → 2026-02-03 (+32d) |  | 181d → 159d |
| P2.10.VES.1.1140 | Paint - Finish Coat / L10 / Vestibule (Elevator Group 1) | 2026-01-05 → 2026-02-04 (+30d) | 2026-01-07 → 2026-02-06 (+30d) |  | 181d → 159d |
| P2.10.VES.1.1150 | Trim All MEPF Finishes / L10 / Vestibule (Elevator Group 1) | 2026-01-08 → 2026-02-09 (+32d) | 2026-01-12 → 2026-02-11 (+30d) |  | 181d → 159d |
| P2.10.VES.1.1160 | Flooring / L9 / L10 / Vestibule (Elevator Group 1) | 2026-01-13 → 2026-02-12 (+30d) | 2026-01-15 → 2026-02-16 (+32d) |  | 181d → 159d |
| P2.10.VES.1.1170 | Doors & Hardware / L10 / Vestibule (Elevator Group 1) | 2026-01-16 → 2026-02-17 (+32d) | 2026-01-20 → 2026-02-19 (+30d) |  | 181d → 159d |
| P2.10.VES.1.1180 | Trades Inspect & Verify Work Completed to Specs / L10 / Vestibule (Elevator Group 1) | 2026-01-21 → 2026-02-20 (+30d) | 2026-01-27 → 2026-02-26 (+30d) |  | 181d → 159d |
| PHRF | **ROUGH IN & FINISHES / Level 10 - Group 3 - Elevator Lobby** |  | 2026-01-27 → 2026-02-18 (+22d) |  |  |
| P2.10.EL.3.1030 | OH - Fire Suppression / L10 / Elevator Lobby (Group 3) | 2025-12-01 A | 2025-12-03 → 2025-12-04 A (+1d) | 0% → 100% | 184d → none |
| P2.10.EL.3.1050 | OH - Electrical Conduit / Elevator Lobby (Group 3) | 2025-12-01 → 2025-12-08 A (+7d) | 2025-12-03 → 2025-12-12 A (+9d) | 0% → 100% | 181d → none |
| P2.10.EL.3.1090 | In Wall Rough In / L10 / Elevator Lobby (Group 3) | 2025-12-09 A | 2025-12-11 A | 0% → 100% | 181d → none |
| P2.10.EL.3.1060 | OH - HVAC Piping / L10 / Elevator Lobby (Group 3) | 2025-12-04 → 2026-01-02 (+29d) | 2025-12-08 → 2026-01-06 (+29d) |  | 181d → 165d |
| P2.10.EL.3.1070 | OH - HVAC Piping - Test / L10 / Elevator Lobby (Group 3) | 2025-12-09 → 2026-01-07 (+29d) | 2025-12-11 → 2026-01-09 (+29d) |  | 184d → 165d |
| P2.10.EL.3.1100 | In Wall - Blocking / L10 / Elevator Lobby (Group 3) | 2025-12-12 → 2026-01-07 (+26d) | 2025-12-16 → 2026-01-09 (+24d) |  | 181d → 165d |
| P2.10.EL.3.1110 | Inspections - Wall Close In / L10 / Elevator Lobby (Group 3) | 2025-12-17 → 2026-01-12 (+26d) | 2025-12-19 → 2026-01-14 (+26d) |  | 181d → 165d |
| P2.10.EL.3.1120 | Hang-Tape-Finish / L10 / Elevator Lobby (Group 3) | 2025-12-22 → 2026-01-15 (+24d) | 2025-12-29 → 2026-01-21 (+23d) |  | 181d → 165d |
| P2.10.EL.3.1130 | Paint Prime & 1st Coat / L10 / Elevator Lobby (Group 3) | 2025-12-30 → 2026-01-22 (+23d) | 2026-01-02 → 2026-01-26 (+24d) |  | 181d → 165d |
| P2.10.EL.3.1140 | Paint - Finish Coat / L10 / Elevator Lobby (Group 3) | 2026-01-05 → 2026-01-27 (+22d) | 2026-01-07 → 2026-01-29 (+22d) |  | 181d → 165d |
| P2.10.EL.3.1150 | Trim All MEPF Finishes / L10 / Elevator Lobby (Group 3) | 2026-01-08 → 2026-01-30 (+22d) | 2026-01-12 → 2026-02-03 (+22d) |  | 181d → 165d |
| P2.10.EL.3.1160 | Flooring / L9 / L10 / Elevator Lobby (Group 3) | 2026-01-13 → 2026-02-04 (+22d) | 2026-01-15 → 2026-02-06 (+22d) |  | 181d → 165d |
| P2.10.EL.3.1170 | Doors & Hardware / L10 / Elevator Lobby (Group 3) | 2026-01-16 → 2026-02-09 (+24d) | 2026-01-20 → 2026-02-11 (+22d) |  | 181d → 165d |
| P2.10.EL.3.1180 | Trades Inspect & Verify Work Completed to Specs / L10 / Elevator Lobby (Group 3) | 2026-01-21 → 2026-02-12 (+22d) | 2026-01-27 → 2026-02-18 (+22d) |  | 181d → 165d |
| 10 | **Start-up & Commissiong (Draft)** | 2025-12-01 → 2026-01-02 (+32d) | 2027-03-10 → 2027-03-29 (+19d) |  |  |
| 19 | **Generator** | 2026-02-11 → 2026-03-13 (+30d) | 2026-03-31 → 2026-04-30 (+30d) |  |  |
| CX.GEN.1000 | Startup - Generator | 2026-02-11 → 2026-03-13 (+30d) | 2026-02-24 → 2026-03-26 (+30d) |  | 189d → 167d |
| CX.GEN.1010 | Test and PFPT Backup Power - Generator | 2026-02-25 → 2026-03-27 (+30d) | 2026-03-10 → 2026-04-09 (+30d) |  | 189d → 167d |
| CX.GEN.1020 | FPT Backup Power - Generator | 2026-03-11 → 2026-04-10 (+30d) | 2026-03-31 → 2026-04-30 (+30d) |  | 189d → 167d |
| 12 | **Life Safety** | 2025-12-22 → 2026-01-23 (+32d) | 2026-12-24 → 2027-01-27 (+34d) |  |  |
| 1 | **Fire Alarm** | 2026-02-02 → 2026-02-27 (+25d) | 2026-10-27 → 2026-11-10 (+14d) |  |  |
| CX.FA.1000 | Program Fire Alarm System | 2026-02-02 → 2026-02-27 (+25d) | 2026-03-06 → 2026-04-02 (+27d) |  | 193d → 174d |
| CX.FA.1010 | FA Startup, Testing, Point to Point Checkout | 2026-03-09 → 2026-04-03 (+25d) | 2026-04-03 → 2026-04-30 (+27d) |  | 193d → 174d |
| CX.FA.1020 | PFPT FA System | 2026-04-06 → 2026-05-01 (+25d) | 2026-04-24 → 2026-05-21 (+27d) |  | 193d → 174d |
| CX.FA.1030 | FPT FA System | 2026-04-27 → 2026-05-22 (+25d) | 2026-05-08 → 2026-06-05 (+28d) |  | 193d → 174d |
| CX.FA.1040 | Life Safety Acceptance Testing | 2026-10-21 → 2026-11-04 (+14d) | 2026-10-27 → 2026-11-10 (+14d) |  | 79d → 69d |
| 2 | **Fire Sprinkler** | 2025-12-22 → 2026-01-23 (+32d) | 2026-10-13 → 2026-10-27 (+14d) |  |  |
| CX.FS.1000 | Fire Pump Startup and Program | 2025-12-22 → 2026-01-23 (+32d) | 2025-12-29 → 2026-01-29 (+31d) |  | 242d → 220d |
| CX.FS.1010 | Fire Suppression System Leak - Level B1 & B2 | 2026-06-22 → 2026-06-24 (+2d) | 2026-06-26 → 2026-06-30 (+4d) |  | 144d → 142d |
| CX.FS.1020 | Fire Suppression System Leak - Level 1 - 8 | 2026-09-09 → 2026-09-23 (+14d) | 2026-09-15 → 2026-09-29 (+14d) |  | 65d → 55d |
| CX.FS.1030 | Fire Suppression Tamper/Flow/Pre-Action | 2026-09-16 → 2026-09-30 (+14d) | 2026-09-22 → 2026-10-06 (+14d) |  | 89d → 79d |
| CX.FS.1040 | Fire Suppression System Flush | 2026-09-23 → 2026-10-07 (+14d) | 2026-09-29 → 2026-10-13 (+14d) |  | 89d → 79d |
| CX.FS.1050 | NIH Acceptance Test | 2026-09-30 → 2026-10-14 (+14d) | 2026-10-06 → 2026-10-20 (+14d) |  | 89d → 79d |
| CX.FS.1060 | Fire Suppression AHJ Final | 2026-10-07 → 2026-10-21 (+14d) | 2026-10-13 → 2026-10-27 (+14d) |  | 89d → 79d |
| 3 | **Fire HVAC** | 2026-12-11 → 2027-01-14 (+34d) | 2026-12-24 → 2027-01-27 (+34d) |  |  |
| CX.FHVAC.1000 | Preliminary Inspection - FD | 2026-12-11 → 2027-01-14 (+34d) | 2026-12-17 → 2027-01-20 (+34d) |  | 52d → 30d |
| CX.FHVAC.1010 | Final Inspection - FD | 2026-12-18 → 2027-01-21 (+34d) | 2026-12-24 → 2027-01-27 (+34d) |  | 52d → 30d |
| 14 | **Security System** | 2026-02-02 → 2026-02-27 (+25d) | 2026-05-08 → 2026-06-05 (+28d) |  |  |
| CX.SCRTY.1000 | Program Security System | 2026-02-02 → 2026-02-27 (+25d) | 2026-02-27 → 2026-03-26 (+27d) |  | 193d → 174d |
| CX.SCRTY.1010 | Security Startup, Testing, Point to Point Checkout | 2026-03-02 → 2026-03-27 (+25d) | 2026-03-27 → 2026-04-23 (+27d) |  | 193d → 174d |
| CX.SCRTY.1020 | PFPT Security System | 2026-03-30 → 2026-04-24 (+25d) | 2026-04-17 → 2026-05-14 (+27d) |  | 193d → 174d |
| CX.SCRTY.1030 | FPT Security System | 2026-04-20 → 2026-05-15 (+25d) | 2026-05-01 → 2026-05-29 (+28d) |  | 193d → 174d |
| CX.SCRTY.1040 | NIH Security Demonstrations | 2026-05-04 → 2026-06-01 (+28d) | 2026-05-08 → 2026-06-05 (+28d) |  | 193d → 174d |
| 11 | **BAS System** | 2026-02-02 → 2026-02-27 (+25d) | 2026-06-29 → 2026-07-27 (+28d) |  |  |
| CX.BAS.1000 | Complete Onsite Programming BAS System | 2026-02-02 → 2026-02-27 (+25d) | 2026-02-20 → 2026-03-19 (+27d) |  | 163d → 144d |
| CX.BAS.1010 | BAS Startup Testing and Point to Point Checkout | 2026-02-23 → 2026-03-20 (+25d) | 2026-04-03 → 2026-04-30 (+27d) |  | 163d → 144d |
| CX.BAS.1020 | PFPT BAS System | 2026-04-06 → 2026-05-01 (+25d) | 2026-05-15 → 2026-06-12 (+28d) |  | 163d → 144d |
| CX.BAS.1030 | FPT BAS System | 2026-05-18 → 2026-06-15 (+28d) | 2026-06-29 → 2026-07-27 (+28d) |  | 163d → 144d |
| 13 | **Communications / IT** | 2026-02-02 → 2026-02-27 (+25d) | 2026-04-17 → 2026-05-14 (+27d) |  |  |
| CX.COMM.1000 | Startup and Program Communications | 2026-02-02 → 2026-02-27 (+25d) | 2026-02-27 → 2026-03-26 (+27d) |  | 226d → 207d |
| CX.COMM.1010 | Startup and Program PA & Nurse Call Systems | 2026-02-02 → 2026-02-27 (+25d) | 2026-02-27 → 2026-03-26 (+27d) |  | 236d → 217d |
| CX.COMM.1020 | PFPT Communications | 2026-03-02 → 2026-03-27 (+25d) | 2026-03-27 → 2026-04-23 (+27d) |  | 226d → 207d |
| CX.COMM.1030 | PFPT PA & Nurse Call Systems | 2026-03-02 → 2026-03-27 (+25d) | 2026-03-13 → 2026-04-09 (+27d) |  | 236d → 217d |
| CX.COMM.1040 | FPT PA & Nurse Call Systems | 2026-03-16 → 2026-04-10 (+25d) | 2026-03-27 → 2026-04-23 (+27d) |  | 236d → 217d |
| CX.COMM.1050 | FPT Communications | 2026-03-30 → 2026-04-24 (+25d) | 2026-04-10 → 2026-05-07 (+27d) |  | 226d → 207d |
| CX.COMM.1060 | NIH Testing and Communications Demonstration | 2026-04-13 → 2026-05-08 (+25d) | 2026-04-17 → 2026-05-14 (+27d) |  | 226d → 207d |
| 20 | **Plumbing and Fixtures** | 2026-07-14 → 2026-07-28 (+14d) | 2026-09-22 → 2026-10-06 (+14d) |  |  |
| CX.PLUMB.1000 | Startup Domestic Plumbing Systems and Equipment | 2026-07-14 → 2026-07-28 (+14d) | 2026-08-03 → 2026-08-17 (+14d) |  | 67d → 57d |
| CX.PLUMB.1010 | PFPT Domestic Plumbing Systems and Equipment | 2026-08-04 → 2026-08-18 (+14d) | 2026-08-24 → 2026-09-08 (+15d) |  | 67d → 57d |

| ID | Task | Start | Finish | Total float | Predecessors |
| --- | --- | --- | --- | --- | --- |
| CX.PLUMB.1020 | FPT Domestic Plumbing Systems and Equipment | 2026-08-25 → 2026-09-09 (+15d) | 2026-09-08 → 2026-09-22 (+14d) | 67d → 57d |  |
| CX.PLUMB.1030 | Test Plumbing Fixtures | 2026-09-09 → 2026-09-23 (+14d) | 2026-09-22 → 2026-10-06 (+14d) | 67d → 57d |  |
| 18 | **Sprinkler Systems** | 2026-09-16 → 2026-09-30 (+14d) | 2026-12-07 → 2026-12-21 (+14d) |  |  |
| CX.FS.2000 | Fire Suppression System Leak - Level 1 | 2026-09-16 → 2026-09-30 (+14d) | 2026-09-18 → 2026-10-02 (+14d) | 65d → 55d |  |
| CX.FS.2010 | Fire Suppression System Leak - Level 2 | 2026-09-21 → 2026-10-05 (+14d) | 2026-09-23 → 2026-10-07 (+14d) | 65d → 55d |  |
| CX.FS.2020 | Fire Suppression Leak Test - Level 2.5 | 2026-09-24 → 2026-10-08 (+14d) | 2026-09-28 → 2026-10-12 (+14d) | 65d → 55d |  |
| CX.FS.2030 | Fire Suppression Leak Test - Level 3 | 2026-09-29 → 2026-10-13 (+14d) | 2026-10-01 → 2026-10-15 (+14d) | 65d → 55d |  |
| CX.FS.2040 | Fire Pump Startup and Program | 2026-10-02 → 2026-10-16 (+14d) | 2026-10-15 → 2026-10-29 (+14d) | 65d → 55d |  |
| CX.FS.2050 | Fire Suppression System Flush | 2026-10-16 → 2026-10-30 (+14d) | 2026-10-29 → 2026-11-12 (+14d) | 65d → 55d |  |
| CX.FS.2060 | Fire Suppression PFPT | 2026-10-30 → 2026-11-13 (+14d) | 2026-11-12 → 2026-11-30 (+18d) | 65d → 55d |  |
| CX.FS.2070 | Fire Suppression FPT | 2026-11-13 → 2026-12-01 (+18d) | 2026-11-30 → 2026-12-14 (+14d) | 65d → 55d |  |
| CX.FS.2080 | NIH Acceptance Test | 2026-12-01 → 2026-12-15 (+14d) | 2026-12-07 → 2026-12-21 (+14d) | 65d → 55d |  |
| 17 | **Compressed Air** | 2026-08-04 → 2026-08-18 (+14d) | 2026-10-20 → 2026-11-03 (+14d) |  |  |
| CX.CA.1000 | Commpressed Air System Startup | 2026-08-04 → 2026-08-18 (+14d) | 2026-08-17 → 2026-08-31 (+14d) | 79d → 69d |  |
| CX.CA.1010 | Compressed Air System Programming | 2026-08-18 → 2026-09-01 (+14d) | 2026-09-08 → 2026-09-22 (+14d) | 79d → 69d |  |
| CX.CA.1020 | Commpressed Air System PFPT | 2026-08-18 → 2026-09-01 (+14d) | 2026-08-24 → 2026-09-08 (+15d) | 135d → 125d |  |
| CX.CA.1030 | Commpressed Air System FPT | 2026-08-25 → 2026-09-09 (+15d) | 2026-08-26 → 2026-09-10 (+15d) | 135d → 125d |  |
| CX.CA.1040 | Compressed Air System PFPT | 2026-09-09 → 2026-09-23 (+14d) | 2026-09-29 → 2026-10-13 (+14d) | 79d → 69d |  |
| CX.CA.1050 | Compressed Air System FPT | 2026-09-30 → 2026-10-14 (+14d) | 2026-10-20 → 2026-11-03 (+14d) | 79d → 69d |  |
| 1 | **Basement B2/B1** | 2025-12-01 → 2026-01-02 (+32d) | 2026-10-30 → 2026-11-24 (+25d) |  |  |
| 12 | **Glycol Hot water System** | 2026-02-13 → 2026-03-17 (+32d) | 2026-08-10 → 2026-08-24 (+14d) |  |  |
| CX.B2.GHWS.1000 | Startup - Glycol Hot Water System - B2 | 2026-02-13 → 2026-03-17 (+32d) | 2026-03-12 → 2026-04-13 (+32d) | 22d → 0d |  |
| CX.B2.GHWS.1010 | P2P/BAS - Glycol Hot Water System - B2 | 2026-03-18 → 2026-04-14 (+27d) | 2026-04-14 → 2026-05-11 (+27d) | 19d → 0d |  |
| CX.B2.GHWS.1020 | Test and Balanc - Glycol Hot Water System - B2 | 2026-04-15 → 2026-05-12 (+27d) | 2026-05-12 → 2026-06-09 (+28d) | 132d → 113d |  |
| CX.B2.GHWS.1030 | PFPT - Glycol Hot Water System - B2 | 2026-05-13 → 2026-06-10 (+28d) | 2026-05-27 → 2026-06-23 (+27d) | 132d → 113d |  |
| CX.B2.GHWS.1040 | FPT - Glycol Hot Water System - B2 | 2026-08-04 → 2026-08-18 (+14d) | 2026-08-10 → 2026-08-24 (+14d) | 85d → 75d |  |
| 1 | **MV Electrical Equipment XFMRs and Network Protectors** | 2025-12-01 → 2026-01-02 (+32d) | 2026-06-12 → 2026-06-16 (+4d) |  |  |
| CX.B2.MVEE.1000 | Startup Primary Electrical Utility Power - Electrical Equipment and Network Protector - B2 | 2025-12-01 → 2026-01-02 (+32d) | 2025-12-12 → 2026-01-15 (+34d) | 254d → 232d |  |
| CX.B2.MVEE.1010 | Start Up Normal Power - Electrical Equipment and Network Protector - B2 | 2026-01-05 → 2026-01-30 (+25d) | 2026-01-30 → 2026-02-26 (+27d) | 26d → 7d | P2.B2.EE.B.1240, P2.B2.EMS.B.1240, P2.2.HE.5959.1140, P2.2.HE.2949.1140, P2.2.HE.2803.1140, P2.2.HE.5966.1140, P2.8.HE.5959.1140, P2.4.HE.2948.1140, P2.4.HE.3959.1140, P2.6.HE.2947.1140, P2.4.HE.5966.1140, P2.8.HE.2803.1140, P2.6.HE.5966.1140, P2.4.HE.2803.1140, P2.6.HE.5959.1140, P2.6.HE.2803.1140, ENB.155, P2.1.HE.5959.1140, P2.1.HE.3911.1060, P2.1.HE.6940.1140, P2.1.HE.2803.1140, P2.1.HE.2950.1140, P2.3.HE.2803.1140, P2.3.HE.5959.1140, P2.5.HE.3989.1140, P2.3.HE.5968.1140, P2.3.HE.5966.1140, P2.5.HE.2803.1140, P2.5.HE.2949.1140, P2.7.HE.5959.1140, P2.7.HE.2803.1140, P2.5.HE.5966.1140, P2.7.HE.2941.1140, P2.B2.ES.A.1240, P2.B2.EMS.A.1240, P2.B2.EE.A.1240, P2.B2.EE.A.1250, P2.B2.EMVS.A.1240, P2.B2.EMVS.B.1240, P2.B2.EMVS.B.1250, P2.B2.ES.B.1250, P2.B2.ES.B.1240, P2.3.HE.2937.1140 → P2.B2.EE.B.1240, P2.B2.EMS.B.1240, ENB.155, P2.B2.ES.A.1240, P2.B2.EMS.A.1240, P2.B2.EE.A.1240, P2.B2.EE.A.1250, P2.B2.EMVS.A.1240, P2.B2.EMVS.B.1240, P2.B2.EMVS.B.1250, P2.B2.ES.B.1250, P2.B2.ES.B.1240 |
| CX.B2.MVEE.1020 | Test and PFPT Main Power SWGR,XMFR,PNLS - Electrical Equipment and Network Protector - B2 | 2026-05-15 → 2026-05-19 (+4d) | 2026-05-29 → 2026-06-02 (+4d) | 147d → 145d |  |
| CX.B2.MVEE.1030 | FPT Main Power SWGR,XMFR,PNLS - Electrical Equipment and Network Protector - B2 | 2026-06-01 → 2026-06-03 (+2d) | 2026-06-12 → 2026-06-16 (+4d) | 187d → 185d |  |
| 2 | **480V Switchgear and ATS** | 2025-12-30 → 2026-01-07 (+8d) | 2026-07-06 → 2026-07-08 (+2d) |  |  |
| CX.B2.SWGR.1010 | Start Up Normal Power - 480V Switgear and ATS - B2 | 2025-12-30 → 2026-01-30 (+31d) | 2026-01-27 → 2026-02-26 (+30d) | 29d → 7d |  |
| CX.B2.SWGR.1020 | Start Up Emergency Power - 480V Switgear and ATS - B2 | 2026-01-28 → 2026-02-27 (+30d) | 2026-02-17 → 2026-03-19 (+30d) | 194d → 172d |  |
| CX.B2.SWGR.1030 | Test and PFPT Main Power SWGR - 480V Switgear and ATS - B2 | 2026-05-15 → 2026-05-19 (+4d) | 2026-06-05 → 2026-06-09 (+4d) | 132d → 130d |  |
| CX.B2.SWGR.1040 | Test and PFPT Backup Power ATS,GEN - 480V Switgear and ATS - B2 | 2026-06-08 → 2026-06-10 (+2d) | 2026-06-19 → 2026-06-23 (+4d) | 132d → 130d |  |
| CX.B2.SWGR.1050 | FPT Main Power SWGR - 480V Switgear and ATS - B2 | 2026-06-08 → 2026-06-10 (+2d) | 2026-06-19 → 2026-06-23 (+4d) | 182d → 180d |  |
| CX.B2.SWGR.1060 | FPT Backup Power ATS,GEN - 480V Switgear and ATS - B2 | 2026-06-22 → 2026-06-24 (+2d) | 2026-07-06 → 2026-07-08 (+2d) | 172d → 170d |  |
| 3 | **Chilled hydronic systems (B1, B2 General Air)** | 2026-03-04 → 2026-03-27 (+23d) | 2026-06-24 → 2026-07-20 (+26d) |  |  |
| CX.B2.CHS.1000 | Startup - Chilled Hydronic System - B2 | 2026-03-04 → 2026-03-27 (+23d) | 2026-03-31 → 2026-04-23 (+23d) | 4d → -13d |  |
| CX.B2.CHS.1010 | P2P/BAS - Chilled Hydronic System - B2 | 2026-04-01 → 2026-04-24 (+23d) | 2026-05-05 → 2026-05-29 (+24d) | 4d → -13d |  |
| CX.B2.CHS.1020 | Test and Balance - Chilled Hydronic System - B2 | 2026-05-06 → 2026-06-01 (+26d) | 2026-06-03 → 2026-06-26 (+23d) | 44d → 27d |  |
| CX.B2.CHS.1030 | PFPT - Chilled Hydronic System - B2 | 2026-06-04 → 2026-06-29 (+25d) | 2026-06-17 → 2026-07-13 (+26d) | 44d → 27d |  |
| CX.B2.CHS.1040 | FPT - Chilled Hydronic System - B2 | 2026-06-18 → 2026-07-14 (+26d) | 2026-06-24 → 2026-07-20 (+26d) | 44d → 27d |  |
| 11 | **Steam Piping** | 2026-03-04 → 2026-03-27 (+23d) | 2026-03-24 → 2026-04-16 (+23d) |  |  |
| CX.B2.SP.1000 | Steam Blow Off Piping - Steam Piping - B2 | 2026-03-04 → 2026-03-27 (+23d) | 2026-03-10 → 2026-04-02 (+23d) | 19d → 2d |  |
| CX.B2.SP.1010 | Startup Heat XChangers - Steam Piping - B2 | 2026-03-11 → 2026-04-03 (+23d) | 2026-03-17 → 2026-04-09 (+23d) | 19d → 2d |  |
| CX.B2.SP.1020 | Flush Steam System Piping - Steam Piping - B2 | 2026-03-18 → 2026-04-10 (+23d) | 2026-03-24 → 2026-04-16 (+23d) | 167d → 150d | CX.B2.SP.1010, DDD2330, DDD2430, DDD2880 → CX.B2.SP.1010, DDD2330, DDD2430, DDD2880, P2.UTT.380 |
| 10 | **Hydronic Piping** | 2025-12-22 → 2026-01-02 (+11d) | 2026-03-03 → 2026-03-26 (+23d) |  |  |
| FRG.CX.B2.HYDR.1050 | Flush HVAC System Piping - Reheat Steam & Condensate - B2 - FRAGNET | 2025-12-22 → 2026-01-02 (+11d) | 2026-01-13 → 2026-01-22 (+9d) | 24d → 17d |  |
| CX.B2.HYDR.1020 | Startup Hot Water Pump Sets - Hydronic Piping - B2 | 2026-01-14 → 2026-01-29 (+15d) | 2026-01-20 → 2026-02-04 (+15d) | 24d → 13d |  |
| CX.B2.HYDR.1000 | Flush HVAC System Piping - Hydronic Piping - B2 | 2026-01-07 → 2026-01-30 (+23d) | 2026-01-27 → 2026-02-19 (+23d) | 4d → -13d |  |
| CX.B2.HYDR.1030 | Fill, Test, Balance HW S/R System - Hydronic Piping - B2 | 2026-01-21 → 2026-02-05 (+15d) | 2026-02-10 → 2026-02-25 (+15d) | 24d → 13d |  |
| CX.B2.HYDR.1010 | Startup Cold Water Pumps - Hydronic Piping - B2 | 2026-01-28 → 2026-02-20 (+23d) | 2026-02-10 → 2026-03-05 (+23d) | 4d → -13d |  |
| CX.B2.HYDR.1040 | Fill, Test, Balance CHW S/R System - Hydronic Piping - B2 | 2026-02-11 → 2026-03-06 (+23d) | 2026-03-03 → 2026-03-26 (+23d) | 4d → -13d |  |
| 5 | **AHU B2-3, B2-4, (Electrical Room Conditioning)** | 2026-04-22 → 2026-06-08 (+47d) | 2026-09-22 → 2026-10-06 (+14d) |  |  |
| CX.B2.AHU.1000 | Startup - AHU B2-3, B2-4 - B2 | 2026-04-22 → 2026-06-08 (+47d) | 2026-04-28 → 2026-06-12 (+45d) | 129d → 97d |  |
| CX.B2.AHU.1010 | P2P/BAS - AHU B2-3, B2-4 - B2 | 2026-05-06 → 2026-06-15 (+40d) | 2026-06-03 → 2026-07-13 (+40d) | 124d → 97d |  |
| CX.B2.AHU.1020 | Test and Balance - AHU B2-3, B2-4 - B2 | 2026-06-04 → 2026-07-14 (+40d) | 2026-06-17 → 2026-07-27 (+40d) | 124d → 97d |  |
| CX.B2.AHU.1030 | PFPT - AHU B2-3, B2-4 - B2 | 2026-09-01 → 2026-09-16 (+15d) | 2026-09-15 → 2026-09-29 (+14d) | 72d → 62d |  |
| CX.B2.AHU.1040 | FPT - AHU B2-3, B2-4 - B2 | 2026-09-16 → 2026-09-30 (+14d) | 2026-09-22 → 2026-10-06 (+14d) | 117d → 107d |  |
| 6 | **AHU B2-1 , B2-2 , 1-1 (Cath Lab Animal & Human)** | 2026-04-22 → 2026-06-08 (+47d) | 2026-09-22 → 2026-10-06 (+14d) |  |  |
| CX.B2.AHU.2000 | Startup - AHU B2-1, B2-2, 1-1 - B2 | 2026-04-22 → 2026-06-08 (+47d) | 2026-04-28 → 2026-06-12 (+45d) | 129d → 97d |  |
| CX.B2.AHU.2010 | P2P/BAS - AHU B2-1, B2-2, 1-1 - B2 | 2026-05-06 → 2026-06-15 (+40d) | 2026-06-03 → 2026-07-13 (+40d) | 124d → 97d |  |
| CX.B2.AHU.2020 | Test and Balance - AHU B2-1, B2-2, 1-1 - B2 | 2026-06-04 → 2026-07-14 (+40d) | 2026-06-17 → 2026-07-27 (+40d) | 124d → 97d |  |
| CX.B2.AHU.2030 | PFPT - AHU B2-1, B2-2, 1-1 - B2 | 2026-09-01 → 2026-09-16 (+15d) | 2026-09-15 → 2026-09-29 (+14d) | 72d → 62d |  |
| CX.B2.AHU.2040 | FPT - AHU B2-1, B2-2, 1-1 - B2 | 2026-09-16 → 2026-09-30 (+14d) | 2026-09-22 → 2026-10-06 (+14d) | 112d → 102d |  |
| 7 | **Sterile Processing Lab Testing (Fume Hoods, Dedicated Exhausts, Medical Equip)** | 2026-05-22 → 2026-06-24 (+33d) | 2026-09-08 → 2026-09-22 (+14d) |  |  |
| CX.B2.SPLT.1000 | Startup - Sterile Processing Lab Testing - B2 | 2026-05-22 → 2026-06-24 (+33d) | 2026-05-29 → 2026-06-30 (+32d) | 132d → 110d |  |
| CX.B2.SPLT.1010 | P2P/BAS - Sterile Processing Lab Testing - B2 | 2026-06-01 → 2026-07-01 (+30d) | 2026-06-05 → 2026-07-08 (+33d) | 132d → 110d |  |

| ID | Task | Start | Finish | Total float |
| --- | --- | --- | --- | --- |
| CX.B2.SPLT.1020 | Test and Balance - Sterile Processing Lab Testing - B2 | 2026-06-08 → 2026-07-09 (+31d) | 2026-06-12 → 2026-07-15 (+33d) | 132d → 110d |
| CX.B2.SPLT.1030 | PFPT mechanical/electrical systems - Sterile Processing Lab Testing - B2 | 2026-08-11 → 2026-08-25 (+14d) | 2026-08-17 → 2026-08-31 (+14d) | 92d → 82d |
| CX.B2.SPLT.1040 | Fume Hood Balancing and testing - Sterile Processing Lab Testing - B2 | 2026-08-18 → 2026-09-01 (+14d) | 2026-08-24 → 2026-09-08 (+15d) | 127d → 117d |
| CX.B2.SPLT.1050 | Fume Hood certification - Sterile Processing Lab Testing - B2 | 2026-08-25 → 2026-09-09 (+15d) | 2026-08-31 → 2026-09-15 (+15d) | 127d → 117d |
| CX.B2.SPLT.1060 | NIH Acceptance test - Sterile Processing Lab Testing - B2 | 2026-09-01 → 2026-09-16 (+15d) | 2026-09-08 → 2026-09-22 (+14d) | 127d → 117d |
| 4 | **Cath-MRI Suite (Fume Hoods, Dedicated Exhausts, Medical Equip)** | 2026-05-22 → 2026-06-24 (+33d) | 2026-09-29 → 2026-10-13 (+14d) |  |
| CX.B2.MRIS.1000 | Startup - MRI Suite Testing - B2 | 2026-05-22 → 2026-06-24 (+33d) | 2026-05-29 → 2026-06-30 (+32d) | 167d → 145d |
| CX.B2.MRIS.1010 | P2P/BAS - MRI Suite Testing - B2 | 2026-06-01 → 2026-07-01 (+30d) | 2026-06-05 → 2026-07-08 (+33d) | 167d → 145d |
| CX.B2.MRIS.1020 | Test and Balance - MRI Suite Testing - B2 | 2026-06-11 → 2026-07-21 (+40d) | 2026-06-17 → 2026-07-27 (+40d) | 164d → 137d |
| CX.B2.MRIS.1030 | PFPT mechanical/electrical systems - MRI Suite Testing - B2 | 2026-08-11 → 2026-08-25 (+14d) | 2026-08-17 → 2026-08-31 (+14d) | 127d → 117d |
| CX.B2.MRIS.1040 | Fume Hood Balancing and testing - MRI Suite Testing - B2 | 2026-08-18 → 2026-09-01 (+14d) | 2026-08-24 → 2026-09-08 (+15d) | 127d → 117d |
| CX.B2.MRIS.1050 | Fume Hood certification - MRI Suite Testing - B2 | 2026-08-25 → 2026-09-09 (+15d) | 2026-08-31 → 2026-09-15 (+15d) | 127d → 117d |
| CX.B2.MRIS.1060 | NIH Acceptance test - MRI Suite Testing - B2 | 2026-09-23 → 2026-10-07 (+14d) | 2026-09-29 → 2026-10-13 (+14d) | 112d → 102d |
| 9 | **General Supply & Exhaust Terminal Unit Testing** | 2026-06-04 → 2026-06-29 (+25d) | 2026-10-30 → 2026-11-24 (+25d) |  |
| CX.B2.GSE.1000 | Startup/Checkout Terminal Units - General Supply & Exhaust Testing - B2 | 2026-06-04 → 2026-06-29 (+25d) | 2026-07-01 → 2026-07-27 (+26d) | 14d → -3d |
| CX.B2.GSE.1010 | Start Up and set Supply/Exhaust Valves - General Supply & Exhaust Testing - B2 | 2026-06-04 → 2026-06-29 (+25d) | 2026-07-16 → 2026-08-10 (+25d) | 4d → -13d |
| CX.B2.GSE.1020 | P2P/BAS Terminal Units - General Supply & Exhaust Testing - B2 | 2026-07-17 → 2026-08-11 (+25d) | 2026-08-06 → 2026-08-31 (+25d) | 4d → -13d |
| CX.B2.GSE.1030 | PFPT Terminal Units - General Supply & Exhaust Testing - B2 | 2026-08-07 → 2026-09-01 (+25d) | 2026-09-03 → 2026-09-29 (+26d) | 4d → -13d |
| CX.B2.GSE.1040 | Preliminary TAB Floor - General Supply & Exhaust Testing - B2 | 2026-09-04 → 2026-09-30 (+26d) | 2026-10-16 → 2026-11-10 (+25d) | 4d → -13d |
| CX.B2.GSE.1050 | FPT Terminal Units - General Supply & Exhaust Testing - B2 | 2026-10-19 → 2026-11-11 (+23d) | 2026-10-30 → 2026-11-24 (+25d) | 89d → 72d |
| 13 | **Reheat Water systems** | 2026-04-21 → 2026-06-01 (+41d) | 2026-08-10 → 2026-08-31 (+21d) |  |
| CX.B2.RWS.1000 | Startup - Reheat Water System - B2 | 2026-04-21 → 2026-06-01 (+41d) | 2026-05-18 → 2026-06-26 (+39d) | 40d → 12d |
| CX.B2.RWS.1010 | P2P/BAS - Reheat Water System - B2 | 2026-05-19 → 2026-06-29 (+41d) | 2026-06-16 → 2026-07-27 (+41d) | 40d → 12d |
| CX.B2.RWS.1020 | Test and Balance - Reheat Water System - B2 | 2026-06-17 → 2026-07-28 (+41d) | 2026-06-30 → 2026-08-10 (+41d) | 40d → 12d |
| CX.B2.RWS.1030 | PFPT - Reheat Water System - B2 | 2026-07-01 → 2026-08-11 (+41d) | 2026-07-15 → 2026-08-24 (+40d) | 40d → 12d |
| CX.B2.RWS.1040 | FPT - Reheat Water System - B2 | 2026-08-04 → 2026-08-25 (+21d) | 2026-08-10 → 2026-08-31 (+21d) | 117d → 102d |
| 14 | **Steam Station** | 2026-05-15 → 2026-06-01 (+17d) | 2026-08-10 → 2026-08-24 (+14d) |  |
| CX.B2.SS.1000 | Startup - Steam Station - B2 | 2026-05-15 → 2026-06-01 (+17d) | 2026-06-12 → 2026-06-26 (+14d) | 65d → 55d |
| CX.B2.SS.1010 | P2P/BAS - Steam Station - B2 | 2026-06-15 → 2026-06-29 (+14d) | 2026-07-06 → 2026-07-20 (+14d) | 85d → 75d |
| CX.B2.SS.1040 | Test and Balance - Steam Station - B2 | 2026-07-07 → 2026-07-21 (+14d) | 2026-07-20 → 2026-08-03 (+14d) | 85d → 75d |
| CX.B2.SS.1020 | PFPT - Steam Station - B2 | 2026-07-21 → 2026-08-04 (+14d) | 2026-08-03 → 2026-08-17 (+14d) | 85d → 75d |
| CX.B2.SS.1030 | FPT - Steam Station - B2 | 2026-08-04 → 2026-08-18 (+14d) | 2026-08-10 → 2026-08-24 (+14d) | 85d → 75d |
| 15 | **Clean Steam Humidification systems** | 2026-06-15 → 2026-06-29 (+14d) | 2026-09-08 → 2026-09-22 (+14d) |  |
| CX.B2.CSH.1000 | Startup - Clean Steam Humidification System - B2 | 2026-06-15 → 2026-06-29 (+14d) | 2026-07-13 → 2026-07-27 (+14d) | 65d → 55d |
| CX.B2.CSH.1010 | P2P/BAS - Clean Steam Humidification System - B2 | 2026-07-14 → 2026-07-28 (+14d) | 2026-08-03 → 2026-08-17 (+14d) | 65d → 55d |
| CX.B2.CSH.1020 | Test and Balance - Clean Steam Humidification System - B2 | 2026-08-04 → 2026-08-18 (+14d) | 2026-08-17 → 2026-08-31 (+14d) | 65d → 55d |
| CX.B2.CSH.1030 | PFPT - Clean Steam Humidification System - B2 | 2026-08-18 → 2026-09-01 (+14d) | 2026-08-31 → 2026-09-15 (+15d) | 65d → 55d |
| CX.B2.CSH.1040 | FPT - Clean Steam Humidification System - B2 | 2026-09-01 → 2026-09-16 (+15d) | 2026-09-08 → 2026-09-22 (+14d) | 97d → 87d |
| 16 | **Water Heaters systems** | 2026-05-15 → 2026-06-01 (+17d) | 2026-08-17 → 2026-08-31 (+14d) |  |
| CX.B2.WHS.1000 | Startup - Water Heater System - B2 | 2026-05-15 → 2026-06-01 (+17d) | 2026-06-12 → 2026-06-26 (+14d) | 67d → 57d |
| CX.B2.WHS.1010 | P2P/BAS - Water Heater System - B2 | 2026-06-15 → 2026-06-29 (+14d) | 2026-07-13 → 2026-07-27 (+14d) | 97d → 87d |
| CX.B2.WHS.1020 | Test and Balance - Water Heater System - B2 | 2026-07-14 → 2026-07-28 (+14d) | 2026-07-27 → 2026-08-10 (+14d) | 97d → 87d |
| CX.B2.WHS.1030 | PFPT - Water Heater System - B2 | 2026-07-28 → 2026-08-11 (+14d) | 2026-08-10 → 2026-08-24 (+14d) | 97d → 87d |
| CX.B2.WHS.1040 | FPT - Water Heater System - B2 | 2026-08-11 → 2026-08-25 (+14d) | 2026-08-17 → 2026-08-31 (+14d) | 142d → 132d |
| 17 | **Misc Plumbing Equipment** | 2026-05-15 → 2026-06-01 (+17d) | 2026-08-31 → 2026-09-15 (+15d) |  |
| CX.B2.MPE.1000 | Fill/Flush/Test Domestic Water - Misc. Plumbing Equipment - B2 | 2026-05-15 → 2026-06-01 (+17d) | 2026-06-12 → 2026-06-26 (+14d) | 67d → 57d |
| CX.B2.MPE.1010 | Startup - Misc. Plumbing Equipment - B2 | 2026-06-15 → 2026-06-29 (+14d) | 2026-07-13 → 2026-07-27 (+14d) | 67d → 57d |
| CX.B2.MPE.1020 | P2P/BAS - Misc. Plumbing Equipment - B2 | 2026-07-14 → 2026-07-28 (+14d) | 2026-07-27 → 2026-08-10 (+14d) | 87d → 77d |
| CX.B2.MPE.1030 | Test and Balance - Misc. Plumbing Equipment - B2 | 2026-07-28 → 2026-08-11 (+14d) | 2026-08-10 → 2026-08-24 (+14d) | 87d → 77d |
| CX.B2.MPE.1040 | PFPT - Misc. Plumbing Equipment - B2 | 2026-08-11 → 2026-08-25 (+14d) | 2026-08-24 → 2026-09-08 (+15d) | 87d → 77d |
| CX.B2.MPE.1050 | FPT - Misc. Plumbing Equipment - B2 | 2026-08-25 → 2026-09-09 (+15d) | 2026-08-31 → 2026-09-15 (+15d) | 132d → 122d |
| 18 | **Med Gas Equipment** | 2026-04-15 → 2026-06-01 (+47d) | 2026-10-12 → 2026-10-21 (+9d) |  |
| CX.B2.MGE.1000 | Startup - Med Gas Equipment - B2 | 2026-04-15 → 2026-06-01 (+47d) | 2026-05-12 → 2026-06-26 (+45d) | 119d → 87d |
| CX.B2.MGE.1010 | P2P/BAS - Med Gas Equipment - B2 | 2026-05-13 → 2026-06-29 (+47d) | 2026-06-10 → 2026-07-27 (+47d) | 119d → 87d |
| CX.B2.MGE.1020 | Test and Balance - Med Gas Equipment - B2 | 2026-06-11 → 2026-07-28 (+47d) | 2026-06-24 → 2026-08-10 (+47d) | 119d → 87d |
| CX.B2.MGE.1030 | PFPT - Med Gas Equipment - B2 | 2026-09-22 → 2026-10-01 (+9d) | 2026-10-05 → 2026-10-14 (+9d) | 58d → 51d |
| CX.B2.MGE.1040 | FPT - Med Gas Equipment - B2 | 2026-10-06 → 2026-10-15 (+9d) | 2026-10-12 → 2026-10-21 (+9d) | 103d → 96d |
| 19 | **Process Chilled Water systems** | 2026-05-15 → 2026-06-01 (+17d) | 2026-08-17 → 2026-08-31 (+14d) |  |
| CX.B2.PCW.1000 | Startup - Process Chilled Water System - B2 | 2026-05-15 → 2026-06-01 (+17d) | 2026-06-12 → 2026-06-26 (+14d) | 22d → 12d |
| CX.B2.PCW.1010 | P2P/BAS - Process Chilled Water System - B2 | 2026-06-15 → 2026-06-29 (+14d) | 2026-07-13 → 2026-07-27 (+14d) | 22d → 12d |
| CX.B2.PCW.1020 | Test and Balance - Process Chilled Water System - B2 | 2026-07-14 → 2026-07-28 (+14d) | 2026-07-27 → 2026-08-10 (+14d) | 22d → 12d |
| CX.B2.PCW.1030 | PFPT - Process Chilled Water System - B2 | 2026-07-28 → 2026-08-11 (+14d) | 2026-08-10 → 2026-08-24 (+14d) | 22d → 12d |
| CX.B2.PCW.1040 | FPT - Process Chilled Water System - B2 | 2026-08-11 → 2026-08-25 (+14d) | 2026-08-17 → 2026-08-31 (+14d) | 129d → 119d |
| 20 | **MRI Cooling Water systems** | 2026-05-15 → 2026-06-01 (+17d) | 2026-08-17 → 2026-08-31 (+14d) |  |
| CX.B2.CWS.1000 | Startup - MRI Cooling Water System - B2 | 2026-05-15 → 2026-06-01 (+17d) | 2026-06-12 → 2026-06-26 (+14d) | 92d → 82d |
| CX.B2.CWS.1010 | P2P/BAS - MRI Cooling Water System - B2 | 2026-06-15 → 2026-06-29 (+14d) | 2026-07-13 → 2026-07-27 (+14d) | 92d → 82d |
| CX.B2.CWS.1020 | Test and Balance - MRI Cooling Water System - B2 | 2026-07-14 → 2026-07-28 (+14d) | 2026-07-27 → 2026-08-10 (+14d) | 92d → 82d |
| CX.B2.CWS.1030 | PFPT - MRI Cooling Water System - B2 | 2026-07-28 → 2026-08-11 (+14d) | 2026-08-10 → 2026-08-24 (+14d) | 92d → 82d |
| CX.B2.CWS.1040 | FPT - MRI Cooling Water System - B2 | 2026-08-11 → 2026-08-25 (+14d) | 2026-08-17 → 2026-08-31 (+14d) | 137d → 127d |
| 21 | **GMP Glycol Water systems** | 2026-05-15 → 2026-06-01 (+17d) | 2026-08-17 → 2026-08-31 (+14d) |  |

| ID | Task | Start | Finish | Total float |
| --- | --- | --- | --- | --- |
| CX.B2.GMPGW.1000 | Startup - GMP Glycol Water System - B2 | 2026-05-15 → 2026-06-01 (+17d) | 2026-06-12 → 2026-06-26 (+14d) | 42d → 32d |
| CX.B2.GMPGW.1010 | P2P/BAS - GMP Glycol Water System - B2 | 2026-06-15 → 2026-06-29 (+14d) | 2026-07-13 → 2026-07-27 (+14d) | 42d → 32d |
| CX.B2.GMPGW.1020 | Test and Balance - GMP Glycol Water System - B2 | 2026-07-14 → 2026-07-28 (+14d) | 2026-07-27 → 2026-08-10 (+14d) | 97d → 87d |
| CX.B2.GMPGW.1030 | PFPT - GMP Glycol Water System - B2 | 2026-07-28 → 2026-08-11 (+14d) | 2026-08-10 → 2026-08-24 (+14d) | 97d → 87d |
| CX.B2.GMPGW.1040 | FPT - GMP Glycol Water System - B2 | 2026-08-11 → 2026-08-25 (+14d) | 2026-08-17 → 2026-08-31 (+14d) | 102d → 92d |
| 22 | **GMP RH Water systems** | 2026-05-15 → 2026-06-01 (+17d) | 2026-08-17 → 2026-08-31 (+14d) |  |
| CX.B2.GMPRH.1000 | Startup - GMP RH Water System - B2 | 2026-05-15 → 2026-06-01 (+17d) | 2026-06-12 → 2026-06-26 (+14d) | 92d → 82d |
| CX.B2.GMPRH.1010 | P2P/BAS - GMP RH Water System - B2 | 2026-06-15 → 2026-06-29 (+14d) | 2026-07-13 → 2026-07-27 (+14d) | 92d → 82d |
| CX.B2.GMPRH.1020 | Test and Balance - GMP RH Water System - B2 | 2026-07-14 → 2026-07-28 (+14d) | 2026-07-27 → 2026-08-10 (+14d) | 92d → 82d |
| CX.B2.GMPRH.1030 | PFPT - GMP RH Water System - B2 | 2026-07-28 → 2026-08-11 (+14d) | 2026-08-10 → 2026-08-24 (+14d) | 92d → 82d |
| CX.B2.GMPRH.1040 | FPT - GMP RH Water System - B2 | 2026-08-11 → 2026-08-25 (+14d) | 2026-08-17 → 2026-08-31 (+14d) | 142d → 132d |
| 10 | **Level 1** | 2026-03-27 → 2026-04-27 (+31d) | 2027-02-04 → 2027-03-01 (+25d) |  |
| 1 | **480/120 Distribution Panels Dry XFMRs (5 Elec RMs)** | 2026-04-03 → 2026-05-04 (+31d) | 2026-05-29 → 2026-06-29 (+31d) |  |
| CX.L1.SWGR.1000 | Start Up - 480/120 Distribution Panels Bry XFMRs - L1 | 2026-04-03 → 2026-05-04 (+31d) | 2026-04-16 → 2026-05-15 (+29d) | 145d → 124d |
| CX.L1.SWGR.1010 | PFPT - 480/120 Distribution Panels Bry XFMRs - L1 | 2026-04-17 → 2026-05-18 (+31d) | 2026-05-14 → 2026-06-15 (+32d) | 145d → 124d |
| CX.L1.SWGR.1020 | FPT - 480/120 Distribution Panels Bry XFMRs - L1 | 2026-05-15 → 2026-06-16 (+32d) | 2026-05-29 → 2026-06-29 (+31d) | 187d → 166d |
| 2 | **AHU 1-1 (Cath Lab Animal & Human)** | 2026-04-22 → 2026-06-08 (+47d) | 2026-09-15 → 2026-09-29 (+14d) |  |
| CX.L1.AHU.1000 | Startup - AHU 1-1 - L1 | 2026-04-22 → 2026-06-08 (+47d) | 2026-04-28 → 2026-06-12 (+45d) | 139d → 107d |
| CX.L1.AHU.1010 | P2P/BAS - AHU 1-1 - L1 | 2026-05-06 → 2026-06-15 (+40d) | 2026-06-03 → 2026-07-13 (+40d) | 134d → 107d |
| CX.L1.AHU.1020 | Test and Balance - AHU 1-1 - L1 | 2026-06-04 → 2026-07-14 (+40d) | 2026-06-10 → 2026-07-20 (+40d) | 134d → 107d |
| CX.L1.AHU.1030 | PFPT - AHU 1-1 - L1 | 2026-09-01 → 2026-09-16 (+15d) | 2026-09-08 → 2026-09-22 (+14d) | 77d → 67d |
| CX.L1.AHU.1040 | FPT - AHU 1-1 - L1 | 2026-09-09 → 2026-09-23 (+14d) | 2026-09-15 → 2026-09-29 (+14d) | 117d → 107d |
| 3 | **MRI Suite (Fume Hoods, Dedicated Exhausts, Medical Equip)** | 2026-03-27 → 2026-04-27 (+31d) | 2026-09-22 → 2026-10-06 (+14d) |  |
| CX.L1.MRIS.1000 | Startup - MRI Suite Testing - L1 | 2026-03-27 → 2026-04-27 (+31d) | 2026-04-02 → 2026-05-01 (+29d) | 177d → 156d |
| CX.L1.MRIS.1010 | P2P/BAS - MRI Suite Testing - L1 | 2026-04-03 → 2026-05-04 (+31d) | 2026-04-09 → 2026-05-08 (+29d) | 177d → 156d |
| CX.L1.MRIS.1020 | Test and Balance - MRI Suite Testing - L1 | 2026-04-10 → 2026-05-11 (+31d) | 2026-04-16 → 2026-05-15 (+29d) | 177d → 156d |
| CX.L1.MRIS.1030 | PFPT mechanical/electrical systems - MRI Suite Testing - L1 | 2026-08-11 → 2026-08-25 (+14d) | 2026-08-17 → 2026-08-31 (+14d) | 97d → 87d |
| CX.L1.MRIS.1040 | Fume Hood Balancing and testing - MRI Suite Testing - L1 | 2026-08-18 → 2026-09-01 (+14d) | 2026-08-24 → 2026-09-08 (+15d) | 127d → 117d |
| CX.L1.MRIS.1050 | Fume Hood certification - MRI Suite Testing - L1 | 2026-08-25 → 2026-09-09 (+15d) | 2026-08-31 → 2026-09-15 (+15d) | 127d → 117d |
| CX.L1.MRIS.1060 | NIH Acceptance test - MRI Suite Testing - L1 | 2026-09-16 → 2026-09-30 (+14d) | 2026-09-22 → 2026-10-06 (+14d) | 117d → 107d |
| 4 | **CT Suite ( Medical Equip & Systems)** | 2026-03-27 → 2026-04-27 (+31d) | 2026-08-31 → 2026-09-15 (+15d) |  |
| CX.L1.CTS.1000 | Startup - CT Suite Testing - L1 | 2026-03-27 → 2026-04-27 (+31d) | 2026-04-02 → 2026-05-01 (+29d) | 172d → 151d |
| CX.L1.CTS.1010 | P2P/BAS - CT Suite Testing - L1 | 2026-04-03 → 2026-05-04 (+31d) | 2026-04-09 → 2026-05-08 (+29d) | 172d → 151d |
| CX.L1.CTS.1020 | Test and Balance - CT Suite Testing - L1 | 2026-04-10 → 2026-05-11 (+31d) | 2026-04-16 → 2026-05-15 (+29d) | 172d → 151d |
| CX.L1.CTS.1030 | PFPT mechanical/electrical systems - CT Suite Testing - L1 | 2026-08-11 → 2026-08-25 (+14d) | 2026-08-17 → 2026-08-31 (+14d) | 92d → 82d |
| CX.L1.CTS.1040 | Room Balancing - CT Suite Testing - L1 | 2026-08-18 → 2026-09-01 (+14d) | 2026-08-24 → 2026-09-08 (+15d) | 152d → 142d |
| CX.L1.CTS.1050 | NIH Acceptance test - CT Suite Testing - L1 | 2026-08-25 → 2026-09-09 (+15d) | 2026-08-31 → 2026-09-15 (+15d) | 152d → 142d |
| 5 | **General Supply & Exhaust Terminal Unit Testing** | 2026-06-04 → 2026-06-29 (+25d) | 2027-02-04 → 2027-03-01 (+25d) |  |
| CX.L1.GSE.1000 | Startup/Checkout Terminal Units - General Supply & Exhaust Testing - L1 | 2026-06-04 → 2026-06-29 (+25d) | 2026-07-01 → 2026-07-27 (+26d) | 64d → 47d |
| CX.L1.GSE.1010 | Start Up and set Supply/Exhaust Valves - General Supply & Exhaust Testing - L1 | 2026-07-10 → 2026-08-04 (+25d) | 2026-08-27 → 2026-09-22 (+26d) | 24d → 7d |
| CX.L1.GSE.1020 | P2P/BAS Terminal Units - General Supply & Exhaust Testing - L1 | 2026-08-28 → 2026-09-23 (+26d) | 2026-09-25 → 2026-10-20 (+25d) | 24d → 7d |
| CX.L1.GSE.1030 | PFPT Terminal Units - General Supply & Exhaust Testing - L1 | 2026-09-28 → 2026-10-21 (+23d) | 2026-10-23 → 2026-11-17 (+25d) | 24d → 7d |
| CX.L1.GSE.1040 | Preliminary TAB Floor - General Supply & Exhaust Testing - L1 | 2026-10-26 → 2026-11-18 (+23d) | 2027-01-07 → 2027-02-01 (+25d) | 24d → 7d |
| CX.L1.GSE.1050 | FPT Terminal Units - General Supply & Exhaust Testing - L1 | 2027-01-08 → 2027-02-02 (+25d) | 2027-02-04 → 2027-03-01 (+25d) | 24d → 7d |
| 6 | **Level 2** | 2026-03-18 → 2026-04-13 (+26d) | 2026-10-20 → 2026-11-03 (+14d) |  |
| 1 | **480/120 Distribution Panels Dry XFMRs (4 Elec RMs)** | 2026-03-18 → 2026-04-13 (+26d) | 2026-05-12 → 2026-06-08 (+27d) |  |
| CX.L2.SWGR.1000 | Start Up - 480/120 Distribution Panels Bry XFMRs - L2 | 2026-03-18 → 2026-04-13 (+26d) | 2026-03-31 → 2026-04-24 (+24d) | 157d → 139d |
| CX.L2.SWGR.1010 | PFPT - 480/120 Distribution Panels Bry XFMRs - L2 | 2026-04-01 → 2026-04-27 (+26d) | 2026-04-28 → 2026-05-22 (+24d) | 157d → 139d |
| CX.L2.SWGR.1020 | FPT - 480/120 Distribution Panels Bry XFMRs - L2 | 2026-04-29 → 2026-05-26 (+27d) | 2026-05-12 → 2026-06-08 (+27d) | 184d → 166d |
| 2 | **AHU 2-1** | 2026-04-16 → 2026-05-15 (+29d) | 2026-09-15 → 2026-09-29 (+14d) |  |
| CX.L2.AHU.1000 | Startup - AHU 2-1 - L2 | 2026-04-16 → 2026-05-15 (+29d) | 2026-04-22 → 2026-05-21 (+29d) | 23d → 2d |
| CX.L2.AHU.1010 | P2P/BAS - AHU 2-1 - L2 | 2026-05-06 → 2026-06-01 (+26d) | 2026-05-19 → 2026-06-12 (+24d) | 14d → -3d |
| CX.L2.AHU.1020 | Test and Balance - AHU 2-1 - L2 | 2026-05-20 → 2026-06-15 (+26d) | 2026-06-10 → 2026-07-06 (+26d) | 94d → 77d |
| CX.L2.AHU.1030 | PFPT - AHU 2-1 - L2 | 2026-09-01 → 2026-09-16 (+15d) | 2026-09-08 → 2026-09-22 (+14d) | 77d → 67d |
| CX.L2.AHU.1040 | FPT - AHU 2-1 - L2 | 2026-09-09 → 2026-09-23 (+14d) | 2026-09-15 → 2026-09-29 (+14d) | 102d → 92d |
| 3 | **General Supply & Exhaust Terminal Unit Testing** | 2026-06-04 → 2026-06-29 (+25d) | 2026-10-20 → 2026-11-03 (+14d) |  |
| CX.L2.GSE.1000 | Startup/Checkout Terminal Units - General Supply & Exhaust Testing - L2 | 2026-06-04 → 2026-06-29 (+25d) | 2026-07-01 → 2026-07-27 (+26d) | 59d → 42d |
| CX.L2.GSE.1010 | Start Up and set Supply/Exhaust Valves - General Supply & Exhaust Testing - L2 | 2026-06-04 → 2026-06-29 (+25d) | 2026-07-09 → 2026-08-03 (+25d) | 24d → 7d |
| CX.L2.GSE.1020 | P2P/BAS Terminal Units - General Supply & Exhaust Testing - L2 | 2026-07-10 → 2026-08-04 (+25d) | 2026-07-23 → 2026-08-17 (+25d) | 54d → 37d |
| CX.L2.GSE.1030 | PFPT Terminal Units - General Supply & Exhaust Testing - L2 | 2026-07-28 → 2026-08-18 (+21d) | 2026-08-10 → 2026-08-31 (+21d) | 52d → 37d |
| CX.L2.GSE.1040 | Preliminary TAB Floor - General Supply & Exhaust Testing - L2 | 2026-08-11 → 2026-09-01 (+21d) | 2026-09-15 → 2026-10-06 (+21d) | 52d → 37d |
| CX.L2.GSE.1050 | FPT Terminal Units - General Supply & Exhaust Testing - L2 | 2026-10-07 → 2026-10-21 (+14d) | 2026-10-20 → 2026-11-03 (+14d) | 97d → 87d |
| 4 | **Level 3** | 2026-04-02 → 2026-03-23 (-10d) | 2027-02-04 → 2027-03-01 (+25d) |  |
| 1 | **480/120 Distribution Panels Dry XFMRs (5 Elec RMs)** | 2026-04-09 → 2026-04-24 (+15d) | 2026-06-04 → 2026-06-19 (+15d) |  |
| CX.L3.SWGR.1000 | Start Up - 480/120 Distribution Panels Bry XFMRs - L3 | 2026-04-09 → 2026-04-24 (+15d) | 2026-04-22 → 2026-05-07 (+15d) | 141d → 130d |
| CX.L3.SWGR.1010 | PFPT - 480/120 Distribution Panels Bry XFMRs - L3 | 2026-04-23 → 2026-05-08 (+15d) | 2026-05-20 → 2026-06-05 (+16d) | 141d → 130d |
| CX.L3.SWGR.1020 | FPT - 480/120 Distribution Panels Bry XFMRs - L3 | 2026-05-21 → 2026-06-08 (+18d) | 2026-06-04 → 2026-06-19 (+15d) | 163d → 152d |
| 2 | **UPS** | 2026-04-09 → 2026-04-24 (+15d) | 2026-06-11 → 2026-06-26 (+15d) |  |
| CX.L3.UPS.1000 | Start Up - UPS - L3 | 2026-04-09 → 2026-04-24 (+15d) | 2026-04-15 → 2026-04-30 (+15d) | 168d → 157d |
| CX.L3.UPS.1010 | PFPT - UPS - L3 | 2026-04-16 → 2026-05-01 (+15d) | 2026-04-29 → 2026-05-14 (+15d) | 168d → 157d |

| ID | Task | Start | Finish | Total float |
| --- | --- | --- | --- | --- |
| CX.L3.UPS.1020 | FPT - UPS - L3 | 2026-06-05 → 2026-06-22 (+17d) | 2026-06-11 → 2026-06-26 (+15d) | 163d → 152d |
| 3 | **AHU 3-1** | 2026-04-16 → 2026-05-15 (+29d) | 2026-09-15 → 2026-09-29 (+14d) |  |
| CX.L3.AHU.1000 | Startup - AHU 3-1 - L3 | 2026-04-16 → 2026-05-15 (+29d) | 2026-04-22 → 2026-05-21 (+29d) | 23d → 2d |
| CX.L3.AHU.1010 | P2P/BAS - AHU 3-1 - L3 | 2026-05-06 → 2026-06-01 (+26d) | 2026-05-19 → 2026-06-12 (+24d) | 14d → -3d |
| CX.L3.AHU.1020 | Test and Balance - AHU 3-1 - L3 | 2026-05-20 → 2026-06-15 (+26d) | 2026-06-10 → 2026-07-06 (+26d) | 94d → 77d |
| CX.L3.AHU.1030 | PFPT - AHU 3-1 - L3 | 2026-09-01 → 2026-09-16 (+15d) | 2026-09-08 → 2026-09-22 (+14d) | 77d → 67d |
| CX.L3.AHU.1040 | FPT - AHU 3-1 - L3 | 2026-09-09 → 2026-09-23 (+14d) | 2026-09-15 → 2026-09-29 (+14d) | 102d → 92d |
| 5 | **MRI Suite (Fume Hoods, Dedicated Exhausts, Medical Equip)** | 2026-04-02 → 2026-03-23 (-10d) | 2026-09-08 → 2026-09-22 (+14d) |  |
| CX.L3.MRIS.1000 | Startup - MRI Suite Testing - L3 | 2026-04-02 → 2026-03-23 (-10d) | 2026-04-08 → 2026-03-27 (-12d) | 223d → 231d |
| CX.L3.MRIS.1010 | P2P/BAS - MRI Suite Testing - L3 | 2026-04-09 → 2026-03-30 (-10d) | 2026-04-15 → 2026-04-03 (-12d) | 223d → 231d |
| CX.L3.MRIS.1020 | Test and Balance - MRI Suite Testing - L3 | 2026-04-16 → 2026-04-06 (-10d) | 2026-04-22 → 2026-04-10 (-12d) | 223d → 231d |
| CX.L3.MRIS.1030 | PFPT mechanical/electrical systems - MRI Suite Testing - L3 | 2026-08-11 → 2026-08-25 (+14d) | 2026-08-17 → 2026-08-31 (+14d) | 147d → 137d |
| CX.L3.MRIS.1040 | Fume Hood Balancing and testing - MRI Suite Testing - L3 | 2026-08-18 → 2026-09-01 (+14d) | 2026-08-24 → 2026-09-08 (+15d) | 147d → 137d |
| CX.L3.MRIS.1050 | Fume Hood certification - MRI Suite Testing - L3 | 2026-08-25 → 2026-09-09 (+15d) | 2026-08-31 → 2026-09-15 (+15d) | 147d → 137d |
| CX.L3.MRIS.1060 | NIH Acceptance test - MRI Suite Testing - L3 | 2026-09-01 → 2026-09-16 (+15d) | 2026-09-08 → 2026-09-22 (+14d) | 147d → 137d |
| 4 | **General Supply & Exhaust Terminal Unit Testing** | 2026-06-04 → 2026-06-29 (+25d) | 2027-02-04 → 2027-03-01 (+25d) |  |
| CX.L3.GSE.1000 | Startup/Checkout Terminal Units - General Supply & Exhaust Testing - L3 | 2026-06-04 → 2026-06-29 (+25d) | 2026-06-17 → 2026-07-13 (+26d) | 89d → 72d |
| CX.L3.GSE.1010 | Start Up and set Supply/Exhaust Valves - General Supply & Exhaust Testing - L3 | 2026-07-24 → 2026-08-18 (+25d) | 2026-09-18 → 2026-10-13 (+25d) | 24d → 7d |
| CX.L3.GSE.1020 | P2P/BAS Terminal Units - General Supply & Exhaust Testing - L3 | 2026-09-21 → 2026-10-14 (+23d) | 2026-10-16 → 2026-11-10 (+25d) | 24d → 7d |
| CX.L3.GSE.1030 | PFPT Terminal Units - General Supply & Exhaust Testing - L3 | 2026-10-19 → 2026-11-11 (+23d) | 2026-11-06 → 2026-12-03 (+27d) | 24d → 7d |
| CX.L3.GSE.1040 | Preliminary TAB Floor - General Supply & Exhaust Testing - L3 | 2026-11-09 → 2026-12-04 (+25d) | 2027-01-07 → 2027-02-01 (+25d) | 24d → 7d |
| CX.L3.GSE.1050 | FPT Terminal Units - General Supply & Exhaust Testing - L3 | 2027-01-08 → 2027-02-02 (+25d) | 2027-02-04 → 2027-03-01 (+25d) | 24d → 7d |
| 5 | **Level 4** | 2026-04-15 → 2026-05-15 (+30d) | 2026-10-20 → 2026-11-03 (+14d) |  |
| 1 | **480/120 Distribution Panels Dry XFMRs (5 Elec RMs)** | 2026-04-15 → 2026-05-15 (+30d) | 2026-06-10 → 2026-07-13 (+33d) |  |
| CX.L4.SWGR.1000 | Start Up - 480/120 Distribution Panels Bry XFMRs - L4 | 2026-04-15 → 2026-05-15 (+30d) | 2026-04-28 → 2026-05-29 (+31d) | 137d → 115d |
| CX.L4.SWGR.1010 | PFPT - 480/120 Distribution Panels Bry XFMRs - L4 | 2026-04-29 → 2026-06-01 (+33d) | 2026-05-27 → 2026-06-26 (+30d) | 137d → 115d |
| CX.L4.SWGR.1020 | FPT - 480/120 Distribution Panels Bry XFMRs - L4 | 2026-05-28 → 2026-06-29 (+32d) | 2026-06-10 → 2026-07-13 (+33d) | 164d → 142d |
| 2 | **AHU 4-2, 4-1** | 2026-04-16 → 2026-05-15 (+29d) | 2026-09-29 → 2026-10-13 (+14d) |  |
| CX.L4.AHU.1000 | Startup - AHU 4-1, 4-2 - L4 | 2026-04-16 → 2026-05-15 (+29d) | 2026-04-29 → 2026-05-29 (+30d) | 8d → -13d |
| CX.L4.AHU.1010 | P2P/BAS - AHU 4-1, 4-2 - L4 | 2026-05-06 → 2026-06-01 (+26d) | 2026-06-03 → 2026-06-26 (+23d) | 4d → -13d |
| CX.L4.AHU.1020 | Test and Balance - AHU 4-1, 4-2 - L4 | 2026-06-04 → 2026-06-29 (+25d) | 2026-07-01 → 2026-07-27 (+26d) | 79d → 62d |
| CX.L4.AHU.1030 | PFPT - AHU 4-1, 4-2 - L4 | 2026-09-01 → 2026-09-16 (+15d) | 2026-09-15 → 2026-09-29 (+14d) | 97d → 87d |
| CX.L4.AHU.1040 | FPT - AHU 4-1, 4-2 - L4 | 2026-09-16 → 2026-09-30 (+14d) | 2026-09-29 → 2026-10-13 (+14d) | 97d → 87d |
| 3 | **AHU 4-3** | 2026-04-16 → 2026-05-15 (+29d) | 2026-10-06 → 2026-10-20 (+14d) |  |
| CX.L4.AHU.2000 | Startup - AHU 4-3 - L4 | 2026-04-16 → 2026-05-15 (+29d) | 2026-04-22 → 2026-05-21 (+29d) | 23d → 2d |
| CX.L4.AHU.2010 | P2P/BAS - AHU 4-3 - L4 | 2026-05-06 → 2026-06-01 (+26d) | 2026-05-19 → 2026-06-12 (+24d) | 14d → -3d |
| CX.L4.AHU.2020 | Test and Balance - AHU 4-3 - L4 | 2026-05-20 → 2026-06-15 (+26d) | 2026-06-10 → 2026-07-06 (+26d) | 94d → 77d |
| CX.L4.AHU.2030 | PFPT - AHU 4-3 - L4 | 2026-09-01 → 2026-09-16 (+15d) | 2026-09-08 → 2026-09-22 (+14d) | 112d → 102d |
| CX.L4.AHU.2040 | FPT - AHU 4-3 - L4 | 2026-09-30 → 2026-10-14 (+14d) | 2026-10-06 → 2026-10-20 (+14d) | 97d → 87d |
| 4 | **General Supply & Exhaust Terminal Unit Testing** | 2026-06-04 → 2026-06-29 (+25d) | 2026-10-20 → 2026-11-03 (+14d) |  |
| CX.L4.GSE.1000 | Start Up and set Supply/Exhaust Valves - General Supply & Exhaust Testing - L4 | 2026-06-04 → 2026-06-29 (+25d) | 2026-07-23 → 2026-08-17 (+25d) | 24d → 7d |
| CX.L4.GSE.1010 | Startup/Checkout Terminal Units - General Supply & Exhaust Testing - L4 | 2026-06-04 → 2026-06-29 (+25d) | 2026-06-17 → 2026-07-13 (+26d) | 84d → 67d |
| CX.L4.GSE.1020 | P2P/BAS Terminal Units - General Supply & Exhaust Testing - L4 | 2026-07-24 → 2026-08-18 (+25d) | 2026-08-06 → 2026-08-31 (+25d) | 59d → 42d |
| CX.L4.GSE.1030 | PFPT Terminal Units - General Supply & Exhaust Testing - L4 | 2026-08-07 → 2026-09-01 (+25d) | 2026-08-20 → 2026-09-15 (+26d) | 59d → 42d |
| CX.L4.GSE.1040 | Preliminary TAB Floor - General Supply & Exhaust Testing - L4 | 2026-08-21 → 2026-09-16 (+26d) | 2026-09-18 → 2026-10-13 (+25d) | 59d → 42d |
| CX.L4.GSE.1050 | FPT Terminal Units - General Supply & Exhaust Testing - L4 | 2026-10-07 → 2026-10-21 (+14d) | 2026-10-20 → 2026-11-03 (+14d) | 97d → 87d |
| 2 | **Level 5** | 2026-04-01 → 2026-04-13 (+12d) | 2027-03-04 → 2027-03-29 (+25d) |  |
| 1 | **480/120 Distribution Panels Dry XFMRs (4 Elec RMs)** | 2026-04-01 → 2026-04-13 (+12d) | 2026-05-27 → 2026-06-08 (+12d) |  |
| CX.L5.SWGR.1000 | Start Up - 480/120 Distribution Panels Bry XFMRs - L5 | 2026-04-01 → 2026-04-13 (+12d) | 2026-04-14 → 2026-04-24 (+10d) | 147d → 139d |
| CX.L5.SWGR.1010 | PFPT - 480/120 Distribution Panels Bry XFMRs - L5 | 2026-04-15 → 2026-04-27 (+12d) | 2026-05-12 → 2026-05-22 (+10d) | 147d → 139d |
| CX.L5.SWGR.1020 | FPT - 480/120 Distribution Panels Bry XFMRs - L5 | 2026-05-13 → 2026-05-26 (+13d) | 2026-05-27 → 2026-06-08 (+12d) | 169d → 161d |
| 2 | **BSL/Sterility - 3 Lab ( Medical Equip & Systems)** | 2026-08-11 → 2026-08-25 (+14d) | 2026-11-10 → 2026-11-24 (+14d) |  |
| CX.L5.BSL.1000 | Startup - BSL3 & Sterility Lab Testing - L5 | 2026-08-11 → 2026-08-25 (+14d) | 2026-08-17 → 2026-08-31 (+14d) | 77d → 67d |
| CX.L5.BSL.1010 | P2P/BAS - BSL3 & Sterility Lab Testing - L5 | 2026-08-18 → 2026-09-01 (+14d) | 2026-08-24 → 2026-09-08 (+15d) | 77d → 67d |
| CX.L5.BSL.1020 | Test and Balance - BSL3 & Sterility Lab Testing - L5 | 2026-08-25 → 2026-09-09 (+15d) | 2026-08-31 → 2026-09-15 (+15d) | 77d → 67d |
| CX.L5.BSL.1030 | PFPT mechanical/electrical systems - BSL3 & Sterility Lab Testing - L5 | 2026-09-01 → 2026-09-16 (+15d) | 2026-09-08 → 2026-09-22 (+14d) | 77d → 67d |
| CX.L5.BSL.1040 | Room Balancing - BSL3 & Sterility Lab Testing - L5 | 2026-09-09 → 2026-09-23 (+14d) | 2026-09-15 → 2026-09-29 (+14d) | 77d → 67d |
| CX.L5.BSL.1050 | Fume Hood Balancing and testing - BSL3 & Sterility Lab Testing - L5 | 2026-09-16 → 2026-09-30 (+14d) | 2026-09-22 → 2026-10-06 (+14d) | 77d → 67d |
| CX.L5.BSL.1060 | Fume Hood certification - BSL3 & Sterility Lab Testing - L5 | 2026-09-23 → 2026-10-07 (+14d) | 2026-09-29 → 2026-10-13 (+14d) | 77d → 67d |
| CX.L5.BSL.1070 | Test Lab Equipment (Washer/Disinfector) - BSL3 & Sterility Lab Testing - L5 | 2026-09-30 → 2026-10-14 (+14d) | 2026-10-06 → 2026-10-20 (+14d) | 77d → 67d |
| CX.L5.BSL.1080 | Install Carbon Filters - BSL3 & Sterility Lab Testing - L5 | 2026-10-07 → 2026-10-21 (+14d) | 2026-10-20 → 2026-11-03 (+14d) | 77d → 67d |
| CX.L5.BSL.1090 | Certify Room - BSL3 & Sterility Lab Testing - L5 | 2026-10-21 → 2026-11-04 (+14d) | 2026-11-03 → 2026-11-17 (+14d) | 82d → 72d |
| CX.L5.BSL.1100 | NIH Acceptance test - BSL3 & Sterility Lab Testing - L5 | 2026-11-04 → 2026-11-18 (+14d) | 2026-11-10 → 2026-11-24 (+14d) | 82d → 72d |
| 3 | **AHU 5-1, 5-2** | 2026-04-16 → 2026-05-15 (+29d) | 2026-09-29 → 2026-10-13 (+14d) |  |
| CX.L5.AHU.1000 | Startup - AHU 5-1, 5-2 - L5 | 2026-04-16 → 2026-05-15 (+29d) | 2026-04-29 → 2026-05-29 (+30d) | 8d → -13d |
| CX.L5.AHU.1010 | P2P/BAS - AHU 5-1, 5-2 - L5 | 2026-05-06 → 2026-06-01 (+26d) | 2026-06-03 → 2026-06-26 (+23d) | 4d → -13d |
| CX.L5.AHU.1020 | Test and Balance - AHU 5-1, 5-2 - L5 | 2026-06-04 → 2026-06-29 (+25d) | 2026-07-01 → 2026-07-27 (+26d) | 79d → 62d |
| CX.L5.AHU.1030 | PFPT - AHU 5-1, 5-2 - L5 | 2026-09-01 → 2026-09-16 (+15d) | 2026-09-15 → 2026-09-29 (+14d) | 92d → 82d |
| CX.L5.AHU.1040 | FPT - AHU 5-1, 5-2 - L5 | 2026-09-16 → 2026-09-30 (+14d) | 2026-09-29 → 2026-10-13 (+14d) | 92d → 82d |
| 4 | **General Supply & Exhaust Terminal Unit Testing** | 2026-07-01 → 2026-07-02 (+1d) | 2027-03-04 → 2027-03-29 (+25d) |  |

| ID | Task | Start | Finish | Total float |
| --- | --- | --- | --- | --- |
| CX.L5.GSE.1000 | Startup/Checkout Terminal Units - General Supply & Exhaust Testing - L5 | 2026-07-01 → 2026-07-02 (+1d) | 2026-07-29 → 2026-07-30 (+1d) | 40d → 39d |
| CX.L5.GSE.1010 | Start Up and set Supply/Exhaust Valves - General Supply & Exhaust Testing - L5 | 2026-07-31 → 2026-08-25 (+25d) | 2026-09-18 → 2026-10-13 (+25d) | 4d → -13d |
| CX.L5.GSE.1020 | P2P/BAS Terminal Units - General Supply & Exhaust Testing - L5 | 2026-09-21 → 2026-10-14 (+23d) | 2026-10-23 → 2026-11-17 (+25d) | 4d → -13d |
| CX.L5.GSE.1030 | PFPT Terminal Units - General Supply & Exhaust Testing - L5 | 2026-10-26 → 2026-11-18 (+23d) | 2026-11-20 → 2026-12-17 (+27d) | 4d → -13d |
| CX.L5.GSE.1040 | Preliminary TAB Floor - General Supply & Exhaust Testing - L5 | 2026-11-23 → 2026-12-18 (+25d) | 2027-02-18 → 2027-03-15 (+25d) | 4d → -13d |
| CX.L5.GSE.1050 | FPT Terminal Units - General Supply & Exhaust Testing - L5 | 2027-02-19 → 2027-03-16 (+25d) | 2027-03-04 → 2027-03-29 (+25d) | 4d → -13d |
| 3 | **Level 6** | 2026-04-01 → 2026-04-24 (+23d) | 2026-12-01 → 2026-12-24 (+23d) |  |
| 1 | **480/120 Distribution Panels Dry XFMRs (5 Elec RMs)** | 2026-04-15 → 2026-05-08 (+23d) | 2026-06-10 → 2026-07-06 (+26d) |  |
| CX.L6.SWGR.1000 | Start Up - 480/120 Distribution Panels Bry XFMRs - L6 | 2026-04-15 → 2026-05-08 (+23d) | 2026-04-28 → 2026-05-21 (+23d) | 137d → 120d |
| CX.L6.SWGR.1010 | PFPT - 480/120 Distribution Panels Bry XFMRs - L6 | 2026-04-29 → 2026-05-22 (+23d) | 2026-05-27 → 2026-06-19 (+23d) | 137d → 120d |
| CX.L6.SWGR.1020 | FPT - 480/120 Distribution Panels Bry XFMRs - L6 | 2026-05-28 → 2026-06-22 (+25d) | 2026-06-10 → 2026-07-06 (+26d) | 154d → 137d |
| 5 | **UPS** | 2026-04-15 → 2026-05-08 (+23d) | 2026-06-17 → 2026-07-13 (+26d) |  |
| CX.L6.UPS.1000 | Start Up - UPS - L6 | 2026-04-15 → 2026-05-08 (+23d) | 2026-04-21 → 2026-05-14 (+23d) | 179d → 162d |
| CX.L6.UPS.1010 | PFPT - UPS - L6 | 2026-04-22 → 2026-05-15 (+23d) | 2026-05-05 → 2026-05-29 (+24d) | 179d → 162d |
| CX.L6.UPS.1020 | FPT - UPS - L6 | 2026-06-11 → 2026-07-07 (+26d) | 2026-06-17 → 2026-07-13 (+26d) | 154d → 137d |
| 2 | **AHU 6-1, 6-2** | 2026-05-19 → 2026-05-20 (+1d) | 2026-09-29 → 2026-10-13 (+14d) |  |
| CX.L6.AHU.1000 | Startup - AHU 6-1, 6-2 - L6 | 2026-05-19 → 2026-05-20 (+1d) | 2026-06-02 → 2026-06-03 (+1d) | 0d → -1d |
| CX.L6.AHU.1010 | P2P/BAS - AHU 6-1, 6-2 - L6 | 2026-06-03 → 2026-06-04 (+1d) | 2026-06-30 → 2026-07-01 (+1d) | 0d → -1d |
| CX.L6.AHU.1020 | Test and Balance - AHU 6-1, 6-2 - L6 | 2026-07-01 → 2026-07-02 (+1d) | 2026-07-29 → 2026-07-30 (+1d) | 75d → 74d |
| CX.L6.AHU.1030 | PFPT - AHU 6-1, 6-2 - L6 | 2026-09-01 → 2026-09-16 (+15d) | 2026-09-15 → 2026-09-29 (+14d) | 92d → 82d |
| CX.L6.AHU.1040 | FPT - AHU 6-1, 6-2 - L6 | 2026-09-16 → 2026-09-30 (+14d) | 2026-09-29 → 2026-10-13 (+14d) | 92d → 82d |
| 3 | **AHU 6-3, 6-4** | 2026-04-01 → 2026-04-24 (+23d) | 2026-10-13 → 2026-10-27 (+14d) |  |
| CX.L6.AHU.2000 | Startup - AHU 6-3, 6-4 - L6 | 2026-04-01 → 2026-04-24 (+23d) | 2026-04-14 → 2026-05-07 (+23d) | 139d → 122d |
| CX.L6.AHU.2010 | P2P/BAS - AHU 6-3, 6-4 - L6 | 2026-07-14 → 2026-07-28 (+14d) | 2026-08-10 → 2026-08-24 (+14d) | 77d → 67d |
| CX.L6.AHU.2020 | Test and Balance - AHU 6-3, 6-4 - L6 | 2026-08-11 → 2026-08-25 (+14d) | 2026-09-08 → 2026-09-22 (+14d) | 82d → 72d |
| CX.L6.AHU.2030 | PFPT - AHU 6-3, 6-4 - L6 | 2026-09-09 → 2026-09-23 (+14d) | 2026-09-22 → 2026-10-06 (+14d) | 102d → 92d |
| CX.L6.AHU.2040 | FPT - AHU 6-3, 6-4 - L6 | 2026-09-30 → 2026-10-14 (+14d) | 2026-10-13 → 2026-10-27 (+14d) | 97d → 87d |
| 4 | **General Supply & Exhaust Terminal Unit Testing** | 2026-07-01 → 2026-07-02 (+1d) | 2026-12-01 → 2026-12-24 (+23d) |  |
| CX.L6.GSE.1010 | Startup/Checkout Terminal Units - General Supply & Exhaust Testing - L6 | 2026-07-01 → 2026-07-02 (+1d) | 2026-07-29 → 2026-07-30 (+1d) | 40d → 39d |
| CX.L6.GSE.1000 | Start Up and set Supply/Exhaust Valves - General Supply & Exhaust Testing - L6 | 2026-07-17 → 2026-08-11 (+25d) | 2026-07-30 → 2026-08-24 (+25d) | 4d → -13d |
| CX.L6.GSE.1020 | P2P/BAS Terminal Units - General Supply & Exhaust Testing - L6 | 2026-07-31 → 2026-08-25 (+25d) | 2026-08-13 → 2026-09-08 (+26d) | 39d → 22d |
| CX.L6.GSE.1030 | PFPT Terminal Units - General Supply & Exhaust Testing - L6 | 2026-08-14 → 2026-09-09 (+26d) | 2026-08-27 → 2026-09-22 (+26d) | 39d → 22d |
| CX.L6.GSE.1040 | Preliminary TAB Floor - General Supply & Exhaust Testing - L6 | 2026-10-19 → 2026-11-11 (+23d) | 2026-11-20 → 2026-12-17 (+27d) | 4d → -13d |
| CX.L6.GSE.1050 | FPT Terminal Units - General Supply & Exhaust Testing - L6 | 2026-11-23 → 2026-12-18 (+25d) | 2026-12-01 → 2026-12-24 (+23d) | 69d → 52d |
| 7 | **Level 7** | 2026-05-12 → 2026-05-15 (+3d) | 2027-03-10 → 2027-03-11 (+1d) |  |
| 1 | **480/120 Distribution Panels Dry XFMRs (5 Elec RMs)** | 2026-05-19 → 2026-05-20 (+1d) | 2026-07-15 → 2026-07-16 (+1d) |  |
| CX.L7.SWGR.1000 | Start Up - 480/120 Distribution Panels Bry XFMRs - L7 | 2026-05-19 → 2026-05-20 (+1d) | 2026-06-02 → 2026-06-03 (+1d) | 113d → 112d |
| CX.L7.SWGR.1010 | PFPT - 480/120 Distribution Panels Bry XFMRs - L7 | 2026-06-03 → 2026-06-04 (+1d) | 2026-06-30 → 2026-07-01 (+1d) | 113d → 112d |
| CX.L7.SWGR.1020 | FPT - 480/120 Distribution Panels Bry XFMRs - L7 | 2026-07-01 → 2026-07-02 (+1d) | 2026-07-15 → 2026-07-16 (+1d) | 125d → 124d |
| 5 | **AHU 7-1, 7-2** | 2026-05-19 → 2026-05-20 (+1d) | 2026-10-08 → 2026-10-13 (+5d) |  |
| CX.L7.AHU.1000 | Startup - AHU 7-1, 7-2 - L7 | 2026-05-19 → 2026-05-20 (+1d) | 2026-06-02 → 2026-06-03 (+1d) | 0d → -1d |
| CX.L7.AHU.1010 | P2P/BAS - AHU 7-1, 7-2 - L7 | 2026-06-03 → 2026-06-04 (+1d) | 2026-06-30 → 2026-07-01 (+1d) | 0d → -1d |
| CX.L7.AHU.1020 | Test and Balance - AHU 7-1, 7-2 - L7 | 2026-07-01 → 2026-07-02 (+1d) | 2026-07-29 → 2026-07-30 (+1d) | 75d → 74d |
| CX.L7.AHU.1030 | PFPT - AHU 7-1, 7-2 - L7 | 2026-09-11 → 2026-09-16 (+5d) | 2026-09-24 → 2026-09-29 (+5d) | 75d → 72d |
| CX.L7.AHU.1040 | FPT - AHU 7-1, 7-2 - L7 | 2026-09-25 → 2026-09-30 (+5d) | 2026-10-08 → 2026-10-13 (+5d) | 75d → 72d |
| 2 | **AHU 7-3, 7-4** | 2026-05-12 → 2026-05-15 (+3d) | 2026-10-22 → 2026-10-27 (+5d) |  |
| CX.L7.AHU.2000 | Startup - AHU 7-3, 7-4 - L7 | 2026-05-12 → 2026-05-15 (+3d) | 2026-05-26 → 2026-05-29 (+3d) | 100d → 97d |
| CX.L7.AHU.2010 | P2P/BAS - AHU 7-3, 7-4 - L7 | 2026-07-14 → 2026-07-28 (+14d) | 2026-08-10 → 2026-08-24 (+14d) | 77d → 67d |
| CX.L7.AHU.2020 | Test and Balance - AHU 7-3, 7-4 - L7 | 2026-08-11 → 2026-08-25 (+14d) | 2026-09-08 → 2026-09-22 (+14d) | 82d → 72d |
| CX.L7.AHU.2030 | PFPT - AHU 7-3, 7-4 - L7 | 2026-09-11 → 2026-09-23 (+12d) | 2026-09-24 → 2026-10-06 (+12d) | 85d → 77d |
| CX.L7.AHU.2040 | FPT - AHU 7-3, 7-4 - L7 | 2026-10-09 → 2026-10-14 (+5d) | 2026-10-22 → 2026-10-27 (+5d) | 75d → 72d |
| 3 | **Sterility Lab Testing (Fume Hoods, Dedicated Exhausts, Medical Equip)** | 2026-08-11 → 2026-08-25 (+14d) | 2026-10-13 → 2026-10-27 (+14d) |  |
| CX.L7.SLT.1000 | Startup - Sterility Lab Testing - L7 | 2026-08-11 → 2026-08-25 (+14d) | 2026-08-17 → 2026-08-31 (+14d) | 42d → 32d |
| CX.L7.SLT.1010 | P2P/BAS - Sterility Lab Testing - L7 | 2026-08-18 → 2026-09-01 (+14d) | 2026-08-24 → 2026-09-08 (+15d) | 112d → 102d |
| CX.L7.SLT.1020 | Test and Balance - Sterility Lab Testing - L7 | 2026-09-01 → 2026-09-16 (+15d) | 2026-09-08 → 2026-09-22 (+14d) | 107d → 97d |
| CX.L7.SLT.1030 | PFPT mechanical/electrical systems - Sterility Lab Testing - L7 | 2026-09-11 → 2026-09-23 (+12d) | 2026-09-17 → 2026-09-29 (+12d) | 105d → 97d |
| CX.L7.SLT.1040 | Fume Hood Balancing and testing - Sterility Lab Testing - L7 | 2026-09-18 → 2026-09-30 (+12d) | 2026-09-24 → 2026-10-06 (+12d) | 105d → 97d |
| CX.L7.SLT.1050 | Fume Hood certification - Sterility Lab Testing - L7 | 2026-09-25 → 2026-10-07 (+12d) | 2026-10-01 → 2026-10-13 (+12d) | 105d → 97d |
| CX.L7.SLT.1060 | NIH Acceptance test - Sterility Lab Testing - L7 | 2026-10-07 → 2026-10-21 (+14d) | 2026-10-13 → 2026-10-27 (+14d) | 102d → 92d |
| 6 | **Freezer (Fume Hoods, Dedicated Exhausts, Medical Equip)** | 2026-05-12 → 2026-05-15 (+3d) | 2026-10-13 → 2026-10-27 (+14d) |  |
| CX.L7.FRZ.1000 | Startup - Freezer Testing - L7 | 2026-05-12 → 2026-05-15 (+3d) | 2026-05-18 → 2026-05-21 (+3d) | 105d → 102d |
| CX.L7.FRZ.1010 | P2P/BAS - Freezer Testing - L7 | 2026-05-19 → 2026-05-22 (+3d) | 2026-05-26 → 2026-05-29 (+3d) | 175d → 172d |
| CX.L7.FRZ.1020 | Test and Balance - Freezer Testing - L7 | 2026-05-27 → 2026-06-01 (+5d) | 2026-06-02 → 2026-06-05 (+3d) | 175d → 172d |
| CX.L7.FRZ.1030 | PFPT mechanical/electrical systems - Freezer Testing - L7 | 2026-09-11 → 2026-09-14 (+3d) | 2026-09-17 → 2026-09-18 (+1d) | 105d → 104d |
| CX.L7.FRZ.1040 | Fume Hood Balancing and testing - Freezer Testing - L7 | 2026-09-18 → 2026-09-21 (+3d) | 2026-09-24 → 2026-09-25 (+1d) | 105d → 104d |
| CX.L7.FRZ.1050 | Fume Hood certification - Freezer Testing - L7 | 2026-09-25 → 2026-09-28 (+3d) | 2026-10-01 → 2026-10-02 (+1d) | 105d → 104d |
| CX.L7.FRZ.1060 | NIH Acceptance test - Freezer Testing - L7 | 2026-10-07 → 2026-10-21 (+14d) | 2026-10-13 → 2026-10-27 (+14d) | 102d → 92d |
| 4 | **General Supply & Exhaust Terminal Unit Testing** | 2026-07-01 → 2026-07-02 (+1d) | 2027-03-10 → 2027-03-11 (+1d) |  |
| CX.L7.GSE.1000 | Startup/Checkout Terminal Units - General Supply & Exhaust Testing - L7 | 2026-07-01 → 2026-07-02 (+1d) | 2026-07-15 → 2026-07-16 (+1d) | 40d → 39d |
| CX.L7.GSE.1010 | Start Up and set Supply/Exhaust Valves - General Supply & Exhaust Testing - L7 | 2026-07-16 → 2026-07-17 (+1d) | 2026-09-10 → 2026-09-11 (+1d) | 0d → -1d |

| ID | Task | Start | Finish | Total float |
| --- | --- | --- | --- | --- |
| CX.L7.GSE.1020 | P2P/BAS Terminal Units - General Supply & Exhaust Testing - L7 | 2026-09-11 → 2026-09-14 (+3d) | 2026-10-15 → 2026-10-16 (+1d) | 0d → -1d |
| CX.L7.GSE.1030 | PFPT Terminal Units - General Supply & Exhaust Testing - L7 | 2026-10-16 → 2026-10-19 (+3d) | 2026-11-12 → 2026-11-13 (+1d) | 0d → -1d |
| CX.L7.GSE.1040 | Preliminary TAB Floor - General Supply & Exhaust Testing - L7 | 2026-11-13 → 2026-11-16 (+3d) | 2027-02-10 → 2027-02-11 (+1d) | 0d → -1d |
| CX.L7.GSE.1050 | FPT Terminal Units - General Supply & Exhaust Testing - L7 | 2027-02-11 → 2027-02-12 (+1d) | 2027-03-10 → 2027-03-11 (+1d) | 0d → -1d |
| 8 | **Level 8** | 2026-04-22 → 2026-05-22 (+30d) | 2026-10-15 → 2026-10-27 (+12d) |  |
| 1 | **480/120 Distribution Panels Dry XFMRs (2 Elec RMs)** | 2026-04-22 → 2026-05-22 (+30d) | 2026-05-29 → 2026-06-30 (+32d) |  |
| CX.L8.SWGR.1000 | Start Up - 480/120 Distribution Panels Bry XFMRs - L8 | 2026-04-22 → 2026-05-22 (+30d) | 2026-04-28 → 2026-05-29 (+31d) | 152d → 130d |
| CX.L8.SWGR.1010 | PFPT - 480/120 Distribution Panels Bry XFMRs - L8 | 2026-05-15 → 2026-06-17 (+33d) | 2026-05-21 → 2026-06-23 (+33d) | 140d → 118d |
| CX.L8.SWGR.1020 | FPT - 480/120 Distribution Panels Bry XFMRs - L8 | 2026-05-22 → 2026-06-24 (+33d) | 2026-05-29 → 2026-06-30 (+32d) | 172d → 150d |
| 2 | **AHU 8-1, 8-2** | 2026-05-20 → 2026-06-15 (+26d) | 2026-10-06 → 2026-10-20 (+14d) |  |
| CX.L8.AHU.1000 | Startup - AHU 8-1, 8-2 - L8 | 2026-05-20 → 2026-06-15 (+26d) | 2026-06-03 → 2026-06-26 (+23d) | 69d → 52d |
| CX.L8.AHU.1010 | P2P/BAS - AHU 8-1, 8-2 - L8 | 2026-07-14 → 2026-07-28 (+14d) | 2026-08-10 → 2026-08-24 (+14d) | 42d → 32d |
| CX.L8.AHU.1020 | Test and Balance - AHU 8-1, 8-2 - L8 | 2026-08-11 → 2026-08-25 (+14d) | 2026-09-08 → 2026-09-22 (+14d) | 87d → 77d |
| CX.L8.AHU.1030 | PFPT - AHU 8-1, 8-2 - L8 | 2026-09-09 → 2026-09-23 (+14d) | 2026-09-22 → 2026-10-06 (+14d) | 92d → 82d |
| CX.L8.AHU.1040 | FPT - AHU 8-1, 8-2 - L8 | 2026-09-23 → 2026-10-07 (+14d) | 2026-10-06 → 2026-10-20 (+14d) | 92d → 82d |
| 3 | **General Supply & Exhaust Terminal Unit Testing** | 2026-07-01 → 2026-07-02 (+1d) | 2026-10-15 → 2026-10-27 (+12d) |  |
| CX.L8.GSE.1000 | Startup/Checkout Terminal Units - General Supply & Exhaust Testing - L8 | 2026-07-01 → 2026-07-02 (+1d) | 2026-07-29 → 2026-07-30 (+1d) | 30d → 29d |
| CX.L8.GSE.1010 | Start Up and set Supply/Exhaust Valves - General Supply & Exhaust Testing - L8 | 2026-07-01 → 2026-07-02 (+1d) | 2026-07-15 → 2026-07-16 (+1d) | 0d → -1d |
| CX.L8.GSE.1020 | P2P/BAS Terminal Units - General Supply & Exhaust Testing - L8 | 2026-07-30 → 2026-07-31 (+1d) | 2026-08-12 → 2026-08-13 (+1d) | 30d → 29d |
| CX.L8.GSE.1030 | PFPT Terminal Units - General Supply & Exhaust Testing - L8 | 2026-08-13 → 2026-08-14 (+1d) | 2026-08-26 → 2026-08-27 (+1d) | 30d → 29d |
| CX.L8.GSE.1040 | Preliminary TAB Floor - General Supply & Exhaust Testing - L8 | 2026-08-27 → 2026-08-28 (+1d) | 2026-10-01 → 2026-10-02 (+1d) | 30d → 29d |
| CX.L8.GSE.1050 | FPT Terminal Units - General Supply & Exhaust Testing - L8 | 2026-10-09 → 2026-10-21 (+12d) | 2026-10-15 → 2026-10-27 (+12d) | 90d → 82d |
| 9 | **Penthouse** | 2026-02-16 → 2026-04-01 (+44d) | 2026-12-17 → 2027-01-20 (+34d) |  |
| 5 | **AHU 9-1, 9-2** | 2026-04-28 → 2026-05-29 (+31d) | 2026-09-15 → 2026-09-29 (+14d) |  |
| CX.PH.AHU.1000 | Startup - AHU 9-1, 9-2 - PH | 2026-04-28 → 2026-05-29 (+31d) | 2026-05-04 → 2026-06-04 (+31d) | 123d → 101d |
| CX.PH.AHU.1010 | P2P/BAS - AHU 9-1, 9-2 - PH | 2026-05-06 → 2026-06-05 (+30d) | 2026-05-19 → 2026-06-18 (+30d) | 122d → 101d |
| CX.PH.AHU.1020 | Test and Balance - AHU 9-1, 9-2 - PH | 2026-05-20 → 2026-06-19 (+30d) | 2026-06-10 → 2026-07-10 (+30d) | 122d → 101d |
| CX.PH.AHU.1030 | PFPT - AHU 9-1, 9-2 - PH | 2026-09-01 → 2026-09-16 (+15d) | 2026-09-08 → 2026-09-22 (+14d) | 65d → 55d |
| CX.PH.AHU.1040 | FPT - AHU 9-1, 9-2 - PH | 2026-09-09 → 2026-09-23 (+14d) | 2026-09-15 → 2026-09-29 (+14d) | 92d → 82d |
| 2 | **Exhaust Fans** | 2026-02-23 → 2026-04-01 (+37d) | 2026-10-06 → 2026-10-20 (+14d) |  |
| CX.PH.EHF.1150 | Startup - Exhaust Fans - Lab - PH | 2026-02-23 → 2026-04-01 (+37d) | 2026-02-27 → 2026-04-07 (+39d) | 54d → 27d |
| CX.PH.EHF.1000 | Startup - Exhaust Fans - Clinical - PH | 2026-03-02 → 2026-04-08 (+37d) | 2026-03-10 → 2026-04-16 (+37d) | 54d → 27d |
| CX.PH.EHF.1100 | P2P/BAS - Exhaust Fans - Lab - PH | 2026-03-02 → 2026-04-08 (+37d) | 2026-03-06 → 2026-04-14 (+39d) | 81d → 54d |
| CX.PH.EHF.1010 | P2P/BAS - Exhaust Fans - Clinical - PH | 2026-03-11 → 2026-04-17 (+37d) | 2026-03-24 → 2026-04-30 (+37d) | 54d → 27d |
| CX.PH.EHF.1160 | Startup - Exhaust Fans - Level 5 BSL Sterility - PH | 2026-04-28 → 2026-05-29 (+31d) | 2026-05-04 → 2026-06-04 (+31d) | 52d → 30d |
| CX.PH.EHF.1110 | P2P/BAS - Exhaust Fans - Level 5 BSL Sterility - PH | 2026-05-05 → 2026-06-05 (+31d) | 2026-05-11 → 2026-06-11 (+31d) | 140d → 118d |
| CX.PH.EHF.1170 | Startup - Exhaust Fans - Level 7 Sterility PH | 2026-05-05 → 2026-06-05 (+31d) | 2026-05-07 → 2026-06-09 (+33d) | 52d → 30d |
| CX.PH.EHF.1120 | P2P/BAS - Exhaust Fans - Level 7 Sterility PH | 2026-05-08 → 2026-06-10 (+33d) | 2026-05-14 → 2026-06-16 (+33d) | 102d → 80d |
| CX.PH.EHF.1180 | Startup - Exhaust Fans - Cath - Central Steril - PH | 2026-05-08 → 2026-06-10 (+33d) | 2026-05-14 → 2026-06-16 (+33d) | 52d → 30d |
| CX.PH.EHF.1130 | P2P/BAS - Exhaust Fans - Cath - Central Steril - PH | 2026-05-15 → 2026-06-17 (+33d) | 2026-05-21 → 2026-06-23 (+33d) | 132d → 110d |
| CX.PH.EHF.1190 | Startup - Exhaust Fans - ISO - BSC - ETO - PH | 2026-05-15 → 2026-06-17 (+33d) | 2026-05-29 → 2026-06-30 (+32d) | 52d → 30d |
| CX.PH.EHF.1140 | P2P/BAS - Exhaust Fans - ISO - BSC - ETO - PH | 2026-06-01 → 2026-07-01 (+30d) | 2026-06-12 → 2026-07-15 (+33d) | 142d → 120d |
| CX.PH.EHF.1020 | Test and Balance - Exhaust Fans - PH | 2026-08-18 → 2026-09-01 (+14d) | 2026-09-08 → 2026-09-22 (+14d) | 87d → 77d |
| CX.PH.EHF.1030 | PFPT - Exhaust Fans - PH | 2026-09-09 → 2026-09-23 (+14d) | 2026-09-22 → 2026-10-06 (+14d) | 87d → 77d |
| CX.PH.EHF.1040 | FPT - Exhaust Fans - PH | 2026-09-23 → 2026-10-07 (+14d) | 2026-10-06 → 2026-10-20 (+14d) | 87d → 77d |
| 3 | **Heat Recovery Units** | 2026-06-01 → 2026-07-01 (+30d) | 2026-12-10 → 2027-01-13 (+34d) |  |
| CX.PH.HRU.1000 | Startup - Heat Recovery Units - PH | 2026-06-01 → 2026-07-01 (+30d) | 2026-06-26 → 2026-07-29 (+33d) | 52d → 30d |
| CX.PH.HRU.1010 | P2P/BAS - Heat Recovery Units - PH | 2026-06-29 → 2026-07-30 (+31d) | 2026-09-22 → 2026-10-22 (+30d) | 52d → 30d |
| CX.PH.HRU.1020 | Test and Balance - Heat Recovery Units - PH | 2026-09-23 → 2026-10-23 (+30d) | 2026-11-03 → 2026-12-07 (+34d) | 52d → 30d |
| CX.PH.HRU.1030 | PFPT - Heat Recovery Units - PH | 2026-11-04 → 2026-12-08 (+34d) | 2026-11-24 → 2026-12-29 (+35d) | 52d → 30d |
| CX.PH.HRU.1040 | FPT - Heat Recovery Units - PH | 2026-11-25 → 2026-12-30 (+35d) | 2026-12-10 → 2027-01-13 (+34d) | 52d → 30d |
| 1 | **General Supply & Exhaust Terminal Unit Testing** | 2026-04-28 → 2026-05-29 (+31d) | 2026-10-13 → 2026-10-27 (+14d) |  |
| CX.PH.GSE.1000 | Startup/Checkout Terminal Units - General Supply & Exhaust Testing - PH | 2026-04-28 → 2026-05-29 (+31d) | 2026-05-04 → 2026-06-04 (+31d) | 172d → 150d |
| CX.PH.GSE.1010 | P2P/BAS Terminal Units - General Supply & Exhaust Testing - PH | 2026-05-05 → 2026-06-05 (+31d) | 2026-05-18 → 2026-06-18 (+31d) | 172d → 150d |
| CX.PH.GSE.1020 | PFPT Terminal Units - General Supply & Exhaust Testing - PH | 2026-07-28 → 2026-08-11 (+14d) | 2026-08-10 → 2026-08-24 (+14d) | 124d → 114d |
| CX.PH.GSE.1030 | Preliminary TAB - General Supply & Exhaust Testing - PH | 2026-08-11 → 2026-08-25 (+14d) | 2026-08-17 → 2026-08-31 (+14d) | 124d → 114d |
| CX.PH.GSE.1040 | FPT Terminal Units - General Supply & Exhaust Testing - PH | 2026-10-07 → 2026-10-21 (+14d) | 2026-10-13 → 2026-10-27 (+14d) | 89d → 79d |
| 4 | **High Purity Water System** | 2026-02-16 → 2026-04-01 (+44d) | 2026-12-17 → 2027-01-20 (+34d) |  |
| CX.PH.HPRT.1000 | Startup - High Purity Water System - PH | 2026-02-16 → 2026-04-01 (+44d) | 2026-03-13 → 2026-04-28 (+46d) | 216d → 184d |
| CX.PH.HPRT.1010 | P2P/BAS - High Purity Water System - PH | 2026-03-16 → 2026-04-29 (+44d) | 2026-04-10 → 2026-05-27 (+47d) | 216d → 184d |
| CX.PH.HPRT.1020 | PFPT - High Purity Water System - PH | 2026-04-13 → 2026-05-28 (+45d) | 2026-04-24 → 2026-06-10 (+47d) | 216d → 184d |
| CX.PH.HPRT.1030 | FPT - High Purity Water System - PH | 2026-12-11 → 2027-01-14 (+34d) | 2026-12-17 → 2027-01-20 (+34d) | 57d → 35d |
| 15 | **OHD Perimeter Blowers** | 2026-02-02 → 2026-02-27 (+25d) | 2026-03-20 → 2026-04-16 (+27d) |  |
| CX.BLOW.1000 | Startup Blower Systems at OH Doors | 2026-02-02 → 2026-02-27 (+25d) | 2026-02-20 → 2026-03-19 (+27d) | 203d → 184d |
| CX.BLOW.1010 | PFPT Blower Systems at OH Doors | 2026-02-23 → 2026-03-20 (+25d) | 2026-03-13 → 2026-04-09 (+27d) | 203d → 184d |
| CX.BLOW.1020 | FPT Blower Systems at OH Doors | 2026-03-16 → 2026-04-10 (+25d) | 2026-03-20 → 2026-04-16 (+27d) | 203d → 184d |
| 16 | **Vacuum/Air/Oxygen Systems** | 2026-03-16 → 2026-04-06 (+21d) | 2026-04-10 → 2026-05-01 (+21d) |  |
| CX.VAO.1000 | System Startup | 2026-03-16 → 2026-04-06 (+21d) | 2026-03-20 → 2026-04-10 (+21d) | 231d → 216d |
| CX.VAO.1010 | QC Testing | 2026-03-23 → 2026-04-13 (+21d) | 2026-03-27 → 2026-04-17 (+21d) | 231d → 216d |
| CX.VAO.1020 | System Monitoring Testing | 2026-03-30 → 2026-04-20 (+21d) | 2026-04-03 → 2026-04-24 (+21d) | 231d → 216d |

| ID | Task | Start | Finish | Total float |
| --- | --- | --- | --- | --- |
| CX.VAO.1030 | Room Commissioning Verification | 2026-04-06 → 2026-04-27 (+21d) | 2026-04-10 → 2026-05-01 (+21d) | 231d → 216d |
| 21 | **Purified Lab Water** | 2026-05-26 → 2026-06-25 (+30d) | 2026-06-22 → 2026-07-23 (+31d) |  |
| CX.PRLW.1000 | System Startup | 2026-05-26 → 2026-06-25 (+30d) | 2026-06-01 → 2026-07-01 (+30d) | 181d → 159d |
| CX.PRLW.1010 | QC Testing | 2026-06-02 → 2026-07-02 (+30d) | 2026-06-08 → 2026-07-09 (+31d) | 181d → 159d |
| CX.PRLW.1020 | System Monitoring Testing | 2026-06-09 → 2026-07-10 (+31d) | 2026-06-15 → 2026-07-16 (+31d) | 181d → 159d |
| CX.PRLW.1030 | Room Commissioning Verification | 2026-06-16 → 2026-07-17 (+31d) | 2026-06-22 → 2026-07-23 (+31d) | 181d → 159d |
| 22 | **Carbon Dioxide/Nitrous Oxide** | 2026-10-21 → 2026-11-04 (+14d) | 2026-11-17 → 2026-12-03 (+16d) |  |
| CX.CDNO.1000 | System Startup | 2026-10-21 → 2026-11-04 (+14d) | 2026-10-27 → 2026-11-10 (+14d) | 77d → 67d |
| CX.CDNO.1010 | QC Testing | 2026-10-28 → 2026-11-11 (+14d) | 2026-11-03 → 2026-11-17 (+14d) | 77d → 67d |
| CX.CDNO.1020 | System Monitoring Testing | 2026-11-04 → 2026-11-18 (+14d) | 2026-11-10 → 2026-11-24 (+14d) | 77d → 67d |
| CX.CDNO.1030 | Room Commissioning Verification | 2026-11-11 → 2026-11-25 (+14d) | 2026-11-17 → 2026-12-03 (+16d) | 77d → 67d |
| 11 | **Punchlist/Life Safety Testing & Inspection/Acceptance (Draft)** | 2026-06-22 → 2026-06-24 (+2d) | 2027-04-21 → 2027-05-10 (+19d) |  |
| P2.PIA.110 | Pre-Testing Fire Alarm Systems | 2026-06-22 → 2026-06-24 (+2d) | 2026-07-20 → 2026-07-22 (+2d) | 149d → 147d |
| P2.PIA.100 | Contractor & A/E Punchlist & Punchlist Correction | 2026-08-20 → 2026-09-14 (+25d) | 2026-12-29 → 2027-01-21 (+23d) | 37d → 21d |
| P2.PIA.120 | Final Life Safety Testing & Inspection | 2026-12-30 → 2027-01-22 (+23d) | 2027-01-20 → 2027-02-11 (+22d) | 37d → 21d |
| P2.PIA.140 | Cleanroom Final Wipe Down & Lock Down | 2026-12-30 → 2027-01-22 (+23d) | 2027-01-27 → 2027-02-18 (+22d) | 45d → 29d |
| P2.PIA.150 | Final Intergrated System Testing | 2027-03-11 → 2027-03-30 (+19d) | 2027-04-07 → 2027-04-26 (+19d) | 0d → -13d |
| P2.PIA.130 | Final Acceptance Inspections & Certifications | 2027-04-08 → 2027-04-27 (+19d) | 2027-04-21 → 2027-05-10 (+19d) | 0d → -13d |
| EXS.131 | Substantial Completion - Phase 0,1,2 | 2027-04-21 → 2027-05-10 (+19d) | 2027-04-21 → 2027-05-10 (+19d) | 645d → 626d |
| 9 | **Phase 0,1,2 Close Out Records** | 2026-02-02 → 2026-02-27 (+25d) | 2027-02-11 → 2027-03-08 (+25d) |  |
| P2.CLO.140 | Prepare & Submit - O&M (Draft) | 2026-02-02 → 2026-02-27 (+25d) | 2026-06-08 → 2026-07-06 (+28d) | 51d → 32d |
| P2.CLO.150 | Review & Approve - O&M (Draft) | 2026-06-09 → 2026-07-07 (+28d) | 2026-06-29 → 2026-07-27 (+28d) | 51d → 32d |
| P2.CLO.100 | Prepare & Submit - As-Built Records (Draft) | 2026-06-30 → 2026-07-28 (+28d) | 2026-09-23 → 2026-10-20 (+27d) | 51d → 32d |
| P2.CLO.120 | Review & Approve - As-Built Records (Draft) | 2026-09-24 → 2026-10-21 (+27d) | 2026-10-21 → 2026-11-17 (+27d) | 51d → 32d |
| P2.CLO.110 | Prepare & Submit - As-Built Records (Final) | 2026-11-09 → 2026-12-04 (+25d) | 2026-12-22 → 2027-01-18 (+27d) | 39d → 22d |
| P2.CLO.160 | Prepare & Submit - O&M (Final) | 2026-11-09 → 2026-12-04 (+25d) | 2026-12-22 → 2027-01-18 (+27d) | 34d → 17d |
| P2.CLO.130 | Review & Approve - As-Built Records (Final) | 2026-12-23 → 2027-01-19 (+27d) | 2027-01-14 → 2027-02-08 (+25d) | 39d → 22d |
| P2.CLO.170 | Review & Approve - O&M (Final) | 2026-12-23 → 2027-01-19 (+27d) | 2027-01-14 → 2027-02-08 (+25d) | 34d → 17d |
| P2.CLO.180 | O&M Training and Instruction | 2027-01-15 → 2027-02-09 (+25d) | 2027-02-11 → 2027-03-08 (+25d) | 34d → 17d |
| 15 | **Site Improvements** | 2025-12-01 → 2025-11-20 (-11d) | 2026-10-23 → 2026-11-24 (+32d) |  |
| 11 | **Generator Utility Yard** | 2025-12-01 → 2026-01-02 (+32d) | 2026-02-24 → 2026-03-26 (+30d) |  |
| P2.UTL.100 | Set/Assemble - ICU, Surgery Back-up Generators | 2025-12-01 → 2026-01-02 (+32d) | 2025-12-29 → 2026-01-29 (+31d) | 189d → 167d |
| P2.UTL.110 | Final Controls, Power Feeders, Terminations - ICU, Surgery Back-up Generators | 2025-12-30 → 2026-01-30 (+31d) | 2026-01-27 → 2026-02-26 (+30d) | 189d → 167d |
| P2.UTL.120 | Start up/Pre-check list - ICU, Surgery Back-up Generators | 2026-01-28 → 2026-02-27 (+30d) | 2026-02-10 → 2026-03-12 (+30d) | 189d → 167d |
| P2.UTL.130 | Burn in Emergency Generators - ICU, Surgery Back-up Generators | 2026-02-11 → 2026-03-13 (+30d) | 2026-02-24 → 2026-03-26 (+30d) | 229d → 207d |
| 3 | **O2 YARD** | 2025-12-01 → 2025-11-20 (-11d) | 2026-10-23 → 2026-11-24 (+32d) |  |
| P2.SITE.414 | NIH - Vendor Prep/Submit Shop Drawings to DB Team | 2025-12-01 → 2025-11-20 A (-11d) | 2025-12-29 → 2026-01-29 (+31d) | 214d → 192d |
| P2.SITE.404 | DB Team - Coordinate Owner Furnished O2 Equipment | 2025-12-30 → 2026-01-30 (+31d) | 2026-02-24 → 2026-03-26 (+30d) | 214d → 192d |
| P2.SITE.2 | Rough in MEP to Pad | 2026-02-25 → 2026-03-27 (+30d) | 2026-03-24 → 2026-04-23 (+30d) | 214d → 192d |
| P2.SITE.1 | Install Site Access, Curb, Pads & Roads | 2026-08-21 → 2026-09-23 (+33d) | 2026-09-18 → 2026-10-20 (+32d) | 109d → 87d |
| P2.SITE.3 | Owner Install 02 Equipment | 2026-09-21 → 2026-10-21 (+30d) | 2026-09-25 → 2026-10-27 (+32d) | 109d → 87d |
| P2.SITE.4 | Install Yard Fence | 2026-09-28 → 2026-10-28 (+30d) | 2026-10-09 → 2026-11-10 (+32d) | 109d → 87d |
| P2.SITE.5 | Final Topping Pavement & Markings | 2026-10-12 → 2026-11-11 (+30d) | 2026-10-23 → 2026-11-24 (+32d) | 109d → 87d |
| 4 | **MICRO-BIO RETENTION PONDS** | 2026-01-20 → 2026-02-20 (+31d) | 2026-07-27 → 2026-08-26 (+30d) |  |
| 1 | **Pond 1** | 2026-01-20 → 2026-02-20 (+31d) | 2026-07-27 → 2026-08-26 (+30d) |  |
| P2.SITE.6 | FRP Basin Walls (Anti-Ram) - Pond 1 | 2026-01-20 → 2026-02-20 (+31d) | 2026-01-26 → 2026-02-26 (+31d) | 134d → 111d |
| P2.SITE.7 | Concrete Cure - Pond 1 | 2026-01-27 → 2026-02-27 (+31d) | 2026-01-28 → 2026-03-02 (+33d) | 134d → 111d |
| P2.SITE.11 | Install Stone Veneer - Pond 1 | 2026-01-29 → 2026-03-03 (+33d) | 2026-02-04 → 2026-03-09 (+33d) | 134d → 111d |
| P2.SITE.8 | East Walkway Storm Infrastructure Install & Back-fill - Pond 1 | 2026-01-29 → 2026-03-03 (+33d) | 2026-02-04 → 2026-03-09 (+33d) | 243d → 220d |
| P2.SITE.9 | Storm Infrastructure,Waterproofing & Base Layer - Pond 1 | 2026-01-29 → 2026-03-03 (+33d) | 2026-02-04 → 2026-03-09 (+33d) | 288d → 265d |
| P2.SITE.10 | Micro-Bio Plantings, Media, Mulch, and Final Cap Install - Pond 1 | 2026-07-21 → 2026-08-20 (+30d) | 2026-07-27 → 2026-08-26 (+30d) | 172d → 150d |
| 2 | **Pond 2** | 2026-01-27 → 2026-02-27 (+31d) | 2026-07-27 → 2026-08-26 (+30d) |  |
| P2.SITE.64 | FRP Basin Walls (Anti-Ram) - Pond 2 | 2026-01-27 → 2026-02-27 (+31d) | 2026-02-02 → 2026-03-05 (+31d) | 149d → 126d |
| P2.SITE.74 | Concrete Cure - Pond 2 | 2026-02-03 → 2026-03-06 (+31d) | 2026-02-04 → 2026-03-09 (+33d) | 149d → 126d |
| P2.SITE.114 | Install Stone Veneer - Pond 2 | 2026-02-05 → 2026-03-10 (+33d) | 2026-02-11 → 2026-03-16 (+33d) | 149d → 126d |
| P2.SITE.94 | Storm Infrastructure,Waterproofing & Base Layer - Pond 2 | 2026-02-05 → 2026-03-10 (+33d) | 2026-02-11 → 2026-03-16 (+33d) | 283d → 260d |
| P2.SITE.104 | Micro-Bio Plantings, Media, Mulch, and Final Cap Install - Pond 2 | 2026-07-21 → 2026-08-20 (+30d) | 2026-07-27 → 2026-08-26 (+30d) | 172d → 150d |
| 3 | **Pond 3** | 2026-02-03 → 2026-03-06 (+31d) | 2026-07-27 → 2026-08-26 (+30d) |  |
| P2.SITE.124 | FRP Basin Walls (Anti-Ram) - Pond 3 | 2026-02-03 → 2026-03-06 (+31d) | 2026-02-09 → 2026-03-12 (+31d) | 170d → 147d |
| P2.SITE.134 | Concrete Cure - Pond 3 | 2026-02-10 → 2026-03-13 (+31d) | 2026-02-11 → 2026-03-16 (+33d) | 238d → 215d |
| P2.SITE.144 | Storm Infrastructure,Waterproofing & Base Layer - Pond 3 | 2026-02-12 → 2026-03-17 (+33d) | 2026-02-18 → 2026-03-23 (+33d) | 278d → 255d |
| P2.SITE.164 | Install Stone Veneer - Pond 3 | 2026-02-12 → 2026-03-17 (+33d) | 2026-02-18 → 2026-03-23 (+33d) | 238d → 215d |
| P2.SITE.154 | Micro-Bio Plantings, Media, Mulch, and Final Cap Install - Pond 3 | 2026-07-21 → 2026-08-20 (+30d) | 2026-07-27 → 2026-08-26 (+30d) | 172d → 150d |
| 4 | **Pond 4** | 2026-02-10 → 2026-03-13 (+31d) | 2026-07-27 → 2026-08-26 (+30d) |  |
| P2.SITE.174 | FRP Basin Walls (Anti-Ram) - Pond 4 | 2026-02-10 → 2026-03-13 (+31d) | 2026-02-16 → 2026-03-19 (+31d) | 170d → 147d |
| P2.SITE.184 | Concrete Cure - Pond 4 | 2026-02-17 → 2026-03-20 (+31d) | 2026-02-18 → 2026-03-23 (+33d) | 178d → 155d |
| P2.SITE.194 | Storm Infrastructure,Waterproofing & Base Layer - Pond 4 | 2026-02-19 → 2026-03-24 (+33d) | 2026-02-25 → 2026-03-30 (+33d) | 273d → 250d |
| P2.SITE.214 | Install Stone Veneer - Pond 4 | 2026-02-19 → 2026-03-24 (+33d) | 2026-02-25 → 2026-03-30 (+33d) | 178d → 155d |
| P2.SITE.204 | Micro-Bio Plantings, Media, Mulch, and Final Cap Install - Pond 4 | 2026-07-21 → 2026-08-20 (+30d) | 2026-07-27 → 2026-08-26 (+30d) | 172d → 150d |
| 5 | **Pond 5** | 2026-03-19 → 2026-04-21 (+33d) | 2026-07-27 → 2026-08-26 (+30d) |  |

| ID | Task | Start | Finish | Total float |
| --- | --- | --- | --- | --- |
| P2.SITE.224 | FRP Basin Walls (Anti-Ram) - Pond 5 | 2026-03-19 → 2026-04-21 (+33d) | 2026-03-25 → 2026-04-27 (+33d) | 148d → 125d |
| P2.SITE.234 | Concrete Cure - Pond 5 | 2026-03-26 → 2026-04-28 (+33d) | 2026-03-27 → 2026-04-29 (+33d) | 206d → 183d |
| P2.SITE.244 | Storm Infrastructure,Waterproofing & Base Layer - Pond 5 | 2026-03-30 → 2026-04-30 (+31d) | 2026-04-03 → 2026-05-06 (+33d) | 246d → 223d |
| P2.SITE.264 | Install Stone Veneer - Pond 5 | 2026-03-30 → 2026-04-30 (+31d) | 2026-04-03 → 2026-05-06 (+33d) | 206d → 183d |
| P2.SITE.254 | Micro-Bio Plantings, Media, Mulch, and Final Cap Install - Pond 5 | 2026-07-21 → 2026-08-20 (+30d) | 2026-07-27 → 2026-08-26 (+30d) | 172d → 150d |
| 6 | **Pond 6** | 2026-05-13 → 2026-06-15 (+33d) | 2026-07-27 → 2026-08-26 (+30d) |  |
| P2.SITE.274 | FRP Basin Walls (Anti-Ram) - Pond 6 | 2026-05-13 → 2026-06-15 (+33d) | 2026-05-19 → 2026-06-19 (+31d) | 114d → 92d |
| P2.SITE.284 | Concrete Cure - Pond 6 | 2026-05-20 → 2026-06-22 (+33d) | 2026-05-21 → 2026-06-23 (+33d) | 207d → 185d |
| P2.SITE.314 | Install Stone Veneer - Pond 6 | 2026-05-22 → 2026-06-24 (+33d) | 2026-05-29 → 2026-06-30 (+32d) | 212d → 190d |
| P2.SITE.294 | Storm Infrastructure,Waterproofing & Base Layer - Pond 6 | 2026-06-11 → 2026-07-14 (+33d) | 2026-06-17 → 2026-07-20 (+33d) | 194d → 172d |
| P2.SITE.304 | Micro-Bio Plantings, Media, Mulch, and Final Cap Install - Pond 6 | 2026-07-21 → 2026-08-20 (+30d) | 2026-07-27 → 2026-08-26 (+30d) | 172d → 150d |
| 5 | **SITE HARDSCAPES** | 2026-01-22 → 2026-02-24 (+33d) | 2026-07-27 → 2026-08-26 (+30d) |  |
| 1 | **Building Perimeter Walkway** | 2026-01-22 → 2026-02-24 (+33d) | 2026-07-27 → 2026-08-26 (+30d) |  |
| 1 | **North Walkways** | 2026-01-22 → 2026-02-24 (+33d) | 2026-03-11 → 2026-04-13 (+33d) |  |
| P2.SITE.12 | Rain Leader Installation to Micro-Bio Ponds (North) | 2026-01-22 → 2026-02-24 (+33d) | 2026-01-26 → 2026-02-26 (+31d) | 134d → 111d |
| P2.SITE.13 | FRP North Concrete Bases & Walks | 2026-01-27 → 2026-02-27 (+31d) | 2026-02-02 → 2026-03-05 (+31d) | 134d → 111d |
| P2.SITE.14 | North Concrete Bases Cure | 2026-02-03 → 2026-03-06 (+31d) | 2026-02-04 → 2026-03-09 (+33d) | 134d → 111d |
| P2.SITE.15 | North Walkway Paver Base and Install | 2026-02-05 → 2026-03-10 (+33d) | 2026-03-04 → 2026-04-06 (+33d) | 134d → 111d |
| P2.SITE.16 | Stone & Plantings at Walkways | 2026-03-05 → 2026-04-07 (+33d) | 2026-03-11 → 2026-04-13 (+33d) | 148d → 125d |
| 2 | **West Walkways** | 2026-02-17 → 2026-03-20 (+31d) | 2026-04-17 → 2026-05-20 (+33d) |  |
| P2.SITE.17 | Rain Leader Installation to Micro-Bio Ponds (West) | 2026-02-17 → 2026-03-20 (+31d) | 2026-02-18 → 2026-03-23 (+33d) | 176d → 153d |
| P2.SITE.18 | FRP West Concrete Bases & Walks | 2026-02-19 → 2026-03-24 (+33d) | 2026-02-25 → 2026-03-30 (+33d) | 176d → 153d |
| P2.SITE.19 | West Concrete Bases Cure | 2026-02-26 → 2026-03-31 (+33d) | 2026-02-27 → 2026-04-01 (+33d) | 176d → 153d |
| P2.SITE.20 | West Walkway Paver Base and Install | 2026-03-02 → 2026-04-02 (+31d) | 2026-03-06 → 2026-04-08 (+33d) | 176d → 153d |
| P2.SITE.21 | Stone & Plantings at Walkways | 2026-03-09 → 2026-04-09 (+31d) | 2026-04-03 → 2026-05-06 (+33d) | 241d → 218d |
| P2.SITE.22 | Pedestrian Bridge Installation | 2026-04-06 → 2026-05-07 (+31d) | 2026-04-17 → 2026-05-20 (+33d) | 241d → 218d |
| 3 | **South Walkways** | 2026-05-20 → 2026-06-22 (+33d) | 2026-07-27 → 2026-08-26 (+30d) |  |
| P2.SITE.23 | FRP Anti-Ram Walls Foundations | 2026-05-20 → 2026-06-22 (+33d) | 2026-05-27 → 2026-06-26 (+30d) | 114d → 92d |
| P2.SITE.24 | Rough in Site Lighting at Walls | 2026-05-28 → 2026-06-29 (+32d) | 2026-06-03 → 2026-07-06 (+33d) | 114d → 92d |
| P2.SITE.25 | FRP South Concrete Bases & Walks | 2026-06-04 → 2026-07-07 (+33d) | 2026-06-10 → 2026-07-13 (+33d) | 114d → 92d |
| P2.SITE.26 | South Concrete Bases Cure | 2026-06-11 → 2026-07-14 (+33d) | 2026-06-12 → 2026-07-15 (+33d) | 142d → 120d |
| P2.SITE.27 | Install Stone Veneer | 2026-06-15 → 2026-07-16 (+31d) | 2026-06-19 → 2026-07-22 (+33d) | 142d → 120d |
| P2.SITE.28 | South Walkway Paver Base and Install | 2026-06-22 → 2026-07-23 (+31d) | 2026-07-20 → 2026-08-19 (+30d) | 172d → 150d |
| P2.SITE.29 | Stone, Lights, & Plantings at Walkways | 2026-07-21 → 2026-08-20 (+30d) | 2026-07-27 → 2026-08-26 (+30d) | 172d → 150d |
| 2 | **Pesestrian Sidewalks** | 2026-06-22 → 2026-07-23 (+31d) | 2026-07-27 → 2026-08-26 (+30d) |  |
| P2.SITE.33 | FRP East Pedestrian Walkways | 2026-06-22 → 2026-07-23 (+31d) | 2026-06-26 → 2026-07-29 (+33d) | 142d → 120d |
| P2.SITE.30 | FRP North Curb & Gutter | 2026-06-29 → 2026-07-30 (+31d) | 2026-07-06 → 2026-08-05 (+30d) | 142d → 120d |
| P2.SITE.31 | FRP West Curb & Gutter | 2026-07-07 → 2026-08-06 (+30d) | 2026-07-13 → 2026-08-12 (+30d) | 142d → 120d |
| P2.SITE.34 | FRP North Pedestrian Walkways | 2026-07-07 → 2026-08-06 (+30d) | 2026-07-13 → 2026-08-12 (+30d) | 162d → 140d |
| P2.SITE.32 | FRP South Curb & Gutter | 2026-07-14 → 2026-08-13 (+30d) | 2026-07-20 → 2026-08-19 (+30d) | 142d → 120d |
| P2.SITE.35 | FRP West Pedestrian Walkways | 2026-07-14 → 2026-08-13 (+30d) | 2026-07-20 → 2026-08-19 (+30d) | 177d → 155d |
| P2.SITE.36 | FRP South Pedestrian Walkways | 2026-07-21 → 2026-08-20 (+30d) | 2026-07-27 → 2026-08-26 (+30d) | 142d → 120d |
| 1 | **Building Area & Surrounding Roads** | 2026-03-05 → 2026-04-07 (+33d) | 2026-05-22 → 2026-06-25 (+34d) |  |
| P2.SIP.145 | Shift Construction Fence around Building | 2026-03-05 → 2026-04-07 (+33d) | 2026-03-11 → 2026-04-13 (+33d) | 148d → 125d |
| P2.SIP.140 | Remove/Restore Temporary Island In-fills | 2026-03-30 → 2026-04-30 (+31d) | 2026-04-24 → 2026-05-28 (+34d) | 186d → 163d |
| P2.SIP.155 | Final Site Finishes/Furnishings/Boulders | 2026-04-27 → 2026-05-29 (+32d) | 2026-05-22 → 2026-06-25 (+34d) | 186d → 163d |
| 6 | **ROADWAYS / PAVING / MARKINGS / SIGNAGE** | 2026-03-12 → 2026-04-14 (+33d) | 2026-07-01 → 2026-08-03 (+33d) |  |
| 1 | **North Roadway Loop** | 2026-03-12 → 2026-04-14 (+33d) | 2026-04-01 → 2026-05-04 (+33d) |  |
| P2.SITE.37 | Road Base Course | 2026-03-12 → 2026-04-14 (+33d) | 2026-03-18 → 2026-04-20 (+33d) | 148d → 125d |
| P2.SITE.38 | Road Surface Layer | 2026-03-19 → 2026-04-21 (+33d) | 2026-03-25 → 2026-04-27 (+33d) | 186d → 163d |
| P2.SITE.39 | Road Pavement Markings | 2026-03-26 → 2026-04-28 (+33d) | 2026-03-27 → 2026-04-29 (+33d) | 186d → 163d |
| P2.SITE.40 | Road Final Signage | 2026-03-30 → 2026-04-30 (+31d) | 2026-04-01 → 2026-05-04 (+33d) | 203d → 180d |
| 2 | **West Building Roadway** | 2026-03-19 → 2026-04-21 (+33d) | 2026-04-08 → 2026-05-11 (+33d) |  |
| P2.SITE.324 | Road Base Course | 2026-03-19 → 2026-04-21 (+33d) | 2026-03-25 → 2026-04-27 (+33d) | 243d → 220d |
| P2.SITE.334 | Road Surface Layer | 2026-03-26 → 2026-04-28 (+33d) | 2026-04-01 → 2026-05-04 (+33d) | 248d → 225d |
| P2.SITE.344 | Road Pavement Markings | 2026-04-02 → 2026-05-05 (+33d) | 2026-04-03 → 2026-05-06 (+33d) | 248d → 225d |
| P2.SITE.354 | Road Final Signage | 2026-04-06 → 2026-05-07 (+31d) | 2026-04-08 → 2026-05-11 (+33d) | 248d → 225d |
| 3 | **South Roadway & Access Drive** | 2026-06-11 → 2026-07-14 (+33d) | 2026-07-01 → 2026-08-03 (+33d) |  |
| P2.SITE.364 | Road Base Course | 2026-06-11 → 2026-07-14 (+33d) | 2026-06-17 → 2026-07-20 (+33d) | 189d → 167d |
| P2.SITE.374 | Road Surface Layer | 2026-06-18 → 2026-07-21 (+33d) | 2026-06-24 → 2026-07-27 (+33d) | 189d → 167d |
| P2.SITE.384 | Road Pavement Markings | 2026-06-25 → 2026-07-28 (+33d) | 2026-06-26 → 2026-07-29 (+33d) | 189d → 167d |
| P2.SITE.394 | Road Final Signage | 2026-06-29 → 2026-07-30 (+31d) | 2026-07-01 → 2026-08-03 (+33d) | 189d → 167d |
| 7 | **SITE FURNISHINGS / SITE LIGHTING / PLANTINGS** | 2026-05-26 → 2026-06-26 (+31d) | 2026-09-08 → 2026-10-08 (+30d) |  |
| P2.SITE.46 | Install Building Exterior Signage | 2026-05-26 → 2026-06-26 (+31d) | 2026-06-01 → 2026-07-02 (+31d) | 211d → 188d |
| P2.SITE.47 | Rough in Site Light at Subgrade | 2026-06-04 → 2026-07-07 (+33d) | 2026-07-01 → 2026-08-03 (+33d) | 153d → 131d |
| P2.SITE.44 | Install Walkway Handrails | 2026-06-29 → 2026-07-30 (+31d) | 2026-07-06 → 2026-08-05 (+30d) | 187d → 165d |
| P2.SITE.48 | FRP Light Foundatations | 2026-07-02 → 2026-08-04 (+33d) | 2026-07-30 → 2026-08-31 (+32d) | 153d → 131d |
| P2.SITE.45 | Install Benches & Trashcans | 2026-07-14 → 2026-08-13 (+30d) | 2026-07-20 → 2026-08-19 (+30d) | 162d → 140d |
| P2.SITE.50 | Install Plantings, Stones, and Greenery at East Walkway | 2026-07-21 → 2026-08-20 (+30d) | 2026-08-03 → 2026-09-02 (+30d) | 167d → 145d |
| P2.SITE.41 | Install Plaground Surface | 2026-07-28 → 2026-08-27 (+30d) | 2026-08-10 → 2026-09-10 (+31d) | 142d → 120d |

| ID | Task | Start | Finish | Total float |
| --- | --- | --- | --- | --- |
| P2.SITE.49 | Install Site Lights (Pole, Wall, and Canopy) | 2026-07-31 → 2026-09-01 (+32d) | 2026-08-20 → 2026-09-22 (+33d) | 154d → 132d |
| P2.SITE.54 | Stabilize Site | 2026-07-31 → 2026-09-01 (+32d) | 2026-07-31 → 2026-09-01 (+32d) | 153d → 131d |
| P2.SITE.42 | Install Playground Equipment | 2026-08-11 → 2026-09-11 (+31d) | 2026-08-24 → 2026-09-24 (+31d) | 142d → 120d |
| P2.SITE.51 | Install Plantings, Stones, and Greenery at Ring Road | 2026-08-11 → 2026-09-11 (+31d) | 2026-08-17 → 2026-09-17 (+31d) | 147d → 125d |
| P2.SITE.52 | Install Plantings & Stone at South Entrances | 2026-08-18 → 2026-09-18 (+31d) | 2026-08-24 → 2026-09-24 (+31d) | 147d → 125d |
| P2.SITE.43 | Install Playground & Other Decorative Fence/Gates | 2026-08-25 → 2026-09-25 (+31d) | 2026-09-08 → 2026-10-08 (+30d) | 142d → 120d |
| P2.SITE.53 | Install Plantings and Greenery at Island | 2026-08-25 → 2026-09-25 (+31d) | 2026-08-31 → 2026-10-01 (+31d) | 147d → 125d |
| 9 | **Phase 1 & 2 - Demobilization & Site Restoration** | 2026-08-03 → 2026-09-02 (+30d) | 2026-11-13 → 2026-12-17 (+34d) |  |
| P2.DMSR.120 | Remove Overhead Pedestrian Pathways/Protection | 2026-08-03 → 2026-09-02 (+30d) | 2026-08-21 → 2026-09-23 (+33d) | 153d → 131d |
| P2.DMSR.160 | Site Punchlist - Phase 1 and 2 | 2026-10-26 → 2026-11-25 (+30d) | 2026-11-13 → 2026-12-17 (+34d) | 109d → 87d |
| 11 | **PHASE 3 - NIH MOVES (Draft)** | 2027-04-22 → 2027-05-11 (+19d) | 2027-08-24 → 2027-09-12 (+19d) |  |
| P3.NIH.100 | NIH Department Moves | 2027-04-22 → 2027-05-11 (+19d) | 2027-08-24 → 2027-09-12 (+19d) | 0d → -19d |
| 6 | **PHASE 4 - NIH DECOMMISSION CRC F WING (Draft)** | 2027-08-02 → 2027-08-21 (+19d) | 2027-10-18 → 2027-11-06 (+19d) |  |
| P4.NIH.100 | DcX Existing CRC Labs for Turnover to Contractor | 2027-08-02 → 2027-08-21 (+19d) | 2027-10-18 → 2027-11-06 (+19d) | 0d → -19d |
| EXS.151 | Phase 3 & 4 - NIH Complete | 2027-10-18 → 2027-11-06 (+19d) | 2027-10-18 → 2027-11-06 (+19d) | 465d → 446d |
| 12 | **PHASE 5 - PRECONSTRUCTION (Draft)** | 2027-04-22 → 2027-05-11 (+19d) | 2027-10-25 → 2027-11-11 (+17d) |  |
| P5.PREC.100 | Phase 5 Preconstruction Planning - Logistics, Barrier Walls, Material Handling | 2027-04-22 → 2027-05-11 (+19d) | 2027-06-17 → 2027-07-07 (+20d) | 40d → 27d |
| P5.PREC.120 | Phase 5 Preconstruction Planning - Selective Investigations Existing Condtions | 2027-05-06 → 2027-05-25 (+19d) | 2027-06-17 → 2027-07-07 (+20d) | 40d → 27d |
| P5.PREC.110 | Phase 5 Prefabrication | 2027-06-18 → 2027-07-08 (+20d) | 2027-10-25 → 2027-11-11 (+17d) | 86d → 73d |
| P5.PWS.290 | Prepare & Submit - Site Specific Phase 5 Logistics Plan | 2027-06-18 → 2027-07-08 (+20d) | 2027-07-16 → 2027-08-04 (+19d) | 50d → 37d |
| P5.PWS.300 | Review & Approve - Site Specific Phase 5 Logistics Plan | 2027-07-19 → 2027-08-05 (+17d) | 2027-08-06 → 2027-08-25 (+19d) | 50d → 37d |
| 7 | **PHASE 5 - CONSTRUCTION - CRC RENOVATION (Draft)** | 2027-10-19 → 2027-11-07 (+19d) | 2029-01-25 → 2029-02-13 (+19d) |  |
| P5.CRC.110 | Mobilization/Set up Barrier Walls/ICRA Measures (Floors B2- L4) | 2027-10-19 → 2027-11-07 (+19d) | 2027-11-22 → 2027-12-11 (+19d) | 0d → -19d |
| P5.CRC.100 | Decommission MEP Systems/Cut/Cap/Make Safe for Demo (Floors B2- L4) | 2027-11-23 → 2027-12-12 (+19d) | 2028-01-17 → 2028-02-05 (+19d) | 0d → -19d |
| P5.CRC.120 | Interior Demolition (Floors L1- L7) | 2028-01-04 → 2028-01-23 (+19d) | 2028-04-12 → 2028-05-01 (+19d) | 0d → -19d |
| P5.CRC.180 | Levels 5-6 Demo & Finish Work to support SRLM to CRC connections (FLS req) | 2028-01-04 → 2028-01-23 (+19d) | 2028-03-03 → 2028-03-22 (+19d) | 37d → 18d |
| P5.CRC.160 | MEP Rough in & Partitions (Floors L1- L7) | 2028-02-29 → 2028-03-19 (+19d) | 2028-07-02 → 2028-07-21 (+19d) | 0d → -19d |
| P5.CRC.190 | Levels 5-6 SRLM to CRC Connection for FLS & Egress | 2028-03-04 → 2028-03-23 (+19d) | 2028-03-23 → 2028-04-11 (+19d) | 37d → 18d |
| P5.CRC.200 | FM Inspections, Approval, & Shut down of Stair 3-9 | 2028-03-24 → 2028-04-12 (+19d) | 2028-04-12 → 2028-05-01 (+19d) | 37d → 18d |
| P5.CRC.130 | Renovation & Interior Fit Out (Floors L1- L7) | 2028-05-20 → 2028-06-08 (+19d) | 2028-11-05 → 2028-11-24 (+19d) | 0d → -19d |
| P5.CRC.170 | Demobilize Field Offices at MLP-14 Garage | 2028-08-15 → 2028-09-03 (+19d) | 2028-11-06 → 2028-11-25 (+19d) | 55d → 36d |
| P5.CRC.140 | Commissioning/Punchlist | 2028-11-06 → 2028-11-25 (+19d) | 2028-12-31 → 2029-01-19 (+19d) | 0d → -19d |
| P5.CRC.150 | Acceptance Inspections & Certifications | 2029-01-01 → 2029-01-20 (+19d) | 2029-01-25 → 2029-02-13 (+19d) | 0d → -19d |
| 1 | **Stair 3-9 Connection from SRLM to CRC** | 2027-10-19 → 2027-11-08 (+20d) | 2028-09-26 → 2028-10-13 (+17d) |  |
| P5.3-9.1000 | Work-Plan Investigation of Lab Office 6F512 for Reinforcing of Roof Beam (Stair 3-9) | 2027-10-19 → 2027-11-08 (+20d) | 2027-11-15 → 2027-12-07 (+22d) | 77d → 63d |
| P5.3-9.1080 | Work-Plan Development for Reinforcing of Roof Beam (Stair 3-9) | 2027-11-16 → 2027-12-08 (+22d) | 2027-12-15 → 2028-01-06 (+22d) | 77d → 63d |
| P5.3-9.1010 | NIH Notification - Review and Approval of Roof Beam Reinforcing Work Plan (Stair 3-9) | 2027-12-16 → 2028-01-07 (+22d) | 2028-01-14 → 2028-02-03 (+20d) | 77d → 63d |
| P5.3-9.1060 | NIH Notification - Confirmation and Approval of Roof Beam Reinforcing Work Plan (Stair 3-9) | 2028-03-24 → 2028-04-12 (+19d) | 2028-04-20 → 2028-05-09 (+19d) | 28d → 15d |
| P5.3-9.1070 | NIH Vacate Lab Office 6F512 | 2028-04-21 → 2028-05-10 (+19d) | 2028-05-18 → 2028-06-07 (+20d) | 28d → 15d |
| P5.3-9.1020 | Utilty Shut down Survey & Notification | 2028-05-19 → 2028-06-08 (+20d) | 2028-06-30 → 2028-07-20 (+20d) | 28d → 15d |
| P5.3-9.1030 | Pull back Grid, Reroute Utilities, and Clear Lab Office for Structural Work | 2028-07-03 → 2028-07-21 (+18d) | 2028-07-31 → 2028-08-17 (+17d) | 28d → 15d |
| P5.3-9.1040 | Cut & Reinforce Existing Down-Turned Beam in CRC - Lab Office 6F512 | 2028-08-01 → 2028-08-18 (+17d) | 2028-08-28 → 2028-09-15 (+18d) | 28d → 15d |
| P5.3-9.1050 | Complete Stair 3-9 final conditions and door connection, and Comissioning | 2028-08-29 → 2028-09-18 (+20d) | 2028-09-26 → 2028-10-13 (+17d) | 28d → 15d |
| 5 | **Phase 5 - Demobilization & Site Restoration** | 2028-10-09 → 2028-10-26 (+17d) | 2028-12-27 → 2029-01-16 (+20d) |  |
| P5.DMSR.160 | Remove Vehicle Inspection Station | 2028-10-09 → 2028-10-26 (+17d) | 2028-11-06 → 2028-11-27 (+21d) | 2d → -11d |
| P5.DMSR.180 | Restore Site Lighting Along Center Drive/Cloister Ct | 2028-10-16 → 2028-11-02 (+17d) | 2028-11-10 → 2028-12-01 (+21d) | 7d → -6d |
| P5.DMSR.170 | Restore Center Drive & Complete Site Finishes along Center Drive | 2028-11-06 → 2028-11-27 (+21d) | 2028-12-05 → 2028-12-22 (+17d) | 2d → -11d |
| P5.DMSR.190 | Restore Shoulder & Complete Site Finishes at Cloister Ct | 2028-11-06 → 2028-11-27 (+21d) | 2028-12-05 → 2028-12-22 (+17d) | 2d → -11d |
| P5.DMSR.200 | Site Punchlist Phase 5 | 2028-12-06 → 2028-12-26 (+20d) | 2028-12-27 → 2029-01-16 (+20d) | 2d → -11d |
| 8 | **PHASE 5 - CLOSE OUT (Draft)** | 2028-07-03 → 2028-07-24 (+21d) | 2028-12-27 → 2029-01-16 (+20d) |  |
| P5.CLO.140 | Prepare & Submit - As-Built Records (Draft) | 2028-07-03 → 2028-07-24 (+21d) | 2028-09-05 → 2028-09-25 (+20d) | 20d → 6d |
| P5.CLO.150 | Review & Approve - As-Built Records (Draft) | 2028-09-06 → 2028-09-26 (+20d) | 2028-09-26 → 2028-10-16 (+20d) | 38d → 24d |
| P5.CLO.193 | Prepare & Submit - O&M (Final) | 2028-09-25 → 2028-10-12 (+17d) | 2028-11-06 → 2028-11-27 (+21d) | 7d → -6d |
| P5.CLO.160 | Prepare & Submit - As-Built Records (Final) | 2028-11-06 → 2028-11-27 (+21d) | 2028-12-05 → 2028-12-22 (+17d) | 10d → -3d |
| P5.CLO.203 | Review & Approve - O&M (Final) | 2028-11-06 → 2028-11-27 (+21d) | 2028-11-28 → 2028-12-15 (+17d) | 7d → -6d |
| P5.CLO.213 | O&M Training and Instruction | 2028-11-29 → 2028-12-18 (+19d) | 2028-12-19 → 2029-01-09 (+21d) | 7d → -6d |
| P5.CLO.170 | Review & Approve - As-Built Records (Final) | 2028-12-06 → 2028-12-26 (+20d) | 2028-12-27 → 2029-01-16 (+20d) | 10d → -3d |
